# CR-F0009-0305-MB-F-00001

How a schedule from MS Project changed from version to version. A marks actual dates.

## Version 1 (data date 2026-05-18, saved 2026-06-19, file CR-F0009-0000-MB-F-00001 19-06-2026.mpp)

Note of the change: Primeira versao dashboard

| ID | WBS | Task | Duration | Start | Finish | Predecessors | Complete | Total float | Constraint |
| --- | --- | --- | --- | --- | --- | --- | --- | --- | --- |
| 1 | 1 | **F0009 - Programa Marabá** | 158d | 2026-05-18 A | 2026-12-23 |  | 32% | 0d |  |
| 2 | 1.1 | **Área 0000 -Documento geral** | 158d | 2026-05-18 A | 2026-12-23 |  | 32% | 0d |  |
| 3 |  | KOM - Início de projeto | 0d | 2026-05-18 A | 2026-05-18 A |  | 100% |  | start no earlier than 2026-05-18 |
| 4 | 1.1.2 | **Pendências** | 0d | 2026-05-18 A | 2026-05-18 A |  | 100% |  |  |
| 5 |  | Recebimento de dados de entrada | 0d | 2026-05-18 A | 2026-05-18 A | 3 | 100% |  |  |
| 6 | 1.1.3 | **Planejamento** | 148d | 2026-06-01 A | 2026-12-23 |  | 77% | 0d |  |
| 7 | 1.1.3.1 | **LD-F0009-0000-MB-F-00001** | 148d | 2026-06-01 A | 2026-12-23 |  | 70% | 0d |  |
| 8 |  | Emissão inicial | 2d | 2026-06-01 A | 2026-06-02 A | 3FS+10d | 100% |  |  |
| 9 |  | Análise Tecnored | 1d | 2026-06-03 A | 2026-06-03 A | 8 | 100% |  |  |
| 10 |  | Atendimento de comentários | 1d | 2026-12-17 A | 2026-12-17 | 9FS+140d | 50% | 0d |  |
| 11 |  | Aprovação | 1d | 2026-12-23 | 2026-12-23 | 10FS+3d |  | 0d |  |
| 12 | 1.1.3.2 | **CR-F0009-0000-MB-F-00001** | 16d | 2026-06-03 A | 2026-06-24 |  | 81% | 130d |  |
| 13 |  | Emissão inicial | 3d | 2026-06-03 A | 2026-06-05 A | 8 | 100% |  |  |
| 14 |  | Análise Tecnored | 3d | 2026-06-08 A | 2026-06-10 A | 13 | 100% |  |  |
| 15 |  | Atendimento de comentários | 1d | 2026-06-23 A | 2026-06-23 | 14FS+8d | 50% | 130d |  |
| 16 |  | Aprovação | 1d | 2026-06-24 | 2026-06-24 | 15 |  | 130d |  |
| 17 | 1.1.4 | **Coordenação** | 42d | 2026-06-01 A | 2026-07-28 |  | 57% | 106d |  |
| 18 | 1.1.4.1 | **LF-F0009-0000-MB-F-00001** | 7d | 2026-07-20 A | 2026-07-28 |  | 43% | 106d |  |
| 19 |  | Emissão inicial | 3d | 2026-07-20 A | 2026-07-22 A | 3FS+45d | 100% |  |  |
| 20 |  | Análise Tecnored | 1d | 2026-07-23 | 2026-07-23 | 19 |  | 106d |  |
| 21 |  | Atendimento de comentários | 2d | 2026-07-24 | 2026-07-27 | 20 |  | 106d |  |
| 22 |  | Aprovação | 1d | 2026-07-28 | 2026-07-28 | 21 |  | 106d |  |
| 23 | 1.1.4.2 | **LP-F0009-0000-MB-G-00001** | 37d | 2026-06-01 A | 2026-07-21 |  | 71% | 111d |  |
| 24 |  | Emissão inicial | 3d | 2026-06-01 A | 2026-06-03 A | 3FS+10d | 100% |  |  |
| 25 |  | Análise Tecnored | 1d | 2026-06-04 A | 2026-06-04 A | 24 | 100% |  |  |
| 26 |  | Atendimento de comentários | 2d | 2026-07-17 A | 2026-07-20 | 25FS+30d | 50% | 111d |  |
| 27 |  | Aprovação | 1d | 2026-07-21 | 2026-07-21 | 26 |  | 111d |  |
| 28 | 1.1.5 | **Processo** | 139d | 2026-05-28 A | 2026-12-08 |  | 21% | 11d |  |
| 29 | 1.1.5.1 | **CP-F0009-0000-MB-P-00001** | 9d | 2026-06-08 | 2026-06-18 |  |  | 11d |  |
| 30 |  | Emissão inicial | 5d | 2026-06-08 | 2026-06-12 | 13 |  | 11d |  |
| 31 |  | Análise Tecnored | 1d | 2026-06-15 | 2026-06-15 | 30 |  | 134d |  |
| 32 |  | Atendimento de comentários | 2d | 2026-06-16 | 2026-06-17 | 31 |  | 134d |  |
| 33 |  | Aprovação | 1d | 2026-06-18 | 2026-06-18 | 32 |  | 134d |  |
| 34 | 1.1.5.2 | **MD-F0009-0000-MB-P-00001** | 7d | 2026-11-30 | 2026-12-08 |  |  | 11d |  |
| 35 |  | Emissão inicial | 3d | 2026-11-30 | 2026-12-02 | 30FS+120d |  | 11d |  |
| 36 |  | Análise Tecnored | 1d | 2026-12-03 | 2026-12-03 | 35 |  | 11d |  |
| 37 |  | Atendimento de comentários | 2d | 2026-12-04 | 2026-12-07 | 36 |  | 11d |  |
| 38 |  | Aprovação | 1d | 2026-12-08 | 2026-12-08 | 37 |  | 11d |  |
| 39 | 1.1.5.3 | **FG-F0009-0000-MB-P-00001** | 4d | 2026-05-28 A | 2026-06-03 |  | 63% | 145d |  |
| 40 |  | Emissão inicial | 0d | 2026-05-28 A | 2026-05-28 A | 30FS+8d | 100% |  |  |
| 41 |  | Análise Tecnored | 1d | 2026-05-29 A | 2026-05-29 A | 40 | 100% |  |  |
| 42 |  | Atendimento de comentários | 2d | 2026-06-01 A | 2026-06-02 | 41 | 75% | 145d |  |
| 43 |  | Aprovação | 1d | 2026-06-03 | 2026-06-03 | 42 |  | 145d |  |
| 44 | 1.1.5.4 | **FG-F0009-0000-MB-P-00001** | 25d | 2026-05-28 A | 2026-07-01 |  | 63% | 125d |  |
| 45 |  | Emissão inicial | 0d | 2026-05-28 A | 2026-05-28 A | 30FS+8d | 100% |  |  |
| 46 |  | Análise Tecnored | 1d | 2026-06-26 A | 2026-06-26 A | 45 | 100% |  |  |
| 47 |  | Atendimento de comentários | 2d | 2026-06-29 A | 2026-06-30 | 46 | 75% | 125d |  |
| 48 |  | Aprovação | 1d | 2026-07-01 | 2026-07-01 | 47 |  | 125d |  |
| 49 | 1.1.6 | **Mecânica** | 128d | 2026-05-18 A | 2026-11-11 |  | 23% | 30d |  |
| 50 | 1.1.6.1 | **CP-F0009-0000-MB-M-00001** | 6d | 2026-05-18 A | 2026-05-25 |  | 46% | 152d |  |
| 51 |  | Emissão inicial | 2d | 2026-05-18 A | 2026-05-19 A | 30FF | 100% |  | finish no earlier than 2026-05-19 |
| 52 |  | Análise Tecnored | 1d | 2026-05-20 A | 2026-05-20 | 51 | 75% | 152d |  |
| 53 |  | Atendimento de comentários | 2d | 2026-05-21 | 2026-05-22 | 52 |  | 152d |  |
| 54 |  | Aprovação | 1d | 2026-05-25 | 2026-05-25 | 53 |  | 152d |  |
| 55 | 1.1.6.2 | **MD-F0009-0000-MB-M-00001** | 6d | 2026-11-04 | 2026-11-11 |  |  | 30d |  |
| 56 |  | Emissão inicial | 2d | 2026-11-04 | 2026-11-05 | 51FS+120d |  | 30d |  |
| 57 |  | Análise Tecnored | 1d | 2026-11-06 | 2026-11-06 | 56 |  | 30d |  |
| 58 |  | Atendimento de comentários | 2d | 2026-11-09 | 2026-11-10 | 57 |  | 30d |  |
| 59 |  | Aprovação | 1d | 2026-11-11 | 2026-11-11 | 58 |  | 30d |  |
| 60 | 1.1.7 | **Tubulação/Utilidades** | 135d | 2026-06-08 A | 2026-12-11 |  | 30% | 8d |  |
| 61 | 1.1.7.1 | **CP-F0009-0000-MB-T-00001** | 9d | 2026-06-08 A | 2026-06-18 A |  | 100% |  |  |
| 62 |  | Emissão inicial | 5d | 2026-06-08 A | 2026-06-12 A | 30FF | 100% |  |  |
| 63 |  | Análise Tecnored | 1d | 2026-06-15 A | 2026-06-15 A | 62 | 100% |  |  |
| 64 |  | Atendimento de comentários | 2d | 2026-06-16 A | 2026-06-17 A | 63 | 100% |  |  |
| 65 |  | Aprovação | 1d | 2026-06-18 A | 2026-06-18 A | 64 | 100% |  |  |
| 66 | 1.1.7.2 | **MD-F0009-0000-MB-U-00001** | 7d | 2026-11-30 | 2026-12-08 |  |  | 8d |  |
| 67 |  | Emissão inicial | 3d | 2026-11-30 | 2026-12-02 | 62FS+120d |  | 8d |  |
| 68 |  | Análise Tecnored | 1d | 2026-12-03 | 2026-12-03 | 67 |  | 11d |  |
| 69 |  | Atendimento de comentários | 2d | 2026-12-04 | 2026-12-07 | 68 |  | 11d |  |
| 70 |  | Aprovação | 1d | 2026-12-08 | 2026-12-08 | 69 |  | 11d |  |

| ID | WBS | Task | Duration | Start | Finish | Predecessors | Complete | Total float |
| --- | --- | --- | --- | --- | --- | --- | --- | --- |
| 71 | 1.1.7.3 | **ML-F0009-0000-MB-T-00001** | 7d | 2026-12-03 | 2026-12-11 |  |  | 8d |
| 72 |  | Emissão inicial | 3d | 2026-12-03 | 2026-12-07 | 67 |  | 8d |
| 73 |  | Análise Tecnored | 1d | 2026-12-08 | 2026-12-08 | 72 |  | 8d |
| 74 |  | Atendimento de comentários | 2d | 2026-12-09 | 2026-12-10 | 73 |  | 8d |
| 75 |  | Aprovação | 1d | 2026-12-11 | 2026-12-11 | 74 |  | 8d |
| 76 | 1.1.7.4 | **LK-F0009-0000-MB-T-00001** | 7d | 2026-12-03 | 2026-12-11 |  |  | 8d |
| 77 |  | Emissão inicial | 3d | 2026-12-03 | 2026-12-07 | 67 |  | 8d |
| 78 |  | Análise Tecnored | 1d | 2026-12-08 | 2026-12-08 | 77 |  | 8d |
| 79 |  | Atendimento de comentários | 2d | 2026-12-09 | 2026-12-10 | 78 |  | 8d |
| 80 |  | Aprovação | 1d | 2026-12-11 | 2026-12-11 | 79 |  | 8d |
| 81 | 1.1.8 | **Estrutura metálica** | 130d | 2026-06-10 | 2026-12-08 |  |  | 11d |
| 82 | 1.1.8.1 | **CP-F0009-0000-MB-S-00001** | 7d | 2026-06-10 | 2026-06-18 |  |  | 11d |
| 83 |  | Emissão inicial | 3d | 2026-06-10 | 2026-06-12 | 30FF |  | 11d |
| 84 |  | Análise Tecnored | 1d | 2026-06-15 | 2026-06-15 | 83 |  | 134d |
| 85 |  | Atendimento de comentários | 2d | 2026-06-16 | 2026-06-17 | 84 |  | 134d |
| 86 |  | Aprovação | 1d | 2026-06-18 | 2026-06-18 | 85 |  | 134d |
| 87 | 1.1.8.2 | **MD-F0009-0000-MB-S-00001** | 7d | 2026-11-30 | 2026-12-08 |  |  | 11d |
| 88 |  | Emissão inicial | 3d | 2026-11-30 | 2026-12-02 | 83FS+120d |  | 11d |
| 89 |  | Análise Tecnored | 1d | 2026-12-03 | 2026-12-03 | 88 |  | 11d |
| 90 |  | Atendimento de comentários | 2d | 2026-12-04 | 2026-12-07 | 89 |  | 11d |
| 91 |  | Aprovação | 1d | 2026-12-08 | 2026-12-08 | 90 |  | 11d |
| 92 | 1.1.9 | **Elétrica** | 140d | 2026-06-08 A | 2026-12-18 |  | 38% | 3d |
| 93 | 1.1.9.1 | **CP-F0009-0000-MB-E-00001** | 9d | 2026-06-08 A | 2026-06-18 |  | 80% | 3d |
| 94 |  | Emissão inicial | 6d | 2026-06-08 A | 2026-06-15 A | 30FF | 100% |  |
| 95 |  | Análise Tecnored | 1d | 2026-06-15 A | 2026-06-15 A | 94 | 100% |  |
| 96 |  | Atendimento de comentários | 2d | 2026-06-16 A | 2026-06-17 | 95 | 50% | 3d |
| 97 |  | Aprovação | 1d | 2026-06-18 | 2026-06-18 | 96 |  | 3d |
| 98 | 1.1.9.2 | **MD-F0009-0000-MB-E-00001** | 11d | 2026-12-04 | 2026-12-18 |  |  | 3d |
| 99 |  | Emissão inicial | 7d | 2026-12-04 | 2026-12-14 | 93FS+120d |  | 3d |
| 100 |  | Análise Tecnored | 1d | 2026-12-15 | 2026-12-15 | 99 |  | 3d |
| 101 |  | Atendimento de comentários | 2d | 2026-12-16 | 2026-12-17 | 100 |  | 3d |
| 102 |  | Aprovação | 1d | 2026-12-18 | 2026-12-18 | 101 |  | 3d |
| 103 | 1.1.10 | **Automação e instrumentação** | 127d | 2026-05-28 A | 2026-11-23 |  | 18% | 22d |
| 104 | 1.1.10.1 | **CP-F0009-0000-MB-J-00001** | 4d | 2026-05-28 A | 2026-06-03 |  | 50% | 145d |
| 105 |  | Emissão inicial | 0d | 2026-05-28 A | 2026-05-28 A | 30FF | 100% |  |
| 106 |  | Análise Tecnored | 1d | 2026-05-29 A | 2026-05-29 A | 105 | 100% |  |
| 107 |  | Atendimento de comentários | 2d | 2026-06-01 A | 2026-06-02 | 106 | 50% | 145d |
| 108 |  | Aprovação | 1d | 2026-06-03 | 2026-06-03 | 107 |  | 145d |
| 109 | 1.1.10.2 | **MD-F0009-0000-MB-J-00001** | 7d | 2026-11-13 | 2026-11-23 |  |  | 22d |
| 110 |  | Emissão inicial | 3d | 2026-11-13 | 2026-11-17 | 105FS+120d |  | 22d |
| 111 |  | Análise Tecnored | 1d | 2026-11-18 | 2026-11-18 | 110 |  | 22d |
| 112 |  | Atendimento de comentários | 2d | 2026-11-19 | 2026-11-20 | 111 |  | 22d |
| 113 |  | Aprovação | 1d | 2026-11-23 | 2026-11-23 | 112 |  | 22d |
| 114 | 1.1.11 | **Civil** | 0d | 2026-09-04 | 2026-09-04 |  |  | 78d |
| 115 |  | Avaliações gerais | 0d | 2026-09-04 | 2026-09-04 | 30FS+60d |  | 78d |

## Version 2 (data date 2026-06-22, saved 2026-06-23, file CR-F0009-0000-MB-F-00001 22-06-2026.mpp)

Note of the change: Primeira versao dashboard

Last finish stays 2026-12-23. Complete tasks 22 → 21.

Added:

| ID | Task | Duration | Start | Finish | Predecessors |
| --- | --- | --- | --- | --- | --- |
| 56 | Emissão inicial | 2d | 2026-11-04 | 2026-11-05 | 51FS+120d |
| 57 | Análise Tecnored | 1d | 2026-11-06 | 2026-11-06 | 56 |
| 58 | Atendimento de comentários | 2d | 2026-11-09 | 2026-11-10 | 57 |
| 59 | Aprovação | 1d | 2026-11-11 | 2026-11-11 | 58 |
| 60 | **ET-F0009-0000-MB-M-00001** | 6d | 2026-11-04 | 2026-11-11 |  |
| 82 | Emissão inicial | 3d | 2026-12-03 | 2026-12-07 | 72 |
| 83 | Análise Tecnored | 1d | 2026-12-08 | 2026-12-08 | 82 |
| 84 | Atendimento de comentários | 2d | 2026-12-09 | 2026-12-10 | 83 |
| 85 | Aprovação | 1d | 2026-12-11 | 2026-12-11 | 84 |
| 86 | **ET-F0009-0000-MB-T-00001** | 7d | 2026-12-03 | 2026-12-11 |  |
| 98 | Emissão inicial | 3d | 2026-11-30 | 2026-12-02 | 93FS+120d |
| 99 | Análise Tecnored | 1d | 2026-12-03 | 2026-12-03 | 98 |
| 100 | Atendimento de comentários | 2d | 2026-12-04 | 2026-12-07 | 99 |
| 101 | Aprovação | 1d | 2026-12-08 | 2026-12-08 | 100 |
| 102 | **ET-F0009-0000-MB-S-00001** | 7d | 2026-11-30 | 2026-12-08 |  |
| 114 | Emissão inicial | 7d | 2026-12-04 | 2026-12-14 | 108FS+120d |
| 115 | Análise Tecnored | 1d | 2026-12-15 | 2026-12-15 | 114 |
| 116 | Atendimento de comentários | 2d | 2026-12-16 | 2026-12-17 | 115 |
| 117 | Aprovação | 1d | 2026-12-18 | 2026-12-18 | 116 |
| 118 | **ET-F0009-0000-MB-E-00001** | 11d | 2026-12-04 | 2026-12-18 |  |

Changed:

| ID | Task | Start | Finish | Complete | Total float |
| --- | --- | --- | --- | --- | --- |
| 1 | **F0009 - Programa Marabá** |  |  | 32% → 25% |  |
| 2 | **Área 0000 -Documento geral** |  |  | 32% → 25% |  |
| 17 | **Coordenação** |  |  | 57% → 36% |  |
| 18 | **LF-F0009-0000-MB-F-00001** | 2026-07-20 A → 2026-07-20 |  | 43% → 0% |  |
| 19 | Emissão inicial | 2026-07-20 A → 2026-07-20 | 2026-07-22 A → 2026-07-22 | 100% → 0% | none → 106d |
| 49 | **Mecânica** |  |  | 23% → 15% |  |
| 65 | **Tubulação/Utilidades** |  |  | 30% → 24% |  |
| 107 | **Elétrica** |  |  | 38% → 25% |  |

## Version 3 (data date 2026-06-24, saved 2026-06-24, file CR-F0009-0000-MB-F-00001 24-06-2026.mpp)

Note of the change: Primeira versao dashboard

Last finish stays 2026-12-23. Complete tasks 21 → 22.

Changed:

| ID | Task | Start | Finish | Duration | Complete | Total float |
| --- | --- | --- | --- | --- | --- | --- |
| 1 | **F0009 - Programa Marabá** |  |  |  | 25% → 26% |  |
| 2 | **Área 0000 -Documento geral** |  |  |  | 25% → 26% |  |
| 17 | **Coordenação** |  | 2026-07-28 → 2026-07-21 (-7d) | 42d → 37d | 36% → 57% | 106d → 111d |
| 18 | **LF-F0009-0000-MB-F-00001** | 2026-07-20 → 2026-06-22 A (-28d) | 2026-07-28 → 2026-06-30 (-28d) |  | 0% → 43% | 106d → 126d |
| 19 | Emissão inicial | 2026-07-20 → 2026-06-22 A (-28d) | 2026-07-22 → 2026-06-24 A (-28d) |  | 0% → 100% | 106d → none |
| 20 | Análise Tecnored | 2026-07-23 → 2026-06-25 (-28d) | 2026-07-23 → 2026-06-25 (-28d) |  |  | 106d → 126d |
| 21 | Atendimento de comentários | 2026-07-24 → 2026-06-26 (-28d) | 2026-07-27 → 2026-06-29 (-28d) |  |  | 106d → 126d |
| 22 | Aprovação | 2026-07-28 → 2026-06-30 (-28d) | 2026-07-28 → 2026-06-30 (-28d) |  |  | 106d → 126d |

## Version 4 (data date 2026-06-25, saved 2026-06-25, file CR-F0009-0000-MB-F-00001 25-06-2026.mpp)

Note of the change: Primeira versao dashboard

Last finish stays 2026-12-23. Complete tasks 22 → 24.

Added:

| ID | Task | Duration | Start | Finish | Predecessors | Constraint |
| --- | --- | --- | --- | --- | --- | --- |
| 61 | Emissão inicial | 2d | 2026-11-04 | 2026-11-05 | 51FS+120d | start no earlier than 2026-06-29 |
| 62 | Análise Tecnored | 1d | 2026-11-06 | 2026-11-06 | 61 |  |
| 63 | Atendimento de comentários | 2d | 2026-11-09 | 2026-11-10 | 62 |  |
| 64 | Aprovação | 1d | 2026-11-11 | 2026-11-11 | 63 |  |
| 65 | **AG-F0009-0000-MB-L-00001** | 6d | 2026-11-04 | 2026-11-11 |  |  |

Changed:

| ID | Task | Start | Finish | Complete | Total float |
| --- | --- | --- | --- | --- | --- |
| 1 | **F0009 - Programa Marabá** |  |  | 26% → 30% |  |
| 2 | **Área 0000 -Documento geral** |  |  | 26% → 30% |  |
| 17 | **Coordenação** |  |  | 57% → 71% |  |
| 18 | **LF-F0009-0000-MB-F-00001** |  |  | 43% → 71% |  |
| 20 | Análise Tecnored | 2026-06-25 A | 2026-06-25 A | 0% → 100% | 126d → none |
| 21 | Atendimento de comentários | 2026-06-26 A |  | 0% → 50% |  |
| 28 | **Processo** |  |  | 21% → 31% |  |
| 29 | **CP-F0009-0000-MB-P-00001** | 2026-06-08 A |  | 0% → 28% | 11d → 134d |
| 30 | Emissão inicial | 2026-06-08 A |  | 0% → 50% |  |
| 49 | **Mecânica** |  |  | 15% → 17% |  |
| 50 | **CP-F0009-0000-MB-M-00001** |  |  | 46% → 67% |  |
| 52 | Análise Tecnored |  | 2026-05-20 A | 75% → 100% | 152d → none |
| 53 | Atendimento de comentários | 2026-05-21 A |  | 0% → 50% |  |
| 96 | **Estrutura metálica** | 2026-06-10 A |  | 0% → 7% |  |
| 97 | **CP-F0009-0000-MB-S-00001** | 2026-06-10 A |  | 0% → 21% | 11d → 134d |
| 98 | Emissão inicial | 2026-06-10 A |  | 0% → 50% |  |

## Version 5 (data date 2026-07-06, saved 2026-07-06, file CR-F0009-0000-MB-F-00001 02-07-2026.mpp)

Note of the change: Primeira versao dashboard

Last finish 2026-12-23 → 2026-12-25 (+2d).

Added:

| ID | Task | Duration | Start | Finish | Predecessors | Constraint |
| --- | --- | --- | --- | --- | --- | --- |
| 139 | **LI-F0009-0000-MB-J-00001** | 7d | 2026-07-06 | 2026-07-16 |  |  |
| 140 | Emissão inicial | 3d | 2026-07-06 | 2026-07-08 |  | start no earlier than 2026-07-06 |
| 141 | Análise Tecnored | 1d | 2026-07-13 | 2026-07-13 | 140 |  |
| 142 | Atendimento de comentários | 2d | 2026-07-14 | 2026-07-15 | 141 |  |
| 143 | Aprovação | 1d | 2026-07-16 | 2026-07-16 | 142 |  |
| 144 | **LW-F0009-0000-MB-J-00001** | 7d | 2026-07-02 A | 2026-07-14 |  |  |
| 145 | Emissão inicial | 3d | 2026-07-02 A | 2026-07-06 |  | start no earlier than 2026-06-30 |
| 146 | Análise Tecnored | 1d | 2026-07-07 | 2026-07-07 | 145 |  |
| 147 | Atendimento de comentários | 2d | 2026-07-08 | 2026-07-13 | 146 |  |
| 148 | Aprovação | 1d | 2026-07-14 | 2026-07-14 | 147 |  |

Changed:

| ID | Task | Start | Finish | Duration | Complete | Total float | Predecessors | Other |
| --- | --- | --- | --- | --- | --- | --- | --- | --- |
| 1 | **F0009 - Programa Marabá** |  | 2026-12-23 → 2026-12-25 (+2d) | 158d → 157.5d | 30% → 29% |  |  |  |
| 2 | **Área 0000 -Documento geral** |  | 2026-12-23 → 2026-12-25 (+2d) | 158d → 157.5d | 30% → 29% |  |  |  |
| 6 | **Planejamento** |  | 2026-12-23 → 2026-12-25 (+2d) | 148d → 147.5d |  |  |  |  |
| 7 | **LD-F0009-0000-MB-F-00001** |  | 2026-12-23 → 2026-12-25 (+2d) | 148d → 147.5d |  |  |  |  |
| 10 | Atendimento de comentários |  | 2026-12-17 → 2026-12-21 (+4d) |  |  |  |  |  |
| 11 | Aprovação | 2026-12-23 → 2026-12-24 (+1d) | 2026-12-23 → 2026-12-25 (+2d) |  |  |  |  |  |
| 17 | **Coordenação** |  | 2026-07-21 → 2026-07-22 (+1d) | 37d → 36d |  | 111d → 111.5d |  |  |
| 23 | **LP-F0009-0000-MB-G-00001** |  | 2026-07-21 → 2026-07-22 (+1d) | 37d → 36d |  | 111d → 111.5d |  |  |
| 26 | Atendimento de comentários |  | 2026-07-20 → 2026-07-21 (+1d) |  |  | 111d → 111.5d |  |  |
| 27 | Aprovação | 2026-07-21 → 2026-07-22 (+1d) | 2026-07-21 → 2026-07-22 (+1d) |  |  | 111d → 111.5d |  |  |
| 28 | **Processo** |  | 2026-12-08 → 2026-12-10 (+2d) |  |  | 11d → 10.5d |  |  |
| 34 | **MD-F0009-0000-MB-P-00001** | 2026-11-30 → 2026-12-02 (+2d) | 2026-12-08 → 2026-12-10 (+2d) |  |  | 11d → 10.5d |  |  |
| 35 | Emissão inicial | 2026-11-30 → 2026-12-02 (+2d) | 2026-12-02 → 2026-12-04 (+2d) |  |  | 11d → 10.5d |  |  |
| 36 | Análise Tecnored | 2026-12-03 → 2026-12-07 (+4d) | 2026-12-03 → 2026-12-07 (+4d) |  |  | 11d → 10.5d |  |  |
| 37 | Atendimento de comentários | 2026-12-04 → 2026-12-08 (+4d) | 2026-12-07 → 2026-12-09 (+2d) |  |  | 11d → 10.5d |  |  |
| 38 | Aprovação | 2026-12-08 → 2026-12-10 (+2d) | 2026-12-08 → 2026-12-10 (+2d) |  |  | 11d → 10.5d |  |  |
| 49 | **Mecânica** |  | 2026-11-11 → 2026-11-13 (+2d) |  | 17% → 16% | 30d → 29.5d |  |  |
| 55 | **MD-F0009-0000-MB-M-00001** | 2026-11-04 → 2026-11-06 (+2d) | 2026-11-11 → 2026-11-13 (+2d) |  |  | 30d → 29.5d |  |  |
| 56 | Emissão inicial | 2026-11-04 → 2026-11-06 (+2d) | 2026-11-05 → 2026-11-09 (+4d) |  |  | 30d → 29.5d |  |  |
| 57 | Análise Tecnored | 2026-11-06 → 2026-11-10 (+4d) | 2026-11-06 → 2026-11-10 (+4d) |  |  | 30d → 29.5d |  |  |
| 58 | Atendimento de comentários | 2026-11-09 → 2026-11-11 (+2d) | 2026-11-10 → 2026-11-12 (+2d) |  |  | 30d → 29.5d |  |  |
| 59 | Aprovação | 2026-11-11 → 2026-11-13 (+2d) | 2026-11-11 → 2026-11-13 (+2d) |  |  | 30d → 29.5d |  |  |
| 60 | **AG-F0009-0000-MB-L-00001** | 2026-11-04 → 2026-11-06 (+2d) | 2026-11-11 → 2026-11-13 (+2d) |  |  | 30d → 29.5d |  |  |
| 61 | Emissão inicial | 2026-11-04 → 2026-11-06 (+2d) | 2026-11-05 → 2026-11-09 (+4d) |  |  | 30d → 29.5d |  |  |
| 62 | Análise Tecnored | 2026-11-06 → 2026-11-10 (+4d) | 2026-11-06 → 2026-11-10 (+4d) |  |  | 30d → 29.5d |  |  |
| 63 | Atendimento de comentários | 2026-11-09 → 2026-11-11 (+2d) | 2026-11-10 → 2026-11-12 (+2d) |  |  | 30d → 29.5d |  |  |
| 64 | Aprovação | 2026-11-11 → 2026-11-13 (+2d) | 2026-11-11 → 2026-11-13 (+2d) |  |  | 30d → 29.5d |  |  |
| 65 | **ET-F0009-0000-MB-M-00001** | 2026-11-04 → 2026-07-06 (-121d) | 2026-11-11 → 2026-07-16 (-118d) | 6d → 7d |  | 30d → 115.5d |  |  |
| 66 | Emissão inicial | 2026-11-04 → 2026-07-06 (-121d) | 2026-11-05 → 2026-07-08 (-120d) | 2d → 3d |  | 30d → 115.5d | 51FS+120d → none | constraint start no earlier than 2026-06-29 → start no earlier than 2026-07-06 |
| 67 | Análise Tecnored | 2026-11-06 → 2026-07-13 (-116d) | 2026-11-06 → 2026-07-13 (-116d) |  |  | 30d → 115.5d |  |  |
| 68 | Atendimento de comentários | 2026-11-09 → 2026-07-14 (-118d) | 2026-11-10 → 2026-07-15 (-118d) |  |  | 30d → 115.5d |  |  |
| 69 | Aprovação | 2026-11-11 → 2026-07-16 (-118d) | 2026-11-11 → 2026-07-16 (-118d) |  |  | 30d → 115.5d |  |  |
| 70 | **Tubulação/Utilidades** |  | 2026-12-11 → 2026-12-15 (+4d) |  |  | 8d → 7.5d |  |  |
| 76 | **MD-F0009-0000-MB-U-00001** | 2026-11-30 → 2026-12-02 (+2d) | 2026-12-08 → 2026-12-10 (+2d) |  |  | 8d → 7.5d |  |  |
| 77 | Emissão inicial | 2026-11-30 → 2026-12-02 (+2d) | 2026-12-02 → 2026-12-04 (+2d) |  |  | 8d → 7.5d |  |  |
| 78 | Análise Tecnored | 2026-12-03 → 2026-12-07 (+4d) | 2026-12-03 → 2026-12-07 (+4d) |  |  | 11d → 10.5d |  |  |
| 79 | Atendimento de comentários | 2026-12-04 → 2026-12-08 (+4d) | 2026-12-07 → 2026-12-09 (+2d) |  |  | 11d → 10.5d |  |  |
| 80 | Aprovação | 2026-12-08 → 2026-12-10 (+2d) | 2026-12-08 → 2026-12-10 (+2d) |  |  | 11d → 10.5d |  |  |
| 81 | **ML-F0009-0000-MB-T-00001** | 2026-12-03 → 2026-12-07 (+4d) | 2026-12-11 → 2026-12-15 (+4d) |  |  | 8d → 7.5d |  |  |
| 82 | Emissão inicial | 2026-12-03 → 2026-12-07 (+4d) | 2026-12-07 → 2026-12-09 (+2d) |  |  | 8d → 7.5d |  |  |
| 83 | Análise Tecnored | 2026-12-08 → 2026-12-10 (+2d) | 2026-12-08 → 2026-12-10 (+2d) |  |  | 8d → 7.5d |  |  |
| 84 | Atendimento de comentários | 2026-12-09 → 2026-12-11 (+2d) | 2026-12-10 → 2026-12-14 (+4d) |  |  | 8d → 7.5d |  |  |
| 85 | Aprovação | 2026-12-11 → 2026-12-15 (+4d) | 2026-12-11 → 2026-12-15 (+4d) |  |  | 8d → 7.5d |  |  |
| 86 | **LK-F0009-0000-MB-T-00001** | 2026-12-03 → 2026-12-07 (+4d) | 2026-12-11 → 2026-12-15 (+4d) |  |  | 8d → 7.5d |  |  |
| 87 | Emissão inicial | 2026-12-03 → 2026-12-07 (+4d) | 2026-12-07 → 2026-12-09 (+2d) |  |  | 8d → 7.5d |  |  |
| 88 | Análise Tecnored | 2026-12-08 → 2026-12-10 (+2d) | 2026-12-08 → 2026-12-10 (+2d) |  |  | 8d → 7.5d |  |  |
| 89 | Atendimento de comentários | 2026-12-09 → 2026-12-11 (+2d) | 2026-12-10 → 2026-12-14 (+4d) |  |  | 8d → 7.5d |  |  |
| 90 | Aprovação | 2026-12-11 → 2026-12-15 (+4d) | 2026-12-11 → 2026-12-15 (+4d) |  |  | 8d → 7.5d |  |  |
| 91 | **ET-F0009-0000-MB-T-00001** | 2026-12-03 → 2026-07-06 (-150d) | 2026-12-11 → 2026-07-16 (-148d) |  |  | 8d → 115.5d |  |  |
| 92 | Emissão inicial | 2026-12-03 → 2026-07-06 (-150d) | 2026-12-07 → 2026-07-08 (-152d) |  |  | 8d → 115.5d | 77 → none | constraint none → start no earlier than 2026-07-06 |
| 93 | Análise Tecnored | 2026-12-08 → 2026-07-13 (-148d) | 2026-12-08 → 2026-07-13 (-148d) |  |  | 8d → 115.5d |  |  |
| 94 | Atendimento de comentários | 2026-12-09 → 2026-07-14 (-148d) | 2026-12-10 → 2026-07-15 (-148d) |  |  | 8d → 115.5d |  |  |
| 95 | Aprovação | 2026-12-11 → 2026-07-16 (-148d) | 2026-12-11 → 2026-07-16 (-148d) |  |  | 8d → 115.5d |  |  |
| 96 | **Estrutura metálica** |  | 2026-12-08 → 2026-12-10 (+2d) |  |  | 11d → 10.5d |  |  |
| 102 | **MD-F0009-0000-MB-S-00001** | 2026-11-30 → 2026-12-02 (+2d) | 2026-12-08 → 2026-12-10 (+2d) |  |  | 11d → 10.5d |  |  |
| 103 | Emissão inicial | 2026-11-30 → 2026-12-02 (+2d) | 2026-12-02 → 2026-12-04 (+2d) |  |  | 11d → 10.5d |  |  |
| 104 | Análise Tecnored | 2026-12-03 → 2026-12-07 (+4d) | 2026-12-03 → 2026-12-07 (+4d) |  |  | 11d → 10.5d |  |  |
| 105 | Atendimento de comentários | 2026-12-04 → 2026-12-08 (+4d) | 2026-12-07 → 2026-12-09 (+2d) |  |  | 11d → 10.5d |  |  |
| 106 | Aprovação | 2026-12-08 → 2026-12-10 (+2d) | 2026-12-08 → 2026-12-10 (+2d) |  |  | 11d → 10.5d |  |  |
| 107 | **ET-F0009-0000-MB-S-00001** | 2026-11-30 → 2026-07-06 (-147d) | 2026-12-08 → 2026-07-16 (-145d) |  |  | 11d → 115.5d |  |  |
| 108 | Emissão inicial | 2026-11-30 → 2026-07-06 (-147d) | 2026-12-02 → 2026-07-08 (-147d) |  |  | 11d → 115.5d | 98FS+120d → none | constraint none → start no earlier than 2026-07-06 |
| 109 | Análise Tecnored | 2026-12-03 → 2026-07-13 (-143d) | 2026-12-03 → 2026-07-13 (-143d) |  |  | 11d → 115.5d |  |  |
| 110 | Atendimento de comentários | 2026-12-04 → 2026-07-14 (-143d) | 2026-12-07 → 2026-07-15 (-145d) |  |  | 11d → 115.5d |  |  |
| 111 | Aprovação | 2026-12-08 → 2026-07-16 (-145d) | 2026-12-08 → 2026-07-16 (-145d) |  |  | 11d → 115.5d |  |  |
| 112 | **Elétrica** |  | 2026-12-18 → 2026-12-22 (+4d) |  | 25% → 29% | 3d → 2.5d |  |  |
| 118 | **MD-F0009-0000-MB-E-00001** | 2026-12-04 → 2026-12-08 (+4d) | 2026-12-18 → 2026-12-22 (+4d) |  |  | 3d → 2.5d |  |  |
| 119 | Emissão inicial | 2026-12-04 → 2026-12-08 (+4d) | 2026-12-14 → 2026-12-16 (+2d) |  |  | 3d → 2.5d |  |  |
| 120 | Análise Tecnored | 2026-12-15 → 2026-12-17 (+2d) | 2026-12-15 → 2026-12-17 (+2d) |  |  | 3d → 2.5d |  |  |
| 121 | Atendimento de comentários | 2026-12-16 → 2026-12-18 (+2d) | 2026-12-17 → 2026-12-21 (+4d) |  |  | 3d → 2.5d |  |  |
| 122 | Aprovação | 2026-12-18 → 2026-12-22 (+4d) | 2026-12-18 → 2026-12-22 (+4d) |  |  | 3d → 2.5d |  |  |

| ID | Task | Start | Finish | Duration | Complete | Total float | Predecessors | Other |
| --- | --- | --- | --- | --- | --- | --- | --- | --- |
| 123 | **ET-F0009-0000-MB-E-00001** | 2026-12-04 → 2026-07-06 (-151d) | 2026-12-18 → 2026-07-16 (-155d) | 11d → 7d |  | 3d → 115.5d |  |  |
| 124 | Emissão inicial | 2026-12-04 → 2026-07-06 (-151d) | 2026-12-14 → 2026-07-08 (-159d) | 7d → 3d |  | 3d → 115.5d | 113FS+120d → none | constraint none → start no earlier than 2026-07-06 |
| 125 | Análise Tecnored | 2026-12-15 → 2026-07-13 (-155d) | 2026-12-15 → 2026-07-13 (-155d) |  |  | 3d → 115.5d |  |  |
| 126 | Atendimento de comentários | 2026-12-16 → 2026-07-14 (-155d) | 2026-12-17 → 2026-07-15 (-155d) |  |  | 3d → 115.5d |  |  |
| 127 | Aprovação | 2026-12-18 → 2026-07-16 (-155d) | 2026-12-18 → 2026-07-16 (-155d) |  |  | 3d → 115.5d |  |  |
| 128 | **Automação e instrumentação** |  | 2026-11-23 → 2026-11-25 (+2d) |  | 18% → 19% | 22d → 21.5d |  |  |
| 134 | **MD-F0009-0000-MB-J-00001** | 2026-11-13 → 2026-11-17 (+4d) | 2026-11-23 → 2026-11-25 (+2d) |  |  | 22d → 21.5d |  |  |
| 135 | Emissão inicial | 2026-11-13 → 2026-11-17 (+4d) | 2026-11-17 → 2026-11-19 (+2d) |  |  | 22d → 21.5d |  |  |
| 136 | Análise Tecnored | 2026-11-18 → 2026-11-20 (+2d) | 2026-11-18 → 2026-11-20 (+2d) |  |  | 22d → 21.5d |  |  |
| 137 | Atendimento de comentários | 2026-11-19 → 2026-11-23 (+4d) | 2026-11-20 → 2026-11-24 (+4d) |  |  | 22d → 21.5d |  |  |
| 138 | Aprovação | 2026-11-23 → 2026-11-25 (+2d) | 2026-11-23 → 2026-11-25 (+2d) |  |  | 22d → 21.5d |  |  |
| 149 | **Civil** | 2026-09-04 → 2026-09-08 (+4d) | 2026-09-04 → 2026-09-08 (+4d) |  |  | 78d → 77.5d |  |  |
| 150 | Avaliações gerais | 2026-09-04 → 2026-09-08 (+4d) | 2026-09-04 → 2026-09-08 (+4d) |  |  | 78d → 77.5d |  |  |

## Version 6 (data date 2026-07-07, saved 2026-07-07, file CR-F0009-0000-MB-F-00001 07-07-2026.mpp)

Note of the change: Primeira versao dashboard

Last finish stays 2026-12-25. Complete tasks 24 → 28.

Added:

| ID | Task | Duration | Start | Finish | Predecessors | Constraint |
| --- | --- | --- | --- | --- | --- | --- |
| 12 | **EA-F0009-0000-MB-G-00001** | 16d | 2026-06-03 A | 2026-06-24 |  |  |
| 23 | **RM-F0009-0000-MB-G-00002** | 7d | 2026-06-22 | 2026-06-30 |  |  |
| 28 | **RL-F0009-0000-MB-G-00001** | 4d | 2026-06-26 | 2026-07-01 |  |  |
| 39 | Emissão inicial | 3d | 2026-06-01 A | 2026-06-03 A | 3FS+10d |  |
| 40 | Análise Tecnored | 1d | 2026-06-04 A | 2026-06-04 A | 39 |  |
| 41 | Atendimento de comentários | 2d | 2026-07-17 A | 2026-07-21 | 40FS+30d |  |
| 42 | Aprovação | 1d | 2026-07-22 | 2026-07-22 | 41 |  |
| 71 | Emissão inicial | 2d | 2026-11-06 | 2026-11-09 | 66FS+120d |  |
| 72 | Análise Tecnored | 1d | 2026-11-10 | 2026-11-10 | 71 |  |
| 73 | Atendimento de comentários | 2d | 2026-11-11 | 2026-11-12 | 72 |  |
| 74 | Aprovação | 1d | 2026-11-13 | 2026-11-13 | 73 |  |
| 75 | **AG-F0009-0000-MB-L-00002** | 6d | 2026-11-06 | 2026-11-13 |  |  |
| 76 | Emissão inicial | 2d | 2026-11-06 | 2026-11-09 | 66FS+120d |  |
| 77 | Análise Tecnored | 1d | 2026-11-10 | 2026-11-10 | 76 |  |
| 78 | Atendimento de comentários | 2d | 2026-11-11 | 2026-11-12 | 77 |  |
| 79 | Aprovação | 1d | 2026-11-13 | 2026-11-13 | 78 |  |
| 80 | **AG-F0009-0000-MB-L-00003** | 6d | 2026-11-06 | 2026-11-13 |  |  |
| 81 | Emissão inicial | 2d | 2026-11-06 | 2026-11-09 | 66FS+120d |  |
| 82 | Análise Tecnored | 1d | 2026-11-10 | 2026-11-10 | 81 |  |
| 83 | Atendimento de comentários | 2d | 2026-11-11 | 2026-11-12 | 82 |  |
| 84 | Aprovação | 1d | 2026-11-13 | 2026-11-13 | 83 |  |
| 85 | **AG-F0009-0000-MB-L-00004** | 6d | 2026-11-06 | 2026-11-13 |  |  |
| 150 | Emissão inicial | 0d | 2026-05-28 A | 2026-05-28 A | 45FF |  |
| 151 | Análise Tecnored | 1d | 2026-05-29 A | 2026-05-29 A | 150 |  |
| 152 | Atendimento de comentários | 2d | 2026-06-01 A | 2026-06-02 | 151 |  |
| 153 | Aprovação | 1d | 2026-06-03 | 2026-06-03 | 152 |  |
| 154 | **CP-F0009-0000-MB-J-00002** | 4d | 2026-05-28 A | 2026-06-03 |  |  |
| 176 | Emissão inicial | 3d | 2026-09-09 | 2026-09-11 | 45FS+60d | start no earlier than 2026-09-08 |
| 177 | Análise Tecnored | 1d | 2026-09-14 | 2026-09-14 | 176 |  |
| 178 | Atendimento de comentários | 2d | 2026-09-15 | 2026-09-16 | 177 |  |
| 179 | Aprovação | 1d | 2026-09-17 | 2026-09-17 | 178 |  |

Removed: 81 ML-F0009-0000-MB-T-00001; 86 LK-F0009-0000-MB-T-00001

Changed:

| ID | Task | Start | Finish | Duration | Complete | Total float | Predecessors | Other |
| --- | --- | --- | --- | --- | --- | --- | --- | --- |
| 6 | **Planejamento** |  |  |  | 77% → 79% |  |  |  |
| 7 | **LD-F0009-0000-MB-G-00001** |  |  |  |  |  |  | was named LD-F0009-0000-MB-F-00001 |
| 13 | Emissão inicial | 2026-06-22 A → 2026-06-03 A (-19d) | 2026-06-24 A → 2026-06-05 A (-19d) |  |  |  | 3FS+45d → 8 | baseline start none → 2026-04-30; baseline finish none → 2026-05-04 |
| 14 | Análise Tecnored | 2026-06-25 A → 2026-06-08 A (-17d) | 2026-06-25 A → 2026-06-10 A (-15d) | 1d → 3d |  |  |  | baseline start none → 2026-05-05; baseline finish none → 2026-05-05 |
| 15 | Atendimento de comentários | 2026-06-26 A → 2026-06-23 A (-3d) | 2026-06-29 → 2026-06-23 (-6d) | 2d → 1d |  | 125.5d → 129.5d | 14 → 14FS+8d | baseline start none → 2026-05-13; baseline finish none → 2026-05-18 |
| 16 | Aprovação | 2026-06-30 → 2026-06-24 (-6d) | 2026-06-30 → 2026-06-24 (-6d) |  |  | 126d → 129.5d |  | baseline start none → 2026-05-18; baseline finish none → 2026-05-19 |
| 22 | **Coordenação** |  |  |  | 71% → 40% |  |  |  |
| 24 | Emissão inicial | 2026-06-01 A → 2026-06-22 (+21d) | 2026-06-03 A → 2026-06-24 (+21d) |  | 100% → 0% | none → 125.5d | 3FS+10d → none | constraint none → start no earlier than 2026-06-22; baseline start 2026-04-27 → 2026-06-11; baseline finish 2026-04-29 → 2026-06-15 |
| 25 | Análise Tecnored | 2026-06-04 A → 2026-06-25 (+21d) | 2026-06-04 A → 2026-06-25 (+21d) |  | 100% → 0% | none → 125.5d |  | baseline start 2026-04-30 → 2026-06-16; baseline finish 2026-04-30 → 2026-06-16 |
| 26 | Atendimento de comentários | 2026-07-17 A → 2026-06-26 (-21d) | 2026-07-21 → 2026-06-29 (-22d) |  | 50% → 0% | 111.5d → 125.5d | 25FS+30d → 25 | baseline start 2026-06-12 → 2026-06-17; baseline finish 2026-06-15 → 2026-06-18 |
| 27 | Aprovação | 2026-07-22 → 2026-06-30 (-22d) | 2026-07-22 → 2026-06-30 (-22d) |  |  | 111.5d → 125.5d |  | baseline start 2026-06-16 → 2026-06-19; baseline finish 2026-06-16 → 2026-06-19 |
| 29 | Emissão inicial | 2026-12-07 → 2026-06-26 (-164d) | 2026-12-09 → 2026-06-28 (-164d) | 3d → 1d |  | 7.5d → 124.5d | 107 → none | constraint none → finish no earlier than 2026-06-28; baseline start 2026-05-28 → 2026-06-30; baseline finish 2026-06-01 → 2026-07-02 |
| 30 | Análise Tecnored | 2026-12-10 → 2026-06-29 (-164d) | 2026-12-10 → 2026-06-29 (-164d) |  |  | 7.5d → 124.5d |  | constraint none → start no earlier than 2026-06-26; baseline start 2026-06-02 → 2026-07-03; baseline finish 2026-06-02 → 2026-07-03 |
| 31 | Atendimento de comentários | 2026-12-11 → 2026-06-30 (-164d) | 2026-12-14 → 2026-06-30 (-167d) | 2d → 1d |  | 7.5d → 124.5d |  | constraint none → start no earlier than 2026-06-29; baseline start 2026-06-03 → 2026-07-06; baseline finish 2026-06-04 → 2026-07-07 |
| 32 | Aprovação | 2026-12-15 → 2026-07-01 (-167d) | 2026-12-15 → 2026-07-01 (-167d) |  |  | 7.5d → 124.5d |  | constraint none → start no earlier than 2026-06-30; baseline start 2026-06-05 → 2026-07-08; baseline finish 2026-06-05 → 2026-07-08 |
| 34 | Emissão inicial | 2026-12-07 → 2026-06-22 A (-168d) | 2026-12-09 → 2026-06-24 A (-168d) |  | 0% → 100% | 7.5d → none | 107 → 3FS+45d | baseline start 2026-06-02 → none; baseline finish 2026-06-04 → none |
| 35 | Análise Tecnored | 2026-12-10 → 2026-06-25 A (-168d) | 2026-12-10 → 2026-06-25 A (-168d) |  | 0% → 100% | 7.5d → none |  | baseline start 2026-06-05 → none; baseline finish 2026-06-05 → none |
| 36 | Atendimento de comentários | 2026-12-11 → 2026-06-26 A (-168d) | 2026-12-14 → 2026-06-29 (-168d) |  | 0% → 50% | 7.5d → 125.5d |  | baseline start 2026-06-08 → none; baseline finish 2026-06-09 → none |
| 37 | Aprovação | 2026-12-15 → 2026-06-30 (-168d) | 2026-12-15 → 2026-06-30 (-168d) |  |  | 7.5d → 125.5d |  | baseline start 2026-06-10 → none; baseline finish 2026-06-10 → none |
| 45 | Emissão inicial |  |  |  |  |  | 18 → 18, 13 |  |
| 59 | **FG-F0009-0000-MB-P-00002** |  |  |  |  |  |  | was named FG-F0009-0000-MB-P-00001 |
| 64 | **Mecânica** |  |  |  | 16% → 9% |  |  |  |
| 100 | **Tubulação/Utilidades** |  | 2026-12-15 → 2026-12-10 (-5d) | 135d → 132d | 24% → 39% | 7.5d → 10.5d |  |  |
| 148 | **Automação e instrumentação** |  |  |  | 19% → 23% |  |  |  |
| 160 | Emissão inicial |  |  |  |  |  | 155FS+120d → 155FS+120d, 150FS+120d |  |
| 174 | **Civil** | 2026-09-08 → 2026-09-09 (+1d) | 2026-09-08 → 2026-09-17 (+9d) | 0d → 7d |  | 77.5d → 70.5d |  |  |
| 175 | **CP-F0009-0000-MB-C-00001** | 2026-09-08 → 2026-09-09 (+1d) | 2026-09-08 → 2026-09-17 (+9d) | 0d → 7d |  | 77.5d → 70.5d | 45FS+60d → none | was named Avaliações gerais |

## Version 7 (data date 2026-07-08, saved 2026-07-08, file CR-F0009-0000-MB-F-00001 13-07-2026.mpp)

Note of the change: Implementa estrutura inicial do histograma

Last finish 2026-12-25 → 2027-01-06 (+12d). Complete tasks 28 → 29.

Changed:

| ID | Task | Start | Finish | Duration | Complete | Total float |
| --- | --- | --- | --- | --- | --- | --- |
| 1 | **F0009 - Programa Marabá** |  | 2026-12-25 → 2027-01-06 (+12d) | 157.5d → 166d |  |  |
| 2 | **Área 0000 -Documento geral** |  | 2026-12-25 → 2027-01-06 (+12d) | 157.5d → 166d |  |  |
| 116 | **Estrutura metálica** | 2026-06-10 A → 2026-07-06 A (+26d) | 2026-12-10 → 2027-01-06 (+27d) | 130d → 131d |  | 10.5d → 0d |
| 117 | **CP-F0009-0000-MB-S-00001** | 2026-06-10 A → 2026-07-07 A (+27d) | 2026-06-18 → 2026-07-17 (+29d) |  |  | 133.5d → 123d |
| 118 | Emissão inicial | 2026-06-10 A → 2026-07-07 A (+27d) | 2026-06-12 → 2026-07-13 (+31d) |  |  | 10.5d → 0d |
| 119 | Análise Tecnored | 2026-06-15 → 2026-07-14 (+29d) | 2026-06-15 → 2026-07-14 (+29d) |  |  | 133.5d → 123d |
| 120 | Atendimento de comentários | 2026-06-16 → 2026-07-15 (+29d) | 2026-06-17 → 2026-07-16 (+29d) |  |  | 133.5d → 123d |
| 121 | Aprovação | 2026-06-18 → 2026-07-17 (+29d) | 2026-06-18 → 2026-07-17 (+29d) |  |  | 133.5d → 123d |
| 122 | **MD-F0009-0000-MB-S-00001** | 2026-12-02 → 2026-12-29 (+27d) | 2026-12-10 → 2027-01-06 (+27d) |  |  | 10.5d → 0d |
| 123 | Emissão inicial | 2026-12-02 → 2026-12-29 (+27d) | 2026-12-04 → 2026-12-31 (+27d) |  |  | 10.5d → 0d |
| 124 | Análise Tecnored | 2026-12-07 → 2027-01-01 (+25d) | 2026-12-07 → 2027-01-01 (+25d) |  |  | 10.5d → 0d |
| 125 | Atendimento de comentários | 2026-12-08 → 2027-01-04 (+27d) | 2026-12-09 → 2027-01-05 (+27d) |  |  | 10.5d → 0d |
| 126 | Aprovação | 2026-12-10 → 2027-01-06 (+27d) | 2026-12-10 → 2027-01-06 (+27d) |  |  | 10.5d → 0d |
| 148 | **Automação e instrumentação** |  |  |  | 23% → 24% | 21.5d → 30d |
| 169 | **LW-F0009-0000-MB-J-00001** |  |  |  | 39% → 43% | 117.5d → 126d |
| 170 | Emissão inicial |  | 2026-07-06 A |  | 90% → 100% | 117.5d → none |
