# Plano macro 0207

How a schedule from MS Project changed from version to version. A marks actual dates.

## Version 1 (data date 2026-07-17, saved 2026-07-22, file Plano macro 0207.mpp)

Note of the change: Ajustes cronograma integrado e hachuras

| ID | WBS | Task | Duration | Start | Finish | Predecessors | Complete | Total float | Constraint |
| --- | --- | --- | --- | --- | --- | --- | --- | --- | --- |
| 1 | 1 | **F0009 - 0207 - Stock House** | 27d | 2026-07-13 A | 2026-08-18 |  | 5% | 0d |  |
| 2 | 1.1 | **Processo** | 6d | 2026-07-21 | 2026-07-28 |  |  | 15d |  |
| 3 |  | MC/FG | 3d | 2026-07-21 | 2026-07-23 | 6 |  | 15d |  |
| 4 |  | ET | 3d | 2026-07-24 | 2026-07-28 | 3 |  | 15d |  |
| 5 | 1.2 | **Mecânica** | 21d | 2026-07-13 A | 2026-08-10 |  | 15% | 6d |  |
| 6 |  | FG | 6d | 2026-07-13 A | 2026-07-20 |  | 83% | 0.4d | start no earlier than 2026-07-13 |
| 7 |  | ML - silo | 3d | 2026-07-21 A | 2026-07-23 | 6 | 33% | 0d |  |
| 8 |  | ML - Equipamentos | 4d | 2026-07-24 | 2026-07-29 | 7 |  | 0d |  |
| 9 |  | ML - Despoeiramento | 4d | 2026-07-30 | 2026-08-04 | 8 |  | 0d |  |
| 10 |  | ML - Correia | 4d | 2026-07-30 | 2026-08-04 | 8 |  | 1d |  |
| 11 |  | AG - silo | 2d | 2026-08-05 | 2026-08-06 | 9 |  | 6d |  |
| 12 |  | AG - Equipamentos | 2d | 2026-08-05 | 2026-08-06 | 10 |  | 6d |  |
| 13 |  | AG - Despoeiramento | 2d | 2026-08-07 | 2026-08-10 | 11 |  | 6d |  |
| 14 |  | AG - Correia | 2d | 2026-08-07 | 2026-08-10 | 12 |  | 6d |  |
| 15 |  | MC/LE | 9d | 2026-07-21 | 2026-07-31 | 6 |  | 10d |  |
| 16 |  | DR | 1d | 2026-08-05 | 2026-08-05 | 10 |  | 9d |  |
| 17 | 1.3 | **Tubulação** | 16d | 2026-07-21 | 2026-08-11 |  |  | 5d |  |
| 18 |  | MC | 2d | 2026-07-21 | 2026-07-22 | 6 |  | 17d |  |
| 19 |  | FG | 2d | 2026-07-23 | 2026-07-24 | 6, 18 |  | 17d |  |
| 20 |  | AG | 3d | 2026-08-05 | 2026-08-07 | 10 |  | 5d |  |
| 21 |  | PQ | 1d | 2026-08-10 | 2026-08-10 | 20 |  | 6d |  |
| 22 |  | ET -Despoeiramento | 2d | 2026-08-10 | 2026-08-11 | 20 |  | 5d |  |
| 23 | 1.4 | **Estrutura** | 18d | 2026-07-24 | 2026-08-18 |  |  | 0d |  |
| 24 |  | ML e MC - silos | 3d | 2026-07-24 | 2026-07-28 | 7 |  | 1d |  |
| 25 |  | AG e PL - silos | 3d | 2026-07-29 | 2026-07-31 | 24 |  | 1d |  |
| 26 |  | ML e MC Equipamentos | 2d | 2026-07-30 | 2026-07-31 | 8 |  | 1d |  |
| 27 |  | AG e PL Equipamentos | 4d | 2026-08-03 | 2026-08-06 | 26, 25 |  | 1d |  |
| 28 |  | ML e MC - Despoeiramento | 3d | 2026-08-05 | 2026-08-07 | 9 |  | 0d |  |
| 29 |  | AG e PL - Despoeiramento | 2d | 2026-08-10 | 2026-08-11 | 28, 27 |  | 0d |  |
| 30 |  | ML e MC - Correia | 3d | 2026-08-05 | 2026-08-07 | 10 |  | 2d |  |
| 31 |  | AG e PL - Correia | 5d | 2026-08-12 | 2026-08-18 | 30, 29 |  | 0d |  |
| 32 |  | PQ | 3d | 2026-08-10 | 2026-08-12 | 24, 26, 28, 30 |  | 4d |  |
| 33 | 1.5 | **Elétrica** | 11d | 2026-08-03 | 2026-08-17 |  |  | 1d |  |
| 34 |  | AG | 3d | 2026-08-05 | 2026-08-07 | 10 |  | 1d |  |
| 35 |  | LR | 2d | 2026-08-03 | 2026-08-04 | 15 |  | 10d |  |
| 36 |  | MC/DU/FD/LC | 4d | 2026-08-10 | 2026-08-13 | 34 |  | 1d |  |
| 37 |  | LM/PQ | 2d | 2026-08-14 | 2026-08-17 | 36 |  | 1d |  |
| 38 | 1.6 | **Automação** | 15d | 2026-07-21 A | 2026-08-10 |  | 2% | 6d |  |
| 39 |  | FG | 3d | 2026-07-21 A | 2026-07-23 | 6 | 13% | 6d |  |
| 40 |  | AG | 3d | 2026-08-03 | 2026-08-05 | 43 |  | 9d |  |
| 41 |  | FD | 5d | 2026-07-24 | 2026-07-30 | 39 |  | 13d |  |
| 42 |  | PQ | 3d | 2026-08-06 | 2026-08-10 | 43, 44 |  | 6d |  |
| 43 |  | LI/LE/DI/RE | 6d | 2026-07-24 | 2026-07-31 | 39 |  | 6d |  |
| 44 |  | LB | 3d | 2026-08-03 | 2026-08-05 | 43 |  | 6d |  |
| 45 | 1.7 | **Civil** | 5d | 2026-08-10 | 2026-08-14 |  |  | 2d |  |
| 46 |  | MC | 3d | 2026-08-10 | 2026-08-12 | 24, 26, 28, 30 |  | 2d |  |
| 47 |  | LM | 1d | 2026-08-13 | 2026-08-13 | 46 |  | 2d |  |
| 48 |  | PQ | 1d | 2026-08-14 | 2026-08-14 | 47 |  | 2d |  |

## Version 2 (data date 2026-07-17, saved 2026-07-22, file Plano macro 0207 revisão 21072026.mpp)

Note of the change: Ajustes cronograma integrado e hachuras

Last finish 2026-08-18 → 2026-08-17 (-1d). Complete tasks 0 → 1.

Added:

| ID | Task | Duration | Start | Finish | Predecessors | Resources |
| --- | --- | --- | --- | --- | --- | --- |
| 12 | FD | 4d | 2026-08-03 | 2026-08-06 | 13 | Tarcizio |
| 14 | PQ | 1d | 2026-08-07 | 2026-08-07 | 12 | Tarcizio |

Removed: 4 ET; 10 ML - Correia; 14 AG - Correia; 30 ML e MC - Correia; 31 AG e PL - Correia

Changed:

| ID | Task | Start | Finish | Duration | Complete | Total float | Predecessors | Other |
| --- | --- | --- | --- | --- | --- | --- | --- | --- |
| 1 | **F0009 - 0207 - Stock House** | 2026-07-13 A → 2026-07-15 A (+2d) | 2026-08-18 → 2026-08-17 (-1d) | 27d → 24d | 5% → 6% |  |  |  |
| 2 | **Processo** | 2026-07-21 → 2026-07-15 A (-6d) | 2026-07-28 → 2026-07-22 (-6d) |  | 0% → 50% | 15d → 18d |  |  |
| 3 | MC | 2026-07-21 → 2026-07-17 (-4d) | 2026-07-23 → 2026-07-22 (-1d) | 3d → 4d |  | 15d → 18d | 4 → none | was named MC/FG |
| 4 | FG | 2026-07-13 A → 2026-07-15 A (+2d) | 2026-07-20 A | 6d → 4d | 83% → 100% | 0.4d → none |  | constraint start no earlier than 2026-07-13 → finish no earlier than 2026-07-20; resources Tarcizio → João; baseline start 2026-07-13 → none; baseline finish 2026-07-15 → none |
| 5 | **Mecânica** | 2026-07-13 A → 2026-07-21 A (+8d) | 2026-08-10 → 2026-08-07 (-3d) | 21d → 14d | 15% → 5% |  |  |  |
| 6 | ML - silo |  |  |  | 33% → 50% |  |  |  |
| 7 | ML - Equipamentos |  | 2026-07-29 → 2026-07-28 (-1d) | 4d → 3d |  |  |  |  |
| 8 | ML - Despoeiramento | 2026-07-30 → 2026-07-29 (-1d) | 2026-08-04 → 2026-07-31 (-4d) | 4d → 3d |  |  |  |  |
| 9 | AG - silo | 2026-08-05 → 2026-07-24 (-12d) | 2026-08-06 → 2026-07-27 (-10d) |  |  | 6d → 4d | 8 → 6 |  |
| 10 | AG - Equipamentos | 2026-08-05 → 2026-07-29 (-7d) | 2026-08-06 → 2026-07-30 (-7d) |  |  | 6d → 3d | ML - Correia → 6, 7 |  |
| 11 | AG - Despoeiramento | 2026-08-07 → 2026-08-03 (-4d) | 2026-08-10 → 2026-08-04 (-6d) |  |  | 6d → 0d | 9 → 8, 9 |  |
| 13 | MC/LE |  |  |  |  | 10d → 6d |  | resources none → Tarcizio |
| 15 | DR | 2026-08-05 → 2026-08-03 (-2d) | 2026-08-05 → 2026-08-03 (-2d) |  |  | 9d → 10d | ML - Correia → 8 |  |
| 16 | **Tubulação** |  | 2026-08-11 → 2026-08-10 (-1d) | 16d → 15d |  |  |  |  |
| 18 | FG |  |  |  |  | 17d → 16d | 4, 17 → 17 |  |
| 19 | AG |  |  |  |  |  | ML - Correia → 9, 10, 11 |  |
| 21 | ET -Despoeiramento | 2026-08-10 → 2026-07-23 (-18d) | 2026-08-11 → 2026-07-27 (-15d) | 2d → 3d |  | 5d → 15d | 19 → 17 |  |
| 22 | **Estrutura** |  | 2026-08-18 → 2026-08-10 (-8d) | 18d → 12d |  | 0d → 1d |  |  |
| 25 | ML e MC Equipamentos | 2026-07-30 → 2026-07-29 (-1d) | 2026-07-31 → 2026-07-30 (-1d) |  |  | 1d → 2d |  |  |
| 26 | AG e PL Equipamentos |  | 2026-08-06 → 2026-08-05 (-1d) | 4d → 3d |  |  |  |  |
| 27 | ML e MC - Despoeiramento | 2026-08-05 → 2026-08-03 (-2d) | 2026-08-07 → 2026-08-05 (-2d) |  |  | 0d → 1d |  |  |
| 28 | AG e PL - Despoeiramento | 2026-08-10 → 2026-08-06 (-4d) | 2026-08-11 → 2026-08-07 (-4d) |  |  | 0d → 1d |  |  |
| 29 | PQ | 2026-08-10 → 2026-08-06 (-4d) | 2026-08-12 → 2026-08-10 (-2d) |  |  | 4d → 5d | 23, 25, 27, ML e MC - Correia → 23, 25, 27 | resources Tarcizio → Paulo |
| 31 | AG |  |  |  |  | 1d → 0d | ML - Correia → 9, 10, 11 |  |
| 33 | MC/DU/FD/LC |  | 2026-08-13 → 2026-08-12 (-1d) | 4d → 3d |  | 1d → 0d |  |  |
| 34 | LM/PQ | 2026-08-14 → 2026-08-13 (-1d) |  | 2d → 3d |  | 1d → 0d |  |  |
| 43 | MC |  |  |  |  | 2d → 1d | 23, 25, 27, ML e MC - Correia → 24, 26, 28 | resources none → Rodrigo |
| 44 | LM |  |  |  |  | 2d → 1d |  | resources none → Rodrigo |
| 45 | PQ |  |  |  |  | 2d → 1d |  | resources none → Rodrigo |
