# CR-F0009-0305-MB-F-00001

How a schedule from MS Project changed from version to version. A marks actual dates.

## Version 1 (data date 2026-05-28, saved 2026-05-28, file CR-F0009-0305-MB-F-00001.mpp)

Note of the change: Primeira versao dashboard

| ID | WBS | Task | Duration | Start | Finish | Predecessors | Complete | Total float | Constraint |
| --- | --- | --- | --- | --- | --- | --- | --- | --- | --- |
| 1 | 1 | **F0009 - Programa Marabá** | 54d | 2026-04-27 A | 2026-07-09 |  | 4% | 0d |  |
| 2 | 1.1 | **Área 0000 -Documento geral** | 13d | 2026-05-19 A | 2026-06-05 |  |  | 0d |  |
| 3 | 1.1.1 | **LF-F0009-0305-MB-F-00001** | 7d | 2026-06-29 | 2026-07-07 |  |  | 2d |  |
| 4 |  | Emissão inicial | 3d | 2026-06-29 | 2026-07-01 | 16FS+45d |  | 2d |  |
| 5 |  | Análise Tecnored | 1d | 2026-07-02 | 2026-07-02 | 4 |  | 2d |  |
| 6 |  | Atendimento de comentários | 2d | 2026-07-03 | 2026-07-06 | 5 |  | 2d |  |
| 7 |  | Aprovação | 1d | 2026-07-07 | 2026-07-07 | 6 |  | 2d |  |
| 8 | 1.1.2 | **Marcos** | 13d | 2026-05-19 A | 2026-06-05 |  |  | 0d |  |
| 9 |  | Critério de projeto Processo | 0d | 2026-06-05 | 2026-06-05 |  |  |  |  |
| 10 |  | Critério de projeto Mecânica | 0d | 2026-05-19 A | 2026-05-19 A |  | 100% |  |  |
| 11 |  | Critério de projeto Tubulação | 0d | 2026-05-22 A | 2026-05-22 A |  | 100% |  |  |
| 12 |  | Critério de projeto Elétrica | 0d | 2026-06-05 | 2026-06-05 |  |  |  |  |
| 13 |  | Critério de projeto Automação | 0d | 2026-06-05 | 2026-06-05 |  |  |  |  |
| 14 |  | Critério de projeto Estrutura Metálica | 0d | 2026-06-05 | 2026-06-05 |  |  |  |  |
| 15 | 1.2 | **Área 0305 - Hot Blast Stoves** | 54d | 2026-04-27 A | 2026-07-09 |  | 4% | 0d |  |
| 16 |  | KOM - Início de projeto | 0d | 2026-04-27 A | 2026-04-27 A |  | 100% |  | start no earlier than 2026-04-27 |
| 17 | 1.2.2 | **Pendências** | 0d | 2026-04-29 A | 2026-04-29 A |  | 100% |  |  |
| 18 |  | Recebimento de dados de entrada | 0d | 2026-04-29 A | 2026-04-29 A |  | 100% |  |  |
| 19 | 1.2.3 | **Planejamento** | 25.4d | 2026-04-27 A | 2026-06-01 |  | 89% | 28.6d |  |
| 20 | 1.2.3.1 | **LD-F0009-0305-MB-F-00001** | 24d | 2026-04-27 A | 2026-05-28 |  | 91% | 30d |  |
| 21 |  | Emissão inicial | 3d | 2026-04-27 A | 2026-04-29 A | 16 | 100% |  |  |
| 22 |  | Análise Tecnored | 1d | 2026-04-30 A | 2026-04-30 A | 21 | 100% |  |  |
| 23 |  | Atendimento de comentários | 6d | 2026-05-06 A | 2026-05-13 A | 22FS+3d | 100% |  |  |
| 24 |  | Aprovação | 1d | 2026-05-28 | 2026-05-28 | 23FS+10d |  | 30d |  |
| 25 | 1.2.3.2 | **CR-F0009-0305-MB-F-00001** | 22.4d | 2026-04-30 A | 2026-06-01 |  | 86% | 28.6d |  |
| 26 |  | Emissão inicial | 3d | 2026-04-30 A | 2026-05-04 A | 21 | 100% |  |  |
| 27 |  | Análise Tecnored | 1d | 2026-05-05 A | 2026-05-05 A | 26 | 100% |  |  |
| 28 |  | Atendimento de comentários | 2d | 2026-05-13 A | 2026-05-18 A | 27FS+8d | 100% |  |  |
| 29 |  | Aprovação | 1d | 2026-05-29 | 2026-06-01 | 28FS+9d |  | 28.6d |  |
| 30 | 1.2.4 | **Coordenação** | 53d | 2026-04-27 A | 2026-07-08 |  | 16% | 1d |  |
| 31 | 1.2.4.1 | **RM-F0009-0305-MB-G-00001** | 7d | 2026-05-28 | 2026-06-05 |  |  | 1d |  |
| 32 |  | Emissão inicial | 3d | 2026-05-28 | 2026-06-01 | 16FS+23d |  | 1d |  |
| 33 |  | Análise Tecnored | 1d | 2026-06-02 | 2026-06-02 | 32 |  | 24d |  |
| 34 |  | Atendimento de comentários | 2d | 2026-06-03 | 2026-06-04 | 33 |  | 24d |  |
| 35 |  | Aprovação | 1d | 2026-06-05 | 2026-06-05 | 34 |  | 24d |  |
| 36 | 1.2.4.2 | **RM-F0009-0305MB-G-00002** | 7d | 2026-06-16 | 2026-06-24 |  |  | 1d |  |
| 37 |  | Emissão inicial | 3d | 2026-06-16 | 2026-06-18 | 32FS+10d |  | 1d |  |
| 38 |  | Análise Tecnored | 1d | 2026-06-19 | 2026-06-19 | 37 |  | 11d |  |
| 39 |  | Atendimento de comentários | 2d | 2026-06-22 | 2026-06-23 | 38 |  | 11d |  |
| 40 |  | Aprovação | 1d | 2026-06-24 | 2026-06-24 | 39 |  | 11d |  |
| 41 | 1.2.4.3 | **RL-F0009-0305-MB-G-00001** | 4d | 2026-07-02 | 2026-07-08 |  |  | 1d |  |
| 42 |  | Emissão inicial | 0d | 2026-07-02 | 2026-07-02 | 37FS+10d |  | 1d |  |
| 43 |  | Análise Tecnored | 1d | 2026-07-03 | 2026-07-03 | 42 |  | 1d |  |
| 44 |  | Atendimento de comentários | 2d | 2026-07-06 | 2026-07-07 | 43 |  | 1d |  |
| 45 |  | Aprovação | 1d | 2026-07-08 | 2026-07-08 | 44 |  | 1d |  |
| 46 | 1.2.4.4 | **LP-F0009-0305-MB-G-00001** | 37d | 2026-04-27 A | 2026-06-16 |  | 57% | 17d |  |
| 47 |  | Emissão inicial | 3d | 2026-04-27 A | 2026-04-29 A | 16 | 100% |  |  |
| 48 |  | Análise Tecnored | 1d | 2026-04-30 A | 2026-04-30 A | 47 | 100% |  |  |
| 49 |  | Atendimento de comentários | 2d | 2026-06-12 | 2026-06-15 | 48FS+30d |  | 17d |  |
| 50 |  | Aprovação | 1d | 2026-06-16 | 2026-06-16 | 49 |  | 17d |  |
| 51 | 1.2.5 | **Processo** | 10d | 2026-05-19 A | 2026-06-01 |  | 80% | 28d |  |
| 52 | 1.2.5.1 | **CP-F0009-0305-MB-P-00001** | 23d | 2026-05-11 | 2026-06-10 |  |  | 21d |  |
| 53 |  | Emissão inicial | 5d | 2026-05-11 | 2026-05-15 | 26FS+4d |  | 35d |  |
| 54 |  | Análise Tecnored | 1d | 2026-06-05 | 2026-06-05 | 53, 9 |  | 21d |  |
| 55 |  | Atendimento de comentários | 2d | 2026-06-08 | 2026-06-09 | 54 |  | 21d |  |
| 56 |  | Aprovação | 1d | 2026-06-10 | 2026-06-10 | 55 |  | 21d |  |
| 57 | 1.2.5.2 | **MD-F0009-0305-MB-P-00001** | 7d | 2026-06-17 | 2026-06-25 |  |  | 10d |  |
| 58 |  | Emissão inicial | 3d | 2026-06-17 | 2026-06-19 | 63FS+20d |  | 10d |  |
| 59 |  | Análise Tecnored | 1d | 2026-06-22 | 2026-06-22 | 58 |  | 10d |  |
| 60 |  | Atendimento de comentários | 2d | 2026-06-23 | 2026-06-24 | 59 |  | 10d |  |
| 61 |  | Aprovação | 1d | 2026-06-25 | 2026-06-25 | 60 |  | 10d |  |
| 62 | 1.2.5.3 | **FG-F0009-0305-MB-P-00001** | 10d | 2026-05-19 A | 2026-06-01 |  | 80% | 28d |  |
| 63 |  | Emissão inicial | 1d | 2026-05-19 A | 2026-05-19 A | 53FS+8d, 9 | 100% |  |  |
| 64 |  | Análise Tecnored | 1d | 2026-05-20 A | 2026-05-20 A | 63 | 100% |  |  |
| 65 |  | Atendimento de comentários | 2d | 2026-05-21 A | 2026-05-22 A | 64 | 100% |  |  |
| 66 |  | Aprovação | 1d | 2026-06-01 | 2026-06-01 | 65FS+5d |  | 28d |  |
| 67 | 1.2.6 | **Mecânica** | 37d | 2026-05-19 A | 2026-07-08 |  | 4% | 1d |  |
| 68 | 1.2.6.1 | **CP-F0009-0305-MB-M-00001** | 11d | 2026-05-08 | 2026-05-22 |  |  | 31d |  |
| 69 |  | Emissão inicial | 5d | 2026-05-08 | 2026-05-14 | 26FS+3d |  | 31d |  |
| 70 |  | Análise Tecnored | 1d | 2026-05-19 | 2026-05-19 | 69, 10 |  | 34d |  |

| ID | WBS | Task | Duration | Start | Finish | Predecessors | Complete | Total float |
| --- | --- | --- | --- | --- | --- | --- | --- | --- |
| 71 |  | Atendimento de comentários | 2d | 2026-05-20 | 2026-05-21 | 70 |  | 34d |
| 72 |  | Aprovação | 1d | 2026-05-22 | 2026-05-22 | 71 |  | 34d |
| 73 | 1.2.6.2 | **MD-F0009-0305-MB-M-00001** | 6d | 2026-06-02 | 2026-06-09 |  |  | 19d |
| 74 |  | Emissão inicial | 2d | 2026-06-02 | 2026-06-03 | 69, 81, 10 |  | 19d |
| 75 |  | Análise Tecnored | 1d | 2026-06-04 | 2026-06-04 | 74 |  | 22d |
| 76 |  | Atendimento de comentários | 2d | 2026-06-05 | 2026-06-08 | 75 |  | 22d |
| 77 |  | Aprovação | 1d | 2026-06-09 | 2026-06-09 | 76 |  | 22d |
| 78 | 1.2.6.3 | **LE-F0009-0305-MB-M-00001** | 6d | 2026-05-26 A | 2026-06-02 |  | 33% | 27d |
| 79 |  | Emissão inicial | 2d | 2026-05-26 A | 2026-05-27 A | 69, 10FS+5d | 100% |  |
| 80 |  | Análise Tecnored | 1d | 2026-05-28 | 2026-05-28 | 79 |  | 21d |
| 81 |  | Atendimento de comentários | 2d | 2026-05-29 | 2026-06-01 | 80 |  | 21d |
| 82 |  | Aprovação | 1d | 2026-06-02 | 2026-06-02 | 81 |  | 27d |
| 83 | 1.2.6.4 | **PQ-F0009-0305-MB-M-00001** | 7d | 2026-06-02 | 2026-06-10 |  |  | 21d |
| 84 |  | Emissão inicial | 3d | 2026-06-02 | 2026-06-04 | 74 |  | 21d |
| 85 |  | Análise Tecnored | 1d | 2026-06-05 | 2026-06-05 | 84 |  | 21d |
| 86 |  | Atendimento de comentários | 2d | 2026-06-08 | 2026-06-09 | 85 |  | 21d |
| 87 |  | Aprovação | 1d | 2026-06-10 | 2026-06-10 | 86 |  | 21d |
| 88 | 1.2.6.5 | **AG-F0009-0305-MB-L-00001** | 13d | 2026-06-22 | 2026-07-08 |  |  | 1d |
| 89 |  | Emissão inicial | 9d | 2026-06-22 | 2026-07-02 | 276 |  | 1d |
| 90 |  | Análise Tecnored | 1d | 2026-07-03 | 2026-07-03 | 89 |  | 1d |
| 91 |  | Atendimento de comentários | 2d | 2026-07-06 | 2026-07-07 | 90 |  | 1d |
| 92 |  | Aprovação | 1d | 2026-07-08 | 2026-07-08 | 91 |  | 1d |
| 93 | 1.2.6.6 | **AG-F0009-0305-MB-L-00002** | 13d | 2026-06-22 | 2026-07-08 |  |  | 1d |
| 94 |  | Emissão inicial | 9d | 2026-06-22 | 2026-07-02 | 276 |  | 1d |
| 95 |  | Análise Tecnored | 1d | 2026-07-03 | 2026-07-03 | 94 |  | 1d |
| 96 |  | Atendimento de comentários | 2d | 2026-07-06 | 2026-07-07 | 95 |  | 1d |
| 97 |  | Aprovação | 1d | 2026-07-08 | 2026-07-08 | 96 |  | 1d |
| 98 | 1.2.6.7 | **AG-F0009-0305-MB-L-00003** | 13d | 2026-06-22 | 2026-07-08 |  |  | 1d |
| 99 |  | Emissão inicial | 9d | 2026-06-22 | 2026-07-02 | 276 |  | 1d |
| 100 |  | Análise Tecnored | 1d | 2026-07-03 | 2026-07-03 | 99 |  | 1d |
| 101 |  | Atendimento de comentários | 2d | 2026-07-06 | 2026-07-07 | 100 |  | 1d |
| 102 |  | Aprovação | 1d | 2026-07-08 | 2026-07-08 | 101 |  | 1d |
| 103 | 1.2.6.8 | **AG-F0009-0305-MB-L-00004** | 13d | 2026-06-22 | 2026-07-08 |  |  | 1d |
| 104 |  | Emissão inicial | 9d | 2026-06-22 | 2026-07-02 | 276 |  | 1d |
| 105 |  | Análise Tecnored | 1d | 2026-07-03 | 2026-07-03 | 104 |  | 1d |
| 106 |  | Atendimento de comentários | 2d | 2026-07-06 | 2026-07-07 | 105 |  | 1d |
| 107 |  | Aprovação | 1d | 2026-07-08 | 2026-07-08 | 106 |  | 1d |
| 108 | 1.2.6.9 | **AG-F0009-0305-MB-L-00005** | 13d | 2026-06-22 | 2026-07-08 |  |  | 1d |
| 109 |  | Emissão inicial | 9d | 2026-06-22 | 2026-07-02 | 276 |  | 1d |
| 110 |  | Análise Tecnored | 1d | 2026-07-03 | 2026-07-03 | 109 |  | 1d |
| 111 |  | Atendimento de comentários | 2d | 2026-07-06 | 2026-07-07 | 110 |  | 1d |
| 112 |  | Aprovação | 1d | 2026-07-08 | 2026-07-08 | 111 |  | 1d |
| 113 | 1.2.6.10 | **AG-F0009-0305-MB-L-00006** | 13d | 2026-06-22 | 2026-07-08 |  |  | 1d |
| 114 |  | Emissão inicial | 9d | 2026-06-22 | 2026-07-02 | 276 |  | 1d |
| 115 |  | Análise Tecnored | 1d | 2026-07-03 | 2026-07-03 | 114 |  | 1d |
| 116 |  | Atendimento de comentários | 2d | 2026-07-06 | 2026-07-07 | 115 |  | 1d |
| 117 |  | Aprovação | 1d | 2026-07-08 | 2026-07-08 | 116 |  | 1d |
| 118 | 1.2.6.11 | **AG-F0009-0305-MB-L-00007** | 13d | 2026-06-22 | 2026-07-08 |  |  | 1d |
| 119 |  | Emissão inicial | 9d | 2026-06-22 | 2026-07-02 | 276 |  | 1d |
| 120 |  | Análise Tecnored | 1d | 2026-07-03 | 2026-07-03 | 119 |  | 1d |
| 121 |  | Atendimento de comentários | 2d | 2026-07-06 | 2026-07-07 | 120 |  | 1d |
| 122 |  | Aprovação | 1d | 2026-07-08 | 2026-07-08 | 121 |  | 1d |
| 123 | 1.2.6.12 | **AG-F0009-0305-MB-L-00008** | 13d | 2026-06-22 | 2026-07-08 |  |  | 1d |
| 124 |  | Emissão inicial | 9d | 2026-06-22 | 2026-07-02 | 276 |  | 1d |
| 125 |  | Análise Tecnored | 1d | 2026-07-03 | 2026-07-03 | 124 |  | 1d |
| 126 |  | Atendimento de comentários | 2d | 2026-07-06 | 2026-07-07 | 125 |  | 1d |
| 127 |  | Aprovação | 1d | 2026-07-08 | 2026-07-08 | 126 |  | 1d |
| 128 | 1.2.6.13 | **AG-F0009-0305-MB-L-00009** | 13d | 2026-06-22 | 2026-07-08 |  |  | 1d |
| 129 |  | Emissão inicial | 9d | 2026-06-22 | 2026-07-02 | 276 |  | 1d |
| 130 |  | Análise Tecnored | 1d | 2026-07-03 | 2026-07-03 | 129 |  | 1d |
| 131 |  | Atendimento de comentários | 2d | 2026-07-06 | 2026-07-07 | 130 |  | 1d |
| 132 |  | Aprovação | 1d | 2026-07-08 | 2026-07-08 | 131 |  | 1d |
| 133 | 1.2.6.14 | **PL-F0009-0305-MB-M-00001** | 12d | 2026-06-01 | 2026-06-16 |  |  | 17d |
| 134 |  | Emissão inicial | 8d | 2026-06-01 | 2026-06-10 | 160 |  | 17d |
| 135 |  | Análise Tecnored | 1d | 2026-06-11 | 2026-06-11 | 134 |  | 17d |
| 136 |  | Atendimento de comentários | 2d | 2026-06-12 | 2026-06-15 | 135 |  | 17d |
| 137 |  | Aprovação | 1d | 2026-06-16 | 2026-06-16 | 136 |  | 17d |
| 138 | 1.2.6.15 | **PL-F0009-0305-MB-M-00002** | 12d | 2026-06-01 | 2026-06-16 |  |  | 17d |
| 139 |  | Emissão inicial | 8d | 2026-06-01 | 2026-06-10 | 160 |  | 17d |
| 140 |  | Análise Tecnored | 1d | 2026-06-11 | 2026-06-11 | 139 |  | 17d |

| ID | WBS | Task | Duration | Start | Finish | Predecessors | Complete | Total float |
| --- | --- | --- | --- | --- | --- | --- | --- | --- |
| 141 |  | Atendimento de comentários | 2d | 2026-06-12 | 2026-06-15 | 140 |  | 17d |
| 142 |  | Aprovação | 1d | 2026-06-16 | 2026-06-16 | 141 |  | 17d |
| 143 | 1.2.6.16 | **PL-F0009-0305-MB-M-00003** | 12d | 2026-06-01 | 2026-06-16 |  |  | 17d |
| 144 |  | Emissão inicial | 8d | 2026-06-01 | 2026-06-10 | 160 |  | 17d |
| 145 |  | Análise Tecnored | 1d | 2026-06-11 | 2026-06-11 | 144 |  | 17d |
| 146 |  | Atendimento de comentários | 2d | 2026-06-12 | 2026-06-15 | 145 |  | 17d |
| 147 |  | Aprovação | 1d | 2026-06-16 | 2026-06-16 | 146 |  | 17d |
| 148 | 1.2.6.17 | **PL-F0009-0305-MB-M-00004** | 12d | 2026-06-01 | 2026-06-16 |  |  | 17d |
| 149 |  | Emissão inicial | 8d | 2026-06-01 | 2026-06-10 | 160 |  | 17d |
| 150 |  | Análise Tecnored | 1d | 2026-06-11 | 2026-06-11 | 149 |  | 17d |
| 151 |  | Atendimento de comentários | 2d | 2026-06-12 | 2026-06-15 | 150 |  | 17d |
| 152 |  | Aprovação | 1d | 2026-06-16 | 2026-06-16 | 151 |  | 17d |
| 153 | 1.2.6.18 | **MC-F0009-0305-MB-M-00001** | 14d | 2026-06-01 | 2026-06-18 |  |  | 0d |
| 154 |  | Emissão inicial | 10d | 2026-06-01 | 2026-06-12 | 160 |  | 0d |
| 155 |  | Análise Tecnored | 1d | 2026-06-15 | 2026-06-15 | 154 |  | 0d |
| 156 |  | Atendimento de comentários | 2d | 2026-06-16 | 2026-06-17 | 155 |  | 15d |
| 157 |  | Aprovação | 1d | 2026-06-18 | 2026-06-18 | 156 |  | 15d |
| 158 | 1.2.6.19 | **ML-F0009-0305-MB-M-00001** | 12d | 2026-05-19 A | 2026-06-03 |  | 67% | 26d |
| 159 |  | Emissão inicial | 8d | 2026-05-19 A | 2026-05-28 A | 69, 10 | 100% |  |
| 160 |  | Análise Tecnored | 1d | 2026-05-29 | 2026-05-29 | 159 |  | 0d |
| 161 |  | Atendimento de comentários | 2d | 2026-06-01 | 2026-06-02 | 160 |  | 13d |
| 162 |  | Aprovação | 1d | 2026-06-03 | 2026-06-03 | 161 |  | 26d |
| 163 | 1.2.6.20 | **FD-F0009-0305-MB-M-00001** | 7d | 2026-06-15 | 2026-06-23 |  |  | 12d |
| 164 |  | Emissão inicial | 3d | 2026-06-15 | 2026-06-17 | 154 |  | 12d |
| 165 |  | Análise Tecnored | 1d | 2026-06-18 | 2026-06-18 | 164 |  | 12d |
| 166 |  | Atendimento de comentários | 2d | 2026-06-19 | 2026-06-22 | 165 |  | 12d |
| 167 |  | Aprovação | 1d | 2026-06-23 | 2026-06-23 | 166 |  | 12d |
| 168 | 1.2.6.21 | **FD-F0009-0305-MB-M-00002** | 7d | 2026-06-15 | 2026-06-23 |  |  | 12d |
| 169 |  | Emissão inicial | 3d | 2026-06-15 | 2026-06-17 | 154 |  | 12d |
| 170 |  | Análise Tecnored | 1d | 2026-06-18 | 2026-06-18 | 169 |  | 12d |
| 171 |  | Atendimento de comentários | 2d | 2026-06-19 | 2026-06-22 | 170 |  | 12d |
| 172 |  | Aprovação | 1d | 2026-06-23 | 2026-06-23 | 171 |  | 12d |
| 173 | 1.2.6.22 | **FD-F0009-0305-MB-M-00003** | 7d | 2026-06-15 | 2026-06-23 |  |  | 12d |
| 174 |  | Emissão inicial | 3d | 2026-06-15 | 2026-06-17 | 154 |  | 12d |
| 175 |  | Análise Tecnored | 1d | 2026-06-18 | 2026-06-18 | 174 |  | 12d |
| 176 |  | Atendimento de comentários | 2d | 2026-06-19 | 2026-06-22 | 175 |  | 12d |
| 177 |  | Aprovação | 1d | 2026-06-23 | 2026-06-23 | 176 |  | 12d |
| 178 | 1.2.7 | **Tubulação/Utilidades** | 30d | 2026-05-29 | 2026-07-09 |  |  | 0d |
| 179 | 1.2.7.1 | **CP-F0009-0305-MB-T-00001** | 14d | 2026-05-08 | 2026-05-27 |  |  | 31d |
| 180 |  | Emissão inicial | 5d | 2026-05-08 | 2026-05-14 | 26FS+3d |  | 36d |
| 181 |  | Análise Tecnored | 1d | 2026-05-22 | 2026-05-22 | 180, 11 |  | 31d |
| 182 |  | Atendimento de comentários | 2d | 2026-05-25 | 2026-05-26 | 181 |  | 31d |
| 183 |  | Aprovação | 1d | 2026-05-27 | 2026-05-27 | 182 |  | 31d |
| 184 | 1.2.7.2 | **MD-F0009-0305-MB-U-00001** | 7d | 2026-06-19 | 2026-06-29 |  |  | 5d |
| 185 |  | Emissão inicial | 3d | 2026-06-19 | 2026-06-23 | 229FS+5d |  | 5d |
| 186 |  | Análise Tecnored | 1d | 2026-06-24 | 2026-06-24 | 185 |  | 8d |
| 187 |  | Atendimento de comentários | 2d | 2026-06-25 | 2026-06-26 | 186 |  | 8d |
| 188 |  | Aprovação | 1d | 2026-06-29 | 2026-06-29 | 187 |  | 8d |
| 189 | 1.2.7.3 | **ML-F0009-0305-MB-T-00001** | 7d | 2026-05-29 | 2026-06-08 |  |  | 23d |
| 190 |  | Emissão inicial | 3d | 2026-05-29 | 2026-06-02 | 159 |  | 23d |
| 191 |  | Análise Tecnored | 1d | 2026-06-03 | 2026-06-03 | 190 |  | 23d |
| 192 |  | Atendimento de comentários | 2d | 2026-06-04 | 2026-06-05 | 191 |  | 23d |
| 193 |  | Aprovação | 1d | 2026-06-08 | 2026-06-08 | 192 |  | 23d |
| 194 | 1.2.7.4 | **ET-F0009-0305-MB-T-00001** | 7d | 2026-07-01 | 2026-07-09 |  |  | 0d |
| 195 |  | Emissão inicial | 3d | 2026-07-01 | 2026-07-03 | 200FS+2d |  | 0d |
| 196 |  | Análise Tecnored | 1d | 2026-07-06 | 2026-07-06 | 195 |  | 0d |
| 197 |  | Atendimento de comentários | 2d | 2026-07-07 | 2026-07-08 | 196 |  | 0d |
| 198 |  | Aprovação | 1d | 2026-07-09 | 2026-07-09 | 197 |  | 0d |
| 199 | 1.2.7.5 | **FD-F0009-0305-MB-T-00001** | 7d | 2026-06-24 | 2026-07-02 |  |  | 0d |
| 200 |  | Emissão inicial | 3d | 2026-06-24 | 2026-06-26 | 215 |  | 0d |
| 201 |  | Análise Tecnored | 1d | 2026-06-29 | 2026-06-29 | 200 |  | 5d |
| 202 |  | Atendimento de comentários | 2d | 2026-06-30 | 2026-07-01 | 201 |  | 5d |
| 203 |  | Aprovação | 1d | 2026-07-02 | 2026-07-02 | 202 |  | 5d |
| 204 | 1.2.7.6 | **FD-F0009-0305-MB-T-00002** | 7d | 2026-06-24 | 2026-07-02 |  |  | 5d |
| 205 |  | Emissão inicial | 3d | 2026-06-24 | 2026-06-26 | 215 |  | 5d |
| 206 |  | Análise Tecnored | 1d | 2026-06-29 | 2026-06-29 | 205 |  | 5d |
| 207 |  | Atendimento de comentários | 2d | 2026-06-30 | 2026-07-01 | 206 |  | 5d |
| 208 |  | Aprovação | 1d | 2026-07-02 | 2026-07-02 | 207 |  | 5d |
| 209 | 1.2.7.7 | **PQ-F0009-0305-MB-T-00001** | 7d | 2026-06-19 | 2026-06-29 |  |  | 8d |
| 210 |  | Emissão inicial | 3d | 2026-06-19 | 2026-06-23 | 185 |  | 8d |

| ID | WBS | Task | Duration | Start | Finish | Predecessors | Total float |
| --- | --- | --- | --- | --- | --- | --- | --- |
| 211 |  | Análise Tecnored | 1d | 2026-06-24 | 2026-06-24 | 210 | 8d |
| 212 |  | Atendimento de comentários | 2d | 2026-06-25 | 2026-06-26 | 211 | 8d |
| 213 |  | Aprovação | 1d | 2026-06-29 | 2026-06-29 | 212 | 8d |
| 214 | 1.2.7.8 | **MC-F0009-0305-MB-T-00001** | 7d | 2026-06-19 | 2026-06-29 |  | 0d |
| 215 |  | Emissão inicial | 3d | 2026-06-19 | 2026-06-23 | 159FS+15d | 0d |
| 216 |  | Análise Tecnored | 1d | 2026-06-24 | 2026-06-24 | 215 | 8d |
| 217 |  | Atendimento de comentários | 2d | 2026-06-25 | 2026-06-26 | 216 | 8d |
| 218 |  | Aprovação | 1d | 2026-06-29 | 2026-06-29 | 217 | 8d |
| 219 | 1.2.7.9 | **FG-F0009-0305-MB-T-00001** | 6d | 2026-06-03 | 2026-06-10 |  | 21d |
| 220 |  | Emissão inicial | 2d | 2026-06-03 | 2026-06-04 | 63FS+10d | 21d |
| 221 |  | Análise Tecnored | 1d | 2026-06-05 | 2026-06-05 | 220 | 21d |
| 222 |  | Atendimento de comentários | 2d | 2026-06-08 | 2026-06-09 | 221 | 21d |
| 223 |  | Aprovação | 1d | 2026-06-10 | 2026-06-10 | 222 | 21d |
| 224 | 1.2.7.10 | **FG-F0009-0305-MB-T-00002** | 6d | 2026-06-03 | 2026-06-10 |  | 21d |
| 225 |  | Emissão inicial | 2d | 2026-06-03 | 2026-06-04 | 63FS+10d | 21d |
| 226 |  | Análise Tecnored | 1d | 2026-06-05 | 2026-06-05 | 225 | 21d |
| 227 |  | Atendimento de comentários | 2d | 2026-06-08 | 2026-06-09 | 226 | 21d |
| 228 |  | Aprovação | 1d | 2026-06-10 | 2026-06-10 | 227 | 21d |
| 229 | 1.2.7.11 | **AG-F0009-0305-MB-T-00001** | 7d | 2026-06-03 | 2026-06-11 |  | 13d |
| 230 |  | Emissão inicial | 3d | 2026-06-03 | 2026-06-05 | 161 | 13d |
| 231 |  | Análise Tecnored | 1d | 2026-06-08 | 2026-06-08 | 230 | 13d |
| 232 |  | Atendimento de comentários | 2d | 2026-06-09 | 2026-06-10 | 231 | 13d |
| 233 |  | Aprovação | 1d | 2026-06-11 | 2026-06-11 | 232 | 13d |
| 234 | 1.2.7.12 | **AG-F0009-0305-MB-T-00002** | 7d | 2026-06-03 | 2026-06-11 |  | 20d |
| 235 |  | Emissão inicial | 3d | 2026-06-03 | 2026-06-05 | 161 | 20d |
| 236 |  | Análise Tecnored | 1d | 2026-06-08 | 2026-06-08 | 235 | 20d |
| 237 |  | Atendimento de comentários | 2d | 2026-06-09 | 2026-06-10 | 236 | 20d |
| 238 |  | Aprovação | 1d | 2026-06-11 | 2026-06-11 | 237 | 20d |
| 239 | 1.2.7.13 | **AG-F0009-0305-MB-T-00003** | 7d | 2026-06-03 | 2026-06-11 |  | 20d |
| 240 |  | Emissão inicial | 3d | 2026-06-03 | 2026-06-05 | 161 | 20d |
| 241 |  | Análise Tecnored | 1d | 2026-06-08 | 2026-06-08 | 240 | 20d |
| 242 |  | Atendimento de comentários | 2d | 2026-06-09 | 2026-06-10 | 241 | 20d |
| 243 |  | Aprovação | 1d | 2026-06-11 | 2026-06-11 | 242 | 20d |
| 244 | 1.2.7.14 | **AG-F0009-0305-MB-T-00004** | 7d | 2026-06-03 | 2026-06-11 |  | 20d |
| 245 |  | Emissão inicial | 3d | 2026-06-03 | 2026-06-05 | 161 | 20d |
| 246 |  | Análise Tecnored | 1d | 2026-06-08 | 2026-06-08 | 245 | 20d |
| 247 |  | Atendimento de comentários | 2d | 2026-06-09 | 2026-06-10 | 246 | 20d |
| 248 |  | Aprovação | 1d | 2026-06-11 | 2026-06-11 | 247 | 20d |
| 249 | 1.2.7.15 | **AG-F0009-0305-MB-T-00005** | 7d | 2026-06-03 | 2026-06-11 |  | 20d |
| 250 |  | Emissão inicial | 3d | 2026-06-03 | 2026-06-05 | 161 | 20d |
| 251 |  | Análise Tecnored | 1d | 2026-06-08 | 2026-06-08 | 250 | 20d |
| 252 |  | Atendimento de comentários | 2d | 2026-06-09 | 2026-06-10 | 251 | 20d |
| 253 |  | Aprovação | 1d | 2026-06-11 | 2026-06-11 | 252 | 20d |
| 254 | 1.2.7.16 | **AG-F0009-0305-MB-T-00006** | 7d | 2026-06-03 | 2026-06-11 |  | 20d |
| 255 |  | Emissão inicial | 3d | 2026-06-03 | 2026-06-05 | 161 | 20d |
| 256 |  | Análise Tecnored | 1d | 2026-06-08 | 2026-06-08 | 255 | 20d |
| 257 |  | Atendimento de comentários | 2d | 2026-06-09 | 2026-06-10 | 256 | 20d |
| 258 |  | Aprovação | 1d | 2026-06-11 | 2026-06-11 | 257 | 20d |
| 259 | 1.2.7.17 | **LK-F0009-0305-MB-T-00001** | 7d | 2026-06-03 | 2026-06-11 |  | 20d |
| 260 |  | Emissão inicial | 3d | 2026-06-03 | 2026-06-05 | 161 | 20d |
| 261 |  | Análise Tecnored | 1d | 2026-06-08 | 2026-06-08 | 260 | 20d |
| 262 |  | Atendimento de comentários | 2d | 2026-06-09 | 2026-06-10 | 261 | 20d |
| 263 |  | Aprovação | 1d | 2026-06-11 | 2026-06-11 | 262 | 20d |
| 264 | 1.2.7.18 | **MC-F0009-0305-MB-T-00002** | 14d | 2026-05-29 | 2026-06-17 |  | 16d |
| 265 |  | Emissão inicial | 10d | 2026-05-29 | 2026-06-11 | 159 | 16d |
| 266 |  | Análise Tecnored | 1d | 2026-06-12 | 2026-06-12 | 265 | 16d |
| 267 |  | Atendimento de comentários | 2d | 2026-06-15 | 2026-06-16 | 266 | 16d |
| 268 |  | Aprovação | 1d | 2026-06-17 | 2026-06-17 | 267 | 16d |
| 269 | 1.2.8 | **Estrutura metálica** | 17d | 2026-06-16 | 2026-07-08 |  | 0d |
| 270 | 1.2.8.1 | **CP-F0009-0305-MB-S-00001** | 22d | 2026-05-12 | 2026-06-10 |  | 21d |
| 271 |  | Emissão inicial | 3d | 2026-05-12 | 2026-05-14 | 26FS+5d | 36d |
| 272 |  | Análise Tecnored | 1d | 2026-06-05 | 2026-06-05 | 271, 14 | 21d |
| 273 |  | Atendimento de comentários | 2d | 2026-06-08 | 2026-06-09 | 272 | 21d |
| 274 |  | Aprovação | 1d | 2026-06-10 | 2026-06-10 | 273 | 21d |
| 275 | 1.2.8.2 | **ML-F0009-0305-MB-S-00001** | 7d | 2026-06-17 | 2026-06-25 |  | 1d |
| 276 |  | Emissão inicial | 3d | 2026-06-17 | 2026-06-19 | 291FS-4d | 1d |
| 277 |  | Análise Tecnored | 1d | 2026-06-22 | 2026-06-22 | 276 | 1d |
| 278 |  | Atendimento de comentários | 2d | 2026-06-23 | 2026-06-24 | 277 | 1d |
| 279 |  | Aprovação | 1d | 2026-06-25 | 2026-06-25 | 278 | 2d |
| 280 | 1.2.8.3 | **PQ-F0009-0305-MB-S-00001** | 6d | 2026-06-30 | 2026-07-07 |  | 2d |

| ID | WBS | Task | Duration | Start | Finish | Predecessors | Total float |
| --- | --- | --- | --- | --- | --- | --- | --- |
| 281 |  | Emissão inicial | 2d | 2026-06-30 | 2026-07-01 | 286 | 2d |
| 282 |  | Análise Tecnored | 1d | 2026-07-02 | 2026-07-02 | 281 | 2d |
| 283 |  | Atendimento de comentários | 2d | 2026-07-03 | 2026-07-06 | 282 | 2d |
| 284 |  | Aprovação | 1d | 2026-07-07 | 2026-07-07 | 283 | 2d |
| 285 | 1.2.8.4 | **LM-F0009-0305-MB-S-00001** | 6d | 2026-06-26 | 2026-07-03 |  | 2d |
| 286 |  | Emissão inicial | 2d | 2026-06-26 | 2026-06-29 | 279 | 2d |
| 287 |  | Análise Tecnored | 1d | 2026-06-30 | 2026-06-30 | 286 | 4d |
| 288 |  | Atendimento de comentários | 2d | 2026-07-01 | 2026-07-02 | 287 | 4d |
| 289 |  | Aprovação | 1d | 2026-07-03 | 2026-07-03 | 288 | 4d |
| 290 | 1.2.8.5 | **MC-F0009-0305-MB-S-00001** | 9d | 2026-06-16 | 2026-06-26 |  | 0d |
| 291 |  | Emissão inicial | 5d | 2026-06-16 | 2026-06-22 | 155 | 0d |
| 292 |  | Análise Tecnored | 1d | 2026-06-23 | 2026-06-23 | 291 | 9d |
| 293 |  | Atendimento de comentários | 2d | 2026-06-24 | 2026-06-25 | 292 | 9d |
| 294 |  | Aprovação | 1d | 2026-06-26 | 2026-06-26 | 293 | 9d |
| 295 | 1.2.8.6 | **AG-F0009-0305-MB-S-00001** | 10d | 2026-06-25 | 2026-07-08 |  | 1d |
| 296 |  | Emissão inicial | 6d | 2026-06-25 | 2026-07-02 | 278 | 1d |
| 297 |  | Análise Tecnored | 1d | 2026-07-03 | 2026-07-03 | 296 | 1d |
| 298 |  | Atendimento de comentários | 2d | 2026-07-06 | 2026-07-07 | 297 | 1d |
| 299 |  | Aprovação | 1d | 2026-07-08 | 2026-07-08 | 298 | 1d |
| 300 | 1.2.8.7 | **AG-F0009-0305-MB-S-00002** | 10d | 2026-06-25 | 2026-07-08 |  | 1d |
| 301 |  | Emissão inicial | 6d | 2026-06-25 | 2026-07-02 | 278 | 1d |
| 302 |  | Análise Tecnored | 1d | 2026-07-03 | 2026-07-03 | 301 | 1d |
| 303 |  | Atendimento de comentários | 2d | 2026-07-06 | 2026-07-07 | 302 | 1d |
| 304 |  | Aprovação | 1d | 2026-07-08 | 2026-07-08 | 303 | 1d |
| 305 | 1.2.8.8 | **AG-F0009-0305-MB-S-00003** | 10d | 2026-06-25 | 2026-07-08 |  | 1d |
| 306 |  | Emissão inicial | 6d | 2026-06-25 | 2026-07-02 | 278 | 1d |
| 307 |  | Análise Tecnored | 1d | 2026-07-03 | 2026-07-03 | 306 | 1d |
| 308 |  | Atendimento de comentários | 2d | 2026-07-06 | 2026-07-07 | 307 | 1d |
| 309 |  | Aprovação | 1d | 2026-07-08 | 2026-07-08 | 308 | 1d |
| 310 | 1.2.8.9 | **AG-F0009-0305-MB-S-00004** | 10d | 2026-06-25 | 2026-07-08 |  | 1d |
| 311 |  | Emissão inicial | 6d | 2026-06-25 | 2026-07-02 | 278 | 1d |
| 312 |  | Análise Tecnored | 1d | 2026-07-03 | 2026-07-03 | 311 | 1d |
| 313 |  | Atendimento de comentários | 2d | 2026-07-06 | 2026-07-07 | 312 | 1d |
| 314 |  | Aprovação | 1d | 2026-07-08 | 2026-07-08 | 313 | 1d |
| 315 | 1.2.8.10 | **AG-F0009-0305-MB-S-00005** | 10d | 2026-06-25 | 2026-07-08 |  | 1d |
| 316 |  | Emissão inicial | 6d | 2026-06-25 | 2026-07-02 | 278 | 1d |
| 317 |  | Análise Tecnored | 1d | 2026-07-03 | 2026-07-03 | 316 | 1d |
| 318 |  | Atendimento de comentários | 2d | 2026-07-06 | 2026-07-07 | 317 | 1d |
| 319 |  | Aprovação | 1d | 2026-07-08 | 2026-07-08 | 318 | 1d |
| 320 | 1.2.8.11 | **AG-F0009-0305-MB-S-00006** | 10d | 2026-06-25 | 2026-07-08 |  | 1d |
| 321 |  | Emissão inicial | 6d | 2026-06-25 | 2026-07-02 | 278 | 1d |
| 322 |  | Análise Tecnored | 1d | 2026-07-03 | 2026-07-03 | 321 | 1d |
| 323 |  | Atendimento de comentários | 2d | 2026-07-06 | 2026-07-07 | 322 | 1d |
| 324 |  | Aprovação | 1d | 2026-07-08 | 2026-07-08 | 323 | 1d |
| 325 | 1.2.8.12 | **AG-F0009-0305-MB-S-00007** | 10d | 2026-06-25 | 2026-07-08 |  | 1d |
| 326 |  | Emissão inicial | 6d | 2026-06-25 | 2026-07-02 | 278 | 1d |
| 327 |  | Análise Tecnored | 1d | 2026-07-03 | 2026-07-03 | 326 | 1d |
| 328 |  | Atendimento de comentários | 2d | 2026-07-06 | 2026-07-07 | 327 | 1d |
| 329 |  | Aprovação | 1d | 2026-07-08 | 2026-07-08 | 328 | 1d |
| 330 | 1.2.8.13 | **AG-F0009-0305-MB-S-00008** | 10d | 2026-06-25 | 2026-07-08 |  | 1d |
| 331 |  | Emissão inicial | 6d | 2026-06-25 | 2026-07-02 | 278 | 1d |
| 332 |  | Análise Tecnored | 1d | 2026-07-03 | 2026-07-03 | 331 | 1d |
| 333 |  | Atendimento de comentários | 2d | 2026-07-06 | 2026-07-07 | 332 | 1d |
| 334 |  | Aprovação | 1d | 2026-07-08 | 2026-07-08 | 333 | 1d |
| 335 | 1.2.8.14 | **AG-F0009-0305-MB-S-00009** | 10d | 2026-06-25 | 2026-07-08 |  | 1d |
| 336 |  | Emissão inicial | 6d | 2026-06-25 | 2026-07-02 | 278 | 1d |
| 337 |  | Análise Tecnored | 1d | 2026-07-03 | 2026-07-03 | 336 | 1d |
| 338 |  | Atendimento de comentários | 2d | 2026-07-06 | 2026-07-07 | 337 | 1d |
| 339 |  | Aprovação | 1d | 2026-07-08 | 2026-07-08 | 338 | 1d |
| 340 | 1.2.8.15 | **AG-F0009-0305-MB-S-00010** | 10d | 2026-06-25 | 2026-07-08 |  | 1d |
| 341 |  | Emissão inicial | 6d | 2026-06-25 | 2026-07-02 | 278 | 1d |
| 342 |  | Análise Tecnored | 1d | 2026-07-03 | 2026-07-03 | 341 | 1d |
| 343 |  | Atendimento de comentários | 2d | 2026-07-06 | 2026-07-07 | 342 | 1d |
| 344 |  | Aprovação | 1d | 2026-07-08 | 2026-07-08 | 343 | 1d |
| 345 | 1.2.8.16 | **PL-F0009-0305-MB-S-00001** | 9d | 2026-06-25 | 2026-07-07 |  | 2d |
| 346 |  | Emissão inicial | 5d | 2026-06-25 | 2026-07-01 | 278 | 2d |
| 347 |  | Análise Tecnored | 1d | 2026-07-02 | 2026-07-02 | 346 | 2d |
| 348 |  | Atendimento de comentários | 2d | 2026-07-03 | 2026-07-06 | 347 | 2d |
| 349 |  | Aprovação | 1d | 2026-07-07 | 2026-07-07 | 348 | 2d |
| 350 | 1.2.9 | **Elétrica** | 30d | 2026-05-28 | 2026-07-08 |  | 1d |

| ID | WBS | Task | Duration | Start | Finish | Predecessors | Total float |
| --- | --- | --- | --- | --- | --- | --- | --- |
| 351 | 1.2.9.1 | **CP-F0009-0305-MB-E-00001** | 24d | 2026-05-08 | 2026-06-10 |  | 21d |
| 352 |  | Emissão inicial | 5d | 2026-05-08 | 2026-05-14 | 26FS+3d | 36d |
| 353 |  | Análise Tecnored | 1d | 2026-06-05 | 2026-06-05 | 352, 12 | 21d |
| 354 |  | Atendimento de comentários | 2d | 2026-06-08 | 2026-06-09 | 353 | 21d |
| 355 |  | Aprovação | 1d | 2026-06-10 | 2026-06-10 | 354 | 21d |
| 356 | 1.2.9.2 | **ML-F0009-0305-MB-E-00001** | 11d | 2026-06-15 | 2026-06-29 |  | 1d |
| 357 |  | Emissão inicial | 7d | 2026-06-15 | 2026-06-23 | 392FS-5d | 1d |
| 358 |  | Análise Tecnored | 1d | 2026-06-24 | 2026-06-24 | 357 | 8d |
| 359 |  | Atendimento de comentários | 2d | 2026-06-25 | 2026-06-26 | 358 | 8d |
| 360 |  | Aprovação | 1d | 2026-06-29 | 2026-06-29 | 359 | 8d |
| 361 | 1.2.9.3 | **RL-F0009-0305-MB-E-00001** | 7d | 2026-06-02 | 2026-06-10 |  | 1d |
| 362 |  | Emissão inicial | 3d | 2026-06-02 | 2026-06-04 | 372 | 1d |
| 363 |  | Análise Tecnored | 1d | 2026-06-05 | 2026-06-05 | 362 | 21d |
| 364 |  | Atendimento de comentários | 2d | 2026-06-08 | 2026-06-09 | 363 | 21d |
| 365 |  | Aprovação | 1d | 2026-06-10 | 2026-06-10 | 364 | 21d |
| 366 | 1.2.9.4 | **LE-F0009-0305-MB-E-00001** | 7d | 2026-06-22 | 2026-06-30 |  | 7d |
| 367 |  | Emissão inicial | 3d | 2026-06-22 | 2026-06-24 | 392 | 7d |
| 368 |  | Análise Tecnored | 1d | 2026-06-25 | 2026-06-25 | 367 | 7d |
| 369 |  | Atendimento de comentários | 2d | 2026-06-26 | 2026-06-29 | 368 | 7d |
| 370 |  | Aprovação | 1d | 2026-06-30 | 2026-06-30 | 369 | 7d |
| 371 | 1.2.9.5 | **LR-F0009-0305-MB-E-00001** | 7d | 2026-05-28 | 2026-06-05 |  | 1d |
| 372 |  | Emissão inicial | 3d | 2026-05-28 | 2026-06-01 | 79 | 1d |
| 373 |  | Análise Tecnored | 1d | 2026-06-02 | 2026-06-02 | 372 | 24d |
| 374 |  | Atendimento de comentários | 2d | 2026-06-03 | 2026-06-04 | 373 | 24d |
| 375 |  | Aprovação | 1d | 2026-06-05 | 2026-06-05 | 374 | 24d |
| 376 | 1.2.9.6 | **LM-F0009-0305-MB-E-00001** | 6d | 2026-06-30 | 2026-07-07 |  | 1d |
| 377 |  | Emissão inicial | 2d | 2026-06-30 | 2026-07-01 | 398 | 1d |
| 378 |  | Análise Tecnored | 1d | 2026-07-02 | 2026-07-02 | 377 | 2d |
| 379 |  | Atendimento de comentários | 2d | 2026-07-03 | 2026-07-06 | 378 | 2d |
| 380 |  | Aprovação | 1d | 2026-07-07 | 2026-07-07 | 379 | 2d |
| 381 | 1.2.9.7 | **PQ-F0009-0305-MB-E-00001** | 5d | 2026-07-02 | 2026-07-08 |  | 1d |
| 382 |  | Emissão inicial | 1d | 2026-07-02 | 2026-07-02 | 377 | 1d |
| 383 |  | Análise Tecnored | 1d | 2026-07-03 | 2026-07-03 | 382 | 1d |
| 384 |  | Atendimento de comentários | 2d | 2026-07-06 | 2026-07-07 | 383 | 1d |
| 385 |  | Aprovação | 1d | 2026-07-08 | 2026-07-08 | 384 | 1d |
| 386 | 1.2.9.8 | **MD-F0009-0305-MB-E-00001** | 7d | 2026-06-30 | 2026-07-08 |  | 1d |
| 387 |  | Emissão inicial | 3d | 2026-06-30 | 2026-07-02 | 377FS-2d | 1d |
| 388 |  | Análise Tecnored | 1d | 2026-07-03 | 2026-07-03 | 387 | 1d |
| 389 |  | Atendimento de comentários | 2d | 2026-07-06 | 2026-07-07 | 388 | 1d |
| 390 |  | Aprovação | 1d | 2026-07-08 | 2026-07-08 | 389 | 1d |
| 391 | 1.2.9.9 | **MC-F0009-0305-MB-E-00001** | 9d | 2026-06-15 | 2026-06-25 |  | 1d |
| 392 |  | Emissão inicial | 5d | 2026-06-15 | 2026-06-19 | 412 | 1d |
| 393 |  | Análise Tecnored | 1d | 2026-06-22 | 2026-06-22 | 392 | 10d |
| 394 |  | Atendimento de comentários | 2d | 2026-06-23 | 2026-06-24 | 393 | 10d |
| 395 |  | Aprovação | 1d | 2026-06-25 | 2026-06-25 | 394 | 10d |
| 396 | 1.2.9.10 | **AG-F0009-0305-MB-E-00001** | 7d | 2026-06-24 | 2026-07-02 |  | 1d |
| 397 |  | Emissão inicial | 3d | 2026-06-24 | 2026-06-26 | 357 | 1d |
| 398 |  | Análise Tecnored | 1d | 2026-06-29 | 2026-06-29 | 397 | 1d |
| 399 |  | Atendimento de comentários | 2d | 2026-06-30 | 2026-07-01 | 398 | 5d |
| 400 |  | Aprovação | 1d | 2026-07-02 | 2026-07-02 | 399 | 5d |
| 401 | 1.2.9.11 | **DU-F0009-0305-MB-E-00001** | 7d | 2026-06-05 | 2026-06-15 |  | 1d |
| 402 |  | Emissão inicial | 3d | 2026-06-05 | 2026-06-09 | 362 | 1d |
| 403 |  | Análise Tecnored | 1d | 2026-06-10 | 2026-06-10 | 402 | 18d |
| 404 |  | Atendimento de comentários | 2d | 2026-06-11 | 2026-06-12 | 403 | 18d |
| 405 |  | Aprovação | 1d | 2026-06-15 | 2026-06-15 | 404 | 18d |
| 406 | 1.2.9.12 | **AG-F0009-0305-MB-E-00002** | 8d | 2026-06-24 | 2026-07-03 |  | 4d |
| 407 |  | Emissão inicial | 4d | 2026-06-24 | 2026-06-29 | 357 | 4d |
| 408 |  | Análise Tecnored | 1d | 2026-06-30 | 2026-06-30 | 407 | 4d |
| 409 |  | Atendimento de comentários | 2d | 2026-07-01 | 2026-07-02 | 408 | 4d |
| 410 |  | Aprovação | 1d | 2026-07-03 | 2026-07-03 | 409 | 4d |
| 411 | 1.2.9.13 | **FD-F0009-0305-MB-E-00013** | 7d | 2026-06-10 | 2026-06-18 |  | 1d |
| 412 |  | Emissão inicial | 3d | 2026-06-10 | 2026-06-12 | 402 | 1d |
| 413 |  | Análise Tecnored | 1d | 2026-06-15 | 2026-06-15 | 412 | 15d |
| 414 |  | Atendimento de comentários | 2d | 2026-06-16 | 2026-06-17 | 413 | 15d |
| 415 |  | Aprovação | 1d | 2026-06-18 | 2026-06-18 | 414 | 15d |
| 416 | 1.2.10 | **Automação e instrumentação** | 26d | 2026-06-03 | 2026-07-08 |  | 1d |
| 417 | 1.2.10.1 | **CP-F0009-0305-MB-J-00001** | 9d | 2026-06-05 | 2026-06-17 |  | 16d |
| 418 |  | Emissão inicial | 5d | 2026-06-05 | 2026-06-11 | 26FS+5d, 13 | 16d |
| 419 |  | Análise Tecnored | 1d | 2026-06-12 | 2026-06-12 | 418 | 16d |
| 420 |  | Atendimento de comentários | 2d | 2026-06-15 | 2026-06-16 | 419 | 16d |

| ID | WBS | Task | Duration | Start | Finish | Predecessors | Total float |
| --- | --- | --- | --- | --- | --- | --- | --- |
| 421 |  | Aprovação | 1d | 2026-06-17 | 2026-06-17 | 420 | 16d |
| 422 | 1.2.10.2 | **LI-F0009-0305-MB-J-00001** | 6d | 2026-06-05 | 2026-06-12 |  | 1d |
| 423 |  | Emissão inicial | 2d | 2026-06-05 | 2026-06-08 | 453 | 1d |
| 424 |  | Análise Tecnored | 1d | 2026-06-09 | 2026-06-09 | 423 | 19d |
| 425 |  | Atendimento de comentários | 2d | 2026-06-10 | 2026-06-11 | 424 | 19d |
| 426 |  | Aprovação | 1d | 2026-06-12 | 2026-06-12 | 425 | 19d |
| 427 | 1.2.10.3 | **LE-F0009-0305-MB-J-00001** | 6d | 2026-06-29 | 2026-07-06 |  | 3d |
| 428 |  | Emissão inicial | 2d | 2026-06-29 | 2026-06-30 | 503 | 3d |
| 429 |  | Análise Tecnored | 1d | 2026-07-01 | 2026-07-01 | 428 | 3d |
| 430 |  | Atendimento de comentários | 2d | 2026-07-02 | 2026-07-03 | 429 | 3d |
| 431 |  | Aprovação | 1d | 2026-07-06 | 2026-07-06 | 430 | 3d |
| 432 | 1.2.10.4 | **LZ-F0009-0305-MB-J-00001** | 6d | 2026-06-22 | 2026-06-29 |  | 1d |
| 433 |  | Emissão inicial | 2d | 2026-06-22 | 2026-06-23 | 483 | 1d |
| 434 |  | Análise Tecnored | 1d | 2026-06-24 | 2026-06-24 | 433 | 8d |
| 435 |  | Atendimento de comentários | 2d | 2026-06-25 | 2026-06-26 | 434 | 8d |
| 436 |  | Aprovação | 1d | 2026-06-29 | 2026-06-29 | 435 | 8d |
| 437 | 1.2.10.5 | **LE-F0009-0305-MB-J-00002** | 6d | 2026-06-29 | 2026-07-06 |  | 3d |
| 438 |  | Emissão inicial | 2d | 2026-06-29 | 2026-06-30 | 503 | 3d |
| 439 |  | Análise Tecnored | 1d | 2026-07-01 | 2026-07-01 | 438 | 3d |
| 440 |  | Atendimento de comentários | 2d | 2026-07-02 | 2026-07-03 | 439 | 3d |
| 441 |  | Aprovação | 1d | 2026-07-06 | 2026-07-06 | 440 | 3d |
| 442 | 1.2.10.6 | **PQ-F0009-0305-MB-J-00001** | 5d | 2026-06-30 | 2026-07-06 |  | 3d |
| 443 |  | Emissão inicial | 1d | 2026-06-30 | 2026-06-30 | 498FS-2d | 3d |
| 444 |  | Análise Tecnored | 1d | 2026-07-01 | 2026-07-01 | 443 | 3d |
| 445 |  | Atendimento de comentários | 2d | 2026-07-02 | 2026-07-03 | 444 | 3d |
| 446 |  | Aprovação | 1d | 2026-07-06 | 2026-07-06 | 445 | 3d |
| 447 | 1.2.10.7 | **FG-F0009-0305-MB-J-00001** | 6d | 2026-06-03 | 2026-06-10 |  | 21d |
| 448 |  | Emissão inicial | 2d | 2026-06-03 | 2026-06-04 | 63FS+10d | 21d |
| 449 |  | Análise Tecnored | 1d | 2026-06-05 | 2026-06-05 | 448 | 21d |
| 450 |  | Atendimento de comentários | 2d | 2026-06-08 | 2026-06-09 | 449 | 21d |
| 451 |  | Aprovação | 1d | 2026-06-10 | 2026-06-10 | 450 | 21d |
| 452 | 1.2.10.8 | **FG-F0009-0305-MB-J-00002** | 6d | 2026-06-03 | 2026-06-10 |  | 1d |
| 453 |  | Emissão inicial | 2d | 2026-06-03 | 2026-06-04 | 63FS+10d | 1d |
| 454 |  | Análise Tecnored | 1d | 2026-06-05 | 2026-06-05 | 453 | 21d |
| 455 |  | Atendimento de comentários | 2d | 2026-06-08 | 2026-06-09 | 454 | 21d |
| 456 |  | Aprovação | 1d | 2026-06-10 | 2026-06-10 | 455 | 21d |
| 457 | 1.2.10.9 | **FG-F0009-0305-MB-J-00003** | 6d | 2026-06-03 | 2026-06-10 |  | 21d |
| 458 |  | Emissão inicial | 2d | 2026-06-03 | 2026-06-04 | 63FS+10d | 21d |
| 459 |  | Análise Tecnored | 1d | 2026-06-05 | 2026-06-05 | 458 | 21d |
| 460 |  | Atendimento de comentários | 2d | 2026-06-08 | 2026-06-09 | 459 | 21d |
| 461 |  | Aprovação | 1d | 2026-06-10 | 2026-06-10 | 460 | 21d |
| 462 | 1.2.10.10 | **AG-F0009-0305-MB-J-00001** | 11d | 2026-06-09 | 2026-06-23 |  | 12d |
| 463 |  | Emissão inicial | 7d | 2026-06-09 | 2026-06-17 | 423 | 12d |
| 464 |  | Análise Tecnored | 1d | 2026-06-18 | 2026-06-18 | 463 | 12d |
| 465 |  | Atendimento de comentários | 2d | 2026-06-19 | 2026-06-22 | 464 | 12d |
| 466 |  | Aprovação | 1d | 2026-06-23 | 2026-06-23 | 465 | 12d |
| 467 | 1.2.10.11 | **AG-F0009-0305-MB-J-00002** | 11d | 2026-06-09 | 2026-06-23 |  | 12d |
| 468 |  | Emissão inicial | 7d | 2026-06-09 | 2026-06-17 | 423 | 12d |
| 469 |  | Análise Tecnored | 1d | 2026-06-18 | 2026-06-18 | 468 | 12d |
| 470 |  | Atendimento de comentários | 2d | 2026-06-19 | 2026-06-22 | 469 | 12d |
| 471 |  | Aprovação | 1d | 2026-06-23 | 2026-06-23 | 470 | 12d |
| 472 | 1.2.10.12 | **AG-F0009-0305-MB-J-00003** | 11d | 2026-06-09 | 2026-06-23 |  | 1d |
| 473 |  | Emissão inicial | 7d | 2026-06-09 | 2026-06-17 | 423 | 1d |
| 474 |  | Análise Tecnored | 1d | 2026-06-18 | 2026-06-18 | 473 | 12d |
| 475 |  | Atendimento de comentários | 2d | 2026-06-19 | 2026-06-22 | 474 | 12d |
| 476 |  | Aprovação | 1d | 2026-06-23 | 2026-06-23 | 475 | 12d |
| 477 | 1.2.10.13 | **AG-F0009-0305-MB-J-00004** | 11d | 2026-06-09 | 2026-06-23 |  | 12d |
| 478 |  | Emissão inicial | 7d | 2026-06-09 | 2026-06-17 | 423 | 12d |
| 479 |  | Análise Tecnored | 1d | 2026-06-18 | 2026-06-18 | 478 | 12d |
| 480 |  | Atendimento de comentários | 2d | 2026-06-19 | 2026-06-22 | 479 | 12d |
| 481 |  | Aprovação | 1d | 2026-06-23 | 2026-06-23 | 480 | 12d |
| 482 | 1.2.10.14 | **DI-F0009-0305-MB-J-00001** | 6d | 2026-06-18 | 2026-06-25 |  | 1d |
| 483 |  | Emissão inicial | 2d | 2026-06-18 | 2026-06-19 | 473 | 1d |
| 484 |  | Análise Tecnored | 1d | 2026-06-22 | 2026-06-22 | 483 | 10d |
| 485 |  | Atendimento de comentários | 2d | 2026-06-23 | 2026-06-24 | 484 | 10d |
| 486 |  | Aprovação | 1d | 2026-06-25 | 2026-06-25 | 485 | 10d |
| 487 | 1.2.10.15 | **LI-F0009-0305-MB-J-00002** | 6d | 2026-06-29 | 2026-07-06 |  | 3d |
| 488 |  | Emissão inicial | 2d | 2026-06-29 | 2026-06-30 | 503 | 3d |
| 489 |  | Análise Tecnored | 1d | 2026-07-01 | 2026-07-01 | 488 | 3d |
| 490 |  | Atendimento de comentários | 2d | 2026-07-02 | 2026-07-03 | 489 | 3d |

| ID | WBS | Task | Duration | Start | Finish | Predecessors | Total float |
| --- | --- | --- | --- | --- | --- | --- | --- |
| 491 |  | Aprovação | 1d | 2026-07-06 | 2026-07-06 | 490 | 3d |
| 492 | 1.2.10.16 | **LI-F0009-0305-MB-J-00003** | 6d | 2026-06-29 | 2026-07-06 |  | 1d |
| 493 |  | Emissão inicial | 2d | 2026-06-29 | 2026-06-30 | 503 | 1d |
| 494 |  | Análise Tecnored | 1d | 2026-07-01 | 2026-07-01 | 493 | 3d |
| 495 |  | Atendimento de comentários | 2d | 2026-07-02 | 2026-07-03 | 494 | 3d |
| 496 |  | Aprovação | 1d | 2026-07-06 | 2026-07-06 | 495 | 3d |
| 497 | 1.2.10.17 | **LM-F0009-0305-MB-J-00001** | 5d | 2026-07-01 | 2026-07-07 |  | 2d |
| 498 |  | Emissão inicial | 1d | 2026-07-01 | 2026-07-01 | 588FS-2d | 2d |
| 499 |  | Análise Tecnored | 1d | 2026-07-02 | 2026-07-02 | 498 | 2d |
| 500 |  | Atendimento de comentários | 2d | 2026-07-03 | 2026-07-06 | 499 | 2d |
| 501 |  | Aprovação | 1d | 2026-07-07 | 2026-07-07 | 500 | 2d |
| 502 | 1.2.10.18 | **ET-F0009-0305-MB-J-00001** | 7d | 2026-06-24 | 2026-07-02 |  | 1d |
| 503 |  | Emissão inicial | 3d | 2026-06-24 | 2026-06-26 | 433 | 1d |
| 504 |  | Análise Tecnored | 1d | 2026-06-29 | 2026-06-29 | 503 | 5d |
| 505 |  | Atendimento de comentários | 2d | 2026-06-30 | 2026-07-01 | 504 | 5d |
| 506 |  | Aprovação | 1d | 2026-07-02 | 2026-07-02 | 505 | 5d |
| 507 | 1.2.10.19 | **FD-F0009-0305-MB-J-00001** | 11d | 2026-06-24 | 2026-07-08 |  | 1d |
| 508 |  | Emissão inicial | 7d | 2026-06-24 | 2026-07-02 | 433 | 1d |
| 509 |  | Análise Tecnored | 1d | 2026-07-03 | 2026-07-03 | 508 | 1d |
| 510 |  | Atendimento de comentários | 2d | 2026-07-06 | 2026-07-07 | 509 | 1d |
| 511 |  | Aprovação | 1d | 2026-07-08 | 2026-07-08 | 510 | 1d |
| 512 | 1.2.10.20 | **FD-F0009-0305-MB-J-00002** | 11d | 2026-06-24 | 2026-07-08 |  | 1d |
| 513 |  | Emissão inicial | 7d | 2026-06-24 | 2026-07-02 | 433 | 1d |
| 514 |  | Análise Tecnored | 1d | 2026-07-03 | 2026-07-03 | 513 | 1d |
| 515 |  | Atendimento de comentários | 2d | 2026-07-06 | 2026-07-07 | 514 | 1d |
| 516 |  | Aprovação | 1d | 2026-07-08 | 2026-07-08 | 515 | 1d |
| 517 | 1.2.10.21 | **FD-F0009-0305-MB-J-00003** | 11d | 2026-06-24 | 2026-07-08 |  | 1d |
| 518 |  | Emissão inicial | 7d | 2026-06-24 | 2026-07-02 | 433 | 1d |
| 519 |  | Análise Tecnored | 1d | 2026-07-03 | 2026-07-03 | 518 | 1d |
| 520 |  | Atendimento de comentários | 2d | 2026-07-06 | 2026-07-07 | 519 | 1d |
| 521 |  | Aprovação | 1d | 2026-07-08 | 2026-07-08 | 520 | 1d |
| 522 | 1.2.10.22 | **FD-F0009-0305-MB-J-00004** | 11d | 2026-06-24 | 2026-07-08 |  | 1d |
| 523 |  | Emissão inicial | 7d | 2026-06-24 | 2026-07-02 | 433 | 1d |
| 524 |  | Análise Tecnored | 1d | 2026-07-03 | 2026-07-03 | 523 | 1d |
| 525 |  | Atendimento de comentários | 2d | 2026-07-06 | 2026-07-07 | 524 | 1d |
| 526 |  | Aprovação | 1d | 2026-07-08 | 2026-07-08 | 525 | 1d |
| 527 | 1.2.10.23 | **FD-F0009-0305-MB-J-00005** | 11d | 2026-06-24 | 2026-07-08 |  | 1d |
| 528 |  | Emissão inicial | 7d | 2026-06-24 | 2026-07-02 | 433 | 1d |
| 529 |  | Análise Tecnored | 1d | 2026-07-03 | 2026-07-03 | 528 | 1d |
| 530 |  | Atendimento de comentários | 2d | 2026-07-06 | 2026-07-07 | 529 | 1d |
| 531 |  | Aprovação | 1d | 2026-07-08 | 2026-07-08 | 530 | 1d |
| 532 | 1.2.10.24 | **FD-F0009-0305-MB-J-00006** | 11d | 2026-06-24 | 2026-07-08 |  | 1d |
| 533 |  | Emissão inicial | 7d | 2026-06-24 | 2026-07-02 | 433 | 1d |
| 534 |  | Análise Tecnored | 1d | 2026-07-03 | 2026-07-03 | 533 | 1d |
| 535 |  | Atendimento de comentários | 2d | 2026-07-06 | 2026-07-07 | 534 | 1d |
| 536 |  | Aprovação | 1d | 2026-07-08 | 2026-07-08 | 535 | 1d |
| 537 | 1.2.10.25 | **FD-F0009-0305-MB-J-00007** | 11d | 2026-06-24 | 2026-07-08 |  | 1d |
| 538 |  | Emissão inicial | 7d | 2026-06-24 | 2026-07-02 | 433 | 1d |
| 539 |  | Análise Tecnored | 1d | 2026-07-03 | 2026-07-03 | 538 | 1d |
| 540 |  | Atendimento de comentários | 2d | 2026-07-06 | 2026-07-07 | 539 | 1d |
| 541 |  | Aprovação | 1d | 2026-07-08 | 2026-07-08 | 540 | 1d |
| 542 | 1.2.10.26 | **FD-F0009-0305-MB-J-00008** | 11d | 2026-06-24 | 2026-07-08 |  | 1d |
| 543 |  | Emissão inicial | 7d | 2026-06-24 | 2026-07-02 | 433 | 1d |
| 544 |  | Análise Tecnored | 1d | 2026-07-03 | 2026-07-03 | 543 | 1d |
| 545 |  | Atendimento de comentários | 2d | 2026-07-06 | 2026-07-07 | 544 | 1d |
| 546 |  | Aprovação | 1d | 2026-07-08 | 2026-07-08 | 545 | 1d |
| 547 | 1.2.10.27 | **FD-F0009-0305-MB-J-00009** | 11d | 2026-06-24 | 2026-07-08 |  | 1d |
| 548 |  | Emissão inicial | 7d | 2026-06-24 | 2026-07-02 | 433 | 1d |
| 549 |  | Análise Tecnored | 1d | 2026-07-03 | 2026-07-03 | 548 | 1d |
| 550 |  | Atendimento de comentários | 2d | 2026-07-06 | 2026-07-07 | 549 | 1d |
| 551 |  | Aprovação | 1d | 2026-07-08 | 2026-07-08 | 550 | 1d |
| 552 | 1.2.10.28 | **FD-F0009-0305-MB-J-00010** | 11d | 2026-06-24 | 2026-07-08 |  | 1d |
| 553 |  | Emissão inicial | 7d | 2026-06-24 | 2026-07-02 | 433 | 1d |
| 554 |  | Análise Tecnored | 1d | 2026-07-03 | 2026-07-03 | 553 | 1d |
| 555 |  | Atendimento de comentários | 2d | 2026-07-06 | 2026-07-07 | 554 | 1d |
| 556 |  | Aprovação | 1d | 2026-07-08 | 2026-07-08 | 555 | 1d |
| 557 | 1.2.10.29 | **FD-F0009-0305-MB-J-00011** | 11d | 2026-06-24 | 2026-07-08 |  | 1d |
| 558 |  | Emissão inicial | 7d | 2026-06-24 | 2026-07-02 | 433 | 1d |
| 559 |  | Análise Tecnored | 1d | 2026-07-03 | 2026-07-03 | 558 | 1d |
| 560 |  | Atendimento de comentários | 2d | 2026-07-06 | 2026-07-07 | 559 | 1d |

| ID | WBS | Task | Duration | Start | Finish | Predecessors | Total float |
| --- | --- | --- | --- | --- | --- | --- | --- |
| 561 |  | Aprovação | 1d | 2026-07-08 | 2026-07-08 | 560 | 1d |
| 562 | 1.2.10.30 | **FD-F0009-0305-MB-J-00012** | 11d | 2026-06-24 | 2026-07-08 |  | 1d |
| 563 |  | Emissão inicial | 7d | 2026-06-24 | 2026-07-02 | 433 | 1d |
| 564 |  | Análise Tecnored | 1d | 2026-07-03 | 2026-07-03 | 563 | 1d |
| 565 |  | Atendimento de comentários | 2d | 2026-07-06 | 2026-07-07 | 564 | 1d |
| 566 |  | Aprovação | 1d | 2026-07-08 | 2026-07-08 | 565 | 1d |
| 567 | 1.2.10.31 | **FD-F0009-0305-MB-J-00013** | 11d | 2026-06-24 | 2026-07-08 |  | 1d |
| 568 |  | Emissão inicial | 7d | 2026-06-24 | 2026-07-02 | 433 | 1d |
| 569 |  | Análise Tecnored | 1d | 2026-07-03 | 2026-07-03 | 568 | 1d |
| 570 |  | Atendimento de comentários | 2d | 2026-07-06 | 2026-07-07 | 569 | 1d |
| 571 |  | Aprovação | 1d | 2026-07-08 | 2026-07-08 | 570 | 1d |
| 572 | 1.2.10.32 | **FD-F0009-0305-MB-J-00014** | 11d | 2026-06-24 | 2026-07-08 |  | 1d |
| 573 |  | Emissão inicial | 7d | 2026-06-24 | 2026-07-02 | 433 | 1d |
| 574 |  | Análise Tecnored | 1d | 2026-07-03 | 2026-07-03 | 573 | 1d |
| 575 |  | Atendimento de comentários | 2d | 2026-07-06 | 2026-07-07 | 574 | 1d |
| 576 |  | Aprovação | 1d | 2026-07-08 | 2026-07-08 | 575 | 1d |
| 577 | 1.2.10.33 | **FD-F0009-0305-MB-J-00015** | 11d | 2026-06-24 | 2026-07-08 |  | 1d |
| 578 |  | Emissão inicial | 7d | 2026-06-24 | 2026-07-02 | 433 | 1d |
| 579 |  | Análise Tecnored | 1d | 2026-07-03 | 2026-07-03 | 578 | 1d |
| 580 |  | Atendimento de comentários | 2d | 2026-07-06 | 2026-07-07 | 579 | 1d |
| 581 |  | Aprovação | 1d | 2026-07-08 | 2026-07-08 | 580 | 1d |
| 582 | 1.2.10.34 | **FD-F0009-0305-MB-J-00016** | 11d | 2026-06-24 | 2026-07-08 |  | 1d |
| 583 |  | Emissão inicial | 7d | 2026-06-24 | 2026-07-02 | 433 | 1d |
| 584 |  | Análise Tecnored | 1d | 2026-07-03 | 2026-07-03 | 583 | 1d |
| 585 |  | Atendimento de comentários | 2d | 2026-07-06 | 2026-07-07 | 584 | 1d |
| 586 |  | Aprovação | 1d | 2026-07-08 | 2026-07-08 | 585 | 1d |
| 587 | 1.2.10.35 | **DT-F0009-0305-MB-J-00001** | 6d | 2026-07-01 | 2026-07-08 |  | 1d |
| 588 |  | Emissão inicial | 2d | 2026-07-01 | 2026-07-02 | 493 | 1d |
| 589 |  | Análise Tecnored | 1d | 2026-07-03 | 2026-07-03 | 588 | 1d |
| 590 |  | Atendimento de comentários | 2d | 2026-07-06 | 2026-07-07 | 589 | 1d |
| 591 |  | Aprovação | 1d | 2026-07-08 | 2026-07-08 | 590 | 1d |
| 592 | 1.2.11 | **Civil** | 13d | 2026-06-23 | 2026-07-09 |  | 0d |
| 593 | 1.2.11.1 | **MC-F0009-0305-MB-C-00001** | 12d | 2026-06-23 | 2026-07-08 |  | 0d |
| 594 |  | Emissão inicial | 8d | 2026-06-23 | 2026-07-02 | 291 | 0d |
| 595 |  | Análise Tecnored | 1d | 2026-07-03 | 2026-07-03 | 594 | 1d |
| 596 |  | Atendimento de comentários | 2d | 2026-07-06 | 2026-07-07 | 595 | 1d |
| 597 |  | Aprovação | 1d | 2026-07-08 | 2026-07-08 | 596 | 1d |
| 598 | 1.2.11.2 | **PQ-F0009-0305-MB-C-00001** | 5d | 2026-07-03 | 2026-07-09 |  | 0d |
| 599 |  | Emissão inicial | 1d | 2026-07-03 | 2026-07-03 | 594 | 0d |
| 600 |  | Análise Tecnored | 1d | 2026-07-06 | 2026-07-06 | 599 | 0d |
| 601 |  | Atendimento de comentários | 2d | 2026-07-07 | 2026-07-08 | 600 | 0d |
| 602 |  | Aprovação | 1d | 2026-07-09 | 2026-07-09 | 601 | 0d |

## Version 2 (data date 2026-07-01, saved 2026-07-01, file CR-F0009-0305-MB-F-00001 01072026.mpp)

Note of the change: Primeira versao dashboard

Last finish 2026-07-09 → 2026-07-30 (+21d). Complete tasks 17 → 79.

Added:

| ID | Task | Duration | Start | Finish | Predecessors | Constraint |
| --- | --- | --- | --- | --- | --- | --- |
| 153 | **PL-F0009-0305-MB-M-00005** | 12d | 2026-06-22 A | 2026-07-07 |  |  |
| 154 | Emissão inicial | 8d | 2026-06-22 A | 2026-07-01 A | 185 | start no earlier than 2026-06-15 |
| 155 | Análise Tecnored | 1d | 2026-07-02 | 2026-07-02 | 154 |  |
| 156 | Atendimento de comentários | 2d | 2026-07-03 | 2026-07-06 | 155 |  |
| 157 | Aprovação | 1d | 2026-07-07 | 2026-07-07 | 156 |  |
| 158 | **PL-F0009-0305-MB-M-00006** | 12d | 2026-06-22 A | 2026-07-07 |  |  |
| 159 | Emissão inicial | 8d | 2026-06-22 A | 2026-07-01 A | 185 | start no earlier than 2026-06-15 |
| 160 | Análise Tecnored | 1d | 2026-07-02 | 2026-07-02 | 159 |  |
| 161 | Atendimento de comentários | 2d | 2026-07-03 | 2026-07-06 | 160 |  |
| 162 | Aprovação | 1d | 2026-07-07 | 2026-07-07 | 161 |  |
| 168 | **MC-F0009-0305-MB-M-00002** | 14d | 2026-06-01 A | 2026-06-22 |  |  |
| 169 | Emissão inicial | 10d | 2026-06-01 A | 2026-06-16 A | 185 |  |
| 170 | Análise Tecnored | 1d | 2026-06-17 A | 2026-06-17 | 169 |  |
| 171 | Atendimento de comentários | 2d | 2026-06-18 | 2026-06-19 | 170 |  |
| 172 | Aprovação | 1d | 2026-06-22 | 2026-06-22 | 171 |  |
| 173 | **MC-F0009-0305-MB-M-00003** | 14d | 2026-06-01 A | 2026-06-22 |  |  |
| 174 | Emissão inicial | 10d | 2026-06-01 A | 2026-06-16 A | 185 |  |
| 175 | Análise Tecnored | 1d | 2026-06-17 A | 2026-06-17 A | 174 |  |
| 176 | Atendimento de comentários | 2d | 2026-06-18 A | 2026-06-19 | 175 |  |
| 177 | Aprovação | 1d | 2026-06-22 | 2026-06-22 | 176 |  |
| 178 | **MC-F0009-0305-MB-M-00004** | 14d | 2026-06-01 A | 2026-06-22 |  |  |
| 179 | Emissão inicial | 10d | 2026-06-01 A | 2026-06-16 A | 185 |  |
| 180 | Análise Tecnored | 1d | 2026-06-17 A | 2026-06-17 | 179 |  |
| 181 | Atendimento de comentários | 2d | 2026-06-18 | 2026-06-19 | 180 |  |
| 182 | Aprovação | 1d | 2026-06-22 | 2026-06-22 | 181 |  |
| 284 | **AG-F0009-0305-MB-T-00004** | 7d | 2026-07-06 | 2026-07-14 |  |  |
| 285 | Emissão inicial | 3d | 2026-07-06 | 2026-07-08 | 216 | start no earlier than 2026-07-06 |
| 286 | Análise Tecnored | 1d | 2026-07-09 | 2026-07-09 | 285 |  |
| 287 | Atendimento de comentários | 2d | 2026-07-10 | 2026-07-13 | 286 |  |
| 288 | Aprovação | 1d | 2026-07-14 | 2026-07-14 | 287 |  |
| 289 | **AG-F0009-0305-MB-T-00005** | 7d | 2026-07-06 | 2026-07-14 |  |  |
| 290 | Emissão inicial | 3d | 2026-07-06 | 2026-07-08 | 216 | start no earlier than 2026-07-06 |
| 291 | Análise Tecnored | 1d | 2026-07-09 | 2026-07-09 | 290 |  |
| 292 | Atendimento de comentários | 2d | 2026-07-10 | 2026-07-13 | 291 |  |
| 293 | Aprovação | 1d | 2026-07-14 | 2026-07-14 | 292 |  |
| 294 | **AG-F0009-0305-MB-T-00006** | 7d | 2026-07-06 | 2026-07-14 |  |  |
| 295 | Emissão inicial | 3d | 2026-07-06 | 2026-07-08 | 216 | start no earlier than 2026-07-06 |
| 296 | Análise Tecnored | 1d | 2026-07-09 | 2026-07-09 | 295 |  |
| 297 | Atendimento de comentários | 2d | 2026-07-10 | 2026-07-13 | 296 |  |
| 298 | Aprovação | 1d | 2026-07-14 | 2026-07-14 | 297 |  |
| 299 | **AG-F0009-0305-MB-T-00007** | 7d | 2026-07-06 | 2026-07-14 |  |  |
| 300 | Emissão inicial | 3d | 2026-07-06 | 2026-07-08 | 216 | start no earlier than 2026-07-06 |
| 301 | Análise Tecnored | 1d | 2026-07-09 | 2026-07-09 | 300 |  |
| 302 | Atendimento de comentários | 2d | 2026-07-10 | 2026-07-13 | 301 |  |
| 303 | Aprovação | 1d | 2026-07-14 | 2026-07-14 | 302 |  |
| 304 | **AG-F0009-0305-MB-T-00008** | 7d | 2026-07-06 | 2026-07-14 |  |  |
| 305 | Emissão inicial | 3d | 2026-07-06 | 2026-07-08 | 216 | start no earlier than 2026-07-06 |
| 306 | Análise Tecnored | 1d | 2026-07-09 | 2026-07-09 | 305 |  |
| 307 | Atendimento de comentários | 2d | 2026-07-10 | 2026-07-13 | 306 |  |
| 308 | Aprovação | 1d | 2026-07-14 | 2026-07-14 | 307 |  |
| 309 | **AG-F0009-0305-MB-T-00009** | 7d | 2026-07-06 | 2026-07-14 |  |  |
| 310 | Emissão inicial | 3d | 2026-07-06 | 2026-07-08 | 216 | start no earlier than 2026-07-06 |
| 311 | Análise Tecnored | 1d | 2026-07-09 | 2026-07-09 | 310 |  |
| 312 | Atendimento de comentários | 2d | 2026-07-10 | 2026-07-13 | 311 |  |
| 313 | Aprovação | 1d | 2026-07-14 | 2026-07-14 | 312 |  |
| 314 | **AG-F0009-0305-MB-T-00010** | 7d | 2026-07-06 | 2026-07-14 |  |  |
| 315 | Emissão inicial | 3d | 2026-07-06 | 2026-07-08 | 216 | start no earlier than 2026-07-06 |
| 316 | Análise Tecnored | 1d | 2026-07-09 | 2026-07-09 | 315 |  |
| 317 | Atendimento de comentários | 2d | 2026-07-10 | 2026-07-13 | 316 |  |
| 318 | Aprovação | 1d | 2026-07-14 | 2026-07-14 | 317 |  |
| 492 | **LL-F0009-0305-MB-J-00001** | 9d | 2026-06-25 | 2026-07-07 |  |  |
| 493 | Emissão inicial | 4d | 2026-06-25 | 2026-06-30 | 548 | start no earlier than 2026-06-25 |
| 494 | Análise Tecnored | 1d | 2026-07-02 | 2026-07-02 | 493 | start no earlier than 2026-07-02 |
| 495 | Atendimento de comentários | 2d | 2026-07-03 | 2026-07-06 | 494 | start no earlier than 2026-07-03 |
| 496 | Aprovação | 1d | 2026-07-07 | 2026-07-07 | 495 | start no earlier than 2026-07-07 |
| 652 | **FD-F0009-0305-MB-J-00017** | 10d | 2026-06-15 A | 2026-06-26 |  |  |
| 653 | Emissão inicial | 7d | 2026-06-15 A | 2026-06-23 A | 573SS |  |
| 654 | Análise Tecnored | 1d | 2026-06-24 A | 2026-06-24 | 653 |  |
| 655 | Atendimento de comentários | 1d | 2026-06-25 | 2026-06-25 | 654 |  |
| 656 | Aprovação | 1d | 2026-06-26 | 2026-06-26 | 655 |  |
| 657 | **FD-F0009-0305-MB-J-00018** | 10d | 2026-06-15 A | 2026-06-26 |  |  |
| 658 | Emissão inicial | 7d | 2026-06-15 A | 2026-06-23 A | 573SS |  |
| 659 | Análise Tecnored | 1d | 2026-06-24 A | 2026-06-24 | 658 |  |
| 660 | Atendimento de comentários | 1d | 2026-06-25 | 2026-06-25 | 659 |  |
| 661 | Aprovação | 1d | 2026-06-26 | 2026-06-26 | 660 |  |
| 662 | **FD-F0009-0305-MB-J-00019** | 10d | 2026-06-15 A | 2026-06-26 |  |  |
| 663 | Emissão inicial | 7d | 2026-06-15 A | 2026-06-23 A | 573SS |  |
| 664 | Análise Tecnored | 1d | 2026-06-24 A | 2026-06-24 | 663 |  |
| 665 | Atendimento de comentários | 1d | 2026-06-25 | 2026-06-25 | 664 |  |
| 666 | Aprovação | 1d | 2026-06-26 | 2026-06-26 | 665 |  |
| 667 | **FD-F0009-0305-MB-J-00020** | 10d | 2026-06-15 A | 2026-06-26 |  |  |
| 668 | Emissão inicial | 7d | 2026-06-15 A | 2026-06-23 A | 573SS |  |
| 669 | Análise Tecnored | 1d | 2026-06-24 A | 2026-06-24 | 668 |  |
| 670 | Atendimento de comentários | 1d | 2026-06-25 | 2026-06-25 | 669 |  |
| 671 | Aprovação | 1d | 2026-06-26 | 2026-06-26 | 670 |  |
| 672 | **FD-F0009-0305-MB-J-00021** | 10d | 2026-06-15 A | 2026-06-26 |  |  |
| 673 | Emissão inicial | 7d | 2026-06-15 A | 2026-06-23 A | 573SS |  |
| 674 | Análise Tecnored | 1d | 2026-06-24 A | 2026-06-24 | 673 |  |
| 675 | Atendimento de comentários | 1d | 2026-06-25 | 2026-06-25 | 674 |  |
| 676 | Aprovação | 1d | 2026-06-26 | 2026-06-26 | 675 |  |
| 677 | **FD-F0009-0305-MB-J-00022** | 9.85d | 2026-06-19 A | 2026-07-02 |  |  |
| 678 | Emissão inicial | 7d | 2026-06-19 A | 2026-06-29 A | 573SS |  |
| 679 | Análise Tecnored | 1d | 2026-06-24 A | 2026-06-30 | 678 |  |
| 680 | Atendimento de comentários | 1d | 2026-06-30 | 2026-07-01 | 679 |  |
| 681 | Aprovação | 1d | 2026-07-01 | 2026-07-02 | 680 |  |
| 682 | **FD-F0009-0305-MB-J-00023** | 9.85d | 2026-06-19 A | 2026-07-02 |  |  |
| 683 | Emissão inicial | 7d | 2026-06-19 A | 2026-06-29 A | 573SS |  |
| 684 | Análise Tecnored | 1d | 2026-06-24 A | 2026-06-30 | 683 |  |
| 685 | Atendimento de comentários | 1d | 2026-06-30 | 2026-07-01 | 684 |  |
| 686 | Aprovação | 1d | 2026-07-01 | 2026-07-02 | 685 |  |
| 687 | **FD-F0009-0305-MB-J-00024** | 9.85d | 2026-06-19 A | 2026-07-02 |  |  |
| 688 | Emissão inicial | 7d | 2026-06-19 A | 2026-06-29 A | 573SS |  |
| 689 | Análise Tecnored | 1d | 2026-06-24 A | 2026-06-30 | 688 |  |
| 690 | Atendimento de comentários | 1d | 2026-06-30 | 2026-07-01 | 689 |  |
| 691 | Aprovação | 1d | 2026-07-01 | 2026-07-02 | 690 |  |
| 692 | **FD-F0009-0305-MB-J-00025** | 9.85d | 2026-06-19 A | 2026-07-02 |  |  |
| 693 | Emissão inicial | 7d | 2026-06-19 A | 2026-06-29 A | 573SS |  |
| 694 | Análise Tecnored | 1d | 2026-06-24 A | 2026-06-30 | 693 |  |
| 695 | Atendimento de comentários | 1d | 2026-06-30 | 2026-07-01 | 694 |  |
| 696 | Aprovação | 1d | 2026-07-01 | 2026-07-02 | 695 |  |
| 697 | **LB-F0009-0305-MB-J-00001** | 8d | 2026-06-30 | 2026-07-09 |  |  |
| 698 | Emissão inicial | 4d | 2026-06-30 | 2026-07-03 | 558FS-7d | finish no earlier than 2026-07-03 |
| 699 | Análise Tecnored | 1d | 2026-07-06 | 2026-07-06 | 698 |  |
| 700 | Atendimento de comentários | 2d | 2026-07-07 | 2026-07-08 | 699 |  |
| 701 | Aprovação | 1d | 2026-07-09 | 2026-07-09 | 700 |  |
| 702 | **RE-F0009-0305-MB-J-00001** | 8d | 2026-06-30 | 2026-07-09 |  |  |
| 703 | Emissão inicial | 4d | 2026-06-30 | 2026-07-03 | 558FS-7d | finish no earlier than 2026-07-03 |
| 704 | Análise Tecnored | 1d | 2026-07-06 | 2026-07-06 | 703 |  |
| 705 | Atendimento de comentários | 2d | 2026-07-07 | 2026-07-08 | 704 |  |
| 706 | Aprovação | 1d | 2026-07-09 | 2026-07-09 | 705 |  |

Changed:

| ID | Task | Start | Finish | Duration | Complete | Total float | Predecessors | Other |
| --- | --- | --- | --- | --- | --- | --- | --- | --- |
| 1 | **F0009 - Programa Marabá** |  | 2026-07-09 → 2026-07-21 (+12d) | 54d → 60d | 4% → 45% |  |  |  |
| 2 | **Área 0000 -Documento geral** |  | 2026-06-05 → 2026-06-23 (+18d) | 13d → 24d | 0% → 50% |  |  |  |
| 3 | **Marcos** |  | 2026-06-05 → 2026-06-23 (+18d) | 13d → 24d | 0% → 50% |  |  |  |
| 4 | Critério de projeto Processo |  |  | 0d → 1d |  |  |  |  |
| 5 | Critério de projeto Mecânica |  |  | 0d → 1d |  |  |  |  |
| 6 | Critério de projeto Tubulação |  |  | 0d → 1d |  |  |  |  |
| 7 | Critério de projeto Elétrica | 2026-06-05 A | 2026-06-05 A | 0d → 1d | 0% → 100% |  |  |  |
| 8 | Critério de projeto Automação | 2026-06-05 A |  | 0d → 1d |  |  |  |  |
| 9 | Critério de projeto Estrutura Metálica | 2026-06-05 → 2026-06-23 (+18d) | 2026-06-05 → 2026-06-23 (+18d) | 0d → 1d |  |  |  |  |
| 10 | **Área 0305 - Hot Blast Stoves** |  | 2026-07-09 → 2026-07-21 (+12d) | 54d → 60d | 4% → 45% |  |  |  |
| 14 | **Planejamento** |  | 2026-06-01 A |  | 89% → 100% | 28.6d → none |  |  |
| 15 | **LD-F0009-0305-MB-F-00001** |  | 2026-05-28 A |  | 91% → 100% | 30d → none |  |  |
| 19 | Aprovação | 2026-05-28 A | 2026-05-28 A |  | 0% → 100% | 30d → none |  |  |
| 20 | **CR-F0009-0305-MB-F-00001** |  | 2026-06-01 A |  | 86% → 100% | 28.6d → none |  |  |
| 24 | Aprovação | 2026-05-29 A | 2026-06-01 A |  | 0% → 100% | 28.6d → none |  |  |
| 25 | **LF-F0009-0305-MB-F-00001** | 2026-06-29 → 2026-07-01 (+2d) | 2026-07-07 → 2026-07-09 (+2d) |  |  | 2d → 8d |  |  |
| 26 | Emissão inicial | 2026-06-29 → 2026-07-01 (+2d) | 2026-07-01 → 2026-07-03 (+2d) |  |  | 2d → 8d |  |  |
| 27 | Análise Tecnored | 2026-07-02 → 2026-07-06 (+4d) | 2026-07-02 → 2026-07-06 (+4d) |  |  | 2d → 8d |  |  |
| 28 | Atendimento de comentários | 2026-07-03 → 2026-07-07 (+4d) | 2026-07-06 → 2026-07-08 (+2d) |  |  | 2d → 8d |  |  |
| 29 | Aprovação | 2026-07-07 → 2026-07-09 (+2d) | 2026-07-07 → 2026-07-09 (+2d) |  |  | 2d → 8d |  |  |
| 30 | **Coordenação** |  | 2026-07-08 → 2026-07-02 (-6d) | 53d → 47d | 16% → 39% | 1d → 13d |  |  |
| 31 | **RM-F0009-0305-MB-G-00001** | 2026-05-28 → 2026-06-24 A (+27d) | 2026-06-05 → 2026-07-02 (+27d) |  | 0% → 32% | 1d → 13d |  |  |
| 32 | Emissão inicial | 2026-05-28 → 2026-06-24 A (+27d) | 2026-06-01 → 2026-06-28 (+27d) |  | 0% → 75% | 1d → 13d |  | constraint none → finish no earlier than 2026-06-28 |
| 33 | Análise Tecnored | 2026-06-02 → 2026-06-29 (+27d) | 2026-06-02 → 2026-06-29 (+27d) |  |  | 24d → 13d |  |  |
| 34 | Atendimento de comentários | 2026-06-03 → 2026-06-30 (+27d) | 2026-06-04 → 2026-07-01 (+27d) |  |  | 24d → 13d |  |  |
| 35 | Aprovação | 2026-06-05 → 2026-07-02 (+27d) | 2026-06-05 → 2026-07-02 (+27d) |  |  | 24d → 13d |  |  |
| 36 | **RM-F0009-0305MB-G-00002** | 2026-06-16 → 2026-07-13 (+27d) | 2026-06-24 → 2026-07-21 (+27d) |  |  | 1d → 0d |  |  |
| 37 | Emissão inicial | 2026-06-16 → 2026-07-13 (+27d) | 2026-06-18 → 2026-07-15 (+27d) |  |  | 1d → 0d |  | constraint none → start no earlier than 2026-06-22 |
| 38 | Análise Tecnored | 2026-06-19 → 2026-07-16 (+27d) | 2026-06-19 → 2026-07-16 (+27d) |  |  | 11d → 0d |  |  |
| 39 | Atendimento de comentários | 2026-06-22 → 2026-07-17 (+25d) | 2026-06-23 → 2026-07-20 (+27d) |  |  | 11d → 0d |  |  |
| 40 | Aprovação | 2026-06-24 → 2026-07-21 (+27d) | 2026-06-24 → 2026-07-21 (+27d) |  |  | 11d → 0d |  |  |
| 41 | **RL-F0009-0305-MB-G-00001** | 2026-07-02 → 2026-06-26 A (-6d) | 2026-07-08 → 2026-07-01 (-7d) |  | 0% → 19% | 1d → 14d |  |  |
| 42 | Emissão inicial | 2026-07-02 → 2026-06-26 A (-6d) | 2026-07-02 → 2026-06-28 (-4d) | 0d → 1d | 0% → 75% | 1d → 14d | 37FS+10d → none | constraint none → finish no earlier than 2026-06-28 |
| 43 | Análise Tecnored | 2026-07-03 → 2026-06-29 (-4d) | 2026-07-03 → 2026-06-29 (-4d) |  |  | 1d → 14d |  | constraint none → start no earlier than 2026-06-26 |
| 44 | Atendimento de comentários | 2026-07-06 → 2026-06-30 (-6d) | 2026-07-07 → 2026-06-30 (-7d) | 2d → 1d |  | 1d → 14d |  | constraint none → start no earlier than 2026-06-29 |
| 45 | Aprovação | 2026-07-08 → 2026-07-01 (-7d) | 2026-07-08 → 2026-07-01 (-7d) |  |  | 1d → 14d |  | constraint none → start no earlier than 2026-06-30 |
| 46 | **LP-F0009-0305-MB-G-00001** |  | 2026-06-16 → 2026-06-30 (+14d) | 37d → 45d |  | 17d → 15d |  |  |
| 47 | Emissão inicial |  |  |  |  |  |  | constraint none → finish no earlier than 2026-06-29 |
| 49 | Atendimento de comentários | 2026-06-12 → 2026-06-26 (+14d) | 2026-06-15 → 2026-06-29 (+14d) |  |  | 17d → 15d | 48FS+30d → 48FS+38d | constraint none → start no earlier than 2026-06-12 |
| 50 | Aprovação | 2026-06-16 → 2026-06-30 (+14d) | 2026-06-16 → 2026-06-30 (+14d) |  |  | 17d → 15d |  | constraint none → start no earlier than 2026-06-16 |
| 51 | **Processo** | 2026-05-19 A → 2026-06-18 A (+30d) | 2026-06-01 → 2026-07-09 (+38d) | 10d → 16d | 80% → 60% | 28d → 8d |  |  |
| 52 | **CP-F0009-0305-MB-P-00001** |  | 2026-06-10 → 2026-06-11 (+1d) | 23d → 22d |  | 21d → 28d |  |  |
| 54 | Análise Tecnored | 2026-06-05 → 2026-06-08 (+3d) | 2026-06-05 → 2026-06-08 (+3d) |  |  | 21d → 28d |  |  |
| 55 | Atendimento de comentários | 2026-06-08 → 2026-06-09 (+1d) | 2026-06-09 → 2026-06-10 (+1d) |  |  | 21d → 28d |  |  |
| 56 | Aprovação | 2026-06-10 → 2026-06-11 (+1d) | 2026-06-10 → 2026-06-11 (+1d) |  |  | 21d → 28d |  |  |
| 57 | **MD-F0009-0305-MB-P-00001** | 2026-06-17 → 2026-07-17 (+30d) | 2026-06-25 → 2026-07-27 (+32d) |  |  | 10d → -4d |  |  |
| 58 | Emissão inicial | 2026-06-17 → 2026-07-17 (+30d) | 2026-06-19 → 2026-07-21 (+32d) |  |  | 10d → -4d |  |  |
| 59 | Análise Tecnored | 2026-06-22 → 2026-07-22 (+30d) | 2026-06-22 → 2026-07-22 (+30d) |  |  | 10d → -4d |  |  |
| 60 | Atendimento de comentários | 2026-06-23 → 2026-07-23 (+30d) | 2026-06-24 → 2026-07-24 (+30d) |  |  | 10d → -4d |  |  |
| 61 | Aprovação | 2026-06-25 → 2026-07-27 (+32d) | 2026-06-25 → 2026-07-27 (+32d) |  |  | 10d → -4d |  |  |
| 62 | **FG-F0009-0305-MB-P-00001** | 2026-05-19 A → 2026-06-18 A (+30d) | 2026-06-01 → 2026-07-09 (+38d) | 10d → 16d | 80% → 60% | 28d → 8d |  |  |
| 63 | Emissão inicial | 2026-05-19 A → 2026-06-18 A (+30d) | 2026-05-19 A → 2026-06-18 A (+30d) |  |  |  |  | constraint none → finish no earlier than 2026-06-18 |
| 64 | Análise Tecnored | 2026-05-20 A → 2026-06-19 A (+30d) | 2026-05-20 A → 2026-06-19 A (+30d) |  |  |  |  |  |
| 65 | Atendimento de comentários | 2026-05-21 A → 2026-06-30 A (+40d) | 2026-05-22 A → 2026-07-01 (+40d) |  | 100% → 50% | none → 8d |  |  |
| 66 | Aprovação | 2026-06-01 → 2026-07-09 (+38d) | 2026-06-01 → 2026-07-09 (+38d) |  |  | 28d → 8d |  |  |
| 67 | **Mecânica** | 2026-05-19 A → 2026-05-15 A (-4d) | 2026-07-08 → 2026-07-16 (+8d) | 37d → 43d | 4% → 52% | 1d → 3d |  |  |
| 68 | **CP-F0009-0305-MB-M-00001** |  | 2026-05-22 → 2026-05-25 (+3d) | 11d → 12d |  | 31d → 37d |  |  |
| 70 | Análise Tecnored | 2026-05-19 → 2026-05-20 (+1d) | 2026-05-19 → 2026-05-20 (+1d) |  |  | 34d → 39d |  |  |
| 71 | Atendimento de comentários | 2026-05-20 → 2026-05-21 (+1d) | 2026-05-21 → 2026-05-22 (+1d) |  |  | 34d → 39d |  |  |
| 72 | Aprovação | 2026-05-22 → 2026-05-25 (+3d) | 2026-05-22 → 2026-05-25 (+3d) |  |  | 34d → 39d |  |  |
| 73 | **MD-F0009-0305-MB-M-00001** |  | 2026-06-09 → 2026-06-11 (+2d) |  |  | 19d → 25d |  |  |
| 75 | Análise Tecnored | 2026-06-04 → 2026-06-08 (+4d) | 2026-06-04 → 2026-06-08 (+4d) |  |  | 22d → 28d |  |  |
| 76 | Atendimento de comentários | 2026-06-05 → 2026-06-09 (+4d) | 2026-06-08 → 2026-06-10 (+2d) |  |  | 22d → 28d |  |  |
| 77 | Aprovação | 2026-06-09 → 2026-06-11 (+2d) | 2026-06-09 → 2026-06-11 (+2d) |  |  | 22d → 28d |  |  |
| 78 | **LE-F0009-0305-MB-M-00001** |  | 2026-06-02 A |  | 33% → 100% | 27d → none |  |  |
| 80 | Análise Tecnored | 2026-05-28 A | 2026-05-28 A |  | 0% → 100% | 21d → none |  |  |
| 81 | Atendimento de comentários | 2026-05-29 A | 2026-06-01 A |  | 0% → 100% | 21d → none |  |  |
| 82 | Aprovação | 2026-06-02 A | 2026-06-02 A |  | 0% → 100% | 27d → none |  |  |
| 83 | **PQ-F0009-0305-MB-M-00001** | 2026-06-02 → 2026-06-25 (+23d) | 2026-06-10 → 2026-07-03 (+23d) |  |  | 21d → 12d |  |  |
| 84 | Emissão inicial | 2026-06-02 → 2026-06-25 (+23d) | 2026-06-04 → 2026-06-29 (+25d) |  |  | 21d → 12d |  | constraint none → start no earlier than 2026-06-25 |

| ID | Task | Start | Finish | Duration | Complete | Total float | Other |
| --- | --- | --- | --- | --- | --- | --- | --- |
| 85 | Análise Tecnored | 2026-06-05 → 2026-06-30 (+25d) | 2026-06-05 → 2026-06-30 (+25d) |  |  | 21d → 12d |  |
| 86 | Atendimento de comentários | 2026-06-08 → 2026-07-01 (+23d) | 2026-06-09 → 2026-07-02 (+23d) |  |  | 21d → 12d |  |
| 87 | Aprovação | 2026-06-10 → 2026-07-03 (+23d) | 2026-06-10 → 2026-07-03 (+23d) |  |  | 21d → 12d |  |
| 88 | **AG-F0009-0305-MB-L-00001** | 2026-06-22 → 2026-07-09 (+17d) | 2026-07-08 → 2026-07-16 (+8d) | 13d → 6d |  | 1d → 3d |  |
| 89 | Emissão inicial | 2026-06-22 → 2026-07-09 (+17d) | 2026-07-02 → 2026-07-13 (+11d) | 9d → 3d |  | 1d → 3d | constraint none → finish no earlier than 2026-06-26 |
| 90 | Análise Tecnored | 2026-07-03 → 2026-07-14 (+11d) | 2026-07-03 → 2026-07-14 (+11d) |  |  | 1d → 3d |  |
| 91 | Atendimento de comentários | 2026-07-06 → 2026-07-15 (+9d) | 2026-07-07 → 2026-07-15 (+8d) | 2d → 1d |  | 1d → 3d |  |
| 92 | Aprovação | 2026-07-08 → 2026-07-16 (+8d) | 2026-07-08 → 2026-07-16 (+8d) |  |  | 1d → 3d |  |
| 93 | **AG-F0009-0305-MB-L-00002** | 2026-06-22 → 2026-07-09 (+17d) | 2026-07-08 → 2026-07-16 (+8d) | 13d → 6d |  | 1d → 3d |  |
| 94 | Emissão inicial | 2026-06-22 → 2026-07-09 (+17d) | 2026-07-02 → 2026-07-13 (+11d) | 9d → 3d |  | 1d → 3d |  |
| 95 | Análise Tecnored | 2026-07-03 → 2026-07-14 (+11d) | 2026-07-03 → 2026-07-14 (+11d) |  |  | 1d → 3d |  |
| 96 | Atendimento de comentários | 2026-07-06 → 2026-07-15 (+9d) | 2026-07-07 → 2026-07-15 (+8d) | 2d → 1d |  | 1d → 3d |  |
| 97 | Aprovação | 2026-07-08 → 2026-07-16 (+8d) | 2026-07-08 → 2026-07-16 (+8d) |  |  | 1d → 3d |  |
| 98 | **AG-F0009-0305-MB-L-00003** | 2026-06-22 → 2026-07-09 (+17d) | 2026-07-08 → 2026-07-16 (+8d) | 13d → 6d |  | 1d → 3d |  |
| 99 | Emissão inicial | 2026-06-22 → 2026-07-09 (+17d) | 2026-07-02 → 2026-07-13 (+11d) | 9d → 3d |  | 1d → 3d |  |
| 100 | Análise Tecnored | 2026-07-03 → 2026-07-14 (+11d) | 2026-07-03 → 2026-07-14 (+11d) |  |  | 1d → 3d |  |
| 101 | Atendimento de comentários | 2026-07-06 → 2026-07-15 (+9d) | 2026-07-07 → 2026-07-15 (+8d) | 2d → 1d |  | 1d → 3d |  |
| 102 | Aprovação | 2026-07-08 → 2026-07-16 (+8d) | 2026-07-08 → 2026-07-16 (+8d) |  |  | 1d → 3d |  |
| 103 | **AG-F0009-0305-MB-L-00004** | 2026-06-22 → 2026-07-09 (+17d) | 2026-07-08 → 2026-07-16 (+8d) | 13d → 6d |  | 1d → 3d |  |
| 104 | Emissão inicial | 2026-06-22 → 2026-07-09 (+17d) | 2026-07-02 → 2026-07-13 (+11d) | 9d → 3d |  | 1d → 3d |  |
| 105 | Análise Tecnored | 2026-07-03 → 2026-07-14 (+11d) | 2026-07-03 → 2026-07-14 (+11d) |  |  | 1d → 3d |  |
| 106 | Atendimento de comentários | 2026-07-06 → 2026-07-15 (+9d) | 2026-07-07 → 2026-07-15 (+8d) | 2d → 1d |  | 1d → 3d |  |
| 107 | Aprovação | 2026-07-08 → 2026-07-16 (+8d) | 2026-07-08 → 2026-07-16 (+8d) |  |  | 1d → 3d |  |
| 108 | **AG-F0009-0305-MB-L-00005** | 2026-06-22 → 2026-07-09 (+17d) | 2026-07-08 → 2026-07-16 (+8d) | 13d → 6d |  | 1d → 3d |  |
| 109 | Emissão inicial | 2026-06-22 → 2026-07-09 (+17d) | 2026-07-02 → 2026-07-13 (+11d) | 9d → 3d |  | 1d → 3d |  |
| 110 | Análise Tecnored | 2026-07-03 → 2026-07-14 (+11d) | 2026-07-03 → 2026-07-14 (+11d) |  |  | 1d → 3d |  |
| 111 | Atendimento de comentários | 2026-07-06 → 2026-07-15 (+9d) | 2026-07-07 → 2026-07-15 (+8d) | 2d → 1d |  | 1d → 3d |  |
| 112 | Aprovação | 2026-07-08 → 2026-07-16 (+8d) | 2026-07-08 → 2026-07-16 (+8d) |  |  | 1d → 3d |  |
| 113 | **AG-F0009-0305-MB-L-00006** | 2026-06-22 → 2026-07-09 (+17d) | 2026-07-08 → 2026-07-16 (+8d) | 13d → 6d |  | 1d → 3d |  |
| 114 | Emissão inicial | 2026-06-22 → 2026-07-09 (+17d) | 2026-07-02 → 2026-07-13 (+11d) | 9d → 3d |  | 1d → 3d |  |
| 115 | Análise Tecnored | 2026-07-03 → 2026-07-14 (+11d) | 2026-07-03 → 2026-07-14 (+11d) |  |  | 1d → 3d |  |
| 116 | Atendimento de comentários | 2026-07-06 → 2026-07-15 (+9d) | 2026-07-07 → 2026-07-15 (+8d) | 2d → 1d |  | 1d → 3d |  |
| 117 | Aprovação | 2026-07-08 → 2026-07-16 (+8d) | 2026-07-08 → 2026-07-16 (+8d) |  |  | 1d → 3d |  |
| 118 | **AG-F0009-0305-MB-L-00007** | 2026-06-22 → 2026-07-09 (+17d) | 2026-07-08 → 2026-07-16 (+8d) | 13d → 6d |  | 1d → 3d |  |
| 119 | Emissão inicial | 2026-06-22 → 2026-07-09 (+17d) | 2026-07-02 → 2026-07-13 (+11d) | 9d → 3d |  | 1d → 3d |  |
| 120 | Análise Tecnored | 2026-07-03 → 2026-07-14 (+11d) | 2026-07-03 → 2026-07-14 (+11d) |  |  | 1d → 3d |  |
| 121 | Atendimento de comentários | 2026-07-06 → 2026-07-15 (+9d) | 2026-07-07 → 2026-07-15 (+8d) | 2d → 1d |  | 1d → 3d |  |
| 122 | Aprovação | 2026-07-08 → 2026-07-16 (+8d) | 2026-07-08 → 2026-07-16 (+8d) |  |  | 1d → 3d |  |
| 123 | **AG-F0009-0305-MB-L-00008** | 2026-06-22 → 2026-07-09 (+17d) | 2026-07-08 → 2026-07-16 (+8d) | 13d → 6d |  | 1d → 3d |  |
| 124 | Emissão inicial | 2026-06-22 → 2026-07-09 (+17d) | 2026-07-02 → 2026-07-13 (+11d) | 9d → 3d |  | 1d → 3d |  |
| 125 | Análise Tecnored | 2026-07-03 → 2026-07-14 (+11d) | 2026-07-03 → 2026-07-14 (+11d) |  |  | 1d → 3d |  |
| 126 | Atendimento de comentários | 2026-07-06 → 2026-07-15 (+9d) | 2026-07-07 → 2026-07-15 (+8d) | 2d → 1d |  | 1d → 3d |  |
| 127 | Aprovação | 2026-07-08 → 2026-07-16 (+8d) | 2026-07-08 → 2026-07-16 (+8d) |  |  | 1d → 3d |  |
| 128 | **AG-F0009-0305-MB-L-00009** | 2026-06-22 → 2026-07-09 (+17d) | 2026-07-08 → 2026-07-16 (+8d) | 13d → 6d |  | 1d → 3d |  |
| 129 | Emissão inicial | 2026-06-22 → 2026-07-09 (+17d) | 2026-07-02 → 2026-07-13 (+11d) | 9d → 3d |  | 1d → 3d |  |
| 130 | Análise Tecnored | 2026-07-03 → 2026-07-14 (+11d) | 2026-07-03 → 2026-07-14 (+11d) |  |  | 1d → 3d |  |
| 131 | Atendimento de comentários | 2026-07-06 → 2026-07-15 (+9d) | 2026-07-07 → 2026-07-15 (+8d) | 2d → 1d |  | 1d → 3d |  |
| 132 | Aprovação | 2026-07-08 → 2026-07-16 (+8d) | 2026-07-08 → 2026-07-16 (+8d) |  |  | 1d → 3d |  |
| 133 | **PL-F0009-0305-MB-M-00001** | 2026-06-01 → 2026-06-22 A (+21d) | 2026-06-16 → 2026-07-07 (+21d) |  | 0% → 67% | 17d → 10d |  |
| 134 | Emissão inicial | 2026-06-01 → 2026-06-22 A (+21d) | 2026-06-10 → 2026-07-01 A (+21d) |  | 0% → 100% | 17d → none | constraint none → start no earlier than 2026-06-15 |
| 135 | Análise Tecnored | 2026-06-11 → 2026-07-02 (+21d) | 2026-06-11 → 2026-07-02 (+21d) |  |  | 17d → 10d |  |
| 136 | Atendimento de comentários | 2026-06-12 → 2026-07-03 (+21d) | 2026-06-15 → 2026-07-06 (+21d) |  |  | 17d → 10d |  |
| 137 | Aprovação | 2026-06-16 → 2026-07-07 (+21d) | 2026-06-16 → 2026-07-07 (+21d) |  |  | 17d → 10d |  |
| 138 | **PL-F0009-0305-MB-M-00002** | 2026-06-01 → 2026-06-22 A (+21d) | 2026-06-16 → 2026-07-07 (+21d) |  | 0% → 67% | 17d → 10d |  |
| 139 | Emissão inicial | 2026-06-01 → 2026-06-22 A (+21d) | 2026-06-10 → 2026-07-01 A (+21d) |  | 0% → 100% | 17d → none | constraint none → start no earlier than 2026-06-15 |
| 140 | Análise Tecnored | 2026-06-11 → 2026-07-02 (+21d) | 2026-06-11 → 2026-07-02 (+21d) |  |  | 17d → 10d |  |
| 141 | Atendimento de comentários | 2026-06-12 → 2026-07-03 (+21d) | 2026-06-15 → 2026-07-06 (+21d) |  |  | 17d → 10d |  |
| 142 | Aprovação | 2026-06-16 → 2026-07-07 (+21d) | 2026-06-16 → 2026-07-07 (+21d) |  |  | 17d → 10d |  |
| 143 | **PL-F0009-0305-MB-M-00003** | 2026-06-01 → 2026-06-22 A (+21d) | 2026-06-16 → 2026-07-07 (+21d) |  | 0% → 67% | 17d → 10d |  |
| 144 | Emissão inicial | 2026-06-01 → 2026-06-22 A (+21d) | 2026-06-10 → 2026-07-01 A (+21d) |  | 0% → 100% | 17d → none | constraint none → start no earlier than 2026-06-15 |
| 145 | Análise Tecnored | 2026-06-11 → 2026-07-02 (+21d) | 2026-06-11 → 2026-07-02 (+21d) |  |  | 17d → 10d |  |
| 146 | Atendimento de comentários | 2026-06-12 → 2026-07-03 (+21d) | 2026-06-15 → 2026-07-06 (+21d) |  |  | 17d → 10d |  |
| 147 | Aprovação | 2026-06-16 → 2026-07-07 (+21d) | 2026-06-16 → 2026-07-07 (+21d) |  |  | 17d → 10d |  |
| 148 | **PL-F0009-0305-MB-M-00004** | 2026-06-01 → 2026-06-22 A (+21d) | 2026-06-16 → 2026-07-07 (+21d) |  | 0% → 67% | 17d → 10d |  |
| 149 | Emissão inicial | 2026-06-01 → 2026-06-22 A (+21d) | 2026-06-10 → 2026-07-01 A (+21d) |  | 0% → 100% | 17d → none | constraint none → start no earlier than 2026-06-15 |
| 150 | Análise Tecnored | 2026-06-11 → 2026-07-02 (+21d) | 2026-06-11 → 2026-07-02 (+21d) |  |  | 17d → 10d |  |
| 151 | Atendimento de comentários | 2026-06-12 → 2026-07-03 (+21d) | 2026-06-15 → 2026-07-06 (+21d) |  |  | 17d → 10d |  |
| 152 | Aprovação | 2026-06-16 → 2026-07-07 (+21d) | 2026-06-16 → 2026-07-07 (+21d) |  |  | 17d → 10d |  |
| 163 | **MC-F0009-0305-MB-M-00001** | 2026-06-01 A | 2026-06-18 → 2026-06-22 (+4d) |  | 0% → 86% | 0d → 21d |  |
| 164 | Emissão inicial | 2026-06-01 A | 2026-06-12 → 2026-06-16 A (+4d) |  | 0% → 100% | 0d → none |  |

| ID | Task | Start | Finish | Duration | Complete | Total float | Predecessors | Other |
| --- | --- | --- | --- | --- | --- | --- | --- | --- |
| 165 | Análise Tecnored | 2026-06-15 → 2026-06-17 A (+2d) | 2026-06-15 → 2026-06-17 A (+2d) |  | 0% → 100% | 0d → none |  |  |
| 166 | Atendimento de comentários | 2026-06-16 → 2026-06-18 A (+2d) | 2026-06-17 → 2026-06-19 (+2d) |  | 0% → 50% | 15d → 21d |  |  |
| 167 | Aprovação | 2026-06-18 → 2026-06-22 (+4d) | 2026-06-18 → 2026-06-22 (+4d) |  |  | 15d → 21d |  |  |
| 183 | **ML-F0009-0305-MB-M-00001** | 2026-05-19 A → 2026-05-15 A (-4d) |  | 12d → 14d | 67% → 92% | 26d → 32d |  |  |
| 184 | Emissão inicial | 2026-05-19 A → 2026-05-15 A (-4d) | 2026-05-28 A → 2026-05-26 A (-2d) |  |  |  |  |  |
| 185 | Análise Tecnored | 2026-05-29 A | 2026-05-29 A |  | 0% → 100% | 0d → none |  |  |
| 186 | Atendimento de comentários | 2026-06-01 A |  |  | 0% → 75% | 13d → 0.5d |  |  |
| 187 | Aprovação | 2026-06-03 A |  |  | 0% → 50% | 26d → 32d |  |  |
| 188 | **FD-F0009-0305-MB-M-00001** | 2026-06-15 → 2026-06-17 A (+2d) | 2026-06-23 → 2026-06-25 (+2d) |  | 0% → 43% | 12d → 18d |  |  |
| 189 | Emissão inicial | 2026-06-15 → 2026-06-17 A (+2d) | 2026-06-17 → 2026-06-19 A (+2d) |  | 0% → 100% | 12d → none | 164 → 164, 169, 174, 179 |  |
| 190 | Análise Tecnored | 2026-06-18 → 2026-06-22 (+4d) | 2026-06-18 → 2026-06-22 (+4d) |  |  | 12d → 18d |  |  |
| 191 | Atendimento de comentários | 2026-06-19 → 2026-06-23 (+4d) | 2026-06-22 → 2026-06-24 (+2d) |  |  | 12d → 18d |  |  |
| 192 | Aprovação | 2026-06-23 → 2026-06-25 (+2d) | 2026-06-23 → 2026-06-25 (+2d) |  |  | 12d → 18d |  |  |
| 193 | **FD-F0009-0305-MB-M-00002** | 2026-06-15 → 2026-06-17 A (+2d) | 2026-06-23 → 2026-06-25 (+2d) |  | 0% → 50% | 12d → 18d |  |  |
| 194 | Emissão inicial | 2026-06-15 → 2026-06-17 A (+2d) | 2026-06-17 → 2026-06-19 A (+2d) |  | 0% → 100% | 12d → none | 164 → 164, 169, 174, 179 |  |
| 195 | Análise Tecnored | 2026-06-18 → 2026-06-22 A (+4d) | 2026-06-18 → 2026-06-22 (+4d) |  | 0% → 50% | 12d → 18d |  |  |
| 196 | Atendimento de comentários | 2026-06-19 → 2026-06-23 (+4d) | 2026-06-22 → 2026-06-24 (+2d) |  |  | 12d → 18d |  |  |
| 197 | Aprovação | 2026-06-23 → 2026-06-25 (+2d) | 2026-06-23 → 2026-06-25 (+2d) |  |  | 12d → 18d |  |  |
| 198 | **FD-F0009-0305-MB-M-00003** | 2026-06-15 → 2026-06-17 A (+2d) | 2026-06-23 → 2026-06-25 (+2d) |  | 0% → 43% | 12d → 18d |  |  |
| 199 | Emissão inicial | 2026-06-15 → 2026-06-17 A (+2d) | 2026-06-17 → 2026-06-19 A (+2d) |  | 0% → 100% | 12d → none | 164 → 164, 169, 174, 179 |  |
| 200 | Análise Tecnored | 2026-06-18 → 2026-06-22 (+4d) | 2026-06-18 → 2026-06-22 (+4d) |  |  | 12d → 18d |  |  |
| 201 | Atendimento de comentários | 2026-06-19 → 2026-06-23 (+4d) | 2026-06-22 → 2026-06-24 (+2d) |  |  | 12d → 18d |  |  |
| 202 | Aprovação | 2026-06-23 → 2026-06-25 (+2d) | 2026-06-23 → 2026-06-25 (+2d) |  |  | 12d → 18d |  |  |
| 203 | **Tubulação/Utilidades** | 2026-05-29 → 2026-06-10 A (+12d) | 2026-07-09 → 2026-07-14 (+5d) | 30d → 25d | 0% → 7% | 0d → 5d |  |  |
| 204 | **CP-F0009-0305-MB-T-00001** |  | 2026-05-27 → 2026-05-28 (+1d) | 14d → 15d |  | 31d → 36d |  |  |
| 206 | Análise Tecnored | 2026-05-22 → 2026-05-25 (+3d) | 2026-05-22 → 2026-05-25 (+3d) |  |  | 31d → 36d |  |  |
| 207 | Atendimento de comentários | 2026-05-25 → 2026-05-26 (+1d) | 2026-05-26 → 2026-05-27 (+1d) |  |  | 31d → 36d |  |  |
| 208 | Aprovação | 2026-05-27 → 2026-05-28 (+1d) | 2026-05-27 → 2026-05-28 (+1d) |  |  | 31d → 36d |  |  |
| 209 | **MD-F0009-0305-MB-U-00001** | 2026-06-19 → 2026-07-22 (+33d) | 2026-06-29 → 2026-07-30 (+31d) |  |  | 5d → -7d |  |  |
| 210 | Emissão inicial | 2026-06-19 → 2026-07-22 (+33d) | 2026-06-23 → 2026-07-24 (+31d) |  |  | 5d → -7d | 254FS+5d → 254FS+5d, 284FS+5d, 304FS+5d |  |
| 211 | Análise Tecnored | 2026-06-24 → 2026-07-27 (+33d) | 2026-06-24 → 2026-07-27 (+33d) |  |  | 8d → -7d |  |  |
| 212 | Atendimento de comentários | 2026-06-25 → 2026-07-28 (+33d) | 2026-06-26 → 2026-07-29 (+33d) |  |  | 8d → -7d |  |  |
| 213 | Aprovação | 2026-06-29 → 2026-07-30 (+31d) | 2026-06-29 → 2026-07-30 (+31d) |  |  | 8d → -7d |  |  |
| 214 | **ML-F0009-0305-MB-T-00001** | 2026-05-29 → 2026-06-24 A (+26d) | 2026-06-08 → 2026-07-02 (+24d) |  | 0% → 39% | 23d → 13d |  |  |
| 215 | Emissão inicial | 2026-05-29 → 2026-06-24 A (+26d) | 2026-06-02 → 2026-06-26 (+24d) |  | 0% → 90% | 23d → 9d | 184 → 184, 245 | constraint none → start no earlier than 2026-06-24 |
| 216 | Análise Tecnored | 2026-06-03 → 2026-06-29 (+26d) | 2026-06-03 → 2026-06-29 (+26d) |  |  | 23d → 9d |  |  |
| 217 | Atendimento de comentários | 2026-06-04 → 2026-06-30 (+26d) | 2026-06-05 → 2026-07-01 (+26d) |  |  | 23d → 13d |  |  |
| 218 | Aprovação | 2026-06-08 → 2026-07-02 (+24d) | 2026-06-08 → 2026-07-02 (+24d) |  |  | 23d → 13d |  |  |
| 219 | **ET-F0009-0305-MB-T-00001** | 2026-07-01 → 2026-06-29 (-2d) | 2026-07-09 → 2026-07-07 (-2d) |  |  | 0d → 10d |  |  |
| 220 | Emissão inicial | 2026-07-01 → 2026-06-29 (-2d) | 2026-07-03 → 2026-07-01 (-2d) |  |  | 0d → 10d |  |  |
| 221 | Análise Tecnored | 2026-07-06 → 2026-07-02 (-4d) | 2026-07-06 → 2026-07-02 (-4d) |  |  | 0d → 10d |  |  |
| 222 | Atendimento de comentários | 2026-07-07 → 2026-07-03 (-4d) | 2026-07-08 → 2026-07-06 (-2d) |  |  | 0d → 10d |  |  |
| 223 | Aprovação | 2026-07-09 → 2026-07-07 (-2d) | 2026-07-09 → 2026-07-07 (-2d) |  |  | 0d → 10d |  |  |
| 224 | **FD-F0009-0305-MB-T-00001** | 2026-06-24 → 2026-06-22 (-2d) | 2026-07-02 → 2026-06-30 (-2d) |  |  | 0d → 15d |  |  |
| 225 | Emissão inicial | 2026-06-24 → 2026-06-22 (-2d) | 2026-06-26 → 2026-06-24 (-2d) |  |  | 0d → 15d | 240 → 245 | constraint none → start no earlier than 2026-06-22 |
| 226 | Análise Tecnored | 2026-06-29 → 2026-06-25 (-4d) | 2026-06-29 → 2026-06-25 (-4d) |  |  | 5d → 15d |  |  |
| 227 | Atendimento de comentários | 2026-06-30 → 2026-06-26 (-4d) | 2026-07-01 → 2026-06-29 (-2d) |  |  | 5d → 15d |  |  |
| 228 | Aprovação | 2026-07-02 → 2026-06-30 (-2d) | 2026-07-02 → 2026-06-30 (-2d) |  |  | 5d → 15d |  |  |
| 229 | **FD-F0009-0305-MB-T-00002** | 2026-06-24 → 2026-06-29 (+5d) | 2026-07-02 → 2026-07-07 (+5d) |  |  | 5d → 10d |  |  |
| 230 | Emissão inicial | 2026-06-24 → 2026-06-29 (+5d) | 2026-06-26 → 2026-07-01 (+5d) |  |  | 5d → 10d |  |  |
| 231 | Análise Tecnored | 2026-06-29 → 2026-07-02 (+3d) | 2026-06-29 → 2026-07-02 (+3d) |  |  | 5d → 10d |  |  |
| 232 | Atendimento de comentários | 2026-06-30 → 2026-07-03 (+3d) | 2026-07-01 → 2026-07-06 (+5d) |  |  | 5d → 10d |  |  |
| 233 | Aprovação | 2026-07-02 → 2026-07-07 (+5d) | 2026-07-02 → 2026-07-07 (+5d) |  |  | 5d → 10d |  |  |
| 234 | **PQ-F0009-0305-MB-T-00001** | 2026-06-19 → 2026-06-29 (+10d) | 2026-06-29 → 2026-07-07 (+8d) |  |  | 8d → 10d |  |  |
| 235 | Emissão inicial | 2026-06-19 → 2026-06-29 (+10d) | 2026-06-23 → 2026-07-01 (+8d) |  |  | 8d → 10d | 210 → none | constraint none → start no earlier than 2026-06-29 |
| 236 | Análise Tecnored | 2026-06-24 → 2026-07-02 (+8d) | 2026-06-24 → 2026-07-02 (+8d) |  |  | 8d → 10d |  |  |
| 237 | Atendimento de comentários | 2026-06-25 → 2026-07-03 (+8d) | 2026-06-26 → 2026-07-06 (+10d) |  |  | 8d → 10d |  |  |
| 238 | Aprovação | 2026-06-29 → 2026-07-07 (+8d) | 2026-06-29 → 2026-07-07 (+8d) |  |  | 8d → 10d |  |  |
| 239 | **MC-F0009-0305-MB-T-00001** | 2026-06-19 → 2026-06-22 (+3d) | 2026-06-29 → 2026-07-02 (+3d) | 7d → 9d |  | 0d → 8d |  |  |
| 240 | Emissão inicial | 2026-06-19 → 2026-06-22 (+3d) | 2026-06-23 → 2026-06-26 (+3d) | 3d → 5d |  | 0d → 8d | 184FS+15d → 225SS |  |
| 241 | Análise Tecnored | 2026-06-24 → 2026-06-29 (+5d) | 2026-06-24 → 2026-06-29 (+5d) |  |  |  |  |  |
| 242 | Atendimento de comentários | 2026-06-25 → 2026-06-30 (+5d) | 2026-06-26 → 2026-07-01 (+5d) |  |  |  |  |  |
| 243 | Aprovação | 2026-06-29 → 2026-07-02 (+3d) | 2026-06-29 → 2026-07-02 (+3d) |  |  | 8d → 13d |  |  |
| 244 | **FG-F0009-0305-MB-T-00001** | 2026-06-03 → 2026-06-10 A (+7d) | 2026-06-10 → 2026-06-18 (+8d) | 6d → 7d | 0% → 71% | 21d → 23d |  |  |
| 245 | Emissão inicial | 2026-06-03 → 2026-06-10 A (+7d) | 2026-06-04 → 2026-06-12 A (+8d) | 2d → 3d | 0% → 100% | 21d → none | 63FS+10d → 63FS+13d | constraint none → finish no earlier than 2026-06-12 |
| 246 | Análise Tecnored | 2026-06-05 → 2026-06-15 A (+10d) | 2026-06-05 → 2026-06-15 A (+10d) |  | 0% → 100% | 21d → none |  |  |
| 247 | Atendimento de comentários | 2026-06-08 → 2026-06-16 A (+8d) | 2026-06-09 → 2026-06-17 (+8d) |  | 0% → 50% | 21d → 23d |  |  |
| 248 | Aprovação | 2026-06-10 → 2026-06-18 (+8d) | 2026-06-10 → 2026-06-18 (+8d) |  |  | 21d → 23d |  |  |
| 249 | **FG-F0009-0305-MB-T-00002** | 2026-06-03 → 2026-07-03 (+30d) | 2026-06-10 → 2026-07-10 (+30d) |  |  | 21d → 7d |  |  |
| 250 | Emissão inicial | 2026-06-03 → 2026-07-03 (+30d) | 2026-06-04 → 2026-07-06 (+32d) |  |  | 21d → 7d |  |  |

| ID | Task | Start | Finish | Duration | Complete | Total float | Predecessors | Other |
| --- | --- | --- | --- | --- | --- | --- | --- | --- |
| 251 | Análise Tecnored | 2026-06-05 → 2026-07-07 (+32d) | 2026-06-05 → 2026-07-07 (+32d) |  |  | 21d → 7d |  |  |
| 252 | Atendimento de comentários | 2026-06-08 → 2026-07-08 (+30d) | 2026-06-09 → 2026-07-09 (+30d) |  |  | 21d → 7d |  |  |
| 253 | Aprovação | 2026-06-10 → 2026-07-10 (+30d) | 2026-06-10 → 2026-07-10 (+30d) |  |  | 21d → 7d |  |  |
| 254 | **AG-F0009-0305-MB-T-00001** | 2026-06-03 → 2026-07-06 (+33d) | 2026-06-11 → 2026-07-14 (+33d) |  |  | 13d → 5d |  |  |
| 255 | Emissão inicial | 2026-06-03 → 2026-07-06 (+33d) | 2026-06-05 → 2026-07-08 (+33d) |  |  | 13d → 5d | 186 → 216 | constraint none → start no earlier than 2026-07-06 |
| 256 | Análise Tecnored | 2026-06-08 → 2026-07-09 (+31d) | 2026-06-08 → 2026-07-09 (+31d) |  |  | 13d → 5d |  |  |
| 257 | Atendimento de comentários | 2026-06-09 → 2026-07-10 (+31d) | 2026-06-10 → 2026-07-13 (+33d) |  |  | 13d → 5d |  |  |
| 258 | Aprovação | 2026-06-11 → 2026-07-14 (+33d) | 2026-06-11 → 2026-07-14 (+33d) |  |  | 13d → 5d |  |  |
| 259 | **AG-F0009-0305-MB-T-00002** | 2026-06-03 → 2026-07-06 (+33d) | 2026-06-11 → 2026-07-14 (+33d) |  |  | 20d → 5d |  |  |
| 260 | Emissão inicial | 2026-06-03 → 2026-07-06 (+33d) | 2026-06-05 → 2026-07-08 (+33d) |  |  | 20d → 5d | 186 → 216 | constraint none → start no earlier than 2026-07-06 |
| 261 | Análise Tecnored | 2026-06-08 → 2026-07-09 (+31d) | 2026-06-08 → 2026-07-09 (+31d) |  |  | 20d → 5d |  |  |
| 262 | Atendimento de comentários | 2026-06-09 → 2026-07-10 (+31d) | 2026-06-10 → 2026-07-13 (+33d) |  |  | 20d → 5d |  |  |
| 263 | Aprovação | 2026-06-11 → 2026-07-14 (+33d) | 2026-06-11 → 2026-07-14 (+33d) |  |  | 20d → 5d |  |  |
| 264 | **AG-F0009-0305-MB-T-00003** | 2026-06-03 → 2026-07-06 (+33d) | 2026-06-11 → 2026-07-14 (+33d) |  |  | 20d → 5d |  |  |
| 265 | Emissão inicial | 2026-06-03 → 2026-07-06 (+33d) | 2026-06-05 → 2026-07-08 (+33d) |  |  | 20d → 5d | 186 → 216 | constraint none → start no earlier than 2026-07-06 |
| 266 | Análise Tecnored | 2026-06-08 → 2026-07-09 (+31d) | 2026-06-08 → 2026-07-09 (+31d) |  |  | 20d → 5d |  |  |
| 267 | Atendimento de comentários | 2026-06-09 → 2026-07-10 (+31d) | 2026-06-10 → 2026-07-13 (+33d) |  |  | 20d → 5d |  |  |
| 268 | Aprovação | 2026-06-11 → 2026-07-14 (+33d) | 2026-06-11 → 2026-07-14 (+33d) |  |  | 20d → 5d |  |  |
| 269 | **AG-F0009-0305-MB-T-00004** |  | 2026-06-11 → 2026-06-15 (+4d) |  |  | 20d → 26d |  |  |
| 270 | Emissão inicial |  | 2026-06-05 → 2026-06-09 (+4d) |  |  | 20d → 26d |  |  |
| 271 | Análise Tecnored | 2026-06-08 → 2026-06-10 (+2d) | 2026-06-08 → 2026-06-10 (+2d) |  |  | 20d → 26d |  |  |
| 272 | Atendimento de comentários | 2026-06-09 → 2026-06-11 (+2d) | 2026-06-10 → 2026-06-12 (+2d) |  |  | 20d → 26d |  |  |
| 273 | Aprovação | 2026-06-11 → 2026-06-15 (+4d) | 2026-06-11 → 2026-06-15 (+4d) |  |  | 20d → 26d |  |  |
| 274 | **AG-F0009-0305-MB-T-00005** |  | 2026-06-11 → 2026-06-15 (+4d) |  |  | 20d → 26d |  |  |
| 275 | Emissão inicial |  | 2026-06-05 → 2026-06-09 (+4d) |  |  | 20d → 26d |  |  |
| 276 | Análise Tecnored | 2026-06-08 → 2026-06-10 (+2d) | 2026-06-08 → 2026-06-10 (+2d) |  |  | 20d → 26d |  |  |
| 277 | Atendimento de comentários | 2026-06-09 → 2026-06-11 (+2d) | 2026-06-10 → 2026-06-12 (+2d) |  |  | 20d → 26d |  |  |
| 278 | Aprovação | 2026-06-11 → 2026-06-15 (+4d) | 2026-06-11 → 2026-06-15 (+4d) |  |  | 20d → 26d |  |  |
| 279 | **AG-F0009-0305-MB-T-00006** |  | 2026-06-11 → 2026-06-15 (+4d) |  |  | 20d → 26d |  |  |
| 280 | Emissão inicial |  | 2026-06-05 → 2026-06-09 (+4d) |  |  | 20d → 26d |  |  |
| 281 | Análise Tecnored | 2026-06-08 → 2026-06-10 (+2d) | 2026-06-08 → 2026-06-10 (+2d) |  |  | 20d → 26d |  |  |
| 282 | Atendimento de comentários | 2026-06-09 → 2026-06-11 (+2d) | 2026-06-10 → 2026-06-12 (+2d) |  |  | 20d → 26d |  |  |
| 283 | Aprovação | 2026-06-11 → 2026-06-15 (+4d) | 2026-06-11 → 2026-06-15 (+4d) |  |  | 20d → 26d |  |  |
| 319 | **LK-F0009-0305-MB-T-00001** | 2026-06-03 → 2026-07-01 (+28d) | 2026-06-11 → 2026-07-08 (+27d) | 7d → 6d |  | 20d → 9d |  |  |
| 320 | Emissão inicial | 2026-06-03 → 2026-07-01 (+28d) | 2026-06-05 → 2026-07-02 (+27d) | 3d → 2d |  | 20d → 9d | 186 → 242 | constraint none → start no earlier than 2026-07-01 |
| 321 | Análise Tecnored | 2026-06-08 → 2026-07-03 (+25d) | 2026-06-08 → 2026-07-03 (+25d) |  |  | 20d → 9d |  |  |
| 322 | Atendimento de comentários | 2026-06-09 → 2026-07-06 (+27d) | 2026-06-10 → 2026-07-07 (+27d) |  |  | 20d → 9d |  |  |
| 323 | Aprovação | 2026-06-11 → 2026-07-08 (+27d) | 2026-06-11 → 2026-07-08 (+27d) |  |  | 20d → 9d |  |  |
| 324 | **MC-F0009-0305-MB-T-00002** | 2026-05-29 → 2026-05-27 (-2d) |  |  |  | 16d → 24d |  |  |
| 325 | Emissão inicial | 2026-05-29 → 2026-05-27 (-2d) |  |  |  | 16d → 24d |  |  |
| 329 | **Estrutura metálica** | 2026-06-16 → 2026-06-29 A (+13d) | 2026-07-08 → 2026-07-21 (+13d) |  | 0% → 2% |  |  |  |
| 330 | **CP-F0009-0305-MB-S-00001** |  | 2026-06-10 → 2026-06-29 (+19d) | 22d → 33d |  | 21d → 16d |  |  |
| 332 | Análise Tecnored | 2026-06-05 → 2026-06-24 (+19d) | 2026-06-05 → 2026-06-24 (+19d) |  |  | 21d → 16d |  |  |
| 333 | Atendimento de comentários | 2026-06-08 → 2026-06-25 (+17d) | 2026-06-09 → 2026-06-26 (+17d) |  |  | 21d → 16d |  |  |
| 334 | Aprovação | 2026-06-10 → 2026-06-29 (+19d) | 2026-06-10 → 2026-06-29 (+19d) |  |  | 21d → 16d |  |  |
| 335 | **ML-F0009-0305-MB-S-00001** | 2026-06-17 → 2026-07-06 A (+19d) | 2026-06-25 → 2026-07-13 (+18d) | 7d → 6d | 0% → 38% | 1d → 6d |  |  |
| 336 | Emissão inicial | 2026-06-17 → 2026-07-06 A (+19d) | 2026-06-19 → 2026-07-08 (+19d) |  | 0% → 75% | 1d → 0d | 351FS-4d → 351FS-8d | constraint none → start no earlier than 2026-06-23 |
| 337 | Análise Tecnored | 2026-06-22 → 2026-07-09 (+17d) | 2026-06-22 → 2026-07-09 (+17d) |  |  | 1d → 0d |  |  |
| 338 | Atendimento de comentários | 2026-06-23 → 2026-07-10 (+17d) | 2026-06-24 → 2026-07-10 (+16d) | 2d → 1d |  | 1d → 0d |  |  |
| 339 | Aprovação | 2026-06-25 → 2026-07-13 (+18d) | 2026-06-25 → 2026-07-13 (+18d) |  |  | 2d → 6d |  |  |
| 340 | **PQ-F0009-0305-MB-S-00001** | 2026-06-30 → 2026-07-09 (+9d) | 2026-07-07 → 2026-07-16 (+9d) |  |  | 2d → 3d |  |  |
| 341 | Emissão inicial | 2026-06-30 → 2026-07-09 (+9d) | 2026-07-01 → 2026-07-13 (+12d) | 2d → 3d |  | 2d → 3d | 346 → 336 | constraint none → finish no earlier than 2026-07-02 |
| 342 | Análise Tecnored | 2026-07-02 → 2026-07-14 (+12d) | 2026-07-02 → 2026-07-14 (+12d) |  |  | 2d → 3d |  | constraint none → start no earlier than 2026-06-30 |
| 343 | Atendimento de comentários | 2026-07-03 → 2026-07-15 (+12d) | 2026-07-06 → 2026-07-15 (+9d) | 2d → 1d |  | 2d → 3d |  | constraint none → start no earlier than 2026-07-01 |
| 344 | Aprovação | 2026-07-07 → 2026-07-16 (+9d) | 2026-07-07 → 2026-07-16 (+9d) |  |  | 2d → 3d |  | constraint none → start no earlier than 2026-07-02 |
| 345 | **LM-F0009-0305-MB-S-00001** | 2026-06-26 → 2026-07-14 (+18d) | 2026-07-03 → 2026-07-20 (+17d) | 6d → 5d |  | 2d → 1d |  |  |
| 346 | Emissão inicial | 2026-06-26 → 2026-07-14 (+18d) | 2026-06-29 → 2026-07-15 (+16d) |  |  | 2d → 1d |  |  |
| 347 | Análise Tecnored | 2026-06-30 → 2026-07-16 (+16d) | 2026-06-30 → 2026-07-16 (+16d) |  |  | 4d → 1d |  |  |
| 348 | Atendimento de comentários | 2026-07-01 → 2026-07-17 (+16d) | 2026-07-02 → 2026-07-17 (+15d) | 2d → 1d |  | 4d → 1d |  |  |
| 349 | Aprovação | 2026-07-03 → 2026-07-20 (+17d) | 2026-07-03 → 2026-07-20 (+17d) |  |  | 4d → 1d |  |  |
| 350 | **MC-F0009-0305-MB-S-00001** | 2026-06-16 → 2026-07-01 (+15d) | 2026-06-26 → 2026-07-08 (+12d) | 9d → 6d |  |  |  |  |
| 351 | Emissão inicial | 2026-06-16 → 2026-07-01 (+15d) | 2026-06-22 → 2026-07-03 (+11d) | 5d → 3d |  |  | 165 → 169, 174, 179, 164 | constraint none → start no earlier than 2026-07-01 |
| 352 | Análise Tecnored | 2026-06-23 → 2026-07-06 (+13d) | 2026-06-23 → 2026-07-06 (+13d) |  |  |  |  |  |
| 353 | Atendimento de comentários | 2026-06-24 → 2026-07-07 (+13d) | 2026-06-25 → 2026-07-07 (+12d) | 2d → 1d |  |  |  |  |
| 354 | Aprovação | 2026-06-26 → 2026-07-08 (+12d) | 2026-06-26 → 2026-07-08 (+12d) |  |  |  |  |  |
| 355 | **AG-F0009-0305-MB-S-00001** | 2026-06-25 → 2026-07-13 (+18d) | 2026-07-08 → 2026-07-21 (+13d) | 10d → 7d |  | 1d → 0d |  |  |
| 356 | Emissão inicial | 2026-06-25 → 2026-07-13 (+18d) | 2026-07-02 → 2026-07-16 (+14d) | 6d → 4d |  | 1d → 0d |  |  |
| 357 | Análise Tecnored | 2026-07-03 → 2026-07-17 (+14d) | 2026-07-03 → 2026-07-17 (+14d) |  |  | 1d → 0d |  |  |
| 358 | Atendimento de comentários | 2026-07-06 → 2026-07-20 (+14d) | 2026-07-07 → 2026-07-20 (+13d) | 2d → 1d |  | 1d → 0d |  |  |
| 359 | Aprovação | 2026-07-08 → 2026-07-21 (+13d) | 2026-07-08 → 2026-07-21 (+13d) |  |  | 1d → 0d |  |  |

| ID | Task | Start | Finish | Duration | Complete | Total float | Predecessors | Other |
| --- | --- | --- | --- | --- | --- | --- | --- | --- |
| 360 | **AG-F0009-0305-MB-S-00002** | 2026-06-25 → 2026-07-13 (+18d) | 2026-07-08 → 2026-07-21 (+13d) | 10d → 7d |  | 1d → 0d |  |  |
| 361 | Emissão inicial | 2026-06-25 → 2026-07-13 (+18d) | 2026-07-02 → 2026-07-16 (+14d) | 6d → 4d |  | 1d → 0d |  |  |
| 362 | Análise Tecnored | 2026-07-03 → 2026-07-17 (+14d) | 2026-07-03 → 2026-07-17 (+14d) |  |  | 1d → 0d |  |  |
| 363 | Atendimento de comentários | 2026-07-06 → 2026-07-20 (+14d) | 2026-07-07 → 2026-07-20 (+13d) | 2d → 1d |  | 1d → 0d |  |  |
| 364 | Aprovação | 2026-07-08 → 2026-07-21 (+13d) | 2026-07-08 → 2026-07-21 (+13d) |  |  | 1d → 0d |  |  |
| 365 | **AG-F0009-0305-MB-S-00003** | 2026-06-25 → 2026-07-13 (+18d) | 2026-07-08 → 2026-07-21 (+13d) | 10d → 7d |  | 1d → 0d |  |  |
| 366 | Emissão inicial | 2026-06-25 → 2026-07-13 (+18d) | 2026-07-02 → 2026-07-16 (+14d) | 6d → 4d |  | 1d → 0d |  |  |
| 367 | Análise Tecnored | 2026-07-03 → 2026-07-17 (+14d) | 2026-07-03 → 2026-07-17 (+14d) |  |  | 1d → 0d |  |  |
| 368 | Atendimento de comentários | 2026-07-06 → 2026-07-20 (+14d) | 2026-07-07 → 2026-07-20 (+13d) | 2d → 1d |  | 1d → 0d |  |  |
| 369 | Aprovação | 2026-07-08 → 2026-07-21 (+13d) | 2026-07-08 → 2026-07-21 (+13d) |  |  | 1d → 0d |  |  |
| 370 | **AG-F0009-0305-MB-S-00004** | 2026-06-25 → 2026-07-13 (+18d) | 2026-07-08 → 2026-07-21 (+13d) | 10d → 7d |  | 1d → 0d |  |  |
| 371 | Emissão inicial | 2026-06-25 → 2026-07-13 (+18d) | 2026-07-02 → 2026-07-16 (+14d) | 6d → 4d |  | 1d → 0d |  |  |
| 372 | Análise Tecnored | 2026-07-03 → 2026-07-17 (+14d) | 2026-07-03 → 2026-07-17 (+14d) |  |  | 1d → 0d |  |  |
| 373 | Atendimento de comentários | 2026-07-06 → 2026-07-20 (+14d) | 2026-07-07 → 2026-07-20 (+13d) | 2d → 1d |  | 1d → 0d |  |  |
| 374 | Aprovação | 2026-07-08 → 2026-07-21 (+13d) | 2026-07-08 → 2026-07-21 (+13d) |  |  | 1d → 0d |  |  |
| 375 | **AG-F0009-0305-MB-S-00005** | 2026-06-25 → 2026-07-13 (+18d) | 2026-07-08 → 2026-07-21 (+13d) | 10d → 7d |  | 1d → 0d |  |  |
| 376 | Emissão inicial | 2026-06-25 → 2026-07-13 (+18d) | 2026-07-02 → 2026-07-16 (+14d) | 6d → 4d |  | 1d → 0d |  |  |
| 377 | Análise Tecnored | 2026-07-03 → 2026-07-17 (+14d) | 2026-07-03 → 2026-07-17 (+14d) |  |  | 1d → 0d |  |  |
| 378 | Atendimento de comentários | 2026-07-06 → 2026-07-20 (+14d) | 2026-07-07 → 2026-07-20 (+13d) | 2d → 1d |  | 1d → 0d |  | constraint none → finish no earlier than 2026-07-10 |
| 379 | Aprovação | 2026-07-08 → 2026-07-21 (+13d) | 2026-07-08 → 2026-07-21 (+13d) |  |  | 1d → 0d |  | constraint none → start no earlier than 2026-07-13 |
| 380 | **AG-F0009-0305-MB-S-00006** | 2026-06-25 → 2026-07-13 (+18d) | 2026-07-08 → 2026-07-21 (+13d) | 10d → 7d |  | 1d → 0d |  |  |
| 381 | Emissão inicial | 2026-06-25 → 2026-07-13 (+18d) | 2026-07-02 → 2026-07-16 (+14d) | 6d → 4d |  | 1d → 0d |  |  |
| 382 | Análise Tecnored | 2026-07-03 → 2026-07-17 (+14d) | 2026-07-03 → 2026-07-17 (+14d) |  |  | 1d → 0d |  |  |
| 383 | Atendimento de comentários | 2026-07-06 → 2026-07-20 (+14d) | 2026-07-07 → 2026-07-20 (+13d) | 2d → 1d |  | 1d → 0d |  |  |
| 384 | Aprovação | 2026-07-08 → 2026-07-21 (+13d) | 2026-07-08 → 2026-07-21 (+13d) |  |  | 1d → 0d |  |  |
| 385 | **AG-F0009-0305-MB-S-00007** | 2026-06-25 → 2026-07-13 (+18d) | 2026-07-08 → 2026-07-21 (+13d) | 10d → 7d |  | 1d → 0d |  |  |
| 386 | Emissão inicial | 2026-06-25 → 2026-07-13 (+18d) | 2026-07-02 → 2026-07-16 (+14d) | 6d → 4d |  | 1d → 0d |  |  |
| 387 | Análise Tecnored | 2026-07-03 → 2026-07-17 (+14d) | 2026-07-03 → 2026-07-17 (+14d) |  |  | 1d → 0d |  |  |
| 388 | Atendimento de comentários | 2026-07-06 → 2026-07-20 (+14d) | 2026-07-07 → 2026-07-20 (+13d) | 2d → 1d |  | 1d → 0d |  |  |
| 389 | Aprovação | 2026-07-08 → 2026-07-21 (+13d) | 2026-07-08 → 2026-07-21 (+13d) |  |  | 1d → 0d |  |  |
| 390 | **AG-F0009-0305-MB-S-00008** | 2026-06-25 → 2026-07-13 (+18d) | 2026-07-08 → 2026-07-21 (+13d) | 10d → 7d |  | 1d → 0d |  |  |
| 391 | Emissão inicial | 2026-06-25 → 2026-07-13 (+18d) | 2026-07-02 → 2026-07-16 (+14d) | 6d → 4d |  | 1d → 0d |  |  |
| 392 | Análise Tecnored | 2026-07-03 → 2026-07-17 (+14d) | 2026-07-03 → 2026-07-17 (+14d) |  |  | 1d → 0d |  |  |
| 393 | Atendimento de comentários | 2026-07-06 → 2026-07-20 (+14d) | 2026-07-07 → 2026-07-20 (+13d) | 2d → 1d |  | 1d → 0d |  |  |
| 394 | Aprovação | 2026-07-08 → 2026-07-21 (+13d) | 2026-07-08 → 2026-07-21 (+13d) |  |  | 1d → 0d |  |  |
| 395 | **AG-F0009-0305-MB-S-00009** | 2026-06-25 → 2026-07-13 (+18d) | 2026-07-08 → 2026-07-21 (+13d) | 10d → 7d |  | 1d → 0d |  |  |
| 396 | Emissão inicial | 2026-06-25 → 2026-07-13 (+18d) | 2026-07-02 → 2026-07-16 (+14d) | 6d → 4d |  | 1d → 0d |  |  |
| 397 | Análise Tecnored | 2026-07-03 → 2026-07-17 (+14d) | 2026-07-03 → 2026-07-17 (+14d) |  |  | 1d → 0d |  |  |
| 398 | Atendimento de comentários | 2026-07-06 → 2026-07-20 (+14d) | 2026-07-07 → 2026-07-20 (+13d) | 2d → 1d |  | 1d → 0d |  |  |
| 399 | Aprovação | 2026-07-08 → 2026-07-21 (+13d) | 2026-07-08 → 2026-07-21 (+13d) |  |  | 1d → 0d |  |  |
| 400 | **AG-F0009-0305-MB-S-00010** | 2026-06-25 → 2026-07-13 (+18d) | 2026-07-08 → 2026-07-21 (+13d) | 10d → 7d |  | 1d → 0d |  |  |
| 401 | Emissão inicial | 2026-06-25 → 2026-07-13 (+18d) | 2026-07-02 → 2026-07-16 (+14d) | 6d → 4d |  | 1d → 0d |  |  |
| 402 | Análise Tecnored | 2026-07-03 → 2026-07-17 (+14d) | 2026-07-03 → 2026-07-17 (+14d) |  |  | 1d → 0d |  |  |
| 403 | Atendimento de comentários | 2026-07-06 → 2026-07-20 (+14d) | 2026-07-07 → 2026-07-20 (+13d) | 2d → 1d |  | 1d → 0d |  |  |
| 404 | Aprovação | 2026-07-08 → 2026-07-21 (+13d) | 2026-07-08 → 2026-07-21 (+13d) |  |  | 1d → 0d |  |  |
| 405 | **PL-F0009-0305-MB-S-00001** | 2026-06-25 → 2026-06-29 (+4d) | 2026-07-07 → 2026-07-08 (+1d) | 9d → 8d |  | 2d → 9d |  |  |
| 406 | Emissão inicial | 2026-06-25 → 2026-06-29 (+4d) | 2026-07-01 → 2026-07-03 (+2d) |  |  | 2d → 9d | 338 → 351FF |  |
| 407 | Análise Tecnored | 2026-07-02 → 2026-07-06 (+4d) | 2026-07-02 → 2026-07-06 (+4d) |  |  | 2d → 9d |  |  |
| 408 | Atendimento de comentários | 2026-07-03 → 2026-07-07 (+4d) | 2026-07-06 → 2026-07-07 (+1d) | 2d → 1d |  | 2d → 9d |  |  |
| 409 | Aprovação | 2026-07-07 → 2026-07-08 (+1d) | 2026-07-07 → 2026-07-08 (+1d) |  |  | 2d → 9d |  |  |
| 410 | **Elétrica** | 2026-05-28 A | 2026-07-08 → 2026-07-07 (-1d) | 30d → 27d | 0% → 45% | 1d → 10d |  |  |
| 411 | **CP-F0009-0305-MB-E-00001** |  | 2026-06-10 → 2026-06-11 (+1d) | 24d → 23d |  | 21d → 28d |  |  |
| 413 | Análise Tecnored | 2026-06-05 → 2026-06-08 (+3d) | 2026-06-05 → 2026-06-08 (+3d) |  |  | 21d → 28d |  |  |
| 414 | Atendimento de comentários | 2026-06-08 → 2026-06-09 (+1d) | 2026-06-09 → 2026-06-10 (+1d) |  |  | 21d → 28d |  |  |
| 415 | Aprovação | 2026-06-10 → 2026-06-11 (+1d) | 2026-06-10 → 2026-06-11 (+1d) |  |  | 21d → 28d |  |  |
| 416 | **ML-F0009-0305-MB-E-00001** | 2026-06-15 → 2026-06-23 (+8d) | 2026-06-29 → 2026-06-30 (+1d) | 11d → 6d |  | 1d → 3.4d |  |  |
| 417 | Emissão inicial | 2026-06-15 → 2026-06-23 (+8d) | 2026-06-23 → 2026-06-26 (+3d) | 7d → 4d |  | 1d → 3.4d |  |  |
| 418 | Análise Tecnored | 2026-06-24 → 2026-06-29 (+5d) | 2026-06-24 → 2026-06-29 (+5d) |  |  | 8d → 15d |  |  |
| 419 | Atendimento de comentários | 2026-06-25 → 2026-06-30 (+5d) | 2026-06-26 → 2026-06-30 (+4d) | 2d → 1d |  | 8d → 15d |  |  |
| 420 | Aprovação | 2026-06-29 → 2026-06-30 (+1d) | 2026-06-29 → 2026-06-30 (+1d) |  |  | 8d → 15d | 419 → 419FF |  |
| 421 | **RL-F0009-0305-MB-E-00001** | 2026-06-02 A |  | 7d → 5d | 0% → 70% | 1d → 29d |  |  |
| 422 | Emissão inicial | 2026-06-02 A | 2026-06-04 → 2026-06-03 A (-1d) | 3d → 2d | 0% → 100% | 1d → none | 432 → 432FS-1d |  |
| 423 | Análise Tecnored | 2026-06-05 → 2026-06-09 A (+4d) | 2026-06-05 → 2026-06-09 A (+4d) |  | 0% → 100% | 21d → none |  |  |
| 424 | Atendimento de comentários | 2026-06-08 → 2026-06-10 A (+2d) | 2026-06-09 → 2026-06-10 (+1d) | 2d → 1d | 0% → 50% | 21d → 29d |  |  |
| 425 | Aprovação |  |  |  |  | 21d → 29d | 424 → 424FF |  |
| 426 | **LE-F0009-0305-MB-E-00001** | 2026-06-22 → 2026-06-29 (+7d) | 2026-06-30 → 2026-07-02 (+2d) | 7d → 4d |  | 7d → 13d |  |  |
| 427 | Emissão inicial | 2026-06-22 → 2026-06-29 (+7d) | 2026-06-24 → 2026-06-30 (+6d) | 3d → 2d |  | 7d → 13d | 452 → 452FS-1d |  |
| 428 | Análise Tecnored | 2026-06-25 → 2026-07-01 (+6d) | 2026-06-25 → 2026-07-01 (+6d) |  |  | 7d → 13d |  |  |
| 429 | Atendimento de comentários | 2026-06-26 → 2026-07-02 (+6d) | 2026-06-29 → 2026-07-02 (+3d) | 2d → 1d |  | 7d → 13d |  |  |
| 430 | Aprovação | 2026-06-30 → 2026-07-02 (+2d) | 2026-06-30 → 2026-07-02 (+2d) |  |  | 7d → 13d | 429 → 429FF |  |

| ID | Task | Start | Finish | Duration | Complete | Total float | Predecessors | Other |
| --- | --- | --- | --- | --- | --- | --- | --- | --- |
| 431 | **LR-F0009-0305-MB-E-00001** | 2026-05-28 A | 2026-06-05 → 2026-06-03 (-2d) | 7d → 5d | 0% → 70% | 1d → 32d |  |  |
| 432 | Emissão inicial | 2026-05-28 A | 2026-06-01 → 2026-05-29 A (-3d) | 3d → 2d | 0% → 100% | 1d → none | 79 → 79FS-1d |  |
| 433 | Análise Tecnored | 2026-06-02 A | 2026-06-02 A |  | 0% → 100% | 24d → none |  |  |
| 434 | Atendimento de comentários | 2026-06-03 A | 2026-06-04 → 2026-06-03 (-1d) | 2d → 1d | 0% → 50% | 24d → 32d |  |  |
| 435 | Aprovação | 2026-06-05 → 2026-06-03 (-2d) | 2026-06-05 → 2026-06-03 (-2d) |  |  | 24d → 32d | 434 → 434FF |  |
| 436 | **LM-F0009-0305-MB-E-00001** | 2026-06-30 → 2026-07-03 (+3d) | 2026-07-07 → 2026-07-08 (+1d) | 6d → 4d |  | 1d → 6d |  |  |
| 437 | Emissão inicial | 2026-06-30 → 2026-07-03 (+3d) | 2026-07-01 → 2026-07-06 (+5d) |  |  | 1d → 6d | 458 → 458FS-1d |  |
| 438 | Análise Tecnored | 2026-07-02 → 2026-07-07 (+5d) | 2026-07-02 → 2026-07-07 (+5d) |  |  | 2d → 9d |  |  |
| 439 | Atendimento de comentários | 2026-07-03 → 2026-07-08 (+5d) | 2026-07-06 → 2026-07-08 (+2d) | 2d → 1d |  | 2d → 9d |  |  |
| 440 | Aprovação | 2026-07-07 → 2026-07-08 (+1d) | 2026-07-07 → 2026-07-08 (+1d) |  |  | 2d → 9d | 439 → 439FF |  |
| 441 | **PQ-F0009-0305-MB-E-00001** | 2026-07-02 → 2026-07-03 (+1d) | 2026-07-08 → 2026-07-07 (-1d) | 5d → 3d |  | 1d → 10d |  |  |
| 442 | Emissão inicial | 2026-07-02 → 2026-07-03 (+1d) | 2026-07-02 → 2026-07-03 (+1d) |  |  | 1d → 10d | 437 → 437SS |  |
| 443 | Análise Tecnored | 2026-07-03 → 2026-07-06 (+3d) | 2026-07-03 → 2026-07-06 (+3d) |  |  | 1d → 10d |  |  |
| 444 | Atendimento de comentários | 2026-07-06 → 2026-07-07 (+1d) |  | 2d → 1d |  | 1d → 10d |  |  |
| 445 | Aprovação | 2026-07-08 → 2026-07-07 (-1d) | 2026-07-08 → 2026-07-07 (-1d) |  |  | 1d → 10d | 444 → 444FF |  |
| 446 | **MD-F0009-0305-MB-E-00001** | 2026-06-30 → 2026-07-03 (+3d) | 2026-07-08 → 2026-07-13 (+5d) |  |  | 1d → 6d |  |  |
| 447 | Emissão inicial | 2026-06-30 → 2026-07-03 (+3d) | 2026-07-02 → 2026-07-07 (+5d) |  |  | 1d → 6d |  |  |
| 448 | Análise Tecnored | 2026-07-03 → 2026-07-08 (+5d) | 2026-07-03 → 2026-07-08 (+5d) |  |  | 1d → 6d |  |  |
| 449 | Atendimento de comentários | 2026-07-06 → 2026-07-09 (+3d) | 2026-07-07 → 2026-07-10 (+3d) |  |  | 1d → 6d |  |  |
| 450 | Aprovação | 2026-07-08 → 2026-07-13 (+5d) | 2026-07-08 → 2026-07-13 (+5d) |  |  | 1d → 6d |  |  |
| 451 | **MC-F0009-0305-MB-E-00001** | 2026-06-15 → 2026-06-26 A (+11d) | 2026-06-25 → 2026-07-01 (+6d) | 9d → 4d | 0% → 28% | 1d → 14d |  |  |
| 452 | Emissão inicial | 2026-06-15 → 2026-06-26 A (+11d) | 2026-06-19 → 2026-06-29 (+10d) | 5d → 2d | 0% → 70% | 1d → 3.4d | 472 → 472FS-1d | constraint none → start no earlier than 2026-06-26 |
| 453 | Análise Tecnored | 2026-06-22 → 2026-06-30 (+8d) | 2026-06-22 → 2026-06-30 (+8d) |  |  | 10d → 14d |  |  |
| 454 | Atendimento de comentários | 2026-06-23 → 2026-07-01 (+8d) | 2026-06-24 → 2026-07-01 (+7d) | 2d → 1d |  | 10d → 14d |  |  |
| 455 | Aprovação | 2026-06-25 → 2026-07-01 (+6d) | 2026-06-25 → 2026-07-01 (+6d) |  |  | 10d → 14d | 454 → 454FF |  |
| 456 | **AG-F0009-0305-MB-E-00001** | 2026-06-24 → 2026-07-01 A (+7d) | 2026-07-02 → 2026-07-06 (+4d) | 7d → 4d | 0% → 28% | 1d → 11d |  |  |
| 457 | Emissão inicial | 2026-06-24 → 2026-07-01 A (+7d) | 2026-06-26 → 2026-07-02 (+6d) | 3d → 2d | 0% → 70% | 1d → 11d | 417 → 417FS-1d | constraint none → start no earlier than 2026-07-01 |
| 458 | Análise Tecnored | 2026-06-29 → 2026-07-03 (+4d) | 2026-06-29 → 2026-07-03 (+4d) |  |  | 1d → 11d |  |  |
| 459 | Atendimento de comentários | 2026-06-30 → 2026-07-06 (+6d) | 2026-07-01 → 2026-07-06 (+5d) | 2d → 1d |  | 5d → 11d |  |  |
| 460 | Aprovação | 2026-07-02 → 2026-07-06 (+4d) | 2026-07-02 → 2026-07-06 (+4d) |  |  | 5d → 11d | 459 → 459FF |  |
| 461 | **DU-F0009-0305-MB-E-00001** | 2026-06-05 → 2026-06-18 (+13d) | 2026-06-15 → 2026-06-23 (+8d) | 7d → 4d |  | 1d → 5.4d |  |  |
| 462 | Emissão inicial | 2026-06-05 → 2026-06-18 (+13d) | 2026-06-09 → 2026-06-19 (+10d) | 3d → 2d |  | 1d → 5.4d | 422 → 422FS-1d | constraint none → finish no earlier than 2026-06-19 |
| 463 | Análise Tecnored | 2026-06-10 → 2026-06-22 (+12d) | 2026-06-10 → 2026-06-22 (+12d) |  |  | 18d → 20d |  |  |
| 464 | Atendimento de comentários | 2026-06-11 → 2026-06-23 (+12d) | 2026-06-12 → 2026-06-23 (+11d) | 2d → 1d |  | 18d → 20d |  |  |
| 465 | Aprovação | 2026-06-15 → 2026-06-23 (+8d) | 2026-06-15 → 2026-06-23 (+8d) |  |  | 18d → 20d | 464 → 464FF |  |
| 466 | **AG-F0009-0305-MB-E-00002** | 2026-06-24 → 2026-07-02 A (+8d) | 2026-07-03 → 2026-07-07 (+4d) | 8d → 4d | 0% → 28% | 4d → 10d |  |  |
| 467 | Emissão inicial | 2026-06-24 → 2026-07-02 A (+8d) | 2026-06-29 → 2026-07-03 (+4d) | 4d → 2d | 0% → 70% | 4d → 10d | 417 → 417FS+1d | constraint none → start no earlier than 2026-07-02 |
| 468 | Análise Tecnored | 2026-06-30 → 2026-07-06 (+6d) | 2026-06-30 → 2026-07-06 (+6d) |  |  | 4d → 10d |  |  |
| 469 | Atendimento de comentários | 2026-07-01 → 2026-07-07 (+6d) | 2026-07-02 → 2026-07-07 (+5d) | 2d → 1d |  | 4d → 10d |  |  |
| 470 | Aprovação | 2026-07-03 → 2026-07-07 (+4d) | 2026-07-03 → 2026-07-07 (+4d) |  |  | 4d → 10d | 469 → 469FF |  |
| 471 | **FD-F0009-0305-MB-E-0001** | 2026-06-10 → 2026-06-19 (+9d) | 2026-06-18 → 2026-06-24 (+6d) | 7d → 4d |  | 1d → 5.4d |  | was named FD-F0009-0305-MB-E-00013 |
| 472 | Emissão inicial | 2026-06-10 → 2026-06-19 (+9d) | 2026-06-12 → 2026-06-22 (+10d) | 3d → 2d |  | 1d → 5.4d | 462 → 462FS-1d |  |
| 473 | Análise Tecnored | 2026-06-15 → 2026-06-23 (+8d) | 2026-06-15 → 2026-06-23 (+8d) |  |  | 15d → 19d |  |  |
| 474 | Atendimento de comentários | 2026-06-16 → 2026-06-24 (+8d) | 2026-06-17 → 2026-06-24 (+7d) | 2d → 1d |  | 15d → 19d |  |  |
| 475 | Aprovação | 2026-06-18 → 2026-06-24 (+6d) | 2026-06-18 → 2026-06-24 (+6d) |  |  | 15d → 19d | 474 → 474FF |  |
| 476 | **Automação e instrumentação** | 2026-06-03 → 2026-06-01 A (-2d) | 2026-07-08 → 2026-07-13 (+5d) | 26d → 29d | 0% → 60% | 1d → 6d |  |  |
| 477 | **CP-F0009-0305-MB-J-00001** | 2026-06-05 → 2026-06-08 (+3d) | 2026-06-17 → 2026-06-18 (+1d) |  |  | 16d → 23d |  |  |
| 478 | Emissão inicial | 2026-06-05 → 2026-06-08 (+3d) | 2026-06-11 → 2026-06-12 (+1d) |  |  | 16d → 23d |  |  |
| 479 | Análise Tecnored | 2026-06-12 → 2026-06-15 (+3d) | 2026-06-12 → 2026-06-15 (+3d) |  |  | 16d → 23d |  |  |
| 480 | Atendimento de comentários | 2026-06-15 → 2026-06-16 (+1d) | 2026-06-16 → 2026-06-17 (+1d) |  |  | 16d → 23d |  |  |
| 481 | Aprovação | 2026-06-17 → 2026-06-18 (+1d) | 2026-06-17 → 2026-06-18 (+1d) |  |  | 16d → 23d |  |  |
| 482 | **LI-F0009-0305-MB-J-00001** | 2026-06-05 → 2026-06-15 A (+10d) | 2026-06-12 → 2026-06-29 (+17d) | 6d → 11d | 0% → 50% | 1d → 9d |  |  |
| 483 | Emissão inicial | 2026-06-05 → 2026-06-15 A (+10d) | 2026-06-08 → 2026-06-20 (+12d) | 2d → 5d | 0% → 90% | 1d → 11d |  | constraint none → finish no earlier than 2026-06-20 |
| 484 | Análise Tecnored | 2026-06-09 → 2026-06-22 (+13d) | 2026-06-09 → 2026-06-22 (+13d) |  |  | 19d → 11d |  |  |
| 485 | Atendimento de comentários | 2026-06-10 → 2026-06-23 (+13d) | 2026-06-11 → 2026-06-24 (+13d) |  |  | 19d → 11d |  |  |
| 486 | Aprovação | 2026-06-12 → 2026-06-29 (+17d) | 2026-06-12 → 2026-06-29 (+17d) |  |  | 19d → 9d |  | constraint none → finish no earlier than 2026-06-29 |
| 487 | **LE-F0009-0305-MB-J-00001** | 2026-06-29 → 2026-06-24 (-5d) | 2026-07-06 → 2026-07-07 (+1d) | 6d → 10d |  | 3d → 10d |  |  |
| 488 | Emissão inicial | 2026-06-29 → 2026-06-24 (-5d) | 2026-06-30 → 2026-06-29 (-1d) | 2d → 4d |  | 3d → 12d | 568 → none | constraint none → start no earlier than 2026-06-24 |
| 489 | Análise Tecnored | 2026-07-01 → 2026-07-02 (+1d) | 2026-07-01 → 2026-07-02 (+1d) |  |  | 3d → 10d |  | constraint none → start no earlier than 2026-07-02 |
| 490 | Atendimento de comentários | 2026-07-02 → 2026-07-03 (+1d) | 2026-07-03 → 2026-07-06 (+3d) |  |  | 3d → 10d |  | constraint none → start no earlier than 2026-07-03 |
| 491 | Aprovação | 2026-07-06 → 2026-07-07 (+1d) | 2026-07-06 → 2026-07-07 (+1d) |  |  | 3d → 10d |  | constraint none → start no earlier than 2026-07-07 |
| 497 | **LZ-F0009-0305-MB-J-00001** | 2026-06-22 → 2026-06-26 (+4d) | 2026-06-29 → 2026-07-07 (+8d) | 6d → 8d |  | 1d → 10d |  |  |
| 498 | Emissão inicial | 2026-06-22 → 2026-06-26 (+4d) | 2026-06-23 → 2026-07-01 (+8d) | 2d → 4d |  | 1d → 10d |  | constraint none → finish no earlier than 2026-07-01 |
| 499 | Análise Tecnored | 2026-06-24 → 2026-07-02 (+8d) | 2026-06-24 → 2026-07-02 (+8d) |  |  | 8d → 10d |  | constraint none → start no earlier than 2026-07-02 |
| 500 | Atendimento de comentários | 2026-06-25 → 2026-07-03 (+8d) | 2026-06-26 → 2026-07-06 (+10d) |  |  | 8d → 10d |  | constraint none → start no earlier than 2026-07-03 |
| 501 | Aprovação | 2026-06-29 → 2026-07-07 (+8d) | 2026-06-29 → 2026-07-07 (+8d) |  |  | 8d → 10d |  | constraint none → start no earlier than 2026-07-07 |
| 502 | **LE-F0009-0305-MB-J-00002** | 2026-06-29 → 2026-06-26 (-3d) | 2026-07-06 → 2026-07-07 (+1d) | 6d → 8d |  | 3d → 10d |  |  |
| 503 | Emissão inicial | 2026-06-29 → 2026-06-26 (-3d) | 2026-06-30 → 2026-07-01 (+1d) | 2d → 4d |  | 3d → 10d | 568 → none | constraint none → finish no earlier than 2026-07-01 |
| 504 | Análise Tecnored | 2026-07-01 → 2026-07-02 (+1d) | 2026-07-01 → 2026-07-02 (+1d) |  |  | 3d → 10d |  | constraint none → start no earlier than 2026-07-02 |
| 505 | Atendimento de comentários | 2026-07-02 → 2026-07-03 (+1d) | 2026-07-03 → 2026-07-06 (+3d) |  |  | 3d → 10d |  | constraint none → start no earlier than 2026-07-03 |

| ID | Task | Start | Finish | Duration | Complete | Total float | Predecessors | Other |
| --- | --- | --- | --- | --- | --- | --- | --- | --- |
| 506 | Aprovação | 2026-07-06 → 2026-07-07 (+1d) | 2026-07-06 → 2026-07-07 (+1d) |  |  | 3d → 10d |  | constraint none → start no earlier than 2026-07-07 |
| 507 | **PQ-F0009-0305-MB-J-00001** | 2026-06-30 → 2026-07-02 (+2d) | 2026-07-06 → 2026-07-13 (+7d) | 5d → 8d |  | 3d → 6d |  |  |
| 508 | Emissão inicial | 2026-06-30 → 2026-07-02 (+2d) | 2026-06-30 → 2026-07-08 (+8d) | 1d → 5d |  | 3d → 6d | 563FS-2d → 563FS-9d | constraint none → start no earlier than 2026-07-02 |
| 509 | Análise Tecnored | 2026-07-01 → 2026-07-09 (+8d) | 2026-07-01 → 2026-07-09 (+8d) |  |  | 3d → 6d |  |  |
| 510 | Atendimento de comentários | 2026-07-02 → 2026-07-10 (+8d) | 2026-07-03 → 2026-07-10 (+7d) | 2d → 1d |  | 3d → 6d |  |  |
| 511 | Aprovação | 2026-07-06 → 2026-07-13 (+7d) | 2026-07-06 → 2026-07-13 (+7d) |  |  | 3d → 6d |  |  |
| 512 | **FG-F0009-0305-MB-J-00001** | 2026-06-03 → 2026-06-01 A (-2d) | 2026-06-10 → 2026-06-18 (+8d) | 6d → 12d | 0% → 80% | 21d → 23d |  |  |
| 513 | Emissão inicial | 2026-06-03 → 2026-06-01 A (-2d) | 2026-06-04 → 2026-06-12 A (+8d) | 2d → 6d | 0% → 100% | 21d → none |  | constraint none → finish no earlier than 2026-06-12 |
| 514 | Análise Tecnored | 2026-06-05 → 2026-06-15 A (+10d) | 2026-06-05 → 2026-06-15 A (+10d) |  | 0% → 100% | 21d → none |  |  |
| 515 | Atendimento de comentários | 2026-06-08 → 2026-06-16 A (+8d) | 2026-06-09 → 2026-06-17 (+8d) |  | 0% → 50% | 21d → 23d |  |  |
| 516 | Aprovação | 2026-06-10 → 2026-06-18 (+8d) | 2026-06-10 → 2026-06-18 (+8d) |  |  | 21d → 23d |  |  |
| 517 | **FG-F0009-0305-MB-J-00002** | 2026-06-03 A | 2026-06-10 → 2026-06-18 (+8d) | 6d → 10d | 0% → 80% | 1d → 23d |  |  |
| 518 | Emissão inicial | 2026-06-03 A | 2026-06-04 → 2026-06-12 A (+8d) | 2d → 6d | 0% → 100% | 1d → none |  | constraint none → start no earlier than 2026-06-01 |
| 519 | Análise Tecnored | 2026-06-05 → 2026-06-15 A (+10d) | 2026-06-05 → 2026-06-15 A (+10d) |  | 0% → 100% | 21d → none |  |  |
| 520 | Atendimento de comentários | 2026-06-08 → 2026-06-16 A (+8d) | 2026-06-09 → 2026-06-17 (+8d) |  | 0% → 50% | 21d → 23d |  |  |
| 521 | Aprovação | 2026-06-10 → 2026-06-18 (+8d) | 2026-06-10 → 2026-06-18 (+8d) |  |  | 21d → 23d |  |  |
| 522 | **FG-F0009-0305-MB-J-00003** | 2026-06-03 A | 2026-06-10 → 2026-06-18 (+8d) | 6d → 10d | 0% → 80% | 21d → 23d |  |  |
| 523 | Emissão inicial | 2026-06-03 A | 2026-06-04 → 2026-06-12 A (+8d) | 2d → 6d | 0% → 100% | 21d → none |  | constraint none → finish no earlier than 2026-06-12 |
| 524 | Análise Tecnored | 2026-06-05 → 2026-06-15 A (+10d) | 2026-06-05 → 2026-06-15 A (+10d) |  | 0% → 100% | 21d → none |  |  |
| 525 | Atendimento de comentários | 2026-06-08 → 2026-06-16 A (+8d) | 2026-06-09 → 2026-06-17 (+8d) |  | 0% → 50% | 21d → 23d |  |  |
| 526 | Aprovação | 2026-06-10 → 2026-06-18 (+8d) | 2026-06-10 → 2026-06-18 (+8d) |  |  | 21d → 23d |  |  |
| 527 | **AG-F0009-0305-MB-J-00001** | 2026-06-09 → 2026-06-22 A (+13d) | 2026-06-23 → 2026-07-03 (+10d) | 11d → 10d | 0% → 56% |  |  |  |
| 528 | Emissão inicial | 2026-06-09 → 2026-06-22 A (+13d) | 2026-06-17 → 2026-06-25 A (+8d) | 7d → 4d | 0% → 100% | 12d → none |  | constraint none → start no earlier than 2026-06-24 |
| 529 | Análise Tecnored | 2026-06-18 → 2026-06-26 A (+8d) | 2026-06-18 → 2026-06-26 (+8d) |  | 0% → 50% | 12d → 14d |  |  |
| 530 | Atendimento de comentários | 2026-06-19 → 2026-06-29 (+10d) | 2026-06-22 → 2026-06-30 (+8d) |  |  | 12d → 14d |  |  |
| 531 | Aprovação | 2026-06-23 → 2026-07-03 (+10d) | 2026-06-23 → 2026-07-03 (+10d) |  |  |  |  | constraint none → finish no earlier than 2026-07-03 |
| 532 | **AG-F0009-0305-MB-J-00002** | 2026-06-09 → 2026-06-19 A (+10d) | 2026-06-23 → 2026-07-02 (+9d) | 11d → 10d | 0% → 56% | 12d → 13d |  |  |
| 533 | Emissão inicial | 2026-06-09 → 2026-06-19 A (+10d) | 2026-06-17 → 2026-06-24 A (+7d) | 7d → 4d | 0% → 100% | 12d → none |  | constraint none → finish no earlier than 2026-06-24 |
| 534 | Análise Tecnored | 2026-06-18 → 2026-06-25 A (+7d) | 2026-06-18 → 2026-06-25 (+7d) |  | 0% → 50% | 12d → 15d |  |  |
| 535 | Atendimento de comentários | 2026-06-19 → 2026-06-26 (+7d) | 2026-06-22 → 2026-06-29 (+7d) |  |  | 12d → 15d |  |  |
| 536 | Aprovação | 2026-06-23 → 2026-07-02 (+9d) | 2026-06-23 → 2026-07-02 (+9d) |  |  | 12d → 13d |  | constraint none → finish no earlier than 2026-07-02 |
| 537 | **AG-F0009-0305-MB-J-00003** | 2026-06-09 → 2026-06-24 A (+15d) | 2026-06-23 → 2026-07-02 (+9d) | 11d → 7d | 0% → 50% | 1d → 13d |  |  |
| 538 | Emissão inicial | 2026-06-09 → 2026-06-24 A (+15d) | 2026-06-17 → 2026-06-26 A (+9d) | 7d → 3d | 0% → 100% | 1d → none |  | constraint none → start no earlier than 2026-06-24 |
| 539 | Análise Tecnored | 2026-06-18 → 2026-06-29 A (+11d) | 2026-06-18 → 2026-06-29 (+11d) |  | 0% → 50% | 12d → 13d |  |  |
| 540 | Atendimento de comentários | 2026-06-19 → 2026-06-30 (+11d) | 2026-06-22 → 2026-07-01 (+9d) |  |  | 12d → 13d |  |  |
| 541 | Aprovação | 2026-06-23 → 2026-07-02 (+9d) | 2026-06-23 → 2026-07-02 (+9d) |  |  | 12d → 13d |  |  |
| 542 | **AG-F0009-0305-MB-J-00004** | 2026-06-09 → 2026-06-19 A (+10d) | 2026-06-23 → 2026-06-30 (+7d) | 11d → 8d | 0% → 56% | 12d → 15d |  |  |
| 543 | Emissão inicial | 2026-06-09 → 2026-06-19 A (+10d) | 2026-06-17 → 2026-06-24 A (+7d) | 7d → 4d | 0% → 100% | 12d → none |  | constraint none → finish no earlier than 2026-06-24 |
| 544 | Análise Tecnored | 2026-06-18 → 2026-06-25 A (+7d) | 2026-06-18 → 2026-06-25 (+7d) |  | 0% → 50% | 12d → 15d |  |  |
| 545 | Atendimento de comentários | 2026-06-19 → 2026-06-26 (+7d) | 2026-06-22 → 2026-06-29 (+7d) |  |  | 12d → 15d |  |  |
| 546 | Aprovação | 2026-06-23 → 2026-06-30 (+7d) | 2026-06-23 → 2026-06-30 (+7d) |  |  | 12d → 15d |  |  |
| 547 | **DI-F0009-0305-MB-J-00001** | 2026-06-18 → 2026-06-17 A (-1d) | 2026-06-25 → 2026-06-26 (+1d) | 6d → 8d | 0% → 25% | 1d → 17d |  |  |
| 548 | Emissão inicial | 2026-06-18 → 2026-06-17 A (-1d) | 2026-06-19 → 2026-06-22 (+3d) | 2d → 4d | 0% → 50% | 1d → 13d | 538 → none | constraint none → start no earlier than 2026-06-17 |
| 549 | Análise Tecnored | 2026-06-22 → 2026-06-23 (+1d) | 2026-06-22 → 2026-06-23 (+1d) |  |  | 10d → 17d |  |  |
| 550 | Atendimento de comentários | 2026-06-23 → 2026-06-24 (+1d) | 2026-06-24 → 2026-06-25 (+1d) |  |  | 10d → 17d |  |  |
| 551 | Aprovação | 2026-06-25 → 2026-06-26 (+1d) | 2026-06-25 → 2026-06-26 (+1d) |  |  | 10d → 17d |  |  |
| 552 | **LI-F0009-0305-MB-J-00002** | 2026-06-29 → 2026-06-17 (-12d) | 2026-07-06 → 2026-06-29 (-7d) | 6d → 9d |  | 3d → 16d |  |  |
| 553 | Emissão inicial | 2026-06-29 → 2026-06-17 (-12d) | 2026-06-30 → 2026-06-23 (-7d) | 2d → 5d |  | 3d → 16d | 568 → none | constraint none → start no earlier than 2026-06-17 |
| 554 | Análise Tecnored | 2026-07-01 → 2026-06-24 (-7d) | 2026-07-01 → 2026-06-24 (-7d) |  |  | 3d → 16d |  |  |
| 555 | Atendimento de comentários | 2026-07-02 → 2026-06-25 (-7d) | 2026-07-03 → 2026-06-26 (-7d) |  |  | 3d → 16d |  |  |
| 556 | Aprovação | 2026-07-06 → 2026-06-29 (-7d) | 2026-07-06 → 2026-06-29 (-7d) |  |  | 3d → 16d |  |  |
| 557 | **LI-F0009-0305-MB-J-00003** | 2026-06-29 → 2026-06-17 (-12d) | 2026-07-06 → 2026-06-29 (-7d) | 6d → 9d |  | 1d → 14.6d |  |  |
| 558 | Emissão inicial | 2026-06-29 → 2026-06-17 (-12d) | 2026-06-30 → 2026-06-23 (-7d) | 2d → 5d |  | 1d → 14.6d | 568 → none | constraint none → start no earlier than 2026-06-17 |
| 559 | Análise Tecnored | 2026-07-01 → 2026-06-24 (-7d) | 2026-07-01 → 2026-06-24 (-7d) |  |  | 3d → 16d |  |  |
| 560 | Atendimento de comentários | 2026-07-02 → 2026-06-25 (-7d) | 2026-07-03 → 2026-06-26 (-7d) |  |  | 3d → 16d |  |  |
| 561 | Aprovação | 2026-07-06 → 2026-06-29 (-7d) | 2026-07-06 → 2026-06-29 (-7d) |  |  | 3d → 16d |  |  |
| 562 | **LM-F0009-0305-MB-J-00001** | 2026-07-01 → 2026-06-30 (-1d) | 2026-07-07 → 2026-07-08 (+1d) | 5d → 7d |  | 2d → 9d |  |  |
| 563 | Emissão inicial | 2026-07-01 → 2026-06-30 (-1d) | 2026-07-01 → 2026-07-03 (+2d) | 1d → 4d |  | 2d → 9d | 708FS-2d → 708FS-7d, 703FS-7d, 482, 698FS-7d | constraint none → start no earlier than 2026-06-26 |
| 564 | Análise Tecnored | 2026-07-02 → 2026-07-06 (+4d) | 2026-07-02 → 2026-07-06 (+4d) |  |  | 2d → 9d |  |  |
| 565 | Atendimento de comentários | 2026-07-03 → 2026-07-07 (+4d) | 2026-07-06 → 2026-07-07 (+1d) | 2d → 1d |  | 2d → 9d |  |  |
| 566 | Aprovação | 2026-07-07 → 2026-07-08 (+1d) | 2026-07-07 → 2026-07-08 (+1d) |  |  | 2d → 9d |  |  |
| 567 | **ET-F0009-0305-MB-J-00001** | 2026-06-24 → 2026-07-01 (+7d) | 2026-07-02 → 2026-07-09 (+7d) |  |  | 1d → 8d |  |  |
| 568 | Emissão inicial | 2026-06-24 → 2026-07-01 (+7d) | 2026-06-26 → 2026-07-03 (+7d) |  |  | 1d → 8d | 498 → 498SS, 493SS | constraint none → start no earlier than 2026-07-01 |
| 569 | Análise Tecnored | 2026-06-29 → 2026-07-06 (+7d) | 2026-06-29 → 2026-07-06 (+7d) |  |  | 5d → 8d |  |  |
| 570 | Atendimento de comentários | 2026-06-30 → 2026-07-07 (+7d) | 2026-07-01 → 2026-07-08 (+7d) |  |  | 5d → 8d |  |  |
| 571 | Aprovação | 2026-07-02 → 2026-07-09 (+7d) | 2026-07-02 → 2026-07-09 (+7d) |  |  | 5d → 8d |  |  |
| 572 | **FD-F0009-0305-MB-J-00001** | 2026-06-24 → 2026-06-15 A (-9d) | 2026-07-08 → 2026-06-26 (-12d) | 11d → 10d | 0% → 75% | 1d → 17d |  |  |
| 573 | Emissão inicial | 2026-06-24 → 2026-06-15 A (-9d) | 2026-07-02 → 2026-06-23 A (-9d) |  | 0% → 100% | 1d → none | 498 → none | constraint none → finish no earlier than 2026-06-23 |
| 574 | Análise Tecnored | 2026-07-03 → 2026-06-24 A (-9d) | 2026-07-03 → 2026-06-24 (-9d) |  | 0% → 50% | 1d → 17d |  |  |
| 575 | Atendimento de comentários | 2026-07-06 → 2026-06-25 (-11d) | 2026-07-07 → 2026-06-25 (-12d) | 2d → 1d |  | 1d → 17d |  |  |

| ID | Task | Start | Finish | Duration | Complete | Total float | Predecessors | Other |
| --- | --- | --- | --- | --- | --- | --- | --- | --- |
| 576 | Aprovação | 2026-07-08 → 2026-06-26 (-12d) | 2026-07-08 → 2026-06-26 (-12d) |  |  | 1d → 17d |  |  |
| 577 | **FD-F0009-0305-MB-J-00002** | 2026-06-24 → 2026-06-16 A (-8d) | 2026-07-08 → 2026-06-29 (-9d) | 11d → 10d | 0% → 75% | 1d → 16d |  |  |
| 578 | Emissão inicial | 2026-06-24 → 2026-06-16 A (-8d) | 2026-07-02 → 2026-06-24 A (-8d) |  | 0% → 100% | 1d → none | 498 → 573SS |  |
| 579 | Análise Tecnored | 2026-07-03 → 2026-06-25 A (-8d) | 2026-07-03 → 2026-06-25 (-8d) |  | 0% → 50% | 1d → 16d |  |  |
| 580 | Atendimento de comentários | 2026-07-06 → 2026-06-26 (-10d) | 2026-07-07 → 2026-06-26 (-11d) | 2d → 1d |  | 1d → 16d |  |  |
| 581 | Aprovação | 2026-07-08 → 2026-06-29 (-9d) | 2026-07-08 → 2026-06-29 (-9d) |  |  | 1d → 16d |  |  |
| 582 | **FD-F0009-0305-MB-J-00003** | 2026-06-24 → 2026-06-16 A (-8d) | 2026-07-08 → 2026-06-29 (-9d) | 11d → 10d | 0% → 75% | 1d → 16d |  |  |
| 583 | Emissão inicial | 2026-06-24 → 2026-06-16 A (-8d) | 2026-07-02 → 2026-06-24 A (-8d) |  | 0% → 100% | 1d → none | 498 → 573SS |  |
| 584 | Análise Tecnored | 2026-07-03 → 2026-06-25 A (-8d) | 2026-07-03 → 2026-06-25 (-8d) |  | 0% → 50% | 1d → 16d |  |  |
| 585 | Atendimento de comentários | 2026-07-06 → 2026-06-26 (-10d) | 2026-07-07 → 2026-06-26 (-11d) | 2d → 1d |  | 1d → 16d |  |  |
| 586 | Aprovação | 2026-07-08 → 2026-06-29 (-9d) | 2026-07-08 → 2026-06-29 (-9d) |  |  | 1d → 16d |  |  |
| 587 | **FD-F0009-0305-MB-J-00004** | 2026-06-24 → 2026-06-16 A (-8d) | 2026-07-08 → 2026-06-29 (-9d) | 11d → 10d | 0% → 75% | 1d → 16d |  |  |
| 588 | Emissão inicial | 2026-06-24 → 2026-06-16 A (-8d) | 2026-07-02 → 2026-06-24 A (-8d) |  | 0% → 100% | 1d → none | 498 → 573SS | constraint none → start no earlier than 2026-06-16 |
| 589 | Análise Tecnored | 2026-07-03 → 2026-06-25 A (-8d) | 2026-07-03 → 2026-06-25 (-8d) |  | 0% → 50% | 1d → 16d |  |  |
| 590 | Atendimento de comentários | 2026-07-06 → 2026-06-26 (-10d) | 2026-07-07 → 2026-06-26 (-11d) | 2d → 1d |  | 1d → 16d |  |  |
| 591 | Aprovação | 2026-07-08 → 2026-06-29 (-9d) | 2026-07-08 → 2026-06-29 (-9d) |  |  | 1d → 16d |  |  |
| 592 | **FD-F0009-0305-MB-J-00005** | 2026-06-24 → 2026-06-16 A (-8d) | 2026-07-08 → 2026-06-29 (-9d) | 11d → 10d | 0% → 75% | 1d → 16d |  |  |
| 593 | Emissão inicial | 2026-06-24 → 2026-06-16 A (-8d) | 2026-07-02 → 2026-06-24 A (-8d) |  | 0% → 100% | 1d → none | 498 → 573SS |  |
| 594 | Análise Tecnored | 2026-07-03 → 2026-06-25 A (-8d) | 2026-07-03 → 2026-06-25 (-8d) |  | 0% → 50% | 1d → 16d |  |  |
| 595 | Atendimento de comentários | 2026-07-06 → 2026-06-26 (-10d) | 2026-07-07 → 2026-06-26 (-11d) | 2d → 1d |  | 1d → 16d |  |  |
| 596 | Aprovação | 2026-07-08 → 2026-06-29 (-9d) | 2026-07-08 → 2026-06-29 (-9d) |  |  | 1d → 16d |  |  |
| 597 | **FD-F0009-0305-MB-J-00006** | 2026-06-24 → 2026-06-16 A (-8d) | 2026-07-08 → 2026-06-29 (-9d) | 11d → 10d | 0% → 75% | 1d → 16d |  |  |
| 598 | Emissão inicial | 2026-06-24 → 2026-06-16 A (-8d) | 2026-07-02 → 2026-06-24 A (-8d) |  | 0% → 100% | 1d → none | 498 → 573SS |  |
| 599 | Análise Tecnored | 2026-07-03 → 2026-06-25 A (-8d) | 2026-07-03 → 2026-06-25 (-8d) |  | 0% → 50% | 1d → 16d |  |  |
| 600 | Atendimento de comentários | 2026-07-06 → 2026-06-26 (-10d) | 2026-07-07 → 2026-06-26 (-11d) | 2d → 1d |  | 1d → 16d |  |  |
| 601 | Aprovação | 2026-07-08 → 2026-06-29 (-9d) | 2026-07-08 → 2026-06-29 (-9d) |  |  | 1d → 16d |  |  |
| 602 | **FD-F0009-0305-MB-J-00007** | 2026-06-24 → 2026-06-16 A (-8d) | 2026-07-08 → 2026-06-29 (-9d) | 11d → 10d | 0% → 75% | 1d → 16d |  |  |
| 603 | Emissão inicial | 2026-06-24 → 2026-06-16 A (-8d) | 2026-07-02 → 2026-06-24 A (-8d) |  | 0% → 100% | 1d → none | 498 → 573SS |  |
| 604 | Análise Tecnored | 2026-07-03 → 2026-06-25 A (-8d) | 2026-07-03 → 2026-06-25 (-8d) |  | 0% → 50% | 1d → 16d |  |  |
| 605 | Atendimento de comentários | 2026-07-06 → 2026-06-26 (-10d) | 2026-07-07 → 2026-06-26 (-11d) | 2d → 1d |  | 1d → 16d |  |  |
| 606 | Aprovação | 2026-07-08 → 2026-06-29 (-9d) | 2026-07-08 → 2026-06-29 (-9d) |  |  | 1d → 16d |  |  |
| 607 | **FD-F0009-0305-MB-J-00008** | 2026-06-24 → 2026-06-16 A (-8d) | 2026-07-08 → 2026-06-29 (-9d) | 11d → 10d | 0% → 75% | 1d → 16d |  |  |
| 608 | Emissão inicial | 2026-06-24 → 2026-06-16 A (-8d) | 2026-07-02 → 2026-06-24 A (-8d) |  | 0% → 100% | 1d → none | 498 → 573SS | constraint none → start no earlier than 2026-06-16 |
| 609 | Análise Tecnored | 2026-07-03 → 2026-06-25 A (-8d) | 2026-07-03 → 2026-06-25 (-8d) |  | 0% → 50% | 1d → 16d |  |  |
| 610 | Atendimento de comentários | 2026-07-06 → 2026-06-26 (-10d) | 2026-07-07 → 2026-06-26 (-11d) | 2d → 1d |  | 1d → 16d |  |  |
| 611 | Aprovação | 2026-07-08 → 2026-06-29 (-9d) | 2026-07-08 → 2026-06-29 (-9d) |  |  | 1d → 16d |  |  |
| 612 | **FD-F0009-0305-MB-J-00009** | 2026-06-24 → 2026-06-15 A (-9d) | 2026-07-08 → 2026-06-26 (-12d) | 11d → 10d | 0% → 72% | 1d → 17d |  |  |
| 613 | Emissão inicial | 2026-06-24 → 2026-06-15 A (-9d) | 2026-07-02 → 2026-06-23 A (-9d) |  | 0% → 100% | 1d → none | 498 → 573SS |  |
| 614 | Análise Tecnored | 2026-07-03 → 2026-06-24 A (-9d) | 2026-07-03 → 2026-06-24 (-9d) |  | 0% → 15% | 1d → 17d |  |  |
| 615 | Atendimento de comentários | 2026-07-06 → 2026-06-25 (-11d) | 2026-07-07 → 2026-06-25 (-12d) | 2d → 1d |  | 1d → 17d |  |  |
| 616 | Aprovação | 2026-07-08 → 2026-06-26 (-12d) | 2026-07-08 → 2026-06-26 (-12d) |  |  | 1d → 17d |  |  |
| 617 | **FD-F0009-0305-MB-J-00010** | 2026-06-24 → 2026-06-15 A (-9d) | 2026-07-08 → 2026-06-26 (-12d) | 11d → 10d | 0% → 72% | 1d → 17d |  |  |
| 618 | Emissão inicial | 2026-06-24 → 2026-06-15 A (-9d) | 2026-07-02 → 2026-06-23 A (-9d) |  | 0% → 100% | 1d → none | 498 → 573SS |  |
| 619 | Análise Tecnored | 2026-07-03 → 2026-06-24 A (-9d) | 2026-07-03 → 2026-06-24 (-9d) |  | 0% → 15% | 1d → 17d |  |  |
| 620 | Atendimento de comentários | 2026-07-06 → 2026-06-25 (-11d) | 2026-07-07 → 2026-06-25 (-12d) | 2d → 1d |  | 1d → 17d |  |  |
| 621 | Aprovação | 2026-07-08 → 2026-06-26 (-12d) | 2026-07-08 → 2026-06-26 (-12d) |  |  | 1d → 17d |  |  |
| 622 | **FD-F0009-0305-MB-J-00011** | 2026-06-24 → 2026-06-15 A (-9d) | 2026-07-08 → 2026-06-26 (-12d) | 11d → 10d | 0% → 72% | 1d → 17d |  |  |
| 623 | Emissão inicial | 2026-06-24 → 2026-06-15 A (-9d) | 2026-07-02 → 2026-06-23 A (-9d) |  | 0% → 100% | 1d → none | 498 → 573SS |  |
| 624 | Análise Tecnored | 2026-07-03 → 2026-06-24 A (-9d) | 2026-07-03 → 2026-06-24 (-9d) |  | 0% → 15% | 1d → 17d |  |  |
| 625 | Atendimento de comentários | 2026-07-06 → 2026-06-25 (-11d) | 2026-07-07 → 2026-06-25 (-12d) | 2d → 1d |  | 1d → 17d |  |  |
| 626 | Aprovação | 2026-07-08 → 2026-06-26 (-12d) | 2026-07-08 → 2026-06-26 (-12d) |  |  | 1d → 17d |  |  |
| 627 | **FD-F0009-0305-MB-J-00012** | 2026-06-24 → 2026-06-18 A (-6d) | 2026-07-08 → 2026-07-01 (-7d) | 11d → 10d | 0% → 72% | 1d → 14d |  |  |
| 628 | Emissão inicial | 2026-06-24 → 2026-06-18 A (-6d) | 2026-07-02 → 2026-06-26 A (-6d) |  | 0% → 100% | 1d → none | 498 → 573SS |  |
| 629 | Análise Tecnored | 2026-07-03 → 2026-06-29 A (-4d) | 2026-07-03 → 2026-06-29 (-4d) |  | 0% → 15% | 1d → 14d |  |  |
| 630 | Atendimento de comentários | 2026-07-06 → 2026-06-30 (-6d) | 2026-07-07 → 2026-06-30 (-7d) | 2d → 1d |  | 1d → 14d |  |  |
| 631 | Aprovação | 2026-07-08 → 2026-07-01 (-7d) | 2026-07-08 → 2026-07-01 (-7d) |  |  | 1d → 14d |  |  |
| 632 | **FD-F0009-0305-MB-J-00013** | 2026-06-24 → 2026-06-18 A (-6d) | 2026-07-08 → 2026-07-01 (-7d) | 11d → 10d | 0% → 72% | 1d → 14d |  |  |
| 633 | Emissão inicial | 2026-06-24 → 2026-06-18 A (-6d) | 2026-07-02 → 2026-06-26 A (-6d) |  | 0% → 100% | 1d → none | 498 → 573SS |  |
| 634 | Análise Tecnored | 2026-07-03 → 2026-06-29 A (-4d) | 2026-07-03 → 2026-06-29 (-4d) |  | 0% → 15% | 1d → 14d |  |  |
| 635 | Atendimento de comentários | 2026-07-06 → 2026-06-30 (-6d) | 2026-07-07 → 2026-06-30 (-7d) | 2d → 1d |  | 1d → 14d |  |  |
| 636 | Aprovação | 2026-07-08 → 2026-07-01 (-7d) | 2026-07-08 → 2026-07-01 (-7d) |  |  | 1d → 14d |  |  |
| 637 | **FD-F0009-0305-MB-J-00014** | 2026-06-24 → 2026-06-18 A (-6d) | 2026-07-08 → 2026-07-01 (-7d) | 11d → 10d | 0% → 72% | 1d → 14d |  |  |
| 638 | Emissão inicial | 2026-06-24 → 2026-06-18 A (-6d) | 2026-07-02 → 2026-06-26 A (-6d) |  | 0% → 100% | 1d → none | 498 → 573SS |  |
| 639 | Análise Tecnored | 2026-07-03 → 2026-06-29 A (-4d) | 2026-07-03 → 2026-06-29 (-4d) |  | 0% → 15% | 1d → 14d |  |  |
| 640 | Atendimento de comentários | 2026-07-06 → 2026-06-30 (-6d) | 2026-07-07 → 2026-06-30 (-7d) | 2d → 1d |  | 1d → 14d |  |  |
| 641 | Aprovação | 2026-07-08 → 2026-07-01 (-7d) | 2026-07-08 → 2026-07-01 (-7d) |  |  | 1d → 14d |  |  |
| 642 | **FD-F0009-0305-MB-J-00015** | 2026-06-24 → 2026-06-15 A (-9d) | 2026-07-08 → 2026-06-26 (-12d) | 11d → 10d | 0% → 72% | 1d → 17d |  |  |
| 643 | Emissão inicial | 2026-06-24 → 2026-06-15 A (-9d) | 2026-07-02 → 2026-06-23 A (-9d) |  | 0% → 100% | 1d → none | 498 → 573SS |  |
| 644 | Análise Tecnored | 2026-07-03 → 2026-06-24 A (-9d) | 2026-07-03 → 2026-06-24 (-9d) |  | 0% → 15% | 1d → 17d |  |  |
| 645 | Atendimento de comentários | 2026-07-06 → 2026-06-25 (-11d) | 2026-07-07 → 2026-06-25 (-12d) | 2d → 1d |  | 1d → 17d |  |  |

| ID | Task | Start | Finish | Duration | Complete | Total float | Predecessors | Other |
| --- | --- | --- | --- | --- | --- | --- | --- | --- |
| 646 | Aprovação | 2026-07-08 → 2026-06-26 (-12d) | 2026-07-08 → 2026-06-26 (-12d) |  |  | 1d → 17d |  |  |
| 647 | **FD-F0009-0305-MB-J-00016** | 2026-06-24 → 2026-06-15 A (-9d) | 2026-07-08 → 2026-06-26 (-12d) | 11d → 10d | 0% → 72% | 1d → 17d |  |  |
| 648 | Emissão inicial | 2026-06-24 → 2026-06-15 A (-9d) | 2026-07-02 → 2026-06-23 A (-9d) |  | 0% → 100% | 1d → none | 498 → 573SS |  |
| 649 | Análise Tecnored | 2026-07-03 → 2026-06-24 A (-9d) | 2026-07-03 → 2026-06-24 (-9d) |  | 0% → 15% | 1d → 17d |  |  |
| 650 | Atendimento de comentários | 2026-07-06 → 2026-06-25 (-11d) | 2026-07-07 → 2026-06-25 (-12d) | 2d → 1d |  | 1d → 17d |  |  |
| 651 | Aprovação | 2026-07-08 → 2026-06-26 (-12d) | 2026-07-08 → 2026-06-26 (-12d) |  |  | 1d → 17d |  |  |
| 707 | **DT-F0009-0305-MB-J-00001** | 2026-07-01 → 2026-06-30 A (-1d) | 2026-07-08 → 2026-07-09 (+1d) | 6d → 8d | 0% → 45% | 1d → 8d |  |  |
| 708 | Emissão inicial | 2026-07-01 → 2026-06-30 A (-1d) | 2026-07-02 → 2026-07-03 (+1d) | 2d → 4d | 0% → 90% | 1d → 8d | 558 → 558FS-7d | constraint none → start no earlier than 2026-06-17 |
| 709 | Análise Tecnored | 2026-07-03 → 2026-07-06 (+3d) | 2026-07-03 → 2026-07-06 (+3d) |  |  | 1d → 8d |  |  |
| 710 | Atendimento de comentários | 2026-07-06 → 2026-07-07 (+1d) | 2026-07-07 → 2026-07-08 (+1d) |  |  | 1d → 8d |  |  |
| 711 | Aprovação | 2026-07-08 → 2026-07-09 (+1d) | 2026-07-08 → 2026-07-09 (+1d) |  |  | 1d → 8d |  |  |
| 712 | **Civil** | 2026-06-23 → 2026-06-29 A (+6d) | 2026-07-09 → 2026-07-17 (+8d) | 13d → 14.5d | 0% → 4% | 0d → 2.5d |  |  |
| 713 | **MC-F0009-0305-MB-C-00001** | 2026-06-23 → 2026-06-29 A (+6d) | 2026-07-08 → 2026-07-15 (+7d) | 12d → 12.5d | 0% → 6% | 0d → 4.5d |  |  |
| 714 | Emissão inicial | 2026-06-23 → 2026-06-29 A (+6d) | 2026-07-02 → 2026-07-10 (+8d) | 8d → 5d | 0% → 10% | 0d → 2.5d |  | constraint none → start no earlier than 2026-06-29 |
| 715 | Análise Tecnored | 2026-07-03 → 2026-07-10 (+7d) | 2026-07-03 → 2026-07-13 (+10d) |  |  | 1d → 4.5d |  |  |
| 716 | Atendimento de comentários | 2026-07-06 → 2026-07-13 (+7d) | 2026-07-07 → 2026-07-14 (+7d) | 2d → 1d |  | 1d → 4.5d |  |  |
| 717 | Aprovação | 2026-07-08 → 2026-07-14 (+6d) | 2026-07-08 → 2026-07-15 (+7d) |  |  | 1d → 4.5d |  |  |
| 718 | **PQ-F0009-0305-MB-C-00001** | 2026-07-03 → 2026-07-10 (+7d) | 2026-07-09 → 2026-07-17 (+8d) |  |  | 0d → 2.5d |  |  |
| 719 | Emissão inicial | 2026-07-03 → 2026-07-10 (+7d) | 2026-07-03 → 2026-07-13 (+10d) |  |  | 0d → 2.5d |  |  |
| 720 | Análise Tecnored | 2026-07-06 → 2026-07-13 (+7d) | 2026-07-06 → 2026-07-14 (+8d) |  |  | 0d → 2.5d |  |  |
| 721 | Atendimento de comentários | 2026-07-07 → 2026-07-14 (+7d) | 2026-07-08 → 2026-07-16 (+8d) |  |  | 0d → 2.5d |  |  |
| 722 | Aprovação | 2026-07-09 → 2026-07-16 (+7d) | 2026-07-09 → 2026-07-17 (+8d) |  |  | 0d → 2.5d |  |  |

## Version 3 (data date 2026-07-02, saved 2026-07-03, file CR-F0009-0305-MB-F-00001 02072026.mpp)

Note of the change: Primeira versao dashboard

Last finish stays 2026-07-30.

Changed:

| ID | Task | Complete | Other |
| --- | --- | --- | --- |
| 203 | **Tubulação/Utilidades** | 7% → 8% |  |
| 371 | Emissão inicial |  | constraint none → finish no earlier than 2026-07-02 |

## Version 4 (data date 2026-07-06, saved 2026-07-06, file CR-F0009-0305-MB-F-00001 06072026.mpp)

Note of the change: Primeira versao dashboard

Last finish 2026-07-30 → 2026-08-03 (+4d). Complete tasks 79 → 83.

Removed: 314 AG-F0009-0305-MB-T-00010; 315 Emissão inicial; 316 Análise Tecnored; 317 Atendimento de comentários; 318 Aprovação; 567 ET-F0009-0305-MB-J-00001; 568 Emissão inicial; 569 Análise Tecnored; 570 Atendimento de comentários; 571 Aprovação

Changed:

| ID | Task | Start | Finish | Duration | Complete | Total float | Predecessors | Other |
| --- | --- | --- | --- | --- | --- | --- | --- | --- |
| 1 | **F0009 - Programa Marabá** |  | 2026-07-21 → 2026-07-27 (+6d) | 60d → 62d | 45% → 51% |  |  |  |
| 10 | **Área 0305 - Hot Blast Stoves** |  | 2026-07-21 → 2026-07-27 (+6d) | 60d → 62d | 45% → 51% |  |  |  |
| 25 | **LF-F0009-0305-MB-F-00001** |  | 2026-07-09 → 2026-07-13 (+4d) |  |  | 8d → 10d |  |  |
| 29 | Aprovação | 2026-07-09 → 2026-07-13 (+4d) | 2026-07-09 → 2026-07-13 (+4d) |  |  | 8d → 10d |  |  |
| 30 | **Coordenação** |  | 2026-07-02 → 2026-07-27 (+25d) | 47d → 62d | 39% → 40% | 13d → 0d |  |  |
| 31 | **RM-F0009-0305-MB-G-00001** | 2026-06-24 A → 2026-07-01 A (+7d) | 2026-07-02 → 2026-07-13 (+11d) |  | 32% → 34% | 13d → 10d |  |  |
| 32 | Emissão inicial | 2026-06-24 A → 2026-07-01 A (+7d) | 2026-06-28 → 2026-07-03 (+5d) |  | 75% → 80% | 13d → 10d |  |  |
| 33 | Análise Tecnored | 2026-06-29 → 2026-07-06 (+7d) | 2026-06-29 → 2026-07-06 (+7d) |  |  | 13d → 10d |  |  |
| 34 | Atendimento de comentários | 2026-06-30 → 2026-07-07 (+7d) | 2026-07-01 → 2026-07-08 (+7d) |  |  | 13d → 10d |  |  |
| 35 | Aprovação | 2026-07-02 → 2026-07-13 (+11d) | 2026-07-02 → 2026-07-13 (+11d) |  |  | 13d → 10d |  |  |
| 36 | **RM-F0009-0305MB-G-00002** | 2026-07-13 → 2026-07-22 (+9d) | 2026-07-21 → 2026-07-30 (+9d) |  |  | 0d → -3d |  |  |
| 37 | Emissão inicial | 2026-07-13 → 2026-07-22 (+9d) | 2026-07-15 → 2026-07-24 (+9d) |  |  | 0d → -3d |  |  |
| 38 | Análise Tecnored | 2026-07-16 → 2026-07-27 (+11d) | 2026-07-16 → 2026-07-27 (+11d) |  |  | 0d → -3d |  |  |
| 39 | Atendimento de comentários | 2026-07-17 → 2026-07-28 (+11d) | 2026-07-20 → 2026-07-29 (+9d) |  |  | 0d → -3d |  |  |
| 40 | Aprovação | 2026-07-21 → 2026-07-30 (+9d) | 2026-07-21 → 2026-07-30 (+9d) |  |  | 0d → -3d |  |  |
| 41 | **RL-F0009-0305-MB-G-00001** | 2026-06-26 A → 2026-07-15 A (+19d) | 2026-07-01 → 2026-07-20 (+19d) |  |  | 14d → 5d |  |  |
| 42 | Emissão inicial | 2026-06-26 A → 2026-07-15 A (+19d) | 2026-06-28 → 2026-07-15 (+17d) |  |  | 14d → 5d |  |  |
| 43 | Análise Tecnored | 2026-06-29 → 2026-07-16 (+17d) | 2026-06-29 → 2026-07-16 (+17d) |  |  | 14d → 5d |  |  |
| 44 | Atendimento de comentários | 2026-06-30 → 2026-07-17 (+17d) | 2026-06-30 → 2026-07-17 (+17d) |  |  | 14d → 5d |  |  |
| 45 | Aprovação | 2026-07-01 → 2026-07-20 (+19d) | 2026-07-01 → 2026-07-20 (+19d) |  |  | 14d → 5d |  |  |
| 46 | **LP-F0009-0305-MB-G-00001** |  | 2026-06-30 → 2026-07-27 (+27d) | 45d → 62d |  | 15d → 0d |  |  |
| 49 | Atendimento de comentários | 2026-06-26 → 2026-07-23 (+27d) | 2026-06-29 → 2026-07-24 (+25d) |  |  | 15d → 0d | 48FS+38d → 48FS+55d |  |
| 50 | Aprovação | 2026-06-30 → 2026-07-27 (+27d) | 2026-06-30 → 2026-07-27 (+27d) |  |  | 15d → 0d |  |  |
| 51 | **Processo** |  | 2026-07-09 → 2026-07-13 (+4d) |  |  | 8d → 10d |  |  |
| 57 | **MD-F0009-0305-MB-P-00001** | 2026-07-17 → 2026-07-21 (+4d) | 2026-07-27 → 2026-07-29 (+2d) |  |  | -4d → -2d |  |  |
| 58 | Emissão inicial | 2026-07-17 → 2026-07-21 (+4d) | 2026-07-21 → 2026-07-23 (+2d) |  |  | -4d → -2d |  |  |
| 59 | Análise Tecnored | 2026-07-22 → 2026-07-24 (+2d) | 2026-07-22 → 2026-07-24 (+2d) |  |  | -4d → -2d |  |  |
| 60 | Atendimento de comentários | 2026-07-23 → 2026-07-27 (+4d) | 2026-07-24 → 2026-07-28 (+4d) |  |  | -4d → -2d |  |  |
| 61 | Aprovação | 2026-07-27 → 2026-07-29 (+2d) | 2026-07-27 → 2026-07-29 (+2d) |  |  | -4d → -2d |  |  |
| 62 | **FG-F0009-0305-MB-P-00001** |  | 2026-07-09 → 2026-07-13 (+4d) |  |  | 8d → 10d |  |  |
| 66 | Aprovação | 2026-07-09 → 2026-07-13 (+4d) | 2026-07-09 → 2026-07-13 (+4d) |  |  | 8d → 10d |  |  |
| 67 | **Mecânica** |  | 2026-07-16 → 2026-07-21 (+5d) | 43d → 43.75d | 52% → 54% | 3d → 4.25d |  |  |
| 83 | **PQ-F0009-0305-MB-M-00001** | 2026-06-25 → 2026-07-01 A (+6d) | 2026-07-03 → 2026-07-13 (+10d) |  | 0% → 42% | 12d → 10d |  |  |
| 84 | Emissão inicial | 2026-06-25 → 2026-07-01 A (+6d) | 2026-06-29 → 2026-07-03 (+4d) |  | 0% → 99% | 12d → 10d |  | constraint start no earlier than 2026-06-25 → start no earlier than 2026-07-01 |
| 85 | Análise Tecnored | 2026-06-30 → 2026-07-06 (+6d) | 2026-06-30 → 2026-07-06 (+6d) |  |  | 12d → 10d |  |  |
| 86 | Atendimento de comentários | 2026-07-01 → 2026-07-07 (+6d) | 2026-07-02 → 2026-07-08 (+6d) |  |  | 12d → 10d |  |  |
| 87 | Aprovação | 2026-07-03 → 2026-07-13 (+10d) | 2026-07-03 → 2026-07-13 (+10d) |  |  | 12d → 10d |  |  |
| 88 | **AG-F0009-0305-MB-L-00001** | 2026-07-09 → 2026-07-13 (+4d) | 2026-07-16 → 2026-07-21 (+5d) |  |  | 3d → 4.25d |  |  |
| 89 | Emissão inicial | 2026-07-09 → 2026-07-13 (+4d) | 2026-07-13 → 2026-07-16 (+3d) |  |  | 3d → 4.25d |  |  |
| 90 | Análise Tecnored | 2026-07-14 → 2026-07-16 (+2d) | 2026-07-14 → 2026-07-17 (+3d) |  |  | 3d → 4.25d |  |  |
| 91 | Atendimento de comentários | 2026-07-15 → 2026-07-17 (+2d) | 2026-07-15 → 2026-07-20 (+5d) |  |  | 3d → 4.25d |  |  |
| 92 | Aprovação | 2026-07-16 → 2026-07-20 (+4d) | 2026-07-16 → 2026-07-21 (+5d) |  |  | 3d → 4.25d |  |  |
| 93 | **AG-F0009-0305-MB-L-00002** | 2026-07-09 → 2026-07-13 (+4d) | 2026-07-16 → 2026-07-21 (+5d) |  |  | 3d → 4.25d |  |  |
| 94 | Emissão inicial | 2026-07-09 → 2026-07-13 (+4d) | 2026-07-13 → 2026-07-16 (+3d) |  |  | 3d → 4.25d |  |  |
| 95 | Análise Tecnored | 2026-07-14 → 2026-07-16 (+2d) | 2026-07-14 → 2026-07-17 (+3d) |  |  | 3d → 4.25d |  |  |
| 96 | Atendimento de comentários | 2026-07-15 → 2026-07-17 (+2d) | 2026-07-15 → 2026-07-20 (+5d) |  |  | 3d → 4.25d |  |  |
| 97 | Aprovação | 2026-07-16 → 2026-07-20 (+4d) | 2026-07-16 → 2026-07-21 (+5d) |  |  | 3d → 4.25d |  |  |
| 98 | **AG-F0009-0305-MB-L-00003** | 2026-07-09 → 2026-07-13 (+4d) | 2026-07-16 → 2026-07-21 (+5d) |  |  | 3d → 4.25d |  |  |
| 99 | Emissão inicial | 2026-07-09 → 2026-07-13 (+4d) | 2026-07-13 → 2026-07-16 (+3d) |  |  | 3d → 4.25d |  |  |
| 100 | Análise Tecnored | 2026-07-14 → 2026-07-16 (+2d) | 2026-07-14 → 2026-07-17 (+3d) |  |  | 3d → 4.25d |  |  |
| 101 | Atendimento de comentários | 2026-07-15 → 2026-07-17 (+2d) | 2026-07-15 → 2026-07-20 (+5d) |  |  | 3d → 4.25d |  |  |
| 102 | Aprovação | 2026-07-16 → 2026-07-20 (+4d) | 2026-07-16 → 2026-07-21 (+5d) |  |  | 3d → 4.25d |  |  |
| 103 | **AG-F0009-0305-MB-L-00004** | 2026-07-09 → 2026-07-13 (+4d) | 2026-07-16 → 2026-07-21 (+5d) |  |  | 3d → 4.25d |  |  |
| 104 | Emissão inicial | 2026-07-09 → 2026-07-13 (+4d) | 2026-07-13 → 2026-07-16 (+3d) |  |  | 3d → 4.25d |  |  |
| 105 | Análise Tecnored | 2026-07-14 → 2026-07-16 (+2d) | 2026-07-14 → 2026-07-17 (+3d) |  |  | 3d → 4.25d |  |  |
| 106 | Atendimento de comentários | 2026-07-15 → 2026-07-17 (+2d) | 2026-07-15 → 2026-07-20 (+5d) |  |  | 3d → 4.25d |  |  |
| 107 | Aprovação | 2026-07-16 → 2026-07-20 (+4d) | 2026-07-16 → 2026-07-21 (+5d) |  |  | 3d → 4.25d |  |  |
| 108 | **AG-F0009-0305-MB-L-00005** | 2026-07-09 → 2026-07-13 (+4d) | 2026-07-16 → 2026-07-21 (+5d) |  |  | 3d → 4.25d |  |  |
| 109 | Emissão inicial | 2026-07-09 → 2026-07-13 (+4d) | 2026-07-13 → 2026-07-16 (+3d) |  |  | 3d → 4.25d |  |  |
| 110 | Análise Tecnored | 2026-07-14 → 2026-07-16 (+2d) | 2026-07-14 → 2026-07-17 (+3d) |  |  | 3d → 4.25d |  |  |
| 111 | Atendimento de comentários | 2026-07-15 → 2026-07-17 (+2d) | 2026-07-15 → 2026-07-20 (+5d) |  |  | 3d → 4.25d |  |  |
| 112 | Aprovação | 2026-07-16 → 2026-07-20 (+4d) | 2026-07-16 → 2026-07-21 (+5d) |  |  | 3d → 4.25d |  |  |
| 113 | **AG-F0009-0305-MB-L-00006** | 2026-07-09 → 2026-07-13 (+4d) | 2026-07-16 → 2026-07-21 (+5d) |  |  | 3d → 4.25d |  |  |
| 114 | Emissão inicial | 2026-07-09 → 2026-07-13 (+4d) | 2026-07-13 → 2026-07-16 (+3d) |  |  | 3d → 4.25d |  |  |
| 115 | Análise Tecnored | 2026-07-14 → 2026-07-16 (+2d) | 2026-07-14 → 2026-07-17 (+3d) |  |  | 3d → 4.25d |  |  |
| 116 | Atendimento de comentários | 2026-07-15 → 2026-07-17 (+2d) | 2026-07-15 → 2026-07-20 (+5d) |  |  | 3d → 4.25d |  |  |
| 117 | Aprovação | 2026-07-16 → 2026-07-20 (+4d) | 2026-07-16 → 2026-07-21 (+5d) |  |  | 3d → 4.25d |  |  |
| 118 | **AG-F0009-0305-MB-L-00007** | 2026-07-09 → 2026-07-13 (+4d) | 2026-07-16 → 2026-07-21 (+5d) |  |  | 3d → 4.25d |  |  |
| 119 | Emissão inicial | 2026-07-09 → 2026-07-13 (+4d) | 2026-07-13 → 2026-07-16 (+3d) |  |  | 3d → 4.25d |  |  |
| 120 | Análise Tecnored | 2026-07-14 → 2026-07-16 (+2d) | 2026-07-14 → 2026-07-17 (+3d) |  |  | 3d → 4.25d |  |  |

| ID | Task | Start | Finish | Duration | Complete | Total float | Predecessors | Other |
| --- | --- | --- | --- | --- | --- | --- | --- | --- |
| 121 | Atendimento de comentários | 2026-07-15 → 2026-07-17 (+2d) | 2026-07-15 → 2026-07-20 (+5d) |  |  | 3d → 4.25d |  |  |
| 122 | Aprovação | 2026-07-16 → 2026-07-20 (+4d) | 2026-07-16 → 2026-07-21 (+5d) |  |  | 3d → 4.25d |  |  |
| 123 | **AG-F0009-0305-MB-L-00008** | 2026-07-09 → 2026-07-13 (+4d) | 2026-07-16 → 2026-07-21 (+5d) |  |  | 3d → 4.25d |  |  |
| 124 | Emissão inicial | 2026-07-09 → 2026-07-13 (+4d) | 2026-07-13 → 2026-07-16 (+3d) |  |  | 3d → 4.25d |  |  |
| 125 | Análise Tecnored | 2026-07-14 → 2026-07-16 (+2d) | 2026-07-14 → 2026-07-17 (+3d) |  |  | 3d → 4.25d |  |  |
| 126 | Atendimento de comentários | 2026-07-15 → 2026-07-17 (+2d) | 2026-07-15 → 2026-07-20 (+5d) |  |  | 3d → 4.25d |  |  |
| 127 | Aprovação | 2026-07-16 → 2026-07-20 (+4d) | 2026-07-16 → 2026-07-21 (+5d) |  |  | 3d → 4.25d |  |  |
| 128 | **AG-F0009-0305-MB-L-00009** | 2026-07-09 → 2026-07-13 (+4d) | 2026-07-16 → 2026-07-21 (+5d) |  |  | 3d → 4.25d |  |  |
| 129 | Emissão inicial | 2026-07-09 → 2026-07-13 (+4d) | 2026-07-13 → 2026-07-16 (+3d) |  |  | 3d → 4.25d |  |  |
| 130 | Análise Tecnored | 2026-07-14 → 2026-07-16 (+2d) | 2026-07-14 → 2026-07-17 (+3d) |  |  | 3d → 4.25d |  |  |
| 131 | Atendimento de comentários | 2026-07-15 → 2026-07-17 (+2d) | 2026-07-15 → 2026-07-20 (+5d) |  |  | 3d → 4.25d |  |  |
| 132 | Aprovação | 2026-07-16 → 2026-07-20 (+4d) | 2026-07-16 → 2026-07-21 (+5d) |  |  | 3d → 4.25d |  |  |
| 154 | Emissão inicial |  |  |  |  |  |  | baseline start 2026-05-29 → 2026-06-22; baseline finish 2026-06-09 → 2026-07-01 |
| 155 | Análise Tecnored |  |  |  |  | 10d → 12d |  | baseline start 2026-06-10 → 2026-07-02; baseline finish 2026-06-10 → 2026-07-02 |
| 156 | Atendimento de comentários |  |  |  |  | 10d → 12d |  | baseline start 2026-06-11 → 2026-07-03; baseline finish 2026-06-12 → 2026-07-06 |
| 157 | Aprovação |  |  |  |  | 10d → 12d |  | baseline start 2026-06-15 → 2026-07-07; baseline finish 2026-06-15 → 2026-07-07 |
| 159 | Emissão inicial |  |  |  |  |  |  | baseline start 2026-05-29 → 2026-06-22; baseline finish 2026-06-09 → 2026-07-01 |
| 160 | Análise Tecnored |  |  |  |  | 10d → 12d |  | baseline start 2026-06-10 → 2026-07-02; baseline finish 2026-06-10 → 2026-07-02 |
| 161 | Atendimento de comentários |  |  |  |  | 10d → 12d |  | baseline start 2026-06-11 → 2026-07-03; baseline finish 2026-06-12 → 2026-07-06 |
| 162 | Aprovação |  |  |  |  | 10d → 12d |  | baseline start 2026-06-15 → 2026-07-07; baseline finish 2026-06-15 → 2026-07-07 |
| 169 | Emissão inicial |  |  |  |  |  |  | baseline start 2026-05-29 → 2026-06-01; baseline finish 2026-06-11 → 2026-06-16 |
| 170 | Análise Tecnored |  |  |  |  | 21d → 23d |  | baseline start 2026-06-12 → 2026-06-17; baseline finish 2026-06-12 → 2026-06-17 |
| 171 | Atendimento de comentários |  |  |  |  | 21d → 23d |  | baseline start 2026-06-15 → 2026-06-18; baseline finish 2026-06-16 → 2026-06-19 |
| 172 | Aprovação |  |  |  |  | 21d → 23d |  | baseline start 2026-06-17 → 2026-06-22; baseline finish 2026-06-17 → 2026-06-22 |
| 174 | Emissão inicial |  |  |  |  |  |  | baseline start 2026-05-29 → 2026-06-01; baseline finish 2026-06-11 → 2026-06-16 |
| 175 | Análise Tecnored |  |  |  |  |  |  | baseline start 2026-06-12 → 2026-06-17; baseline finish 2026-06-12 → 2026-06-17 |
| 176 | Atendimento de comentários |  |  |  |  | 21d → 23d |  | baseline start 2026-06-15 → 2026-06-18; baseline finish 2026-06-16 → 2026-06-19 |
| 177 | Aprovação |  |  |  |  | 21d → 23d |  | baseline start 2026-06-17 → 2026-06-22; baseline finish 2026-06-17 → 2026-06-22 |
| 179 | Emissão inicial |  |  |  |  |  |  | baseline start 2026-05-29 → 2026-06-01; baseline finish 2026-06-11 → 2026-06-16 |
| 180 | Análise Tecnored |  |  |  |  | 21d → 23d |  | baseline start 2026-06-12 → 2026-06-17; baseline finish 2026-06-12 → 2026-06-17 |
| 181 | Atendimento de comentários |  |  |  |  | 21d → 23d |  | baseline start 2026-06-15 → 2026-06-18; baseline finish 2026-06-16 → 2026-06-19 |
| 182 | Aprovação |  |  |  |  | 21d → 23d |  | baseline start 2026-06-17 → 2026-06-22; baseline finish 2026-06-17 → 2026-06-22 |
| 184 | Emissão inicial |  |  |  |  |  |  | baseline start 2026-05-19 → 2026-05-15; baseline finish 2026-05-27 → 2026-05-26 |
| 185 | Análise Tecnored |  |  |  |  |  |  | baseline start 2026-05-28 → 2026-05-29; baseline finish 2026-05-28 → 2026-05-29 |
| 186 | Atendimento de comentários |  |  |  |  |  |  | baseline start 2026-05-29 → 2026-06-01; baseline finish 2026-06-01 → 2026-06-02 |
| 187 | Aprovação |  |  |  |  | 32d → 34d |  | baseline start 2026-06-02 → 2026-06-03; baseline finish 2026-06-02 → 2026-06-03 |
| 203 | **Tubulação/Utilidades** |  | 2026-07-14 → 2026-07-17 (+3d) | 25d → 26d | 8% → 31% | 5d → 6d |  |  |
| 209 | **MD-F0009-0305-MB-U-00001** | 2026-07-22 → 2026-07-24 (+2d) | 2026-07-30 → 2026-08-03 (+4d) |  |  | -7d → -5d |  |  |
| 210 | Emissão inicial | 2026-07-22 → 2026-07-24 (+2d) | 2026-07-24 → 2026-07-28 (+4d) |  |  | -7d → -5d |  |  |
| 211 | Análise Tecnored | 2026-07-27 → 2026-07-29 (+2d) | 2026-07-27 → 2026-07-29 (+2d) |  |  | -7d → -5d |  |  |
| 212 | Atendimento de comentários | 2026-07-28 → 2026-07-30 (+2d) | 2026-07-29 → 2026-07-31 (+2d) |  |  | -7d → -5d |  |  |
| 213 | Aprovação | 2026-07-30 → 2026-08-03 (+4d) | 2026-07-30 → 2026-08-03 (+4d) |  |  | -7d → -5d |  |  |
| 214 | **ML-F0009-0305-MB-T-00001** | 2026-06-24 A → 2026-07-03 A (+9d) | 2026-07-02 → 2026-07-15 (+13d) |  |  | 13d → 8d |  |  |
| 215 | Emissão inicial | 2026-06-24 A → 2026-07-03 A (+9d) | 2026-06-26 → 2026-07-07 (+11d) |  |  | 9d → 7d |  |  |
| 216 | Análise Tecnored | 2026-06-29 → 2026-07-08 (+9d) | 2026-06-29 → 2026-07-08 (+9d) |  |  | 9d → 7d |  |  |
| 217 | Atendimento de comentários | 2026-06-30 → 2026-07-13 (+13d) | 2026-07-01 → 2026-07-14 (+13d) |  |  | 13d → 8d |  |  |
| 218 | Aprovação | 2026-07-02 → 2026-07-15 (+13d) | 2026-07-02 → 2026-07-15 (+13d) |  |  | 13d → 8d |  |  |
| 234 | **PQ-F0009-0305-MB-T-00001** | 2026-06-29 → 2026-07-07 (+8d) | 2026-07-07 → 2026-07-17 (+10d) |  |  | 10d → 6d |  |  |
| 235 | Emissão inicial | 2026-06-29 → 2026-07-07 (+8d) | 2026-07-01 → 2026-07-13 (+12d) |  |  | 10d → 6d |  | constraint start no earlier than 2026-06-29 → start no earlier than 2026-07-07 |
| 236 | Análise Tecnored | 2026-07-02 → 2026-07-14 (+12d) | 2026-07-02 → 2026-07-14 (+12d) |  |  | 10d → 6d |  |  |
| 237 | Atendimento de comentários | 2026-07-03 → 2026-07-15 (+12d) | 2026-07-06 → 2026-07-16 (+10d) |  |  | 10d → 6d |  |  |
| 238 | Aprovação | 2026-07-07 → 2026-07-17 (+10d) | 2026-07-07 → 2026-07-17 (+10d) |  |  | 10d → 6d |  |  |
| 249 | **FG-F0009-0305-MB-T-00002** |  | 2026-07-10 → 2026-07-14 (+4d) |  |  | 7d → 9d |  |  |
| 252 | Atendimento de comentários |  | 2026-07-09 → 2026-07-13 (+4d) |  |  | 7d → 9d |  |  |
| 253 | Aprovação | 2026-07-10 → 2026-07-14 (+4d) | 2026-07-10 → 2026-07-14 (+4d) |  |  | 7d → 9d |  |  |
| 254 | **AG-F0009-0305-MB-T-00001** | 2026-07-06 A | 2026-07-14 → 2026-07-16 (+2d) |  | 0% → 32% | 5d → 7d |  |  |
| 255 | Emissão inicial | 2026-07-06 A |  |  | 0% → 75% | 5d → 7d | 216 → 216FF |  |
| 256 | Análise Tecnored | 2026-07-09 → 2026-07-13 (+4d) | 2026-07-09 → 2026-07-13 (+4d) |  |  | 5d → 7d |  |  |
| 257 | Atendimento de comentários | 2026-07-10 → 2026-07-14 (+4d) | 2026-07-13 → 2026-07-15 (+2d) |  |  | 5d → 7d |  |  |
| 258 | Aprovação | 2026-07-14 → 2026-07-16 (+2d) | 2026-07-14 → 2026-07-16 (+2d) |  |  | 5d → 7d |  |  |
| 259 | **AG-F0009-0305-MB-T-00002** | 2026-07-06 A | 2026-07-14 → 2026-07-16 (+2d) |  | 0% → 32% | 5d → 7d |  |  |
| 260 | Emissão inicial | 2026-07-06 A |  |  | 0% → 75% | 5d → 7d | 216 → 216FF |  |
| 261 | Análise Tecnored | 2026-07-09 → 2026-07-13 (+4d) | 2026-07-09 → 2026-07-13 (+4d) |  |  | 5d → 7d |  |  |
| 262 | Atendimento de comentários | 2026-07-10 → 2026-07-14 (+4d) | 2026-07-13 → 2026-07-15 (+2d) |  |  | 5d → 7d |  |  |
| 263 | Aprovação | 2026-07-14 → 2026-07-16 (+2d) | 2026-07-14 → 2026-07-16 (+2d) |  |  | 5d → 7d |  |  |
| 264 | **AG-F0009-0305-MB-T-00003** | 2026-07-06 A | 2026-07-14 → 2026-07-16 (+2d) |  | 0% → 32% | 5d → 7d |  |  |
| 265 | Emissão inicial | 2026-07-06 A |  |  | 0% → 75% | 5d → 7d | 216 → 216FF |  |
| 266 | Análise Tecnored | 2026-07-09 → 2026-07-13 (+4d) | 2026-07-09 → 2026-07-13 (+4d) |  |  | 5d → 7d |  |  |
| 267 | Atendimento de comentários | 2026-07-10 → 2026-07-14 (+4d) | 2026-07-13 → 2026-07-15 (+2d) |  |  | 5d → 7d |  |  |
| 268 | Aprovação | 2026-07-14 → 2026-07-16 (+2d) | 2026-07-14 → 2026-07-16 (+2d) |  |  | 5d → 7d |  |  |

| ID | Task | Start | Finish | Duration | Complete | Total float | Predecessors | Other |
| --- | --- | --- | --- | --- | --- | --- | --- | --- |
| 284 | **AG-F0009-0305-MB-T-00004** | 2026-07-06 A | 2026-07-14 → 2026-07-16 (+2d) |  | 0% → 32% | 5d → 7d |  |  |
| 285 | Emissão inicial | 2026-07-06 A |  |  | 0% → 75% | 5d → 7d | 216 → 216FF |  |
| 286 | Análise Tecnored | 2026-07-09 → 2026-07-13 (+4d) | 2026-07-09 → 2026-07-13 (+4d) |  |  | 5d → 7d |  |  |
| 287 | Atendimento de comentários | 2026-07-10 → 2026-07-14 (+4d) | 2026-07-13 → 2026-07-15 (+2d) |  |  | 5d → 7d |  |  |
| 288 | Aprovação | 2026-07-14 → 2026-07-16 (+2d) | 2026-07-14 → 2026-07-16 (+2d) |  |  | 5d → 7d |  |  |
| 289 | **AG-F0009-0305-MB-T-00005** | 2026-07-06 A | 2026-07-14 → 2026-07-16 (+2d) |  | 0% → 32% | 5d → 7d |  |  |
| 290 | Emissão inicial | 2026-07-06 A |  |  | 0% → 75% | 5d → 7d | 216 → 216FF |  |
| 291 | Análise Tecnored | 2026-07-09 → 2026-07-13 (+4d) | 2026-07-09 → 2026-07-13 (+4d) |  |  | 5d → 7d |  |  |
| 292 | Atendimento de comentários | 2026-07-10 → 2026-07-14 (+4d) | 2026-07-13 → 2026-07-15 (+2d) |  |  | 5d → 7d |  |  |
| 293 | Aprovação | 2026-07-14 → 2026-07-16 (+2d) | 2026-07-14 → 2026-07-16 (+2d) |  |  | 5d → 7d |  |  |
| 294 | **AG-F0009-0305-MB-T-00006** | 2026-07-06 A | 2026-07-14 → 2026-07-16 (+2d) |  | 0% → 32% | 5d → 7d |  |  |
| 295 | Emissão inicial | 2026-07-06 A |  |  | 0% → 75% | 5d → 7d | 216 → 216FF |  |
| 296 | Análise Tecnored | 2026-07-09 → 2026-07-13 (+4d) | 2026-07-09 → 2026-07-13 (+4d) |  |  | 5d → 7d |  |  |
| 297 | Atendimento de comentários | 2026-07-10 → 2026-07-14 (+4d) | 2026-07-13 → 2026-07-15 (+2d) |  |  | 5d → 7d |  |  |
| 298 | Aprovação | 2026-07-14 → 2026-07-16 (+2d) | 2026-07-14 → 2026-07-16 (+2d) |  |  | 5d → 7d |  |  |
| 299 | **AG-F0009-0305-MB-T-00007** | 2026-07-06 A | 2026-07-14 → 2026-07-16 (+2d) |  | 0% → 32% | 5d → 7d |  |  |
| 300 | Emissão inicial | 2026-07-06 A |  |  | 0% → 75% | 5d → 7d | 216 → 216FF | baseline start 2026-06-02 → 2026-07-06; baseline finish 2026-06-04 → 2026-07-08 |
| 301 | Análise Tecnored | 2026-07-09 → 2026-07-13 (+4d) | 2026-07-09 → 2026-07-13 (+4d) |  |  | 5d → 7d |  | baseline start 2026-06-05 → 2026-07-13; baseline finish 2026-06-05 → 2026-07-13 |
| 302 | Atendimento de comentários | 2026-07-10 → 2026-07-14 (+4d) | 2026-07-13 → 2026-07-15 (+2d) |  |  | 5d → 7d |  | baseline start 2026-06-08 → 2026-07-14; baseline finish 2026-06-09 → 2026-07-15 |
| 303 | Aprovação | 2026-07-14 → 2026-07-16 (+2d) | 2026-07-14 → 2026-07-16 (+2d) |  |  | 5d → 7d |  | baseline start 2026-06-10 → 2026-07-16; baseline finish 2026-06-10 → 2026-07-16 |
| 304 | **AG-F0009-0305-MB-T-00008** | 2026-07-06 A | 2026-07-14 → 2026-07-16 (+2d) |  | 0% → 32% | 5d → 7d |  |  |
| 305 | Emissão inicial | 2026-07-06 A |  |  | 0% → 75% | 5d → 7d | 216 → 216FF | baseline start 2026-06-02 → 2026-07-06; baseline finish 2026-06-04 → 2026-07-08 |
| 306 | Análise Tecnored | 2026-07-09 → 2026-07-13 (+4d) | 2026-07-09 → 2026-07-13 (+4d) |  |  | 5d → 7d |  | baseline start 2026-06-05 → 2026-07-13; baseline finish 2026-06-05 → 2026-07-13 |
| 307 | Atendimento de comentários | 2026-07-10 → 2026-07-14 (+4d) | 2026-07-13 → 2026-07-15 (+2d) |  |  | 5d → 7d |  | baseline start 2026-06-08 → 2026-07-14; baseline finish 2026-06-09 → 2026-07-15 |
| 308 | Aprovação | 2026-07-14 → 2026-07-16 (+2d) | 2026-07-14 → 2026-07-16 (+2d) |  |  | 5d → 7d |  | baseline start 2026-06-10 → 2026-07-16; baseline finish 2026-06-10 → 2026-07-16 |
| 309 | **AG-F0009-0305-MB-T-00009** | 2026-07-06 A | 2026-07-14 → 2026-07-16 (+2d) |  | 0% → 32% | 5d → 7d |  |  |
| 310 | Emissão inicial | 2026-07-06 A |  |  | 0% → 75% | 5d → 7d | 216 → 216FF | baseline start 2026-06-02 → 2026-07-06; baseline finish 2026-06-04 → 2026-07-08 |
| 311 | Análise Tecnored | 2026-07-09 → 2026-07-13 (+4d) | 2026-07-09 → 2026-07-13 (+4d) |  |  | 5d → 7d |  | baseline start 2026-06-05 → 2026-07-13; baseline finish 2026-06-05 → 2026-07-13 |
| 312 | Atendimento de comentários | 2026-07-10 → 2026-07-14 (+4d) | 2026-07-13 → 2026-07-15 (+2d) |  |  | 5d → 7d |  | baseline start 2026-06-08 → 2026-07-14; baseline finish 2026-06-09 → 2026-07-15 |
| 313 | Aprovação | 2026-07-14 → 2026-07-16 (+2d) | 2026-07-14 → 2026-07-16 (+2d) |  |  | 5d → 7d |  | baseline start 2026-06-10 → 2026-07-16; baseline finish 2026-06-10 → 2026-07-16 |
| 314 | **LK-F0009-0305-MB-T-00001** | 2026-07-01 → 2026-07-03 (+2d) | 2026-07-08 → 2026-07-14 (+6d) |  |  |  |  |  |
| 315 | Emissão inicial | 2026-07-01 → 2026-07-03 (+2d) | 2026-07-02 → 2026-07-06 (+4d) |  |  |  |  | constraint start no earlier than 2026-07-01 → start no earlier than 2026-07-03 |
| 316 | Análise Tecnored | 2026-07-03 → 2026-07-07 (+4d) | 2026-07-03 → 2026-07-07 (+4d) |  |  |  |  |  |
| 317 | Atendimento de comentários | 2026-07-06 → 2026-07-08 (+2d) | 2026-07-07 → 2026-07-13 (+6d) |  |  |  |  |  |
| 318 | Aprovação | 2026-07-08 → 2026-07-14 (+6d) | 2026-07-08 → 2026-07-14 (+6d) |  |  |  |  |  |
| 324 | **Estrutura metálica** | 2026-06-29 A → 2026-07-06 A (+7d) | 2026-07-21 → 2026-07-24 (+3d) | 17d → 12.75d |  | 0d → 1.25d |  |  |
| 330 | **ML-F0009-0305-MB-S-00001** | 2026-07-06 A → 2026-07-08 A (+2d) | 2026-07-13 → 2026-07-16 (+3d) | 6d → 4.75d |  | 6d → 7.25d |  |  |
| 331 | Emissão inicial | 2026-07-06 A → 2026-07-08 A (+2d) | 2026-07-08 → 2026-07-13 (+5d) |  |  | 0d → 1.25d |  |  |
| 332 | Análise Tecnored | 2026-07-09 → 2026-07-13 (+4d) | 2026-07-09 → 2026-07-14 (+5d) |  |  | 0d → 1.25d |  |  |
| 333 | Atendimento de comentários | 2026-07-10 → 2026-07-14 (+4d) | 2026-07-10 → 2026-07-15 (+5d) |  |  | 0d → 1.25d |  |  |
| 334 | Aprovação | 2026-07-13 → 2026-07-15 (+2d) | 2026-07-13 → 2026-07-16 (+3d) |  |  | 6d → 7.25d |  |  |
| 335 | **PQ-F0009-0305-MB-S-00001** | 2026-07-09 → 2026-07-13 (+4d) | 2026-07-16 → 2026-07-21 (+5d) |  |  | 3d → 4.25d |  |  |
| 336 | Emissão inicial | 2026-07-09 → 2026-07-13 (+4d) | 2026-07-13 → 2026-07-16 (+3d) |  |  | 3d → 4.25d |  |  |
| 337 | Análise Tecnored | 2026-07-14 → 2026-07-16 (+2d) | 2026-07-14 → 2026-07-17 (+3d) |  |  | 3d → 4.25d |  |  |
| 338 | Atendimento de comentários | 2026-07-15 → 2026-07-17 (+2d) | 2026-07-15 → 2026-07-20 (+5d) |  |  | 3d → 4.25d |  |  |
| 339 | Aprovação | 2026-07-16 → 2026-07-20 (+4d) | 2026-07-16 → 2026-07-21 (+5d) |  |  | 3d → 4.25d |  |  |
| 340 | **LM-F0009-0305-MB-S-00001** | 2026-07-14 → 2026-07-16 (+2d) | 2026-07-20 → 2026-07-23 (+3d) |  |  | 1d → 2.25d |  |  |
| 341 | Emissão inicial | 2026-07-14 → 2026-07-16 (+2d) | 2026-07-15 → 2026-07-20 (+5d) |  |  | 1d → 2.25d |  |  |
| 342 | Análise Tecnored | 2026-07-16 → 2026-07-20 (+4d) | 2026-07-16 → 2026-07-21 (+5d) |  |  | 1d → 2.25d |  |  |
| 343 | Atendimento de comentários | 2026-07-17 → 2026-07-21 (+4d) | 2026-07-17 → 2026-07-22 (+5d) |  |  | 1d → 2.25d |  |  |
| 344 | Aprovação | 2026-07-20 → 2026-07-22 (+2d) | 2026-07-20 → 2026-07-23 (+3d) |  |  | 1d → 2.25d |  |  |
| 345 | **MC-F0009-0305-MB-S-00001** | 2026-07-01 → 2026-07-06 (+5d) | 2026-07-08 → 2026-07-15 (+7d) |  |  |  |  |  |
| 346 | Emissão inicial | 2026-07-01 → 2026-07-06 (+5d) | 2026-07-03 → 2026-07-08 (+5d) |  |  |  |  | constraint start no earlier than 2026-07-01 → start no earlier than 2026-07-06 |
| 347 | Análise Tecnored | 2026-07-06 → 2026-07-13 (+7d) | 2026-07-06 → 2026-07-13 (+7d) |  |  | 9d → 8d |  |  |
| 348 | Atendimento de comentários | 2026-07-07 → 2026-07-14 (+7d) | 2026-07-07 → 2026-07-14 (+7d) |  |  | 9d → 8d |  |  |
| 349 | Aprovação | 2026-07-08 → 2026-07-15 (+7d) | 2026-07-08 → 2026-07-15 (+7d) |  |  | 9d → 8d |  |  |
| 350 | **AG-F0009-0305-MB-S-00001** | 2026-07-13 → 2026-07-15 (+2d) | 2026-07-21 → 2026-07-24 (+3d) |  |  | 0d → 1.25d |  |  |
| 351 | Emissão inicial | 2026-07-13 → 2026-07-15 (+2d) | 2026-07-16 → 2026-07-21 (+5d) |  |  | 0d → 1.25d |  |  |
| 352 | Análise Tecnored | 2026-07-17 → 2026-07-21 (+4d) | 2026-07-17 → 2026-07-22 (+5d) |  |  | 0d → 1.25d |  |  |
| 353 | Atendimento de comentários | 2026-07-20 → 2026-07-22 (+2d) | 2026-07-20 → 2026-07-23 (+3d) |  |  | 0d → 1.25d |  |  |
| 354 | Aprovação | 2026-07-21 → 2026-07-23 (+2d) | 2026-07-21 → 2026-07-24 (+3d) |  |  | 0d → 1.25d |  |  |
| 355 | **AG-F0009-0305-MB-S-00002** | 2026-07-13 → 2026-07-15 (+2d) | 2026-07-21 → 2026-07-24 (+3d) |  |  | 0d → 1.25d |  |  |
| 356 | Emissão inicial | 2026-07-13 → 2026-07-15 (+2d) | 2026-07-16 → 2026-07-21 (+5d) |  |  | 0d → 1.25d |  |  |
| 357 | Análise Tecnored | 2026-07-17 → 2026-07-21 (+4d) | 2026-07-17 → 2026-07-22 (+5d) |  |  | 0d → 1.25d |  |  |
| 358 | Atendimento de comentários | 2026-07-20 → 2026-07-22 (+2d) | 2026-07-20 → 2026-07-23 (+3d) |  |  | 0d → 1.25d |  |  |
| 359 | Aprovação | 2026-07-21 → 2026-07-23 (+2d) | 2026-07-21 → 2026-07-24 (+3d) |  |  | 0d → 1.25d |  |  |
| 360 | **AG-F0009-0305-MB-S-00003** | 2026-07-13 → 2026-07-15 (+2d) | 2026-07-21 → 2026-07-24 (+3d) |  |  | 0d → 1.25d |  |  |
| 361 | Emissão inicial | 2026-07-13 → 2026-07-15 (+2d) | 2026-07-16 → 2026-07-21 (+5d) |  |  | 0d → 1.25d |  |  |
| 362 | Análise Tecnored | 2026-07-17 → 2026-07-21 (+4d) | 2026-07-17 → 2026-07-22 (+5d) |  |  | 0d → 1.25d |  |  |
| 363 | Atendimento de comentários | 2026-07-20 → 2026-07-22 (+2d) | 2026-07-20 → 2026-07-23 (+3d) |  |  | 0d → 1.25d |  |  |

| ID | Task | Start | Finish | Complete | Total float | Other |
| --- | --- | --- | --- | --- | --- | --- |
| 364 | Aprovação | 2026-07-21 → 2026-07-23 (+2d) | 2026-07-21 → 2026-07-24 (+3d) |  | 0d → 1.25d |  |
| 365 | **AG-F0009-0305-MB-S-00004** | 2026-07-13 → 2026-07-15 (+2d) | 2026-07-21 → 2026-07-24 (+3d) |  | 0d → 1.25d |  |
| 366 | Emissão inicial | 2026-07-13 → 2026-07-15 (+2d) | 2026-07-16 → 2026-07-21 (+5d) |  | 0d → 1.25d |  |
| 367 | Análise Tecnored | 2026-07-17 → 2026-07-21 (+4d) | 2026-07-17 → 2026-07-22 (+5d) |  | 0d → 1.25d |  |
| 368 | Atendimento de comentários | 2026-07-20 → 2026-07-22 (+2d) | 2026-07-20 → 2026-07-23 (+3d) |  | 0d → 1.25d |  |
| 369 | Aprovação | 2026-07-21 → 2026-07-23 (+2d) | 2026-07-21 → 2026-07-24 (+3d) |  | 0d → 1.25d |  |
| 370 | **AG-F0009-0305-MB-S-00005** | 2026-07-13 → 2026-07-15 (+2d) | 2026-07-21 → 2026-07-24 (+3d) |  | 0d → 1.25d |  |
| 371 | Emissão inicial | 2026-07-13 → 2026-07-15 (+2d) | 2026-07-16 → 2026-07-21 (+5d) |  | 0d → 1.25d |  |
| 372 | Análise Tecnored | 2026-07-17 → 2026-07-21 (+4d) | 2026-07-17 → 2026-07-22 (+5d) |  | 0d → 1.25d |  |
| 373 | Atendimento de comentários | 2026-07-20 → 2026-07-22 (+2d) | 2026-07-20 → 2026-07-23 (+3d) |  | 0d → 1.25d |  |
| 374 | Aprovação | 2026-07-21 → 2026-07-23 (+2d) | 2026-07-21 → 2026-07-24 (+3d) |  | 0d → 1.25d |  |
| 375 | **AG-F0009-0305-MB-S-00006** | 2026-07-13 → 2026-07-15 (+2d) | 2026-07-21 → 2026-07-24 (+3d) |  | 0d → 1.25d |  |
| 376 | Emissão inicial | 2026-07-13 → 2026-07-15 (+2d) | 2026-07-16 → 2026-07-21 (+5d) |  | 0d → 1.25d |  |
| 377 | Análise Tecnored | 2026-07-17 → 2026-07-21 (+4d) | 2026-07-17 → 2026-07-22 (+5d) |  | 0d → 1.25d |  |
| 378 | Atendimento de comentários | 2026-07-20 → 2026-07-22 (+2d) | 2026-07-20 → 2026-07-23 (+3d) |  | 0d → 1.25d |  |
| 379 | Aprovação | 2026-07-21 → 2026-07-23 (+2d) | 2026-07-21 → 2026-07-24 (+3d) |  | 0d → 1.25d |  |
| 380 | **AG-F0009-0305-MB-S-00007** | 2026-07-13 → 2026-07-15 (+2d) | 2026-07-21 → 2026-07-24 (+3d) |  | 0d → 1.25d |  |
| 381 | Emissão inicial | 2026-07-13 → 2026-07-15 (+2d) | 2026-07-16 → 2026-07-21 (+5d) |  | 0d → 1.25d |  |
| 382 | Análise Tecnored | 2026-07-17 → 2026-07-21 (+4d) | 2026-07-17 → 2026-07-22 (+5d) |  | 0d → 1.25d |  |
| 383 | Atendimento de comentários | 2026-07-20 → 2026-07-22 (+2d) | 2026-07-20 → 2026-07-23 (+3d) |  | 0d → 1.25d |  |
| 384 | Aprovação | 2026-07-21 → 2026-07-23 (+2d) | 2026-07-21 → 2026-07-24 (+3d) |  | 0d → 1.25d |  |
| 385 | **AG-F0009-0305-MB-S-00008** | 2026-07-13 → 2026-07-15 (+2d) | 2026-07-21 → 2026-07-24 (+3d) |  | 0d → 1.25d |  |
| 386 | Emissão inicial | 2026-07-13 → 2026-07-15 (+2d) | 2026-07-16 → 2026-07-21 (+5d) |  | 0d → 1.25d |  |
| 387 | Análise Tecnored | 2026-07-17 → 2026-07-21 (+4d) | 2026-07-17 → 2026-07-22 (+5d) |  | 0d → 1.25d |  |
| 388 | Atendimento de comentários | 2026-07-20 → 2026-07-22 (+2d) | 2026-07-20 → 2026-07-23 (+3d) |  | 0d → 1.25d |  |
| 389 | Aprovação | 2026-07-21 → 2026-07-23 (+2d) | 2026-07-21 → 2026-07-24 (+3d) |  | 0d → 1.25d |  |
| 390 | **AG-F0009-0305-MB-S-00009** | 2026-07-13 → 2026-07-15 (+2d) | 2026-07-21 → 2026-07-24 (+3d) |  | 0d → 1.25d |  |
| 391 | Emissão inicial | 2026-07-13 → 2026-07-15 (+2d) | 2026-07-16 → 2026-07-21 (+5d) |  | 0d → 1.25d |  |
| 392 | Análise Tecnored | 2026-07-17 → 2026-07-21 (+4d) | 2026-07-17 → 2026-07-22 (+5d) |  | 0d → 1.25d |  |
| 393 | Atendimento de comentários | 2026-07-20 → 2026-07-22 (+2d) | 2026-07-20 → 2026-07-23 (+3d) |  | 0d → 1.25d |  |
| 394 | Aprovação | 2026-07-21 → 2026-07-23 (+2d) | 2026-07-21 → 2026-07-24 (+3d) |  | 0d → 1.25d |  |
| 395 | **AG-F0009-0305-MB-S-00010** | 2026-07-13 → 2026-07-15 (+2d) | 2026-07-21 → 2026-07-24 (+3d) |  | 0d → 1.25d |  |
| 396 | Emissão inicial | 2026-07-13 → 2026-07-15 (+2d) | 2026-07-16 → 2026-07-21 (+5d) |  | 0d → 1.25d |  |
| 397 | Análise Tecnored | 2026-07-17 → 2026-07-21 (+4d) | 2026-07-17 → 2026-07-22 (+5d) |  | 0d → 1.25d |  |
| 398 | Atendimento de comentários | 2026-07-20 → 2026-07-22 (+2d) | 2026-07-20 → 2026-07-23 (+3d) |  | 0d → 1.25d |  |
| 399 | Aprovação | 2026-07-21 → 2026-07-23 (+2d) | 2026-07-21 → 2026-07-24 (+3d) |  | 0d → 1.25d |  |
| 400 | **PL-F0009-0305-MB-S-00001** | 2026-06-29 → 2026-07-07 (+8d) | 2026-07-08 → 2026-07-20 (+12d) |  | 9d → 5d |  |
| 401 | Emissão inicial | 2026-06-29 → 2026-07-07 (+8d) | 2026-07-03 → 2026-07-15 (+12d) |  | 9d → 5d | constraint none → start no earlier than 2026-07-07 |
| 402 | Análise Tecnored | 2026-07-06 → 2026-07-16 (+10d) | 2026-07-06 → 2026-07-16 (+10d) |  | 9d → 5d |  |
| 403 | Atendimento de comentários | 2026-07-07 → 2026-07-17 (+10d) | 2026-07-07 → 2026-07-17 (+10d) |  | 9d → 5d |  |
| 404 | Aprovação | 2026-07-08 → 2026-07-20 (+12d) | 2026-07-08 → 2026-07-20 (+12d) |  | 9d → 5d |  |
| 405 | **Elétrica** |  |  | 45% → 60% | 10d → 12d |  |
| 411 | **ML-F0009-0305-MB-E-00001** | 2026-06-23 → 2026-06-29 (+6d) | 2026-06-30 → 2026-07-06 (+6d) |  | 3.4d → 7d |  |
| 412 | Emissão inicial | 2026-06-23 → 2026-06-29 (+6d) | 2026-06-26 → 2026-07-02 (+6d) |  | 3.4d → 7d |  |
| 413 | Análise Tecnored | 2026-06-29 → 2026-07-03 (+4d) | 2026-06-29 → 2026-07-03 (+4d) |  | 15d → 13d |  |
| 414 | Atendimento de comentários | 2026-06-30 → 2026-07-06 (+6d) | 2026-06-30 → 2026-07-06 (+6d) |  | 15d → 13d |  |
| 415 | Aprovação | 2026-06-30 → 2026-07-06 (+6d) | 2026-06-30 → 2026-07-06 (+6d) |  | 15d → 13d |  |
| 421 | **LE-F0009-0305-MB-E-00001** | 2026-06-29 → 2026-07-03 (+4d) | 2026-07-02 → 2026-07-08 (+6d) |  | 13d → 11d |  |
| 422 | Emissão inicial | 2026-06-29 → 2026-07-03 (+4d) | 2026-06-30 → 2026-07-06 (+6d) |  | 13d → 11d |  |
| 423 | Análise Tecnored | 2026-07-01 → 2026-07-07 (+6d) | 2026-07-01 → 2026-07-07 (+6d) |  | 13d → 11d |  |
| 424 | Atendimento de comentários | 2026-07-02 → 2026-07-08 (+6d) | 2026-07-02 → 2026-07-08 (+6d) |  | 13d → 11d |  |
| 425 | Aprovação | 2026-07-02 → 2026-07-08 (+6d) | 2026-07-02 → 2026-07-08 (+6d) |  | 13d → 11d |  |
| 431 | **LM-F0009-0305-MB-E-00001** | 2026-07-03 → 2026-07-06 (+3d) | 2026-07-08 → 2026-07-13 (+5d) |  | 6d → 7d |  |
| 432 | Emissão inicial | 2026-07-03 → 2026-07-06 (+3d) | 2026-07-06 → 2026-07-07 (+1d) |  | 6d → 7d |  |
| 433 | Análise Tecnored | 2026-07-07 → 2026-07-08 (+1d) | 2026-07-07 → 2026-07-08 (+1d) |  | 9d → 10d |  |
| 434 | Atendimento de comentários | 2026-07-08 → 2026-07-13 (+5d) | 2026-07-08 → 2026-07-13 (+5d) |  | 9d → 10d |  |
| 435 | Aprovação | 2026-07-08 → 2026-07-13 (+5d) | 2026-07-08 → 2026-07-13 (+5d) |  | 9d → 10d |  |
| 436 | **PQ-F0009-0305-MB-E-00001** | 2026-07-03 → 2026-07-06 (+3d) | 2026-07-07 → 2026-07-08 (+1d) |  | 10d → 11d |  |
| 437 | Emissão inicial | 2026-07-03 → 2026-07-06 (+3d) | 2026-07-03 → 2026-07-06 (+3d) |  | 10d → 11d |  |
| 438 | Análise Tecnored | 2026-07-06 → 2026-07-07 (+1d) | 2026-07-06 → 2026-07-07 (+1d) |  | 10d → 11d |  |
| 439 | Atendimento de comentários | 2026-07-07 → 2026-07-08 (+1d) | 2026-07-07 → 2026-07-08 (+1d) |  | 10d → 11d |  |
| 440 | Aprovação | 2026-07-07 → 2026-07-08 (+1d) | 2026-07-07 → 2026-07-08 (+1d) |  | 10d → 11d |  |
| 441 | **MD-F0009-0305-MB-E-00001** | 2026-07-03 → 2026-07-06 (+3d) | 2026-07-13 → 2026-07-16 (+3d) |  | 6d → 7d |  |
| 442 | Emissão inicial | 2026-07-03 → 2026-07-06 (+3d) | 2026-07-07 → 2026-07-08 (+1d) |  | 6d → 7d |  |
| 443 | Análise Tecnored | 2026-07-08 → 2026-07-13 (+5d) | 2026-07-08 → 2026-07-13 (+5d) |  | 6d → 7d |  |
| 444 | Atendimento de comentários | 2026-07-09 → 2026-07-14 (+5d) | 2026-07-10 → 2026-07-15 (+5d) |  | 6d → 7d |  |
| 445 | Aprovação | 2026-07-13 → 2026-07-16 (+3d) | 2026-07-13 → 2026-07-16 (+3d) |  | 6d → 7d |  |
| 446 | **MC-F0009-0305-MB-E-00001** | 2026-06-26 A → 2026-07-02 A (+6d) | 2026-07-01 → 2026-07-07 (+6d) | 28% → 40% | 14d → 12d |  |
| 447 | Emissão inicial | 2026-06-26 A → 2026-07-02 A (+6d) | 2026-06-29 → 2026-07-03 A (+4d) | 70% → 100% | 3.4d → none |  |
| 448 | Análise Tecnored | 2026-06-30 → 2026-07-06 (+6d) | 2026-06-30 → 2026-07-06 (+6d) |  | 14d → 12d |  |

| ID | Task | Start | Finish | Duration | Complete | Total float | Other |
| --- | --- | --- | --- | --- | --- | --- | --- |
| 449 | Atendimento de comentários | 2026-07-01 → 2026-07-07 (+6d) | 2026-07-01 → 2026-07-07 (+6d) |  |  | 14d → 12d |  |
| 450 | Aprovação | 2026-07-01 → 2026-07-07 (+6d) | 2026-07-01 → 2026-07-07 (+6d) |  |  | 14d → 12d |  |
| 451 | **AG-F0009-0305-MB-E-00001** | 2026-07-01 A → 2026-07-02 (+1d) | 2026-07-06 → 2026-07-07 (+1d) |  | 28% → 0% | 11d → 7d |  |
| 452 | Emissão inicial | 2026-07-01 A → 2026-07-02 (+1d) | 2026-07-02 → 2026-07-03 (+1d) |  | 70% → 0% | 11d → 7d |  |
| 453 | Análise Tecnored | 2026-07-03 → 2026-07-06 (+3d) | 2026-07-03 → 2026-07-06 (+3d) |  |  | 11d → 7d |  |
| 454 | Atendimento de comentários | 2026-07-06 → 2026-07-07 (+1d) | 2026-07-06 → 2026-07-07 (+1d) |  |  | 11d → 12d |  |
| 455 | Aprovação | 2026-07-06 → 2026-07-07 (+1d) | 2026-07-06 → 2026-07-07 (+1d) |  |  | 11d → 12d |  |
| 461 | **AG-F0009-0305-MB-E-00002** | 2026-07-02 A → 2026-07-06 (+4d) | 2026-07-07 → 2026-07-13 (+6d) |  | 28% → 0% |  |  |
| 462 | Emissão inicial | 2026-07-02 A → 2026-07-06 (+4d) | 2026-07-03 → 2026-07-07 (+4d) |  | 70% → 0% |  |  |
| 463 | Análise Tecnored | 2026-07-06 → 2026-07-08 (+2d) | 2026-07-06 → 2026-07-08 (+2d) |  |  |  |  |
| 464 | Atendimento de comentários | 2026-07-07 → 2026-07-13 (+6d) | 2026-07-07 → 2026-07-13 (+6d) |  |  |  |  |
| 465 | Aprovação | 2026-07-07 → 2026-07-13 (+6d) | 2026-07-07 → 2026-07-13 (+6d) |  |  |  |  |
| 471 | **Automação e instrumentação** |  | 2026-07-13 → 2026-07-22 (+9d) | 29d → 34d | 60% → 65% | 6d → 3d |  |
| 477 | **LI-F0009-0305-MB-J-00001** | 2026-06-15 A → 2026-06-29 A (+14d) | 2026-06-29 → 2026-07-13 (+14d) | 11d → 9d | 50% → 55% | 9d → 2.5d |  |
| 478 | Emissão inicial | 2026-06-15 A → 2026-06-29 A (+14d) | 2026-06-20 → 2026-07-03 (+13d) |  | 90% → 99% | 11d → 2.5d |  |
| 479 | Análise Tecnored | 2026-06-22 → 2026-07-06 (+14d) | 2026-06-22 → 2026-07-06 (+14d) |  |  | 11d → 2.5d |  |
| 480 | Atendimento de comentários | 2026-06-23 → 2026-07-07 (+14d) | 2026-06-24 → 2026-07-08 (+14d) |  |  | 11d → 2.5d |  |
| 481 | Aprovação | 2026-06-29 → 2026-07-13 (+14d) | 2026-06-29 → 2026-07-13 (+14d) |  |  | 9d → 2.5d |  |
| 482 | **LE-F0009-0305-MB-J-00001** | 2026-06-24 → 2026-06-30 A (+6d) | 2026-07-07 → 2026-07-13 (+6d) | 10d → 8d | 0% → 50% |  |  |
| 483 | Emissão inicial | 2026-06-24 → 2026-06-30 A (+6d) | 2026-06-29 → 2026-07-03 A (+4d) |  | 0% → 100% | 12d → none | constraint start no earlier than 2026-06-24 → start no earlier than 2026-06-30 |
| 484 | Análise Tecnored | 2026-07-02 → 2026-07-06 (+4d) | 2026-07-02 → 2026-07-06 (+4d) |  |  |  |  |
| 485 | Atendimento de comentários | 2026-07-03 → 2026-07-07 (+4d) | 2026-07-06 → 2026-07-08 (+2d) |  |  |  |  |
| 486 | Aprovação | 2026-07-07 → 2026-07-13 (+6d) | 2026-07-07 → 2026-07-13 (+6d) |  |  |  |  |
| 487 | **LL-F0009-0305-MB-J-00001** | 2026-06-25 → 2026-06-30 A (+5d) | 2026-07-07 → 2026-07-13 (+6d) | 9d → 8d | 0% → 50% |  |  |
| 488 | Emissão inicial | 2026-06-25 → 2026-06-30 A (+5d) | 2026-06-30 → 2026-07-03 A (+3d) |  | 0% → 100% | 11d → none | constraint start no earlier than 2026-06-25 → finish no earlier than 2026-07-03; baseline start 2026-06-15 → 2026-06-30; baseline finish 2026-06-17 → 2026-07-03 |
| 489 | Análise Tecnored | 2026-07-02 → 2026-07-06 (+4d) | 2026-07-02 → 2026-07-06 (+4d) |  |  |  | baseline start 2026-06-18 → 2026-07-06; baseline finish 2026-06-18 → 2026-07-06 |
| 490 | Atendimento de comentários | 2026-07-03 → 2026-07-07 (+4d) | 2026-07-06 → 2026-07-08 (+2d) |  |  |  | baseline start 2026-06-19 → 2026-07-07; baseline finish 2026-06-22 → 2026-07-08 |
| 491 | Aprovação | 2026-07-07 → 2026-07-13 (+6d) | 2026-07-07 → 2026-07-13 (+6d) |  |  |  | baseline start 2026-06-23 → 2026-07-13; baseline finish 2026-06-23 → 2026-07-13 |
| 492 | **LZ-F0009-0305-MB-J-00001** | 2026-06-26 → 2026-07-07 (+11d) | 2026-07-07 → 2026-07-20 (+13d) |  |  | 10d → 5d |  |
| 493 | Emissão inicial | 2026-06-26 → 2026-07-07 (+11d) | 2026-07-01 → 2026-07-14 (+13d) |  |  | 10d → 5d |  |
| 494 | Análise Tecnored | 2026-07-02 → 2026-07-15 (+13d) | 2026-07-02 → 2026-07-15 (+13d) |  |  | 10d → 5d |  |
| 495 | Atendimento de comentários | 2026-07-03 → 2026-07-16 (+13d) | 2026-07-06 → 2026-07-17 (+11d) |  |  | 10d → 5d |  |
| 496 | Aprovação | 2026-07-07 → 2026-07-20 (+13d) | 2026-07-07 → 2026-07-20 (+13d) |  |  | 10d → 5d |  |
| 502 | **PQ-F0009-0305-MB-J-00001** | 2026-07-02 → 2026-07-03 A (+1d) | 2026-07-13 → 2026-07-16 (+3d) |  | 0% → 31% | 6d → 7d |  |
| 503 | Emissão inicial | 2026-07-02 → 2026-07-03 A (+1d) | 2026-07-08 → 2026-07-13 (+5d) |  | 0% → 50% | 6d → 7d |  |
| 504 | Análise Tecnored | 2026-07-09 → 2026-07-14 (+5d) | 2026-07-09 → 2026-07-14 (+5d) |  |  | 6d → 7d |  |
| 505 | Atendimento de comentários | 2026-07-10 → 2026-07-15 (+5d) | 2026-07-10 → 2026-07-15 (+5d) |  |  | 6d → 7d |  |
| 506 | Aprovação | 2026-07-13 → 2026-07-16 (+3d) | 2026-07-13 → 2026-07-16 (+3d) |  |  | 6d → 7d |  |
| 542 | **DI-F0009-0305-MB-J-00001** | 2026-06-17 A → 2026-07-01 A (+14d) | 2026-06-26 → 2026-07-14 (+18d) |  |  | 17d → 9d |  |
| 543 | Emissão inicial | 2026-06-17 A → 2026-07-01 A (+14d) | 2026-06-22 → 2026-07-06 (+14d) |  |  | 13d → 9d |  |
| 544 | Análise Tecnored | 2026-06-23 → 2026-07-07 (+14d) | 2026-06-23 → 2026-07-07 (+14d) |  |  | 17d → 9d |  |
| 545 | Atendimento de comentários | 2026-06-24 → 2026-07-08 (+14d) | 2026-06-25 → 2026-07-13 (+18d) |  |  | 17d → 9d |  |
| 546 | Aprovação | 2026-06-26 → 2026-07-14 (+18d) | 2026-06-26 → 2026-07-14 (+18d) |  |  | 17d → 9d |  |
| 557 | **LM-F0009-0305-MB-J-00001** | 2026-06-30 → 2026-07-14 (+14d) | 2026-07-08 → 2026-07-22 (+14d) |  |  | 9d → 2.5d |  |
| 558 | Emissão inicial | 2026-06-30 → 2026-07-14 (+14d) | 2026-07-03 → 2026-07-17 (+14d) |  |  | 9d → 2.5d | constraint start no earlier than 2026-06-26 → start no earlier than 2026-07-01 |
| 559 | Análise Tecnored | 2026-07-06 → 2026-07-20 (+14d) | 2026-07-06 → 2026-07-20 (+14d) |  |  | 9d → 3d |  |
| 560 | Atendimento de comentários | 2026-07-07 → 2026-07-21 (+14d) | 2026-07-07 → 2026-07-21 (+14d) |  |  | 9d → 3d |  |
| 561 | Aprovação | 2026-07-08 → 2026-07-22 (+14d) | 2026-07-08 → 2026-07-22 (+14d) |  |  | 9d → 3d |  |
| 643 | Emissão inicial |  |  |  |  |  | baseline start 2026-06-18 → 2026-06-15; baseline finish 2026-07-01 → 2026-06-23 |
| 644 | Análise Tecnored |  |  |  |  | 17d → 19d | baseline start 2026-07-02 → 2026-06-24; baseline finish 2026-07-02 → 2026-06-24 |
| 645 | Atendimento de comentários |  |  |  |  | 17d → 19d | baseline start 2026-07-03 → 2026-06-25; baseline finish 2026-07-06 → 2026-06-25 |
| 646 | Aprovação |  |  |  |  | 17d → 19d | baseline start 2026-07-07 → 2026-06-26; baseline finish 2026-07-07 → 2026-06-26 |
| 648 | Emissão inicial |  |  |  |  |  | baseline start 2026-06-18 → 2026-06-15; baseline finish 2026-07-01 → 2026-06-23 |
| 649 | Análise Tecnored |  |  |  |  | 17d → 19d | baseline start 2026-07-02 → 2026-06-24; baseline finish 2026-07-02 → 2026-06-24 |
| 650 | Atendimento de comentários |  |  |  |  | 17d → 19d | baseline start 2026-07-03 → 2026-06-25; baseline finish 2026-07-06 → 2026-06-25 |
| 651 | Aprovação |  |  |  |  | 17d → 19d | baseline start 2026-07-07 → 2026-06-26; baseline finish 2026-07-07 → 2026-06-26 |
| 653 | Emissão inicial |  |  |  |  |  | baseline start 2026-06-18 → 2026-06-15; baseline finish 2026-07-01 → 2026-06-23 |
| 654 | Análise Tecnored |  |  |  |  | 17d → 19d | baseline start 2026-07-02 → 2026-06-24; baseline finish 2026-07-02 → 2026-06-24 |
| 655 | Atendimento de comentários |  |  |  |  | 17d → 19d | baseline start 2026-07-03 → 2026-06-25; baseline finish 2026-07-06 → 2026-06-25 |
| 656 | Aprovação |  |  |  |  | 17d → 19d | baseline start 2026-07-07 → 2026-06-26; baseline finish 2026-07-07 → 2026-06-26 |
| 658 | Emissão inicial |  |  |  |  |  | baseline start 2026-06-18 → 2026-06-15; baseline finish 2026-07-01 → 2026-06-23 |
| 659 | Análise Tecnored |  |  |  |  | 17d → 19d | baseline start 2026-07-02 → 2026-06-24; baseline finish 2026-07-02 → 2026-06-24 |
| 660 | Atendimento de comentários |  |  |  |  | 17d → 19d | baseline start 2026-07-03 → 2026-06-25; baseline finish 2026-07-06 → 2026-06-25 |
| 661 | Aprovação |  |  |  |  | 17d → 19d | baseline start 2026-07-07 → 2026-06-26; baseline finish 2026-07-07 → 2026-06-26 |
| 663 | Emissão inicial |  |  |  |  |  | baseline start 2026-06-18 → 2026-06-15; baseline finish 2026-07-01 → 2026-06-23 |
| 664 | Análise Tecnored |  |  |  |  | 17d → 19d | baseline start 2026-07-02 → 2026-06-24; baseline finish 2026-07-02 → 2026-06-24 |
| 665 | Atendimento de comentários |  |  |  |  | 17d → 19d | baseline start 2026-07-03 → 2026-06-25; baseline finish 2026-07-06 → 2026-06-25 |
| 666 | Aprovação |  |  |  |  | 17d → 19d | baseline start 2026-07-07 → 2026-06-26; baseline finish 2026-07-07 → 2026-06-26 |
| 668 | Emissão inicial |  |  |  |  |  | baseline start 2026-06-18 → 2026-06-15; baseline finish 2026-07-01 → 2026-06-23 |
| 669 | Análise Tecnored |  |  |  |  | 13.15d → 15.15d | baseline start 2026-07-02 → 2026-06-24; baseline finish 2026-07-02 → 2026-06-24 |

| ID | Task | Start | Finish | Duration | Complete | Total float | Other |
| --- | --- | --- | --- | --- | --- | --- | --- |
| 670 | Atendimento de comentários |  |  |  |  | 13.15d → 15.15d | baseline start 2026-07-03 → 2026-06-25; baseline finish 2026-07-06 → 2026-06-25 |
| 671 | Aprovação |  |  |  |  | 13.15d → 15.15d | baseline start 2026-07-07 → 2026-06-26; baseline finish 2026-07-07 → 2026-06-26 |
| 673 | Emissão inicial |  |  |  |  |  | baseline start 2026-06-18 → 2026-06-19; baseline finish 2026-07-01 → 2026-06-29 |
| 674 | Análise Tecnored |  |  |  |  | 13.15d → 15.15d | baseline start 2026-07-02 → 2026-06-24; baseline finish 2026-07-02 → 2026-06-30 |
| 675 | Atendimento de comentários |  |  |  |  | 13.15d → 15.15d | baseline start 2026-07-03 → 2026-06-30; baseline finish 2026-07-06 → 2026-07-01 |
| 676 | Aprovação |  |  |  |  | 13.15d → 15.15d | baseline start 2026-07-07 → 2026-07-01; baseline finish 2026-07-07 → 2026-07-02 |
| 678 | Emissão inicial |  |  |  |  |  | baseline start 2026-06-18 → 2026-06-19; baseline finish 2026-07-01 → 2026-06-29 |
| 679 | Análise Tecnored |  |  |  |  | 13.15d → 15.15d | baseline start 2026-07-02 → 2026-06-24; baseline finish 2026-07-02 → 2026-06-30 |
| 680 | Atendimento de comentários |  |  |  |  | 13.15d → 15.15d | baseline start 2026-07-03 → 2026-06-30; baseline finish 2026-07-06 → 2026-07-01 |
| 681 | Aprovação |  |  |  |  | 13.15d → 15.15d | baseline start 2026-07-07 → 2026-07-01; baseline finish 2026-07-07 → 2026-07-02 |
| 683 | Emissão inicial |  |  |  |  |  | baseline start 2026-06-18 → 2026-06-19; baseline finish 2026-07-01 → 2026-06-29 |
| 684 | Análise Tecnored |  |  |  |  | 13.15d → 15.15d | baseline start 2026-07-02 → 2026-06-24; baseline finish 2026-07-02 → 2026-06-30 |
| 685 | Atendimento de comentários |  |  |  |  | 13.15d → 15.15d | baseline start 2026-07-03 → 2026-06-30; baseline finish 2026-07-06 → 2026-07-01 |
| 686 | Aprovação |  |  |  |  | 13.15d → 15.15d | baseline start 2026-07-07 → 2026-07-01; baseline finish 2026-07-07 → 2026-07-02 |
| 687 | **LB-F0009-0305-MB-J-00001** | 2026-06-30 → 2026-07-03 A (+3d) | 2026-07-09 → 2026-07-16 (+7d) |  | 0% → 25% | 8d → 7d |  |
| 688 | Emissão inicial | 2026-06-30 → 2026-07-03 A (+3d) | 2026-07-03 → 2026-07-08 (+5d) |  | 0% → 50% | 8d → 7d | constraint finish no earlier than 2026-07-03 → start no earlier than 2026-07-03 |
| 689 | Análise Tecnored | 2026-07-06 → 2026-07-13 (+7d) | 2026-07-06 → 2026-07-13 (+7d) |  |  | 8d → 7d |  |
| 690 | Atendimento de comentários | 2026-07-07 → 2026-07-14 (+7d) | 2026-07-08 → 2026-07-15 (+7d) |  |  | 8d → 7d |  |
| 691 | Aprovação | 2026-07-09 → 2026-07-16 (+7d) | 2026-07-09 → 2026-07-16 (+7d) |  |  | 8d → 7d |  |
| 692 | **RE-F0009-0305-MB-J-00001** | 2026-06-30 A | 2026-07-09 → 2026-07-13 (+4d) |  | 0% → 50% | 8d → 10d |  |
| 693 | Emissão inicial | 2026-06-30 A |  |  | 0% → 99% | 8d → 10d |  |
| 696 | Aprovação | 2026-07-09 → 2026-07-13 (+4d) | 2026-07-09 → 2026-07-13 (+4d) |  |  | 8d → 10d |  |
| 697 | **DT-F0009-0305-MB-J-00001** | 2026-06-30 A → 2026-06-29 A (-1d) | 2026-07-09 → 2026-07-08 (-1d) |  | 45% → 50% | 8d → 11d |  |
| 698 | Emissão inicial | 2026-06-30 A → 2026-06-29 A (-1d) | 2026-07-03 → 2026-07-02 A (-1d) |  | 90% → 100% | 8d → none |  |
| 699 | Análise Tecnored | 2026-07-06 → 2026-07-03 (-3d) | 2026-07-06 → 2026-07-03 (-3d) |  |  | 8d → 11d |  |
| 700 | Atendimento de comentários | 2026-07-07 → 2026-07-06 (-1d) | 2026-07-08 → 2026-07-07 (-1d) |  |  | 8d → 11d |  |
| 701 | Aprovação | 2026-07-09 → 2026-07-08 (-1d) | 2026-07-09 → 2026-07-08 (-1d) |  |  | 8d → 11d |  |
| 702 | **Civil** |  | 2026-07-17 → 2026-07-24 (+7d) | 14.5d → 17.5d |  | 2.5d → 1.5d |  |
| 703 | **MC-F0009-0305-MB-C-00001** |  | 2026-07-15 → 2026-07-22 (+7d) | 12.5d → 15.5d |  | 4.5d → 3.5d |  |
| 704 | Emissão inicial |  | 2026-07-10 → 2026-07-17 (+7d) |  |  | 2.5d → 1.5d |  |
| 705 | Análise Tecnored | 2026-07-10 → 2026-07-17 (+7d) | 2026-07-13 → 2026-07-20 (+7d) |  |  | 4.5d → 3.5d |  |
| 706 | Atendimento de comentários | 2026-07-13 → 2026-07-20 (+7d) | 2026-07-14 → 2026-07-21 (+7d) |  |  | 4.5d → 3.5d |  |
| 707 | Aprovação | 2026-07-14 → 2026-07-21 (+7d) | 2026-07-15 → 2026-07-22 (+7d) |  |  | 4.5d → 3.5d |  |
| 708 | **PQ-F0009-0305-MB-C-00001** | 2026-07-10 → 2026-07-17 (+7d) | 2026-07-17 → 2026-07-24 (+7d) |  |  | 2.5d → 1.5d |  |
| 709 | Emissão inicial | 2026-07-10 → 2026-07-17 (+7d) | 2026-07-13 → 2026-07-20 (+7d) |  |  | 2.5d → 1.5d |  |
| 710 | Análise Tecnored | 2026-07-13 → 2026-07-20 (+7d) | 2026-07-14 → 2026-07-21 (+7d) |  |  | 2.5d → 1.5d |  |
| 711 | Atendimento de comentários | 2026-07-14 → 2026-07-21 (+7d) | 2026-07-16 → 2026-07-23 (+7d) |  |  | 2.5d → 1.5d |  |
| 712 | Aprovação | 2026-07-16 → 2026-07-23 (+7d) | 2026-07-17 → 2026-07-24 (+7d) |  |  | 2.5d → 1.5d |  |

## Version 5 (data date 2026-07-07, saved 2026-07-07, file CR-F0009-0305-MB-F-00001 07072026.mpp)

Note of the change: Primeira versao dashboard

Last finish 2026-08-03 → 2026-09-22 (+50d). Complete tasks 83 → 107.

Added:

| ID | Task | Duration | Start | Finish | Predecessors | Constraint |
| --- | --- | --- | --- | --- | --- | --- |
| 562 | **ET-F0009-0305-MB-J-00001** | 7d | 2026-07-07 | 2026-07-17 |  |  |
| 563 | Emissão inicial | 3d | 2026-07-07 | 2026-07-13 |  | start no earlier than 2026-07-07 |
| 564 | Análise Tecnored | 1d | 2026-07-14 | 2026-07-14 | 563 | start no earlier than 2026-07-14 |
| 565 | Atendimento de comentários | 2d | 2026-07-15 | 2026-07-16 | 564 | start no earlier than 2026-07-15 |
| 566 | Aprovação | 1d | 2026-07-17 | 2026-07-17 | 565 | start no earlier than 2026-07-17 |

Changed:

| ID | Task | Start | Finish | Duration | Complete | Total float | Other |
| --- | --- | --- | --- | --- | --- | --- | --- |
| 1 | **F0009 - Programa Marabá** |  | 2026-07-27 → 2026-07-24 (-3d) | 62d → 61d | 51% → 59% |  |  |
| 10 | **Área 0305 - Hot Blast Stoves** |  | 2026-07-27 → 2026-07-24 (-3d) | 62d → 61d | 51% → 59% |  |  |
| 30 | **Coordenação** | 2026-04-27 A → 2026-06-24 (+58d) | 2026-07-27 → 2026-09-22 (+57d) | 62d → 63d | 40% → 0% | 0d → -42d |  |
| 31 | **RM-F0009-0305-MB-G-00001** | 2026-07-01 A → 2026-06-24 (-7d) | 2026-07-13 → 2026-07-02 (-11d) |  | 34% → 0% | 10d → 1d |  |
| 32 | Emissão inicial | 2026-07-01 A → 2026-06-24 (-7d) | 2026-07-03 → 2026-06-28 (-5d) |  | 80% → 0% | 10d → 1d |  |
| 33 | Análise Tecnored | 2026-07-06 → 2026-06-29 (-7d) | 2026-07-06 → 2026-06-29 (-7d) |  |  | 10d → 14d |  |
| 34 | Atendimento de comentários | 2026-07-07 → 2026-06-30 (-7d) | 2026-07-08 → 2026-07-01 (-7d) |  |  | 10d → 14d |  |
| 35 | Aprovação | 2026-07-13 → 2026-07-02 (-11d) | 2026-07-13 → 2026-07-02 (-11d) |  |  | 10d → 14d |  |
| 36 | **RM-F0009-0305MB-G-00002** | 2026-07-22 → 2026-07-15 (-7d) | 2026-07-30 → 2026-07-23 (-7d) |  |  | -3d → 1d |  |
| 37 | Emissão inicial | 2026-07-22 → 2026-07-15 (-7d) | 2026-07-24 → 2026-07-17 (-7d) |  |  | -3d → 1d |  |
| 38 | Análise Tecnored | 2026-07-27 → 2026-07-20 (-7d) | 2026-07-27 → 2026-07-20 (-7d) |  |  | -3d → 1d |  |
| 39 | Atendimento de comentários | 2026-07-28 → 2026-07-21 (-7d) | 2026-07-29 → 2026-07-22 (-7d) |  |  | -3d → 1d |  |
| 40 | Aprovação | 2026-07-30 → 2026-07-23 (-7d) | 2026-07-30 → 2026-07-23 (-7d) |  |  | -3d → 1d |  |
| 41 | **RL-F0009-0305-MB-G-00001** | 2026-07-15 A → 2026-06-26 (-19d) | 2026-07-20 → 2026-07-01 (-19d) |  | 19% → 0% | 5d → 15d |  |
| 42 | Emissão inicial | 2026-07-15 A → 2026-06-26 (-19d) | 2026-07-15 → 2026-06-28 (-17d) |  | 75% → 0% | 5d → 15d |  |
| 43 | Análise Tecnored | 2026-07-16 → 2026-06-29 (-17d) | 2026-07-16 → 2026-06-29 (-17d) |  |  | 5d → 15d |  |
| 44 | Atendimento de comentários | 2026-07-17 → 2026-06-30 (-17d) | 2026-07-17 → 2026-06-30 (-17d) |  |  | 5d → 15d |  |
| 45 | Aprovação | 2026-07-20 → 2026-07-01 (-19d) | 2026-07-20 → 2026-07-01 (-19d) |  |  | 5d → 15d |  |
| 46 | **LP-F0009-0305-MB-G-00001** | 2026-04-27 A → 2026-06-25 (+59d) | 2026-07-27 → 2026-09-22 (+57d) |  | 57% → 0% | 0d → -42d |  |
| 47 | Emissão inicial | 2026-04-27 A → 2026-06-25 (+59d) | 2026-04-29 A → 2026-06-29 (+61d) |  | 100% → 0% | none → -42d |  |
| 48 | Análise Tecnored | 2026-04-30 A → 2026-06-30 (+61d) | 2026-04-30 A → 2026-06-30 (+61d) |  | 100% → 0% | none → -42d |  |
| 49 | Atendimento de comentários | 2026-07-23 → 2026-09-18 (+57d) | 2026-07-24 → 2026-09-21 (+59d) |  |  | 0d → -42d |  |
| 50 | Aprovação | 2026-07-27 → 2026-09-22 (+57d) | 2026-07-27 → 2026-09-22 (+57d) |  |  | 0d → -42d |  |
| 67 | **Mecânica** |  |  |  | 54% → 51% | 4.25d → 3.25d |  |
| 73 | **MD-F0009-0305-MB-M-00001** | 2026-06-02 → 2026-06-09 (+7d) | 2026-06-11 → 2026-06-16 (+5d) |  |  | 19.97d → 16.97d |  |
| 74 | Emissão inicial | 2026-06-02 → 2026-06-09 (+7d) | 2026-06-03 → 2026-06-10 (+7d) |  |  | 19.97d → 16.97d |  |
| 75 | Análise Tecnored | 2026-06-08 → 2026-06-11 (+3d) | 2026-06-08 → 2026-06-11 (+3d) |  |  | 30d → 26d |  |
| 76 | Atendimento de comentários | 2026-06-09 → 2026-06-12 (+3d) | 2026-06-10 → 2026-06-15 (+5d) |  |  | 30d → 26d |  |
| 77 | Aprovação | 2026-06-11 → 2026-06-16 (+5d) | 2026-06-11 → 2026-06-16 (+5d) |  |  | 30d → 26d |  |
| 78 | **LE-F0009-0305-MB-M-00001** | 2026-05-26 A → 2026-05-29 A (+3d) | 2026-06-02 A → 2026-06-19 A (+17d) | 6d → 14d |  |  |  |
| 79 | Emissão inicial | 2026-05-26 A → 2026-05-29 A (+3d) | 2026-05-27 A → 2026-06-01 A (+5d) |  |  |  |  |
| 80 | Análise Tecnored | 2026-05-28 A → 2026-06-02 A (+5d) | 2026-05-28 A → 2026-06-02 A (+5d) |  |  |  |  |
| 81 | Atendimento de comentários | 2026-05-29 A → 2026-06-03 A (+5d) | 2026-06-01 A → 2026-06-08 A (+7d) |  |  |  |  |
| 82 | Aprovação | 2026-06-02 A → 2026-06-19 A (+17d) | 2026-06-02 A → 2026-06-19 A (+17d) |  |  |  |  |
| 163 | **MC-F0009-0305-MB-M-00001** |  | 2026-06-22 → 2026-07-08 (+16d) | 14d → 26d |  | 23d → 10d |  |
| 165 | Análise Tecnored | 2026-06-17 A → 2026-06-19 A (+2d) | 2026-06-17 A → 2026-06-19 A (+2d) |  |  |  |  |
| 166 | Atendimento de comentários | 2026-06-18 A → 2026-07-06 A (+18d) | 2026-06-19 → 2026-07-07 (+18d) |  |  | 23d → 10d |  |
| 167 | Aprovação | 2026-06-22 → 2026-07-08 (+16d) | 2026-06-22 → 2026-07-08 (+16d) |  |  | 23d → 10d |  |
| 168 | **MC-F0009-0305-MB-M-00002** | 2026-06-01 A → 2026-06-03 A (+2d) | 2026-06-22 → 2026-06-24 (+2d) |  |  | 23d → 20d |  |
| 169 | Emissão inicial | 2026-06-01 A → 2026-06-03 A (+2d) | 2026-06-16 A → 2026-06-18 A (+2d) |  |  |  |  |
| 170 | Análise Tecnored |  | 2026-06-17 → 2026-06-19 (+2d) |  |  | 23d → 20.5d |  |
| 171 | Atendimento de comentários | 2026-06-18 → 2026-06-22 (+4d) | 2026-06-19 → 2026-06-23 (+4d) |  |  | 23d → 20d | constraint none → start no earlier than 2026-06-22 |
| 172 | Aprovação | 2026-06-22 → 2026-06-24 (+2d) | 2026-06-22 → 2026-06-24 (+2d) |  |  | 23d → 20d |  |
| 173 | **MC-F0009-0305-MB-M-00003** |  | 2026-06-22 → 2026-07-08 (+16d) | 14d → 26d |  | 23d → 10d |  |
| 175 | Análise Tecnored | 2026-06-17 A → 2026-06-19 A (+2d) | 2026-06-17 A → 2026-06-19 A (+2d) |  |  |  |  |
| 176 | Atendimento de comentários | 2026-06-18 A → 2026-07-06 A (+18d) | 2026-06-19 → 2026-07-07 (+18d) |  |  | 23d → 10d |  |
| 177 | Aprovação | 2026-06-22 → 2026-07-08 (+16d) | 2026-06-22 → 2026-07-08 (+16d) |  |  | 23d → 10d | constraint none → start no earlier than 2026-07-08 |
| 178 | **MC-F0009-0305-MB-M-00004** | 2026-06-01 A → 2026-06-03 A (+2d) | 2026-06-22 → 2026-06-24 (+2d) |  |  | 23d → 20d |  |
| 179 | Emissão inicial | 2026-06-01 A → 2026-06-03 A (+2d) | 2026-06-16 A → 2026-06-18 A (+2d) |  |  |  |  |
| 180 | Análise Tecnored |  | 2026-06-17 → 2026-06-19 (+2d) |  |  | 23d → 20d | constraint none → finish no earlier than 2026-06-19 |
| 181 | Atendimento de comentários | 2026-06-18 → 2026-06-22 (+4d) | 2026-06-19 → 2026-06-23 (+4d) |  |  | 23d → 20d | constraint none → finish no earlier than 2026-06-23 |
| 182 | Aprovação | 2026-06-22 → 2026-06-24 (+2d) | 2026-06-22 → 2026-06-24 (+2d) |  |  | 23d → 20d | constraint none → finish no earlier than 2026-06-24 |
| 188 | **FD-F0009-0305-MB-M-00001** | 2026-06-17 A → 2026-06-19 (+2d) | 2026-06-25 → 2026-06-29 (+4d) |  | 43% → 0% | 20d → 17d |  |
| 189 | Emissão inicial | 2026-06-17 A → 2026-06-19 (+2d) | 2026-06-19 A → 2026-06-23 (+4d) |  | 100% → 0% | none → 17d |  |
| 190 | Análise Tecnored | 2026-06-22 → 2026-06-24 (+2d) | 2026-06-22 → 2026-06-24 (+2d) |  |  | 20d → 17d |  |
| 191 | Atendimento de comentários | 2026-06-23 → 2026-06-25 (+2d) | 2026-06-24 → 2026-06-26 (+2d) |  |  | 20d → 17d |  |
| 192 | Aprovação | 2026-06-25 → 2026-06-29 (+4d) | 2026-06-25 → 2026-06-29 (+4d) |  |  | 20d → 17d |  |
| 198 | **FD-F0009-0305-MB-M-00003** | 2026-06-17 A → 2026-06-19 (+2d) | 2026-06-25 → 2026-06-29 (+4d) |  | 43% → 0% | 20d → 17d |  |
| 199 | Emissão inicial | 2026-06-17 A → 2026-06-19 (+2d) | 2026-06-19 A → 2026-06-23 (+4d) |  | 100% → 0% | none → 17d |  |
| 200 | Análise Tecnored | 2026-06-22 → 2026-06-24 (+2d) | 2026-06-22 → 2026-06-24 (+2d) |  |  | 20d → 17d |  |
| 201 | Atendimento de comentários | 2026-06-23 → 2026-06-25 (+2d) | 2026-06-24 → 2026-06-26 (+2d) |  |  | 20d → 17d |  |
| 202 | Aprovação | 2026-06-25 → 2026-06-29 (+4d) | 2026-06-25 → 2026-06-29 (+4d) |  |  | 20d → 17d |  |
| 203 | **Tubulação/Utilidades** | 2026-06-10 A → 2026-06-12 A (+2d) |  | 26d → 24d | 31% → 32% | 6d → 5d |  |
| 244 | **FG-F0009-0305-MB-T-00001** | 2026-06-10 A → 2026-06-12 A (+2d) | 2026-06-18 → 2026-06-22 (+4d) | 7d → 6.5d | 71% → 50% | 25d → 22.5d |  |
| 245 | Emissão inicial | 2026-06-10 A → 2026-06-12 A (+2d) | 2026-06-12 A → 2026-06-16 A (+4d) |  |  |  |  |
| 246 | Análise Tecnored | 2026-06-15 A → 2026-06-16 A (+1d) | 2026-06-15 A → 2026-06-17 (+2d) |  | 100% → 50% | none → 22.5d |  |
| 247 | Atendimento de comentários | 2026-06-16 A → 2026-06-17 (+1d) | 2026-06-17 → 2026-06-19 (+2d) |  | 50% → 0% | 25d → 22.5d |  |
| 248 | Aprovação | 2026-06-18 → 2026-06-19 (+1d) | 2026-06-18 → 2026-06-22 (+4d) |  |  | 25d → 22.5d |  |
| 314 | **LK-F0009-0305-MB-T-00001** | 2026-07-03 A | 2026-07-14 → 2026-07-15 (+1d) | 6d → 7d | 0% → 43% | 9d → 7d |  |
| 315 | Emissão inicial | 2026-07-03 A | 2026-07-06 → 2026-07-07 A (+1d) | 2d → 3d | 0% → 100% | 9d → none | constraint start no earlier than 2026-07-03 → finish no earlier than 2026-07-07 |

| ID | Task | Start | Finish | Duration | Complete | Total float | Predecessors | Other |
| --- | --- | --- | --- | --- | --- | --- | --- | --- |
| 316 | Análise Tecnored | 2026-07-07 → 2026-07-08 (+1d) | 2026-07-07 → 2026-07-08 (+1d) |  |  | 9d → 7d |  |  |
| 317 | Atendimento de comentários | 2026-07-08 → 2026-07-13 (+5d) | 2026-07-13 → 2026-07-14 (+1d) |  |  | 9d → 7d |  |  |
| 318 | Aprovação | 2026-07-14 → 2026-07-15 (+1d) | 2026-07-14 → 2026-07-15 (+1d) |  |  | 9d → 7d |  |  |
| 405 | **Elétrica** |  |  |  | 60% → 73% | 12d → 11d |  |  |
| 416 | **RL-F0009-0305-MB-E-00001** | 2026-06-02 A → 2026-06-03 A (+1d) | 2026-06-10 → 2026-07-07 (+27d) | 5d → 23d |  | 31d → 11d |  |  |
| 417 | Emissão inicial | 2026-06-02 A → 2026-06-03 A (+1d) | 2026-06-03 A → 2026-06-08 A (+5d) |  |  |  |  |  |
| 419 | Atendimento de comentários | 2026-06-10 A → 2026-07-06 A (+26d) | 2026-06-10 → 2026-07-06 (+26d) |  |  | 31d → 11d |  |  |
| 420 | Aprovação | 2026-06-10 → 2026-07-07 (+27d) | 2026-06-10 → 2026-07-07 (+27d) |  |  | 31d → 11d | 419FF → 419 |  |
| 426 | **LR-F0009-0305-MB-E-00001** |  | 2026-06-03 → 2026-06-25 (+22d) | 5d → 19d | 70% → 85% | 34d → 19d |  |  |
| 427 | Emissão inicial |  | 2026-05-29 A → 2026-06-02 A (+4d) | 2d → 4d |  |  |  |  |
| 428 | Análise Tecnored |  | 2026-06-02 A → 2026-06-09 A (+7d) | 1d → 4d |  |  |  |  |
| 429 | Atendimento de comentários | 2026-06-03 A → 2026-06-24 A (+21d) | 2026-06-03 → 2026-06-24 (+21d) |  |  | 34d → 20d |  |  |
| 430 | Aprovação | 2026-06-03 → 2026-06-25 (+22d) | 2026-06-03 → 2026-06-25 (+22d) |  |  | 34d → 19d |  | constraint none → start no earlier than 2026-06-25 |
| 446 | **MC-F0009-0305-MB-E-00001** |  |  |  | 40% → 50% | 12d → 11d |  |  |
| 448 | Análise Tecnored | 2026-07-06 A |  |  | 0% → 50% | 12d → 11d |  |  |
| 471 | **Automação e instrumentação** |  | 2026-07-22 → 2026-07-24 (+2d) | 34d → 36d | 65% → 76% | 3d → 0d |  |  |
| 477 | **LI-F0009-0305-MB-J-00001** | 2026-06-29 A → 2026-07-01 A (+2d) | 2026-07-13 → 2026-07-15 (+2d) |  | 55% → 56% | 2.5d → 0d |  |  |
| 478 | Emissão inicial | 2026-06-29 A → 2026-07-01 A (+2d) | 2026-07-03 → 2026-07-07 A (+4d) |  | 99% → 100% | 2.5d → none |  |  |
| 479 | Análise Tecnored | 2026-07-06 → 2026-07-08 (+2d) | 2026-07-06 → 2026-07-08 (+2d) |  |  | 2.5d → 0d |  |  |
| 480 | Atendimento de comentários | 2026-07-07 → 2026-07-13 (+6d) | 2026-07-08 → 2026-07-14 (+6d) |  |  | 2.5d → 0d |  |  |
| 481 | Aprovação | 2026-07-13 → 2026-07-15 (+2d) | 2026-07-13 → 2026-07-15 (+2d) |  |  | 2.5d → 0d |  |  |
| 507 | **FG-F0009-0305-MB-J-00001** |  | 2026-06-18 → 2026-07-03 (+15d) | 12d → 23d | 80% → 74% | 25d → 13d |  |  |
| 509 | Análise Tecnored |  | 2026-06-15 A → 2026-06-19 A (+4d) | 1d → 5d |  |  |  |  |
| 510 | Atendimento de comentários | 2026-06-16 A → 2026-06-22 A (+6d) | 2026-06-17 → 2026-07-02 (+15d) | 2d → 9d |  | 25d → 13d |  | constraint none → start no earlier than 2026-06-22 |
| 511 | Aprovação | 2026-06-18 → 2026-07-03 (+15d) | 2026-06-18 → 2026-07-03 (+15d) |  |  | 25d → 13d |  |  |
| 512 | **FG-F0009-0305-MB-J-00002** | 2026-06-03 A → 2026-06-01 A (-2d) | 2026-06-18 → 2026-07-03 (+15d) | 10d → 23d | 80% → 74% | 25d → 13d |  |  |
| 513 | Emissão inicial | 2026-06-03 A → 2026-06-01 A (-2d) |  |  |  |  |  | constraint start no earlier than 2026-06-01 → finish no earlier than 2026-06-12 |
| 514 | Análise Tecnored |  | 2026-06-15 A → 2026-06-19 A (+4d) | 1d → 5d |  |  |  | constraint none → finish no earlier than 2026-06-19 |
| 515 | Atendimento de comentários | 2026-06-16 A → 2026-06-22 A (+6d) | 2026-06-17 → 2026-07-02 (+15d) | 2d → 9d |  | 25d → 13d |  | constraint none → finish no earlier than 2026-07-02 |
| 516 | Aprovação | 2026-06-18 → 2026-07-03 (+15d) | 2026-06-18 → 2026-07-03 (+15d) |  |  | 25d → 13d |  | constraint none → start no earlier than 2026-07-03 |
| 517 | **FG-F0009-0305-MB-J-00003** | 2026-06-03 A → 2026-06-01 A (-2d) | 2026-06-18 → 2026-07-03 (+15d) | 10d → 23d | 80% → 74% | 25d → 13d |  |  |
| 518 | Emissão inicial | 2026-06-03 A → 2026-06-01 A (-2d) |  |  |  |  |  |  |
| 519 | Análise Tecnored |  | 2026-06-15 A → 2026-06-19 A (+4d) | 1d → 5d |  |  |  | constraint none → finish no earlier than 2026-06-19 |
| 520 | Atendimento de comentários | 2026-06-16 A → 2026-06-22 A (+6d) | 2026-06-17 → 2026-07-02 (+15d) | 2d → 9d |  | 25d → 13d |  | constraint none → finish no earlier than 2026-07-02 |
| 521 | Aprovação | 2026-06-18 → 2026-07-03 (+15d) | 2026-06-18 → 2026-07-03 (+15d) |  |  | 25d → 13d |  | constraint none → start no earlier than 2026-07-03 |
| 527 | **AG-F0009-0305-MB-J-00002** |  | 2026-07-02 → 2026-07-08 (+6d) | 10d → 14d | 56% → 75% | 15d → 10d |  |  |
| 529 | Análise Tecnored |  | 2026-06-25 A |  | 50% → 100% | 17d → none |  |  |
| 530 | Atendimento de comentários | 2026-06-26 → 2026-07-06 A (+10d) | 2026-06-29 → 2026-07-07 (+8d) |  | 0% → 50% | 17d → 10d |  | constraint none → start no earlier than 2026-07-06 |
| 531 | Aprovação | 2026-07-02 → 2026-07-08 (+6d) | 2026-07-02 → 2026-07-08 (+6d) |  |  | 15d → 10d |  |  |
| 557 | **LM-F0009-0305-MB-J-00001** | 2026-07-14 → 2026-07-16 (+2d) | 2026-07-22 → 2026-07-24 (+2d) |  |  | 2.5d → 0d |  |  |
| 558 | Emissão inicial | 2026-07-14 → 2026-07-16 (+2d) | 2026-07-17 → 2026-07-21 (+4d) |  |  | 2.5d → 0d |  |  |
| 559 | Análise Tecnored | 2026-07-20 → 2026-07-22 (+2d) | 2026-07-20 → 2026-07-22 (+2d) |  |  | 3d → 0d |  |  |
| 560 | Atendimento de comentários | 2026-07-21 → 2026-07-23 (+2d) | 2026-07-21 → 2026-07-23 (+2d) |  |  | 3d → 0d |  |  |
| 561 | Aprovação | 2026-07-22 → 2026-07-24 (+2d) | 2026-07-22 → 2026-07-24 (+2d) |  |  | 3d → 0d |  |  |
| 567 | **FD-F0009-0305-MB-J-00001** | 2026-06-15 A → 2026-06-17 A (+2d) | 2026-06-26 → 2026-07-07 (+11d) | 10d → 15d | 75% → 87% | 19d → 11d |  |  |
| 568 | Emissão inicial | 2026-06-15 A → 2026-06-17 A (+2d) | 2026-06-23 A → 2026-06-28 A (+5d) | 7d → 8d |  |  |  | constraint finish no earlier than 2026-06-23 → finish no earlier than 2026-06-28 |
| 569 | Análise Tecnored | 2026-06-24 A → 2026-06-29 A (+5d) | 2026-06-24 → 2026-07-03 A (+9d) | 1d → 5d | 50% → 100% | 19d → none |  | constraint none → finish no earlier than 2026-07-03 |
| 570 | Atendimento de comentários | 2026-06-25 → 2026-07-06 (+11d) | 2026-06-25 → 2026-07-06 (+11d) |  |  | 19d → 11d |  | constraint none → start no earlier than 2026-07-06 |
| 571 | Aprovação | 2026-06-26 → 2026-07-07 (+11d) | 2026-06-26 → 2026-07-07 (+11d) |  |  | 19d → 11d |  |  |
| 572 | **FD-F0009-0305-MB-J-00002** | 2026-06-16 A → 2026-06-17 A (+1d) | 2026-06-29 → 2026-07-07 (+8d) | 10d → 15d | 75% → 87% | 18d → 11d |  |  |
| 573 | Emissão inicial | 2026-06-16 A → 2026-06-17 A (+1d) | 2026-06-24 A → 2026-06-25 A (+1d) |  |  |  |  |  |
| 574 | Análise Tecnored | 2026-06-25 A → 2026-06-26 A (+1d) | 2026-06-25 → 2026-07-03 A (+8d) | 1d → 6d | 50% → 100% | 18d → none |  | constraint none → start no earlier than 2026-06-26 |
| 575 | Atendimento de comentários | 2026-06-26 → 2026-07-06 (+10d) | 2026-06-26 → 2026-07-06 (+10d) |  |  | 18d → 11d |  | constraint none → start no earlier than 2026-07-06 |
| 576 | Aprovação | 2026-06-29 → 2026-07-07 (+8d) | 2026-06-29 → 2026-07-07 (+8d) |  |  | 18d → 11d |  | constraint none → start no earlier than 2026-07-07 |
| 577 | **FD-F0009-0305-MB-J-00003** | 2026-06-16 A → 2026-06-17 A (+1d) | 2026-06-29 → 2026-07-07 (+8d) | 10d → 15d | 75% → 87% | 18d → 11d |  |  |
| 578 | Emissão inicial | 2026-06-16 A → 2026-06-17 A (+1d) | 2026-06-24 A → 2026-06-25 A (+1d) |  |  |  |  |  |
| 579 | Análise Tecnored | 2026-06-25 A → 2026-06-26 A (+1d) | 2026-06-25 → 2026-07-03 A (+8d) | 1d → 6d | 50% → 100% | 18d → none |  |  |
| 580 | Atendimento de comentários | 2026-06-26 → 2026-07-06 (+10d) | 2026-06-26 → 2026-07-06 (+10d) |  |  | 18d → 11d |  | constraint none → start no earlier than 2026-07-06 |
| 581 | Aprovação | 2026-06-29 → 2026-07-07 (+8d) | 2026-06-29 → 2026-07-07 (+8d) |  |  | 18d → 11d |  | constraint none → start no earlier than 2026-07-07 |
| 582 | **FD-F0009-0305-MB-J-00004** | 2026-06-16 A → 2026-06-17 A (+1d) | 2026-06-29 → 2026-07-07 (+8d) | 10d → 15d | 75% → 87% | 18d → 11d |  |  |
| 583 | Emissão inicial | 2026-06-16 A → 2026-06-17 A (+1d) | 2026-06-24 A → 2026-06-25 A (+1d) |  |  |  |  |  |
| 584 | Análise Tecnored | 2026-06-25 A → 2026-06-26 A (+1d) | 2026-06-25 → 2026-07-03 A (+8d) | 1d → 6d | 50% → 100% | 18d → none |  | constraint none → finish no earlier than 2026-07-03 |
| 585 | Atendimento de comentários | 2026-06-26 → 2026-07-06 (+10d) | 2026-06-26 → 2026-07-06 (+10d) |  |  | 18d → 11d |  | constraint none → start no earlier than 2026-07-06 |
| 586 | Aprovação | 2026-06-29 → 2026-07-07 (+8d) | 2026-06-29 → 2026-07-07 (+8d) |  |  | 18d → 11d |  | constraint none → start no earlier than 2026-07-07 |
| 587 | **FD-F0009-0305-MB-J-00005** | 2026-06-16 A → 2026-06-17 A (+1d) | 2026-06-29 → 2026-07-07 (+8d) | 10d → 15d | 75% → 87% | 18d → 11d |  |  |
| 588 | Emissão inicial | 2026-06-16 A → 2026-06-17 A (+1d) | 2026-06-24 A → 2026-06-25 A (+1d) |  |  |  |  |  |
| 589 | Análise Tecnored | 2026-06-25 A → 2026-06-26 A (+1d) | 2026-06-25 → 2026-07-03 A (+8d) | 1d → 6d | 50% → 100% | 18d → none |  | constraint none → finish no earlier than 2026-07-03 |
| 590 | Atendimento de comentários | 2026-06-26 → 2026-07-06 (+10d) | 2026-06-26 → 2026-07-06 (+10d) |  |  | 18d → 11d |  | constraint none → start no earlier than 2026-07-06 |
| 591 | Aprovação | 2026-06-29 → 2026-07-07 (+8d) | 2026-06-29 → 2026-07-07 (+8d) |  |  | 18d → 11d |  | constraint none → start no earlier than 2026-07-07 |
| 592 | **FD-F0009-0305-MB-J-00006** | 2026-06-16 A → 2026-06-17 A (+1d) | 2026-06-29 → 2026-07-07 (+8d) | 10d → 15d | 75% → 87% | 18d → 11d |  |  |

| ID | Task | Start | Finish | Duration | Complete | Total float | Other |
| --- | --- | --- | --- | --- | --- | --- | --- |
| 593 | Emissão inicial | 2026-06-16 A → 2026-06-17 A (+1d) | 2026-06-24 A → 2026-06-25 A (+1d) |  |  |  |  |
| 594 | Análise Tecnored | 2026-06-25 A → 2026-06-26 A (+1d) | 2026-06-25 → 2026-07-03 A (+8d) | 1d → 6d | 50% → 100% | 18d → none | constraint none → finish no earlier than 2026-07-03 |
| 595 | Atendimento de comentários | 2026-06-26 → 2026-07-06 (+10d) | 2026-06-26 → 2026-07-06 (+10d) |  |  | 18d → 11d | constraint none → start no earlier than 2026-07-06 |
| 596 | Aprovação | 2026-06-29 → 2026-07-07 (+8d) | 2026-06-29 → 2026-07-07 (+8d) |  |  | 18d → 11d | constraint none → start no earlier than 2026-07-07 |
| 597 | **FD-F0009-0305-MB-J-00007** | 2026-06-16 A → 2026-06-17 A (+1d) | 2026-06-29 → 2026-07-07 (+8d) | 10d → 15d | 75% → 87% | 18d → 11d |  |
| 598 | Emissão inicial | 2026-06-16 A → 2026-06-17 A (+1d) | 2026-06-24 A → 2026-06-25 A (+1d) |  |  |  |  |
| 599 | Análise Tecnored | 2026-06-25 A → 2026-06-26 A (+1d) | 2026-06-25 → 2026-07-03 A (+8d) | 1d → 6d | 50% → 100% | 18d → none | constraint none → finish no earlier than 2026-07-03 |
| 600 | Atendimento de comentários | 2026-06-26 → 2026-07-06 (+10d) | 2026-06-26 → 2026-07-06 (+10d) |  |  | 18d → 11d | constraint none → start no earlier than 2026-07-06 |
| 601 | Aprovação | 2026-06-29 → 2026-07-07 (+8d) | 2026-06-29 → 2026-07-07 (+8d) |  |  | 18d → 11d | constraint none → start no earlier than 2026-07-07 |
| 602 | **FD-F0009-0305-MB-J-00008** | 2026-06-16 A → 2026-06-17 A (+1d) | 2026-06-29 → 2026-07-07 (+8d) | 10d → 15d | 75% → 87% | 18d → 11d |  |
| 603 | Emissão inicial | 2026-06-16 A → 2026-06-17 A (+1d) | 2026-06-24 A → 2026-06-25 A (+1d) |  |  |  |  |
| 604 | Análise Tecnored | 2026-06-25 A → 2026-06-26 A (+1d) | 2026-06-25 → 2026-07-03 A (+8d) | 1d → 6d | 50% → 100% | 18d → none | constraint none → finish no earlier than 2026-07-03 |
| 605 | Atendimento de comentários | 2026-06-26 → 2026-07-06 (+10d) | 2026-06-26 → 2026-07-06 (+10d) |  |  | 18d → 11d | constraint none → start no earlier than 2026-07-06 |
| 606 | Aprovação | 2026-06-29 → 2026-07-07 (+8d) | 2026-06-29 → 2026-07-07 (+8d) |  |  | 18d → 11d | constraint none → start no earlier than 2026-07-07 |
| 607 | **FD-F0009-0305-MB-J-00009** | 2026-06-15 A → 2026-06-17 A (+2d) | 2026-06-26 → 2026-07-07 (+11d) | 10d → 15d | 72% → 87% | 19d → 11d |  |
| 608 | Emissão inicial | 2026-06-15 A → 2026-06-17 A (+2d) | 2026-06-23 A → 2026-06-25 A (+2d) |  |  |  |  |
| 609 | Análise Tecnored | 2026-06-24 A → 2026-06-26 A (+2d) | 2026-06-24 → 2026-07-03 A (+9d) | 1d → 6d | 15% → 100% | 19d → none | constraint none → finish no earlier than 2026-07-03 |
| 610 | Atendimento de comentários | 2026-06-25 → 2026-07-06 (+11d) | 2026-06-25 → 2026-07-06 (+11d) |  |  | 19d → 11d | constraint none → start no earlier than 2026-07-06 |
| 611 | Aprovação | 2026-06-26 → 2026-07-07 (+11d) | 2026-06-26 → 2026-07-07 (+11d) |  |  | 19d → 11d | constraint none → start no earlier than 2026-07-07 |
| 612 | **FD-F0009-0305-MB-J-00010** | 2026-06-15 A → 2026-06-17 A (+2d) | 2026-06-26 → 2026-07-07 (+11d) | 10d → 15d | 72% → 87% | 19d → 11d |  |
| 613 | Emissão inicial | 2026-06-15 A → 2026-06-17 A (+2d) | 2026-06-23 A → 2026-06-25 A (+2d) |  |  |  |  |
| 614 | Análise Tecnored | 2026-06-24 A → 2026-06-26 A (+2d) | 2026-06-24 → 2026-07-03 A (+9d) | 1d → 6d | 15% → 100% | 19d → none | constraint none → finish no earlier than 2026-07-03 |
| 615 | Atendimento de comentários | 2026-06-25 → 2026-07-06 (+11d) | 2026-06-25 → 2026-07-06 (+11d) |  |  | 19d → 11d | constraint none → start no earlier than 2026-07-06 |
| 616 | Aprovação | 2026-06-26 → 2026-07-07 (+11d) | 2026-06-26 → 2026-07-07 (+11d) |  |  | 19d → 11d | constraint none → start no earlier than 2026-07-07 |
| 617 | **FD-F0009-0305-MB-J-00011** | 2026-06-15 A → 2026-06-17 A (+2d) | 2026-06-26 → 2026-07-07 (+11d) | 10d → 15d | 72% → 87% | 19d → 11d |  |
| 618 | Emissão inicial | 2026-06-15 A → 2026-06-17 A (+2d) | 2026-06-23 A → 2026-06-25 A (+2d) |  |  |  |  |
| 619 | Análise Tecnored | 2026-06-24 A → 2026-06-26 A (+2d) | 2026-06-24 → 2026-07-03 A (+9d) | 1d → 6d | 15% → 100% | 19d → none | constraint none → finish no earlier than 2026-07-03 |
| 620 | Atendimento de comentários | 2026-06-25 → 2026-07-06 (+11d) | 2026-06-25 → 2026-07-06 (+11d) |  |  | 19d → 11d | constraint none → start no earlier than 2026-07-06 |
| 621 | Aprovação | 2026-06-26 → 2026-07-07 (+11d) | 2026-06-26 → 2026-07-07 (+11d) |  |  | 19d → 11d | constraint none → start no earlier than 2026-07-07 |
| 622 | **FD-F0009-0305-MB-J-00012** | 2026-06-18 A → 2026-06-17 A (-1d) | 2026-07-01 → 2026-07-07 (+6d) | 10d → 15d | 72% → 87% | 16d → 11d |  |
| 623 | Emissão inicial | 2026-06-18 A → 2026-06-17 A (-1d) | 2026-06-26 A → 2026-06-25 A (-1d) |  |  |  |  |
| 624 | Análise Tecnored | 2026-06-29 A → 2026-06-26 A (-3d) | 2026-06-29 → 2026-07-03 A (+4d) | 1d → 6d | 15% → 100% | 16d → none | constraint none → finish no earlier than 2026-07-03 |
| 625 | Atendimento de comentários | 2026-06-30 → 2026-07-06 (+6d) | 2026-06-30 → 2026-07-06 (+6d) |  |  | 16d → 11d | constraint none → start no earlier than 2026-07-06 |
| 626 | Aprovação | 2026-07-01 → 2026-07-07 (+6d) | 2026-07-01 → 2026-07-07 (+6d) |  |  | 16d → 11d | constraint none → start no earlier than 2026-07-07 |
| 627 | **FD-F0009-0305-MB-J-00013** | 2026-06-18 A → 2026-06-17 A (-1d) | 2026-07-01 → 2026-07-07 (+6d) | 10d → 15d | 72% → 87% | 16d → 11d |  |
| 628 | Emissão inicial | 2026-06-18 A → 2026-06-17 A (-1d) | 2026-06-26 A → 2026-06-25 A (-1d) |  |  |  |  |
| 629 | Análise Tecnored | 2026-06-29 A → 2026-06-26 A (-3d) | 2026-06-29 → 2026-07-03 A (+4d) | 1d → 6d | 15% → 100% | 16d → none | constraint none → finish no earlier than 2026-07-03 |
| 630 | Atendimento de comentários | 2026-06-30 → 2026-07-06 (+6d) | 2026-06-30 → 2026-07-06 (+6d) |  |  | 16d → 11d | constraint none → start no earlier than 2026-07-06 |
| 631 | Aprovação | 2026-07-01 → 2026-07-07 (+6d) | 2026-07-01 → 2026-07-07 (+6d) |  |  | 16d → 11d | constraint none → start no earlier than 2026-07-07 |
| 632 | **FD-F0009-0305-MB-J-00014** | 2026-06-18 A → 2026-06-17 A (-1d) | 2026-07-01 → 2026-07-07 (+6d) | 10d → 15d | 72% → 87% | 16d → 11d |  |
| 633 | Emissão inicial | 2026-06-18 A → 2026-06-17 A (-1d) | 2026-06-26 A → 2026-06-25 A (-1d) |  |  |  |  |
| 634 | Análise Tecnored | 2026-06-29 A → 2026-06-26 A (-3d) | 2026-06-29 → 2026-07-03 A (+4d) | 1d → 6d | 15% → 100% | 16d → none | constraint none → finish no earlier than 2026-07-03 |
| 635 | Atendimento de comentários | 2026-06-30 → 2026-07-06 (+6d) | 2026-06-30 → 2026-07-06 (+6d) |  |  | 16d → 11d | constraint none → start no earlier than 2026-07-06 |
| 636 | Aprovação | 2026-07-01 → 2026-07-07 (+6d) | 2026-07-01 → 2026-07-07 (+6d) |  |  | 16d → 11d | constraint none → start no earlier than 2026-07-07 |
| 637 | **FD-F0009-0305-MB-J-00015** | 2026-06-15 A → 2026-06-17 A (+2d) | 2026-06-26 → 2026-07-07 (+11d) | 10d → 15d | 72% → 87% | 19d → 11d |  |
| 638 | Emissão inicial | 2026-06-15 A → 2026-06-17 A (+2d) | 2026-06-23 A → 2026-06-25 A (+2d) |  |  |  |  |
| 639 | Análise Tecnored | 2026-06-24 A → 2026-06-26 A (+2d) | 2026-06-24 → 2026-07-03 A (+9d) | 1d → 6d | 15% → 100% | 19d → none | constraint none → finish no earlier than 2026-07-03 |
| 640 | Atendimento de comentários | 2026-06-25 → 2026-07-06 (+11d) | 2026-06-25 → 2026-07-06 (+11d) |  |  | 19d → 11d | constraint none → start no earlier than 2026-07-06 |
| 641 | Aprovação | 2026-06-26 → 2026-07-07 (+11d) | 2026-06-26 → 2026-07-07 (+11d) |  |  | 19d → 11d | constraint none → start no earlier than 2026-07-07 |
| 642 | **FD-F0009-0305-MB-J-00016** | 2026-06-15 A → 2026-06-17 A (+2d) | 2026-06-26 → 2026-07-07 (+11d) | 10d → 15d | 72% → 87% | 19d → 11d |  |
| 643 | Emissão inicial | 2026-06-15 A → 2026-06-17 A (+2d) | 2026-06-23 A → 2026-06-25 A (+2d) |  |  |  |  |
| 644 | Análise Tecnored | 2026-06-24 A → 2026-06-26 A (+2d) | 2026-06-24 → 2026-07-03 A (+9d) | 1d → 6d | 15% → 100% | 19d → none | constraint none → finish no earlier than 2026-07-03 |
| 645 | Atendimento de comentários | 2026-06-25 → 2026-07-06 (+11d) | 2026-06-25 → 2026-07-06 (+11d) |  |  | 19d → 11d | constraint none → start no earlier than 2026-07-06 |
| 646 | Aprovação | 2026-06-26 → 2026-07-07 (+11d) | 2026-06-26 → 2026-07-07 (+11d) |  |  | 19d → 11d | constraint none → start no earlier than 2026-07-07 |
| 647 | **FD-F0009-0305-MB-J-00017** | 2026-06-15 A → 2026-06-17 A (+2d) | 2026-06-26 → 2026-07-07 (+11d) | 10d → 15d | 72% → 87% | 19d → 11d |  |
| 648 | Emissão inicial | 2026-06-15 A → 2026-06-17 A (+2d) | 2026-06-23 A → 2026-06-25 A (+2d) |  |  |  |  |
| 649 | Análise Tecnored | 2026-06-24 A → 2026-06-26 A (+2d) | 2026-06-24 → 2026-07-03 A (+9d) | 1d → 6d | 15% → 100% | 19d → none | constraint none → finish no earlier than 2026-07-03 |
| 650 | Atendimento de comentários | 2026-06-25 → 2026-07-06 (+11d) | 2026-06-25 → 2026-07-06 (+11d) |  |  | 19d → 11d | constraint none → start no earlier than 2026-07-06 |
| 651 | Aprovação | 2026-06-26 → 2026-07-07 (+11d) | 2026-06-26 → 2026-07-07 (+11d) |  |  | 19d → 11d | constraint none → start no earlier than 2026-07-07 |
| 652 | **FD-F0009-0305-MB-J-00018** | 2026-06-15 A → 2026-06-17 A (+2d) | 2026-06-26 → 2026-07-07 (+11d) | 10d → 15d | 72% → 87% | 19d → 11d |  |
| 653 | Emissão inicial | 2026-06-15 A → 2026-06-17 A (+2d) | 2026-06-23 A → 2026-06-25 A (+2d) |  |  |  |  |
| 654 | Análise Tecnored | 2026-06-24 A → 2026-06-26 A (+2d) | 2026-06-24 → 2026-07-03 A (+9d) | 1d → 6d | 15% → 100% | 19d → none | constraint none → finish no earlier than 2026-07-03 |
| 655 | Atendimento de comentários | 2026-06-25 → 2026-07-06 (+11d) | 2026-06-25 → 2026-07-06 (+11d) |  |  | 19d → 11d | constraint none → start no earlier than 2026-07-06 |
| 656 | Aprovação | 2026-06-26 → 2026-07-07 (+11d) | 2026-06-26 → 2026-07-07 (+11d) |  |  | 19d → 11d | constraint none → start no earlier than 2026-07-07 |
| 657 | **FD-F0009-0305-MB-J-00019** | 2026-06-15 A → 2026-06-17 A (+2d) | 2026-06-26 → 2026-07-07 (+11d) | 10d → 15d | 72% → 87% | 19d → 11d |  |
| 658 | Emissão inicial | 2026-06-15 A → 2026-06-17 A (+2d) | 2026-06-23 A → 2026-06-25 A (+2d) |  |  |  |  |
| 659 | Análise Tecnored | 2026-06-24 A → 2026-06-26 A (+2d) | 2026-06-24 → 2026-07-03 A (+9d) | 1d → 6d | 15% → 100% | 19d → none | constraint none → finish no earlier than 2026-07-03 |
| 660 | Atendimento de comentários | 2026-06-25 → 2026-07-06 (+11d) | 2026-06-25 → 2026-07-06 (+11d) |  |  | 19d → 11d | constraint none → start no earlier than 2026-07-06 |
| 661 | Aprovação | 2026-06-26 → 2026-07-07 (+11d) | 2026-06-26 → 2026-07-07 (+11d) |  |  | 19d → 11d | constraint none → start no earlier than 2026-07-07 |
| 662 | **FD-F0009-0305-MB-J-00020** | 2026-06-15 A → 2026-06-17 A (+2d) | 2026-06-26 → 2026-07-07 (+11d) | 10d → 15d | 72% → 87% | 19d → 11d |  |

| ID | Task | Start | Finish | Duration | Complete | Total float | Other |
| --- | --- | --- | --- | --- | --- | --- | --- |
| 663 | Emissão inicial | 2026-06-15 A → 2026-06-17 A (+2d) | 2026-06-23 A → 2026-06-25 A (+2d) |  |  |  |  |
| 664 | Análise Tecnored | 2026-06-24 A → 2026-06-26 A (+2d) | 2026-06-24 → 2026-07-03 A (+9d) | 1d → 6d | 15% → 100% | 19d → none | constraint none → finish no earlier than 2026-07-03 |
| 665 | Atendimento de comentários | 2026-06-25 → 2026-07-06 (+11d) | 2026-06-25 → 2026-07-06 (+11d) |  |  | 19d → 11d | constraint none → start no earlier than 2026-07-06 |
| 666 | Aprovação | 2026-06-26 → 2026-07-07 (+11d) | 2026-06-26 → 2026-07-07 (+11d) |  |  | 19d → 11d | constraint none → start no earlier than 2026-07-07 |
| 667 | **FD-F0009-0305-MB-J-00021** | 2026-06-15 A → 2026-06-17 A (+2d) | 2026-06-26 → 2026-07-07 (+11d) | 10d → 15d | 72% → 87% | 19d → 11d |  |
| 668 | Emissão inicial | 2026-06-15 A → 2026-06-17 A (+2d) | 2026-06-23 A → 2026-06-25 A (+2d) |  |  |  |  |
| 669 | Análise Tecnored | 2026-06-24 A → 2026-06-26 A (+2d) | 2026-06-24 → 2026-07-03 A (+9d) | 1d → 6d | 15% → 100% | 19d → none | constraint none → finish no earlier than 2026-07-03 |
| 670 | Atendimento de comentários | 2026-06-25 → 2026-07-06 (+11d) | 2026-06-25 → 2026-07-06 (+11d) |  |  | 19d → 11d | constraint none → start no earlier than 2026-07-06 |
| 671 | Aprovação | 2026-06-26 → 2026-07-07 (+11d) | 2026-06-26 → 2026-07-07 (+11d) |  |  | 19d → 11d | constraint none → start no earlier than 2026-07-07 |
| 672 | **FD-F0009-0305-MB-J-00022** | 2026-06-19 A → 2026-06-17 A (-2d) | 2026-07-02 → 2026-07-07 (+5d) | 9.85d → 15d | 72% → 87% | 15.15d → 11d |  |
| 673 | Emissão inicial | 2026-06-19 A → 2026-06-17 A (-2d) | 2026-06-29 A → 2026-06-25 A (-4d) |  |  |  |  |
| 674 | Análise Tecnored | 2026-06-24 A → 2026-06-26 A (+2d) | 2026-06-30 → 2026-07-03 A (+3d) | 1d → 6d | 15% → 100% | 15.15d → none | constraint none → finish no earlier than 2026-07-03 |
| 675 | Atendimento de comentários | 2026-06-30 → 2026-07-06 (+6d) | 2026-07-01 → 2026-07-06 (+5d) |  |  | 15.15d → 11d | constraint none → start no earlier than 2026-07-06 |
| 676 | Aprovação | 2026-07-01 → 2026-07-07 (+6d) | 2026-07-02 → 2026-07-07 (+5d) |  |  | 15.15d → 11d | constraint none → start no earlier than 2026-07-07 |
| 677 | **FD-F0009-0305-MB-J-00023** | 2026-06-19 A → 2026-06-17 A (-2d) | 2026-07-02 → 2026-07-07 (+5d) | 9.85d → 15d | 72% → 87% | 15.15d → 11d |  |
| 678 | Emissão inicial | 2026-06-19 A → 2026-06-17 A (-2d) | 2026-06-29 A → 2026-06-25 A (-4d) |  |  |  |  |
| 679 | Análise Tecnored | 2026-06-24 A → 2026-06-26 A (+2d) | 2026-06-30 → 2026-07-03 A (+3d) | 1d → 6d | 15% → 100% | 15.15d → none | constraint none → finish no earlier than 2026-07-03 |
| 680 | Atendimento de comentários | 2026-06-30 → 2026-07-06 (+6d) | 2026-07-01 → 2026-07-06 (+5d) |  |  | 15.15d → 11d | constraint none → start no earlier than 2026-07-06 |
| 681 | Aprovação | 2026-07-01 → 2026-07-07 (+6d) | 2026-07-02 → 2026-07-07 (+5d) |  |  | 15.15d → 11d | constraint none → start no earlier than 2026-07-07 |
| 682 | **FD-F0009-0305-MB-J-00024** | 2026-06-19 A → 2026-06-17 A (-2d) | 2026-07-02 → 2026-07-07 (+5d) | 9.85d → 15d | 72% → 87% | 15.15d → 11d |  |
| 683 | Emissão inicial | 2026-06-19 A → 2026-06-17 A (-2d) | 2026-06-29 A → 2026-06-25 A (-4d) |  |  |  |  |
| 684 | Análise Tecnored | 2026-06-24 A → 2026-06-26 A (+2d) | 2026-06-30 → 2026-07-03 A (+3d) | 1d → 6d | 15% → 100% | 15.15d → none | constraint none → finish no earlier than 2026-07-03 |
| 685 | Atendimento de comentários | 2026-06-30 → 2026-07-06 (+6d) | 2026-07-01 → 2026-07-06 (+5d) |  |  | 15.15d → 11d | constraint none → start no earlier than 2026-07-06 |
| 686 | Aprovação | 2026-07-01 → 2026-07-07 (+6d) | 2026-07-02 → 2026-07-07 (+5d) |  |  | 15.15d → 11d | constraint none → start no earlier than 2026-07-07 |
| 687 | **FD-F0009-0305-MB-J-00025** | 2026-06-19 A → 2026-06-17 A (-2d) | 2026-07-02 → 2026-07-07 (+5d) | 9.85d → 15d | 72% → 80% | 15.15d → 11d |  |
| 688 | Emissão inicial | 2026-06-19 A → 2026-06-17 A (-2d) | 2026-06-29 A → 2026-06-25 A (-4d) |  |  |  |  |
| 689 | Análise Tecnored | 2026-06-24 A → 2026-06-26 A (+2d) | 2026-06-30 → 2026-06-26 A (-4d) |  | 15% → 100% | 15.15d → none |  |
| 690 | Atendimento de comentários | 2026-06-30 → 2026-07-06 (+6d) | 2026-07-01 → 2026-07-06 (+5d) |  |  | 15.15d → 11d | constraint none → start no earlier than 2026-07-06 |
| 691 | Aprovação | 2026-07-01 → 2026-07-07 (+6d) | 2026-07-02 → 2026-07-07 (+5d) |  |  | 15.15d → 11d | constraint none → start no earlier than 2026-07-07 |
| 697 | **RE-F0009-0305-MB-J-00001** | 2026-06-30 A → 2026-07-02 A (+2d) | 2026-07-13 → 2026-07-15 (+2d) |  |  | 10d → 7d |  |
| 698 | Emissão inicial | 2026-06-30 A → 2026-07-02 A (+2d) | 2026-07-03 → 2026-07-07 A (+4d) |  | 99% → 100% | 10d → none |  |
| 699 | Análise Tecnored | 2026-07-06 → 2026-07-08 (+2d) | 2026-07-06 → 2026-07-08 (+2d) |  |  | 10d → 7d |  |
| 700 | Atendimento de comentários | 2026-07-07 → 2026-07-13 (+6d) | 2026-07-08 → 2026-07-14 (+6d) |  |  | 10d → 7d |  |
| 701 | Aprovação | 2026-07-13 → 2026-07-15 (+2d) | 2026-07-13 → 2026-07-15 (+2d) |  |  | 10d → 7d |  |
| 702 | **DT-F0009-0305-MB-J-00001** | 2026-06-29 A → 2026-07-01 A (+2d) | 2026-07-08 → 2026-07-15 (+7d) | 8d → 9d | 50% → 56% | 11d → 7d |  |
| 703 | Emissão inicial | 2026-06-29 A → 2026-07-01 A (+2d) | 2026-07-02 A → 2026-07-07 A (+5d) | 4d → 5d |  |  |  |
| 704 | Análise Tecnored | 2026-07-03 → 2026-07-08 (+5d) | 2026-07-03 → 2026-07-08 (+5d) |  |  | 11d → 7d |  |
| 705 | Atendimento de comentários | 2026-07-06 → 2026-07-13 (+7d) | 2026-07-07 → 2026-07-14 (+7d) |  |  | 11d → 7d |  |
| 706 | Aprovação | 2026-07-08 → 2026-07-15 (+7d) | 2026-07-08 → 2026-07-15 (+7d) |  |  | 11d → 7d |  |

## Version 6 (data date 2026-07-08, saved 2026-07-08, file CR-F0009-0305-MB-F-00001 13072026.mpp)

Note of the change: Implementa estrutura inicial do histograma

Last finish stays 2026-09-22. Complete tasks 107 → 109.

Changed:

| ID | Task | Start | Finish | Duration | Complete | Total float | Other |
| --- | --- | --- | --- | --- | --- | --- | --- |
| 83 | **PQ-F0009-0305-MB-M-00001** | 2026-07-01 A → 2026-07-03 A (+2d) | 2026-07-13 → 2026-07-16 (+3d) | 7d → 8d | 42% → 50% | 9d → 6d |  |
| 84 | Emissão inicial | 2026-07-01 A → 2026-07-03 A (+2d) | 2026-07-03 → 2026-07-08 A (+5d) | 3d → 4d | 99% → 100% | 9d → none | constraint start no earlier than 2026-07-01 → finish no earlier than 2026-07-08 |
| 85 | Análise Tecnored | 2026-07-06 → 2026-07-13 (+7d) | 2026-07-06 → 2026-07-13 (+7d) |  |  | 9d → 6d |  |
| 86 | Atendimento de comentários | 2026-07-07 → 2026-07-14 (+7d) | 2026-07-08 → 2026-07-15 (+7d) |  |  | 9d → 6d |  |
| 87 | Aprovação | 2026-07-13 → 2026-07-16 (+3d) | 2026-07-13 → 2026-07-16 (+3d) |  |  | 9d → 6d |  |
| 203 | **Tubulação/Utilidades** |  | 2026-07-17 → 2026-07-21 (+4d) | 24d → 26d | 32% → 33% | 5d → 3d |  |
| 209 | **MD-F0009-0305-MB-U-00001** | 2026-07-24 → 2026-07-27 (+3d) | 2026-08-03 → 2026-08-04 (+1d) |  |  | -6d → -7d |  |
| 210 | Emissão inicial | 2026-07-24 → 2026-07-27 (+3d) | 2026-07-28 → 2026-07-29 (+1d) |  |  | -6d → -7d |  |
| 211 | Análise Tecnored | 2026-07-29 → 2026-07-30 (+1d) | 2026-07-29 → 2026-07-30 (+1d) |  |  | -6d → -7d |  |
| 212 | Atendimento de comentários | 2026-07-30 → 2026-07-31 (+1d) | 2026-07-31 → 2026-08-03 (+3d) |  |  | -6d → -7d |  |
| 213 | Aprovação | 2026-08-03 → 2026-08-04 (+1d) | 2026-08-03 → 2026-08-04 (+1d) |  |  | -6d → -7d |  |
| 214 | **ML-F0009-0305-MB-T-00001** |  | 2026-07-15 → 2026-07-16 (+1d) | 7d → 8d | 39% → 50% | 7d → 6d |  |
| 215 | Emissão inicial |  | 2026-07-07 → 2026-07-08 A (+1d) | 3d → 4d | 90% → 100% | 6d → none | constraint start no earlier than 2026-06-24 → finish no earlier than 2026-07-08 |
| 216 | Análise Tecnored | 2026-07-08 → 2026-07-13 (+5d) | 2026-07-08 → 2026-07-13 (+5d) |  |  | 6d → 5d |  |
| 217 | Atendimento de comentários | 2026-07-13 → 2026-07-14 (+1d) | 2026-07-14 → 2026-07-15 (+1d) |  |  | 7d → 6d |  |
| 218 | Aprovação | 2026-07-15 → 2026-07-16 (+1d) | 2026-07-15 → 2026-07-16 (+1d) |  |  | 7d → 6d |  |
| 234 | **PQ-F0009-0305-MB-T-00001** | 2026-07-07 → 2026-07-13 (+6d) | 2026-07-17 → 2026-07-21 (+4d) |  |  | 5d → 3d |  |
| 235 | Emissão inicial | 2026-07-07 → 2026-07-13 (+6d) | 2026-07-13 → 2026-07-15 (+2d) |  |  | 5d → 3d | constraint start no earlier than 2026-07-07 → start no earlier than 2026-07-13 |
| 236 | Análise Tecnored | 2026-07-14 → 2026-07-16 (+2d) | 2026-07-14 → 2026-07-16 (+2d) |  |  | 5d → 3d |  |
| 237 | Atendimento de comentários | 2026-07-15 → 2026-07-17 (+2d) | 2026-07-16 → 2026-07-20 (+4d) |  |  | 5d → 3d |  |
| 238 | Aprovação | 2026-07-17 → 2026-07-21 (+4d) | 2026-07-17 → 2026-07-21 (+4d) |  |  | 5d → 3d |  |
| 254 | **AG-F0009-0305-MB-T-00001** |  | 2026-07-16 → 2026-07-17 (+1d) | 7d → 8d |  | 6d → 5d |  |
| 255 | Emissão inicial |  | 2026-07-08 → 2026-07-13 (+5d) |  |  | 6d → 5d |  |
| 256 | Análise Tecnored | 2026-07-13 → 2026-07-14 (+1d) | 2026-07-13 → 2026-07-14 (+1d) |  |  | 6d → 5d |  |
| 257 | Atendimento de comentários | 2026-07-14 → 2026-07-15 (+1d) | 2026-07-15 → 2026-07-16 (+1d) |  |  | 6d → 5d |  |
| 258 | Aprovação | 2026-07-16 → 2026-07-17 (+1d) | 2026-07-16 → 2026-07-17 (+1d) |  |  | 6d → 5d |  |
| 259 | **AG-F0009-0305-MB-T-00002** |  | 2026-07-16 → 2026-07-17 (+1d) | 7d → 8d |  | 6d → 5d |  |
| 260 | Emissão inicial |  | 2026-07-08 → 2026-07-13 (+5d) |  |  | 6d → 5d |  |
| 261 | Análise Tecnored | 2026-07-13 → 2026-07-14 (+1d) | 2026-07-13 → 2026-07-14 (+1d) |  |  | 6d → 5d |  |
| 262 | Atendimento de comentários | 2026-07-14 → 2026-07-15 (+1d) | 2026-07-15 → 2026-07-16 (+1d) |  |  | 6d → 5d |  |
| 263 | Aprovação | 2026-07-16 → 2026-07-17 (+1d) | 2026-07-16 → 2026-07-17 (+1d) |  |  | 6d → 5d |  |
| 264 | **AG-F0009-0305-MB-T-00003** |  | 2026-07-16 → 2026-07-17 (+1d) | 7d → 8d |  | 6d → 5d |  |
| 265 | Emissão inicial |  | 2026-07-08 → 2026-07-13 (+5d) |  |  | 6d → 5d |  |
| 266 | Análise Tecnored | 2026-07-13 → 2026-07-14 (+1d) | 2026-07-13 → 2026-07-14 (+1d) |  |  | 6d → 5d |  |
| 267 | Atendimento de comentários | 2026-07-14 → 2026-07-15 (+1d) | 2026-07-15 → 2026-07-16 (+1d) |  |  | 6d → 5d |  |
| 268 | Aprovação | 2026-07-16 → 2026-07-17 (+1d) | 2026-07-16 → 2026-07-17 (+1d) |  |  | 6d → 5d |  |
| 284 | **AG-F0009-0305-MB-T-00004** |  | 2026-07-16 → 2026-07-17 (+1d) | 7d → 8d |  | 6d → 5d |  |
| 285 | Emissão inicial |  | 2026-07-08 → 2026-07-13 (+5d) |  |  | 6d → 5d |  |
| 286 | Análise Tecnored | 2026-07-13 → 2026-07-14 (+1d) | 2026-07-13 → 2026-07-14 (+1d) |  |  | 6d → 5d |  |
| 287 | Atendimento de comentários | 2026-07-14 → 2026-07-15 (+1d) | 2026-07-15 → 2026-07-16 (+1d) |  |  | 6d → 5d |  |
| 288 | Aprovação | 2026-07-16 → 2026-07-17 (+1d) | 2026-07-16 → 2026-07-17 (+1d) |  |  | 6d → 5d |  |
| 289 | **AG-F0009-0305-MB-T-00005** |  | 2026-07-16 → 2026-07-17 (+1d) | 7d → 8d |  | 6d → 5d |  |
| 290 | Emissão inicial |  | 2026-07-08 → 2026-07-13 (+5d) |  |  | 6d → 5d |  |
| 291 | Análise Tecnored | 2026-07-13 → 2026-07-14 (+1d) | 2026-07-13 → 2026-07-14 (+1d) |  |  | 6d → 5d |  |
| 292 | Atendimento de comentários | 2026-07-14 → 2026-07-15 (+1d) | 2026-07-15 → 2026-07-16 (+1d) |  |  | 6d → 5d |  |
| 293 | Aprovação | 2026-07-16 → 2026-07-17 (+1d) | 2026-07-16 → 2026-07-17 (+1d) |  |  | 6d → 5d |  |
| 294 | **AG-F0009-0305-MB-T-00006** |  | 2026-07-16 → 2026-07-17 (+1d) | 7d → 8d |  | 6d → 5d |  |
| 295 | Emissão inicial |  | 2026-07-08 → 2026-07-13 (+5d) |  |  | 6d → 5d |  |
| 296 | Análise Tecnored | 2026-07-13 → 2026-07-14 (+1d) | 2026-07-13 → 2026-07-14 (+1d) |  |  | 6d → 5d |  |
| 297 | Atendimento de comentários | 2026-07-14 → 2026-07-15 (+1d) | 2026-07-15 → 2026-07-16 (+1d) |  |  | 6d → 5d |  |
| 298 | Aprovação | 2026-07-16 → 2026-07-17 (+1d) | 2026-07-16 → 2026-07-17 (+1d) |  |  | 6d → 5d |  |
| 299 | **AG-F0009-0305-MB-T-00007** |  | 2026-07-16 → 2026-07-17 (+1d) | 7d → 8d |  | 6d → 5d |  |
| 300 | Emissão inicial |  | 2026-07-08 → 2026-07-13 (+5d) |  |  | 6d → 5d |  |
| 301 | Análise Tecnored | 2026-07-13 → 2026-07-14 (+1d) | 2026-07-13 → 2026-07-14 (+1d) |  |  | 6d → 5d |  |
| 302 | Atendimento de comentários | 2026-07-14 → 2026-07-15 (+1d) | 2026-07-15 → 2026-07-16 (+1d) |  |  | 6d → 5d |  |
| 303 | Aprovação | 2026-07-16 → 2026-07-17 (+1d) | 2026-07-16 → 2026-07-17 (+1d) |  |  | 6d → 5d |  |
| 304 | **AG-F0009-0305-MB-T-00008** |  | 2026-07-16 → 2026-07-17 (+1d) | 7d → 8d |  | 6d → 5d |  |
| 305 | Emissão inicial |  | 2026-07-08 → 2026-07-13 (+5d) |  |  | 6d → 5d |  |
| 306 | Análise Tecnored | 2026-07-13 → 2026-07-14 (+1d) | 2026-07-13 → 2026-07-14 (+1d) |  |  | 6d → 5d |  |
| 307 | Atendimento de comentários | 2026-07-14 → 2026-07-15 (+1d) | 2026-07-15 → 2026-07-16 (+1d) |  |  | 6d → 5d |  |
| 308 | Aprovação | 2026-07-16 → 2026-07-17 (+1d) | 2026-07-16 → 2026-07-17 (+1d) |  |  | 6d → 5d |  |
| 309 | **AG-F0009-0305-MB-T-00009** |  | 2026-07-16 → 2026-07-17 (+1d) | 7d → 8d |  | 6d → 5d |  |
| 310 | Emissão inicial |  | 2026-07-08 → 2026-07-13 (+5d) |  |  | 6d → 5d |  |
| 311 | Análise Tecnored | 2026-07-13 → 2026-07-14 (+1d) | 2026-07-13 → 2026-07-14 (+1d) |  |  | 6d → 5d |  |
| 312 | Atendimento de comentários | 2026-07-14 → 2026-07-15 (+1d) | 2026-07-15 → 2026-07-16 (+1d) |  |  | 6d → 5d |  |
| 313 | Aprovação | 2026-07-16 → 2026-07-17 (+1d) | 2026-07-16 → 2026-07-17 (+1d) |  |  | 6d → 5d |  |
| 324 | **Estrutura metálica** | 2026-07-06 A → 2026-07-03 A (-3d) |  | 12.75d → 13.75d |  |  |  |
| 400 | **PL-F0009-0305-MB-S-00001** | 2026-07-07 → 2026-07-03 (-4d) | 2026-07-20 → 2026-07-16 (-4d) |  |  | 4d → 6d |  |
| 401 | Emissão inicial | 2026-07-07 → 2026-07-03 (-4d) | 2026-07-15 → 2026-07-13 (-2d) |  |  | 4d → 6d | constraint start no earlier than 2026-07-07 → start no earlier than 2026-07-03 |
| 402 | Análise Tecnored | 2026-07-16 → 2026-07-14 (-2d) | 2026-07-16 → 2026-07-14 (-2d) |  |  | 4d → 6d |  |

| ID | Task | Start | Finish | Duration | Complete | Total float | Other |
| --- | --- | --- | --- | --- | --- | --- | --- |
| 403 | Atendimento de comentários | 2026-07-17 → 2026-07-15 (-2d) | 2026-07-17 → 2026-07-15 (-2d) |  |  | 4d → 6d |  |
| 404 | Aprovação | 2026-07-20 → 2026-07-16 (-4d) | 2026-07-20 → 2026-07-16 (-4d) |  |  | 4d → 6d |  |
| 471 | **Automação e instrumentação** |  |  |  | 76% → 77% |  |  |
| 492 | **LZ-F0009-0305-MB-J-00001** | 2026-07-07 → 2026-07-14 (+7d) | 2026-07-20 → 2026-07-23 (+3d) |  |  | 4d → 1d |  |
| 493 | Emissão inicial | 2026-07-07 → 2026-07-14 (+7d) | 2026-07-14 → 2026-07-17 (+3d) |  |  | 4d → 1d |  |
| 494 | Análise Tecnored | 2026-07-15 → 2026-07-20 (+5d) | 2026-07-15 → 2026-07-20 (+5d) |  |  | 4d → 1d |  |
| 495 | Atendimento de comentários | 2026-07-16 → 2026-07-21 (+5d) | 2026-07-17 → 2026-07-22 (+5d) |  |  | 4d → 1d |  |
| 496 | Aprovação | 2026-07-20 → 2026-07-23 (+3d) | 2026-07-20 → 2026-07-23 (+3d) |  |  | 4d → 1d |  |
| 502 | **PQ-F0009-0305-MB-J-00001** |  |  |  | 31% → 44% |  |  |
| 503 | Emissão inicial |  |  |  | 50% → 70% |  |  |
| 542 | **DI-F0009-0305-MB-J-00001** |  | 2026-07-14 → 2026-07-17 (+3d) | 8d → 11d | 25% → 57% | 8d → 5d |  |
| 543 | Emissão inicial |  | 2026-07-06 → 2026-07-13 (+7d) | 4d → 7d | 50% → 90% | 8d → 5d | constraint start no earlier than 2026-06-17 → finish no earlier than 2026-07-13 |
| 544 | Análise Tecnored | 2026-07-07 → 2026-07-14 (+7d) | 2026-07-07 → 2026-07-14 (+7d) |  |  | 8d → 5d |  |
| 545 | Atendimento de comentários | 2026-07-08 → 2026-07-15 (+7d) | 2026-07-13 → 2026-07-16 (+3d) |  |  | 8d → 5d |  |
| 546 | Aprovação | 2026-07-14 → 2026-07-17 (+3d) | 2026-07-14 → 2026-07-17 (+3d) |  |  | 8d → 5d |  |
| 692 | **LB-F0009-0305-MB-J-00001** |  | 2026-07-16 → 2026-07-17 (+1d) | 8d → 9d | 25% → 28% | 6d → 5d |  |
| 693 | Emissão inicial |  | 2026-07-08 → 2026-07-13 (+5d) | 4d → 5d |  | 6d → 5d | constraint start no earlier than 2026-07-03 → finish no earlier than 2026-07-13 |
| 694 | Análise Tecnored | 2026-07-13 → 2026-07-14 (+1d) | 2026-07-13 → 2026-07-14 (+1d) |  |  | 6d → 5d |  |
| 695 | Atendimento de comentários | 2026-07-14 → 2026-07-15 (+1d) | 2026-07-15 → 2026-07-16 (+1d) |  |  | 6d → 5d |  |
| 696 | Aprovação | 2026-07-16 → 2026-07-17 (+1d) | 2026-07-16 → 2026-07-17 (+1d) |  |  | 6d → 5d |  |

## Version 7 (data date 2026-07-08, saved 2026-07-14, file CR-F0009-0305-MB-F-00001 13072026.mpp)

Note of the change: Atualizacao dados para apresentacao

Last finish stays 2026-09-22. Complete tasks 109 → 112.

Changed:

| ID | Task | Start | Finish | Complete | Total float |
| --- | --- | --- | --- | --- | --- |
| 1 | **F0009 - Programa Marabá** |  |  | 59% → 60% |  |
| 10 | **Área 0305 - Hot Blast Stoves** |  |  | 59% → 60% |  |
| 471 | **Automação e instrumentação** |  |  | 77% → 78% |  |
| 502 | **PQ-F0009-0305-MB-J-00001** |  |  | 44% → 63% |  |
| 503 | Emissão inicial |  | 2026-07-13 A | 70% → 100% | 6d → none |
| 542 | **DI-F0009-0305-MB-J-00001** |  |  | 57% → 64% |  |
| 543 | Emissão inicial |  | 2026-07-13 A | 90% → 100% | 5d → none |
| 557 | **LM-F0009-0305-MB-J-00001** | 2026-07-16 A |  | 0% → 57% |  |
| 558 | Emissão inicial | 2026-07-16 A | 2026-07-21 A | 0% → 100% | 0d → none |

## Version 8 (data date 2026-07-14, saved 2026-07-16, file CR-F0009-0305-MB-F-00001 14072026.mpp)

Note of the change: Atualizacao dados para apresentacao

Last finish stays 2026-09-22. Complete tasks 112 → 128.

Changed:

| ID | Task | Start | Finish | Duration | Complete | Total float |
| --- | --- | --- | --- | --- | --- | --- |
| 1 | **F0009 - Programa Marabá** |  |  |  | 60% → 62% |  |
| 10 | **Área 0305 - Hot Blast Stoves** |  |  |  | 60% → 62% |  |
| 203 | **Tubulação/Utilidades** |  |  |  | 33% → 41% |  |
| 254 | **AG-F0009-0305-MB-T-00001** |  |  |  | 32% → 43% |  |
| 255 | Emissão inicial |  | 2026-07-13 A |  | 75% → 100% | 5d → none |
| 259 | **AG-F0009-0305-MB-T-00002** |  |  |  | 32% → 43% |  |
| 260 | Emissão inicial |  | 2026-07-13 A |  | 75% → 100% | 5d → none |
| 264 | **AG-F0009-0305-MB-T-00003** |  |  |  | 32% → 43% |  |
| 265 | Emissão inicial |  | 2026-07-13 A |  | 75% → 100% | 5d → none |
| 284 | **AG-F0009-0305-MB-T-00004** |  |  |  | 32% → 43% |  |
| 285 | Emissão inicial |  | 2026-07-13 A |  | 75% → 100% | 5d → none |
| 289 | **AG-F0009-0305-MB-T-00005** |  |  |  | 32% → 43% |  |
| 290 | Emissão inicial |  | 2026-07-13 A |  | 75% → 100% | 5d → none |
| 294 | **AG-F0009-0305-MB-T-00006** |  |  |  | 32% → 43% |  |
| 295 | Emissão inicial |  | 2026-07-13 A |  | 75% → 100% | 5d → none |
| 299 | **AG-F0009-0305-MB-T-00007** |  |  |  | 32% → 43% |  |
| 300 | Emissão inicial |  | 2026-07-13 A |  | 75% → 100% | 5d → none |
| 304 | **AG-F0009-0305-MB-T-00008** |  |  |  | 32% → 43% |  |
| 305 | Emissão inicial |  | 2026-07-13 A |  | 75% → 100% | 5d → none |
| 309 | **AG-F0009-0305-MB-T-00009** | 2026-07-06 A → 2026-07-07 (+1d) |  | 8d → 7d | 32% → 0% |  |
| 310 | Emissão inicial | 2026-07-06 A → 2026-07-07 (+1d) |  |  | 75% → 0% |  |
| 324 | **Estrutura metálica** |  |  |  | 2% → 6% |  |
| 330 | **ML-F0009-0305-MB-S-00001** |  |  |  | 38% → 50% |  |
| 331 | Emissão inicial |  | 2026-07-13 A |  | 75% → 100% | 0.25d → none |
| 345 | **MC-F0009-0305-MB-S-00001** | 2026-07-06 A |  |  | 0% → 50% | 0d → 7d |
| 346 | Emissão inicial | 2026-07-06 A | 2026-07-08 A |  | 0% → 100% | 0d → none |
| 471 | **Automação e instrumentação** |  |  |  | 78% → 80% |  |
| 482 | **LE-F0009-0305-MB-J-00001** |  |  |  | 50% → 75% |  |
| 484 | Análise Tecnored | 2026-07-06 A | 2026-07-06 A |  | 0% → 100% | 9d → none |
| 485 | Atendimento de comentários | 2026-07-07 A |  |  | 0% → 50% |  |
| 487 | **LL-F0009-0305-MB-J-00001** |  |  |  | 50% → 75% |  |
| 489 | Análise Tecnored | 2026-07-06 A | 2026-07-06 A |  | 0% → 100% | 9d → none |
| 490 | Atendimento de comentários | 2026-07-07 A |  |  | 0% → 50% |  |
| 507 | **FG-F0009-0305-MB-J-00001** |  | 2026-07-03 A |  | 74% → 100% | 13d → none |
| 510 | Atendimento de comentários |  | 2026-07-02 A |  | 50% → 100% | 13d → none |
| 511 | Aprovação | 2026-07-03 A | 2026-07-03 A |  | 0% → 100% | 13d → none |
| 522 | **AG-F0009-0305-MB-J-00001** |  |  |  | 56% → 63% |  |
| 524 | Análise Tecnored |  | 2026-06-26 A |  | 50% → 100% | 15d → none |
| 527 | **AG-F0009-0305-MB-J-00002** |  | 2026-07-08 A |  | 75% → 100% | 10d → none |
| 530 | Atendimento de comentários |  | 2026-07-07 A |  | 50% → 100% | 10d → none |
| 531 | Aprovação | 2026-07-08 A | 2026-07-08 A |  | 0% → 100% | 10d → none |
| 702 | **DT-F0009-0305-MB-J-00001** |  |  |  | 56% → 50% |  |
| 703 | Emissão inicial |  | 2026-07-07 A → 2026-07-07 |  | 100% → 90% | none → 7d |

## Version 9 (data date 2026-07-20, saved 2026-07-20, file CR-F0009-0305-MB-F-00001 14072026.mpp)

Note of the change: Ajustes cronograma integrado e hachuras

Last finish stays 2026-09-22. Complete tasks 128 → 135.

Changed:

| ID | Task | Start | Finish | Duration | Complete | Total float | Other |
| --- | --- | --- | --- | --- | --- | --- | --- |
| 1 | **F0009 - Programa Marabá** |  | 2026-07-24 → 2026-07-28 (+4d) | 61d → 63d | 62% → 63% |  |  |
| 10 | **Área 0305 - Hot Blast Stoves** |  | 2026-07-24 → 2026-07-28 (+4d) | 61d → 63d | 62% → 63% |  |  |
| 67 | **Mecânica** |  | 2026-07-21 → 2026-07-28 (+7d) | 43.75d → 49d |  | 3.25d → 0d |  |
| 88 | **AG-F0009-0305-MB-L-00001** | 2026-07-13 → 2026-07-20 (+7d) | 2026-07-21 → 2026-07-27 (+6d) |  |  | 3.25d → 1d |  |
| 89 | Emissão inicial | 2026-07-13 → 2026-07-20 (+7d) | 2026-07-16 → 2026-07-22 (+6d) |  |  | 3.25d → 1d | constraint finish no earlier than 2026-06-26 → finish no earlier than 2026-07-22 |
| 90 | Análise Tecnored | 2026-07-16 → 2026-07-23 (+7d) | 2026-07-17 → 2026-07-23 (+6d) |  |  | 3.25d → 1d |  |
| 91 | Atendimento de comentários | 2026-07-17 → 2026-07-24 (+7d) | 2026-07-20 → 2026-07-24 (+4d) |  |  | 3.25d → 1d |  |
| 92 | Aprovação | 2026-07-20 → 2026-07-27 (+7d) | 2026-07-21 → 2026-07-27 (+6d) |  |  | 3.25d → 1d |  |
| 93 | **AG-F0009-0305-MB-L-00002** | 2026-07-13 → 2026-07-20 (+7d) | 2026-07-21 → 2026-07-27 (+6d) |  |  | 3.25d → 1d |  |
| 94 | Emissão inicial | 2026-07-13 → 2026-07-20 (+7d) | 2026-07-16 → 2026-07-22 (+6d) |  |  | 3.25d → 1d | constraint none → finish no earlier than 2026-07-22 |
| 95 | Análise Tecnored | 2026-07-16 → 2026-07-23 (+7d) | 2026-07-17 → 2026-07-23 (+6d) |  |  | 3.25d → 1d |  |
| 96 | Atendimento de comentários | 2026-07-17 → 2026-07-24 (+7d) | 2026-07-20 → 2026-07-24 (+4d) |  |  | 3.25d → 1d |  |
| 97 | Aprovação | 2026-07-20 → 2026-07-27 (+7d) | 2026-07-21 → 2026-07-27 (+6d) |  |  | 3.25d → 1d |  |
| 98 | **AG-F0009-0305-MB-L-00003** | 2026-07-13 → 2026-07-20 (+7d) | 2026-07-21 → 2026-07-27 (+6d) |  |  | 3.25d → 1d |  |
| 99 | Emissão inicial | 2026-07-13 → 2026-07-20 (+7d) | 2026-07-16 → 2026-07-22 (+6d) |  |  | 3.25d → 1d | constraint none → finish no earlier than 2026-07-22 |
| 100 | Análise Tecnored | 2026-07-16 → 2026-07-23 (+7d) | 2026-07-17 → 2026-07-23 (+6d) |  |  | 3.25d → 1d |  |
| 101 | Atendimento de comentários | 2026-07-17 → 2026-07-24 (+7d) | 2026-07-20 → 2026-07-24 (+4d) |  |  | 3.25d → 1d |  |
| 102 | Aprovação | 2026-07-20 → 2026-07-27 (+7d) | 2026-07-21 → 2026-07-27 (+6d) |  |  | 3.25d → 1d |  |
| 103 | **AG-F0009-0305-MB-L-00004** | 2026-07-13 → 2026-07-20 (+7d) | 2026-07-21 → 2026-07-27 (+6d) |  |  | 3.25d → 1d |  |
| 104 | Emissão inicial | 2026-07-13 → 2026-07-20 (+7d) | 2026-07-16 → 2026-07-22 (+6d) |  |  | 3.25d → 1d | constraint none → finish no earlier than 2026-07-22 |
| 105 | Análise Tecnored | 2026-07-16 → 2026-07-23 (+7d) | 2026-07-17 → 2026-07-23 (+6d) |  |  | 3.25d → 1d |  |
| 106 | Atendimento de comentários | 2026-07-17 → 2026-07-24 (+7d) | 2026-07-20 → 2026-07-24 (+4d) |  |  | 3.25d → 1d |  |
| 107 | Aprovação | 2026-07-20 → 2026-07-27 (+7d) | 2026-07-21 → 2026-07-27 (+6d) |  |  | 3.25d → 1d |  |
| 108 | **AG-F0009-0305-MB-L-00005** | 2026-07-13 → 2026-07-20 (+7d) | 2026-07-21 → 2026-07-27 (+6d) |  |  | 3.25d → 1d |  |
| 109 | Emissão inicial | 2026-07-13 → 2026-07-20 (+7d) | 2026-07-16 → 2026-07-22 (+6d) |  |  | 3.25d → 1d | constraint none → finish no earlier than 2026-07-22 |
| 110 | Análise Tecnored | 2026-07-16 → 2026-07-23 (+7d) | 2026-07-17 → 2026-07-23 (+6d) |  |  | 3.25d → 1d |  |
| 111 | Atendimento de comentários | 2026-07-17 → 2026-07-24 (+7d) | 2026-07-20 → 2026-07-24 (+4d) |  |  | 3.25d → 1d |  |
| 112 | Aprovação | 2026-07-20 → 2026-07-27 (+7d) | 2026-07-21 → 2026-07-27 (+6d) |  |  | 3.25d → 1d |  |
| 113 | **AG-F0009-0305-MB-L-00006** | 2026-07-13 → 2026-07-20 (+7d) | 2026-07-21 → 2026-07-27 (+6d) |  |  | 3.25d → 1d |  |
| 114 | Emissão inicial | 2026-07-13 → 2026-07-20 (+7d) | 2026-07-16 → 2026-07-22 (+6d) |  |  | 3.25d → 1d | constraint none → finish no earlier than 2026-07-22 |
| 115 | Análise Tecnored | 2026-07-16 → 2026-07-23 (+7d) | 2026-07-17 → 2026-07-23 (+6d) |  |  | 3.25d → 1d |  |
| 116 | Atendimento de comentários | 2026-07-17 → 2026-07-24 (+7d) | 2026-07-20 → 2026-07-24 (+4d) |  |  | 3.25d → 1d |  |
| 117 | Aprovação | 2026-07-20 → 2026-07-27 (+7d) | 2026-07-21 → 2026-07-27 (+6d) |  |  | 3.25d → 1d |  |
| 118 | **AG-F0009-0305-MB-L-00007** | 2026-07-13 → 2026-07-20 (+7d) | 2026-07-21 → 2026-07-27 (+6d) |  |  | 3.25d → 1d |  |
| 119 | Emissão inicial | 2026-07-13 → 2026-07-20 (+7d) | 2026-07-16 → 2026-07-22 (+6d) |  |  | 3.25d → 1d | constraint none → finish no earlier than 2026-07-22 |
| 120 | Análise Tecnored | 2026-07-16 → 2026-07-23 (+7d) | 2026-07-17 → 2026-07-23 (+6d) |  |  | 3.25d → 1d |  |
| 121 | Atendimento de comentários | 2026-07-17 → 2026-07-24 (+7d) | 2026-07-20 → 2026-07-24 (+4d) |  |  | 3.25d → 1d |  |
| 122 | Aprovação | 2026-07-20 → 2026-07-27 (+7d) | 2026-07-21 → 2026-07-27 (+6d) |  |  | 3.25d → 1d |  |
| 123 | **AG-F0009-0305-MB-L-00008** | 2026-07-13 → 2026-07-20 (+7d) | 2026-07-21 → 2026-07-27 (+6d) |  |  | 3.25d → 1d |  |
| 124 | Emissão inicial | 2026-07-13 → 2026-07-20 (+7d) | 2026-07-16 → 2026-07-22 (+6d) |  |  | 3.25d → 1d | constraint none → finish no earlier than 2026-07-22 |
| 125 | Análise Tecnored | 2026-07-16 → 2026-07-23 (+7d) | 2026-07-17 → 2026-07-23 (+6d) |  |  | 3.25d → 1d |  |
| 126 | Atendimento de comentários | 2026-07-17 → 2026-07-24 (+7d) | 2026-07-20 → 2026-07-24 (+4d) |  |  | 3.25d → 1d |  |
| 127 | Aprovação | 2026-07-20 → 2026-07-27 (+7d) | 2026-07-21 → 2026-07-27 (+6d) |  |  | 3.25d → 1d |  |
| 128 | **AG-F0009-0305-MB-L-00009** | 2026-07-13 → 2026-07-20 (+7d) | 2026-07-21 → 2026-07-27 (+6d) |  |  | 3.25d → 1d |  |
| 129 | Emissão inicial | 2026-07-13 → 2026-07-20 (+7d) | 2026-07-16 → 2026-07-22 (+6d) |  |  | 3.25d → 1d | constraint none → finish no earlier than 2026-07-22 |
| 130 | Análise Tecnored | 2026-07-16 → 2026-07-23 (+7d) | 2026-07-17 → 2026-07-23 (+6d) |  |  | 3.25d → 1d |  |
| 131 | Atendimento de comentários | 2026-07-17 → 2026-07-24 (+7d) | 2026-07-20 → 2026-07-24 (+4d) |  |  | 3.25d → 1d |  |
| 132 | Aprovação | 2026-07-20 → 2026-07-27 (+7d) | 2026-07-21 → 2026-07-27 (+6d) |  |  | 3.25d → 1d |  |
| 188 | **FD-F0009-0305-MB-M-00001** | 2026-06-19 → 2026-07-20 (+31d) | 2026-06-29 → 2026-07-28 (+29d) |  |  | 17d → 0d |  |
| 189 | Emissão inicial | 2026-06-19 → 2026-07-20 (+31d) | 2026-06-23 → 2026-07-22 (+29d) |  |  | 17d → 0d | constraint none → finish no earlier than 2026-07-22 |
| 190 | Análise Tecnored | 2026-06-24 → 2026-07-23 (+29d) | 2026-06-24 → 2026-07-23 (+29d) |  |  | 17d → 0d |  |
| 191 | Atendimento de comentários | 2026-06-25 → 2026-07-24 (+29d) | 2026-06-26 → 2026-07-27 (+31d) |  |  | 17d → 0d |  |
| 192 | Aprovação | 2026-06-29 → 2026-07-28 (+29d) | 2026-06-29 → 2026-07-28 (+29d) |  |  | 17d → 0d |  |
| 198 | **FD-F0009-0305-MB-M-00003** | 2026-06-19 → 2026-07-20 (+31d) | 2026-06-29 → 2026-07-28 (+29d) |  |  | 17d → 0d |  |
| 199 | Emissão inicial | 2026-06-19 → 2026-07-20 (+31d) | 2026-06-23 → 2026-07-22 (+29d) |  |  | 17d → 0d | constraint none → finish no earlier than 2026-07-22 |
| 200 | Análise Tecnored | 2026-06-24 → 2026-07-23 (+29d) | 2026-06-24 → 2026-07-23 (+29d) |  |  | 17d → 0d |  |
| 201 | Atendimento de comentários | 2026-06-25 → 2026-07-24 (+29d) | 2026-06-26 → 2026-07-27 (+31d) |  |  | 17d → 0d |  |
| 202 | Aprovação | 2026-06-29 → 2026-07-28 (+29d) | 2026-06-29 → 2026-07-28 (+29d) |  |  | 17d → 0d |  |
| 203 | **Tubulação/Utilidades** |  |  |  | 41% → 44% | 3d → 5d |  |
| 234 | **PQ-F0009-0305-MB-T-00001** | 2026-07-13 A |  |  | 0% → 43% | 3d → 5d |  |
| 235 | Emissão inicial | 2026-07-13 A | 2026-07-15 A |  | 0% → 100% | 3d → none |  |
| 324 | **Estrutura metálica** | 2026-07-03 A → 2026-07-06 A (+3d) | 2026-07-24 → 2026-07-28 (+4d) | 13.75d → 15d | 6% → 10% | 0.25d → 0d |  |
| 335 | **PQ-F0009-0305-MB-S-00001** | 2026-07-13 A |  |  | 0% → 50% | 3.25d → 5.25d |  |
| 336 | Emissão inicial | 2026-07-13 A | 2026-07-16 A |  | 0% → 100% | 3.25d → none |  |
| 340 | **LM-F0009-0305-MB-S-00001** | 2026-07-16 A |  |  | 0% → 40% | 1.25d → 3.25d |  |
| 341 | Emissão inicial | 2026-07-16 A | 2026-07-20 A |  | 0% → 100% | 1.25d → none |  |
| 350 | **AG-F0009-0305-MB-S-00001** | 2026-07-15 → 2026-07-20 (+5d) | 2026-07-24 → 2026-07-28 (+4d) |  |  | 0.25d → 0d |  |
| 351 | Emissão inicial | 2026-07-15 → 2026-07-20 (+5d) | 2026-07-21 → 2026-07-23 (+2d) |  |  | 0.25d → 0d | constraint none → finish no earlier than 2026-07-23 |
| 352 | Análise Tecnored | 2026-07-21 → 2026-07-24 (+3d) | 2026-07-22 → 2026-07-24 (+2d) |  |  | 0.25d → 0d |  |
| 353 | Atendimento de comentários | 2026-07-22 → 2026-07-27 (+5d) | 2026-07-23 → 2026-07-27 (+4d) |  |  | 0.25d → 0d |  |

| ID | Task | Start | Finish | Duration | Complete | Total float | Other |
| --- | --- | --- | --- | --- | --- | --- | --- |
| 354 | Aprovação | 2026-07-23 → 2026-07-28 (+5d) | 2026-07-24 → 2026-07-28 (+4d) |  |  | 0.25d → 0d |  |
| 355 | **AG-F0009-0305-MB-S-00002** | 2026-07-15 → 2026-07-20 (+5d) | 2026-07-24 → 2026-07-28 (+4d) |  |  | 0.25d → 0d |  |
| 356 | Emissão inicial | 2026-07-15 → 2026-07-20 (+5d) | 2026-07-21 → 2026-07-23 (+2d) |  |  | 0.25d → 0d | constraint none → finish no earlier than 2026-07-23 |
| 357 | Análise Tecnored | 2026-07-21 → 2026-07-24 (+3d) | 2026-07-22 → 2026-07-24 (+2d) |  |  | 0.25d → 0d |  |
| 358 | Atendimento de comentários | 2026-07-22 → 2026-07-27 (+5d) | 2026-07-23 → 2026-07-27 (+4d) |  |  | 0.25d → 0d |  |
| 359 | Aprovação | 2026-07-23 → 2026-07-28 (+5d) | 2026-07-24 → 2026-07-28 (+4d) |  |  | 0.25d → 0d |  |
| 360 | **AG-F0009-0305-MB-S-00003** | 2026-07-15 → 2026-07-20 (+5d) | 2026-07-24 → 2026-07-28 (+4d) |  |  | 0.25d → 0d |  |
| 361 | Emissão inicial | 2026-07-15 → 2026-07-20 (+5d) | 2026-07-21 → 2026-07-23 (+2d) |  |  | 0.25d → 0d | constraint none → finish no earlier than 2026-07-23 |
| 362 | Análise Tecnored | 2026-07-21 → 2026-07-24 (+3d) | 2026-07-22 → 2026-07-24 (+2d) |  |  | 0.25d → 0d |  |
| 363 | Atendimento de comentários | 2026-07-22 → 2026-07-27 (+5d) | 2026-07-23 → 2026-07-27 (+4d) |  |  | 0.25d → 0d |  |
| 364 | Aprovação | 2026-07-23 → 2026-07-28 (+5d) | 2026-07-24 → 2026-07-28 (+4d) |  |  | 0.25d → 0d |  |
| 365 | **AG-F0009-0305-MB-S-00004** | 2026-07-15 → 2026-07-20 (+5d) | 2026-07-24 → 2026-07-28 (+4d) |  |  | 0.25d → 0d |  |
| 366 | Emissão inicial | 2026-07-15 → 2026-07-20 (+5d) | 2026-07-21 → 2026-07-23 (+2d) |  |  | 0.25d → 0d | constraint finish no earlier than 2026-07-02 → finish no earlier than 2026-07-23 |
| 367 | Análise Tecnored | 2026-07-21 → 2026-07-24 (+3d) | 2026-07-22 → 2026-07-24 (+2d) |  |  | 0.25d → 0d |  |
| 368 | Atendimento de comentários | 2026-07-22 → 2026-07-27 (+5d) | 2026-07-23 → 2026-07-27 (+4d) |  |  | 0.25d → 0d |  |
| 369 | Aprovação | 2026-07-23 → 2026-07-28 (+5d) | 2026-07-24 → 2026-07-28 (+4d) |  |  | 0.25d → 0d |  |
| 370 | **AG-F0009-0305-MB-S-00005** | 2026-07-15 → 2026-07-20 (+5d) | 2026-07-24 → 2026-07-28 (+4d) |  |  | 0.25d → 0d |  |
| 371 | Emissão inicial | 2026-07-15 → 2026-07-20 (+5d) | 2026-07-21 → 2026-07-23 (+2d) |  |  | 0.25d → 0d | constraint none → finish no earlier than 2026-07-23 |
| 372 | Análise Tecnored | 2026-07-21 → 2026-07-24 (+3d) | 2026-07-22 → 2026-07-24 (+2d) |  |  | 0.25d → 0d |  |
| 373 | Atendimento de comentários | 2026-07-22 → 2026-07-27 (+5d) | 2026-07-23 → 2026-07-27 (+4d) |  |  | 0.25d → 0d |  |
| 374 | Aprovação | 2026-07-23 → 2026-07-28 (+5d) | 2026-07-24 → 2026-07-28 (+4d) |  |  | 0.25d → 0d |  |
| 375 | **AG-F0009-0305-MB-S-00006** | 2026-07-15 → 2026-07-20 (+5d) | 2026-07-24 → 2026-07-28 (+4d) |  |  | 0.25d → 0d |  |
| 376 | Emissão inicial | 2026-07-15 → 2026-07-20 (+5d) | 2026-07-21 → 2026-07-23 (+2d) |  |  | 0.25d → 0d | constraint none → finish no earlier than 2026-07-23 |
| 377 | Análise Tecnored | 2026-07-21 → 2026-07-24 (+3d) | 2026-07-22 → 2026-07-24 (+2d) |  |  | 0.25d → 0d |  |
| 378 | Atendimento de comentários | 2026-07-22 → 2026-07-27 (+5d) | 2026-07-23 → 2026-07-27 (+4d) |  |  | 0.25d → 0d |  |
| 379 | Aprovação | 2026-07-23 → 2026-07-28 (+5d) | 2026-07-24 → 2026-07-28 (+4d) |  |  | 0.25d → 0d |  |
| 380 | **AG-F0009-0305-MB-S-00007** | 2026-07-15 → 2026-07-20 (+5d) | 2026-07-24 → 2026-07-28 (+4d) |  |  | 0.25d → 0d |  |
| 381 | Emissão inicial | 2026-07-15 → 2026-07-20 (+5d) | 2026-07-21 → 2026-07-23 (+2d) |  |  | 0.25d → 0d | constraint none → finish no earlier than 2026-07-23 |
| 382 | Análise Tecnored | 2026-07-21 → 2026-07-24 (+3d) | 2026-07-22 → 2026-07-24 (+2d) |  |  | 0.25d → 0d |  |
| 383 | Atendimento de comentários | 2026-07-22 → 2026-07-27 (+5d) | 2026-07-23 → 2026-07-27 (+4d) |  |  | 0.25d → 0d |  |
| 384 | Aprovação | 2026-07-23 → 2026-07-28 (+5d) | 2026-07-24 → 2026-07-28 (+4d) |  |  | 0.25d → 0d |  |
| 385 | **AG-F0009-0305-MB-S-00008** | 2026-07-15 → 2026-07-20 (+5d) | 2026-07-24 → 2026-07-28 (+4d) |  |  | 0.25d → 0d |  |
| 386 | Emissão inicial | 2026-07-15 → 2026-07-20 (+5d) | 2026-07-21 → 2026-07-23 (+2d) |  |  | 0.25d → 0d | constraint none → finish no earlier than 2026-07-23 |
| 387 | Análise Tecnored | 2026-07-21 → 2026-07-24 (+3d) | 2026-07-22 → 2026-07-24 (+2d) |  |  | 0.25d → 0d |  |
| 388 | Atendimento de comentários | 2026-07-22 → 2026-07-27 (+5d) | 2026-07-23 → 2026-07-27 (+4d) |  |  | 0.25d → 0d |  |
| 389 | Aprovação | 2026-07-23 → 2026-07-28 (+5d) | 2026-07-24 → 2026-07-28 (+4d) |  |  | 0.25d → 0d |  |
| 390 | **AG-F0009-0305-MB-S-00009** | 2026-07-15 → 2026-07-20 (+5d) | 2026-07-24 → 2026-07-28 (+4d) |  |  | 0.25d → 0d |  |
| 391 | Emissão inicial | 2026-07-15 → 2026-07-20 (+5d) | 2026-07-21 → 2026-07-23 (+2d) |  |  | 0.25d → 0d | constraint none → finish no earlier than 2026-07-23 |
| 392 | Análise Tecnored | 2026-07-21 → 2026-07-24 (+3d) | 2026-07-22 → 2026-07-24 (+2d) |  |  | 0.25d → 0d |  |
| 393 | Atendimento de comentários | 2026-07-22 → 2026-07-27 (+5d) | 2026-07-23 → 2026-07-27 (+4d) |  |  | 0.25d → 0d |  |
| 394 | Aprovação | 2026-07-23 → 2026-07-28 (+5d) | 2026-07-24 → 2026-07-28 (+4d) |  |  | 0.25d → 0d |  |
| 395 | **AG-F0009-0305-MB-S-00010** | 2026-07-15 → 2026-07-20 (+5d) | 2026-07-24 → 2026-07-28 (+4d) |  |  | 0.25d → 0d |  |
| 396 | Emissão inicial | 2026-07-15 → 2026-07-20 (+5d) | 2026-07-21 → 2026-07-23 (+2d) |  |  | 0.25d → 0d | constraint none → finish no earlier than 2026-07-23 |
| 397 | Análise Tecnored | 2026-07-21 → 2026-07-24 (+3d) | 2026-07-22 → 2026-07-24 (+2d) |  |  | 0.25d → 0d |  |
| 398 | Atendimento de comentários | 2026-07-22 → 2026-07-27 (+5d) | 2026-07-23 → 2026-07-27 (+4d) |  |  | 0.25d → 0d |  |
| 399 | Aprovação | 2026-07-23 → 2026-07-28 (+5d) | 2026-07-24 → 2026-07-28 (+4d) |  |  | 0.25d → 0d |  |
| 400 | **PL-F0009-0305-MB-S-00001** | 2026-07-03 → 2026-07-13 (+10d) | 2026-07-16 → 2026-07-28 (+12d) | 8d → 12d |  | 6d → 0d |  |
| 401 | Emissão inicial | 2026-07-03 → 2026-07-13 (+10d) | 2026-07-13 → 2026-07-23 (+10d) | 5d → 9d |  | 6d → 0d | constraint start no earlier than 2026-07-03 → start no earlier than 2026-07-13 |
| 402 | Análise Tecnored | 2026-07-14 → 2026-07-24 (+10d) | 2026-07-14 → 2026-07-24 (+10d) |  |  | 6d → 0d |  |
| 403 | Atendimento de comentários | 2026-07-15 → 2026-07-27 (+12d) | 2026-07-15 → 2026-07-27 (+12d) |  |  | 6d → 0d |  |
| 404 | Aprovação | 2026-07-16 → 2026-07-28 (+12d) | 2026-07-16 → 2026-07-28 (+12d) |  |  | 6d → 0d |  |
| 471 | **Automação e instrumentação** |  |  |  | 80% → 81% | 0d → 2d |  |
| 542 | **DI-F0009-0305-MB-J-00001** |  |  |  | 64% → 82% | 5d → 7d |  |
| 544 | Análise Tecnored | 2026-07-14 A | 2026-07-14 A |  | 0% → 100% | 5d → none |  |
| 545 | Atendimento de comentários | 2026-07-15 A |  |  | 0% → 50% | 5d → 7d |  |
| 557 | **LM-F0009-0305-MB-J-00001** |  |  |  | 57% → 79% | 0d → 2d |  |
| 559 | Análise Tecnored | 2026-07-22 A | 2026-07-22 A |  | 0% → 100% | 0d → none |  |
| 560 | Atendimento de comentários | 2026-07-23 A |  |  | 0% → 50% | 0d → 2d |  |
| 692 | **LB-F0009-0305-MB-J-00001** |  |  |  | 28% → 56% | 5d → 7d |  |
| 693 | Emissão inicial |  | 2026-07-13 A |  | 50% → 100% | 5d → none |  |
| 702 | **DT-F0009-0305-MB-J-00001** |  |  |  | 50% → 56% | 7d → 9d |  |
| 703 | Emissão inicial |  | 2026-07-07 A |  | 90% → 100% | 7d → none |  |

## Version 10 (data date 2026-07-24, saved 2026-07-24, file CR-F0009-0305-MB-F-00001 24072026.mpp)

Note of the change: Adiciona funil documental na planta e melhorias de layout

Last finish stays 2026-09-22. Complete tasks 135 → 149.

Added:

| ID | Task | Duration | Start | Finish | Predecessors | Constraint |
| --- | --- | --- | --- | --- | --- | --- |
| 401 | Emissão inicial | 9d | 2026-07-13 | 2026-07-23 | 346FF | start no earlier than 2026-07-13 |
| 402 | Análise Tecnored | 1d | 2026-07-24 | 2026-07-24 | 401 |  |
| 403 | Atendimento de comentários | 1d | 2026-07-27 | 2026-07-27 | 402 |  |
| 404 | Aprovação | 1d | 2026-07-28 | 2026-07-28 | 403 |  |
| 405 | **PL-F0009-0305-MB-S-00002** | 12d | 2026-07-13 | 2026-07-28 |  |  |

Changed:

| ID | Task | Start | Finish | Complete | Total float |
| --- | --- | --- | --- | --- | --- |
| 1 | **F0009 - Programa Marabá** |  |  | 63% → 66% |  |
| 10 | **Área 0305 - Hot Blast Stoves** |  |  | 63% → 66% |  |
| 51 | **Processo** |  |  | 60% → 80% |  |
| 62 | **FG-F0009-0305-MB-P-00001** |  |  | 60% → 80% |  |
| 65 | Atendimento de comentários |  | 2026-07-01 A | 50% → 100% | 11d → none |
| 324 | **Estrutura metálica** |  |  | 10% → 13% |  |
| 350 | **AG-F0009-0305-MB-S-00001** | 2026-07-20 A |  | 0% → 57% |  |
| 351 | Emissão inicial | 2026-07-20 A | 2026-07-23 A | 0% → 100% | 0d → none |
| 410 | **Elétrica** |  |  | 73% → 75% |  |
| 431 | **LR-F0009-0305-MB-E-00001** |  |  | 85% → 90% |  |
| 434 | Atendimento de comentários |  | 2026-06-24 A | 50% → 100% | 22d → none |
| 476 | **Automação e instrumentação** |  |  | 81% → 86% |  |
| 482 | **LI-F0009-0305-MB-J-00001** |  |  | 56% → 78% |  |
| 484 | Análise Tecnored | 2026-07-08 A | 2026-07-08 A | 0% → 100% | 9d → none |
| 485 | Atendimento de comentários | 2026-07-13 A |  | 0% → 50% |  |
| 487 | **LE-F0009-0305-MB-J-00001** |  |  | 75% → 88% |  |
| 490 | Atendimento de comentários |  | 2026-07-08 A | 50% → 100% | 11d → none |
| 507 | **PQ-F0009-0305-MB-J-00001** |  |  | 63% → 75% |  |
| 509 | Análise Tecnored | 2026-07-14 A | 2026-07-14 A | 0% → 100% | 8d → none |
| 522 | **FG-F0009-0305-MB-J-00003** |  |  | 74% → 95% |  |
| 525 | Atendimento de comentários |  | 2026-07-02 A | 50% → 100% | 15d → none |
| 527 | **AG-F0009-0305-MB-J-00001** |  |  | 63% → 88% |  |
| 530 | Atendimento de comentários | 2026-06-29 A | 2026-06-30 A | 0% → 100% | 17d → none |
| 537 | **AG-F0009-0305-MB-J-00003** |  |  | 50% → 86% |  |
| 539 | Análise Tecnored |  | 2026-06-29 A | 50% → 100% | 16d → none |
| 540 | Atendimento de comentários | 2026-06-30 A | 2026-07-01 A | 0% → 100% | 16d → none |
| 542 | **AG-F0009-0305-MB-J-00004** |  |  | 56% → 88% |  |
| 544 | Análise Tecnored |  | 2026-06-25 A | 50% → 100% | 18d → none |
| 545 | Atendimento de comentários | 2026-06-26 A | 2026-06-29 A | 0% → 100% | 18d → none |
| 572 | **FD-F0009-0305-MB-J-00001** |  |  | 87% → 90% |  |
| 575 | Atendimento de comentários | 2026-07-06 A |  | 0% → 50% |  |
| 577 | **FD-F0009-0305-MB-J-00002** |  |  | 87% → 90% |  |
| 580 | Atendimento de comentários | 2026-07-06 A |  | 0% → 50% |  |
| 582 | **FD-F0009-0305-MB-J-00003** |  |  | 87% → 90% |  |
| 585 | Atendimento de comentários | 2026-07-06 A |  | 0% → 50% |  |
| 587 | **FD-F0009-0305-MB-J-00004** |  |  | 87% → 90% |  |
| 590 | Atendimento de comentários | 2026-07-06 A |  | 0% → 50% |  |
| 592 | **FD-F0009-0305-MB-J-00005** |  |  | 87% → 90% |  |
| 595 | Atendimento de comentários | 2026-07-06 A |  | 0% → 50% |  |
| 597 | **FD-F0009-0305-MB-J-00006** |  |  | 87% → 90% |  |
| 600 | Atendimento de comentários | 2026-07-06 A |  | 0% → 50% |  |
| 602 | **FD-F0009-0305-MB-J-00007** |  |  | 87% → 90% |  |
| 605 | Atendimento de comentários | 2026-07-06 A |  | 0% → 50% |  |
| 607 | **FD-F0009-0305-MB-J-00008** |  |  | 87% → 90% |  |
| 610 | Atendimento de comentários | 2026-07-06 A |  | 0% → 50% |  |
| 612 | **FD-F0009-0305-MB-J-00009** |  |  | 87% → 90% |  |
| 615 | Atendimento de comentários | 2026-07-06 A |  | 0% → 50% |  |
| 617 | **FD-F0009-0305-MB-J-00010** |  |  | 87% → 90% |  |
| 620 | Atendimento de comentários | 2026-07-06 A |  | 0% → 50% |  |
| 622 | **FD-F0009-0305-MB-J-00011** |  |  | 87% → 90% |  |
| 625 | Atendimento de comentários | 2026-07-06 A |  | 0% → 50% |  |
| 627 | **FD-F0009-0305-MB-J-00012** |  |  | 87% → 90% |  |
| 630 | Atendimento de comentários | 2026-07-06 A |  | 0% → 50% |  |
| 632 | **FD-F0009-0305-MB-J-00013** |  |  | 87% → 90% |  |
| 635 | Atendimento de comentários | 2026-07-06 A |  | 0% → 50% |  |
| 637 | **FD-F0009-0305-MB-J-00014** |  |  | 87% → 90% |  |
| 640 | Atendimento de comentários | 2026-07-06 A |  | 0% → 50% |  |
| 642 | **FD-F0009-0305-MB-J-00015** |  |  | 87% → 90% |  |
| 645 | Atendimento de comentários | 2026-07-06 A |  | 0% → 50% |  |
| 647 | **FD-F0009-0305-MB-J-00016** |  |  | 87% → 90% |  |
| 650 | Atendimento de comentários | 2026-07-06 A |  | 0% → 50% |  |
| 652 | **FD-F0009-0305-MB-J-00017** |  |  | 87% → 90% |  |
| 655 | Atendimento de comentários | 2026-07-06 A |  | 0% → 50% |  |
| 657 | **FD-F0009-0305-MB-J-00018** |  |  | 87% → 90% |  |
| 660 | Atendimento de comentários | 2026-07-06 A |  | 0% → 50% |  |
| 662 | **FD-F0009-0305-MB-J-00019** |  |  | 87% → 90% |  |
| 665 | Atendimento de comentários | 2026-07-06 A |  | 0% → 50% |  |
| 667 | **FD-F0009-0305-MB-J-00020** |  |  | 87% → 90% |  |
| 670 | Atendimento de comentários | 2026-07-06 A |  | 0% → 50% |  |
| 672 | **FD-F0009-0305-MB-J-00021** |  |  | 87% → 90% |  |

| ID | Task | Start | Finish | Complete | Total float |
| --- | --- | --- | --- | --- | --- |
| 675 | Atendimento de comentários | 2026-07-06 A |  | 0% → 50% |  |
| 677 | **FD-F0009-0305-MB-J-00022** |  |  | 87% → 90% |  |
| 680 | Atendimento de comentários | 2026-07-06 A |  | 0% → 50% |  |
| 682 | **FD-F0009-0305-MB-J-00023** |  |  | 87% → 90% |  |
| 685 | Atendimento de comentários | 2026-07-06 A |  | 0% → 50% |  |
| 687 | **FD-F0009-0305-MB-J-00024** |  |  | 87% → 90% |  |
| 690 | Atendimento de comentários | 2026-07-06 A |  | 0% → 50% |  |
| 692 | **FD-F0009-0305-MB-J-00025** |  |  | 80% → 85% |  |
| 695 | Atendimento de comentários | 2026-07-06 A |  | 0% → 50% |  |
| 702 | **RE-F0009-0305-MB-J-00001** |  |  | 50% → 63% |  |
| 704 | Análise Tecnored | 2026-07-08 A | 2026-07-08 A | 0% → 100% | 9d → none |
| 707 | **DT-F0009-0305-MB-J-00001** |  |  | 56% → 67% |  |
| 709 | Análise Tecnored | 2026-07-08 A | 2026-07-08 A | 0% → 100% | 9d → none |
