# CR-F0009-0305-MB-F-00001

How a schedule from MS Project changed from version to version. A marks actual dates.

## Version 1 (data date 2026-05-28, saved 2026-06-02, file CR-F0009-0305-MB-F-00001 02062026.mpp)

Note of the change: Primeira versao dashboard

| ID | WBS | Task | Duration | Start | Finish | Predecessors | Complete | Total float | Constraint |
| --- | --- | --- | --- | --- | --- | --- | --- | --- | --- |
| 1 | 1 | **F0009 - Programa Marabá** | 51d | 2026-04-27 A | 2026-07-08 |  | 5% | 0d |  |
| 2 | 1.1 | **Área 0000 -Documento geral** | 12d | 2026-05-19 A | 2026-06-05 |  |  | 0d |  |
| 3 | 1.1.1 | **LF-F0009-0305-MB-F-00001** | 7d | 2026-07-01 | 2026-07-09 |  |  | -1d |  |
| 4 |  | Emissão inicial | 3d | 2026-07-01 | 2026-07-03 | 16FS+45d |  | -1d |  |
| 5 |  | Análise Tecnored | 1d | 2026-07-06 | 2026-07-06 | 4 |  | -1d |  |
| 6 |  | Atendimento de comentários | 2d | 2026-07-07 | 2026-07-08 | 5 |  | -1d |  |
| 7 |  | Aprovação | 1d | 2026-07-09 | 2026-07-09 | 6 |  | -1d |  |
| 8 | 1.1.2 | **Marcos** | 12d | 2026-05-19 A | 2026-06-05 |  |  | 0d |  |
| 9 |  | Critério de projeto Processo | 0d | 2026-06-05 | 2026-06-05 |  |  |  |  |
| 10 |  | Critério de projeto Mecânica | 0d | 2026-05-19 A | 2026-05-19 A |  | 100% |  |  |
| 11 |  | Critério de projeto Tubulação | 0d | 2026-05-22 A | 2026-05-22 A |  | 100% |  |  |
| 12 |  | Critério de projeto Elétrica | 0d | 2026-06-05 | 2026-06-05 |  |  |  |  |
| 13 |  | Critério de projeto Automação | 0d | 2026-06-05 A | 2026-06-05 |  | 75% |  |  |
| 14 |  | Critério de projeto Estrutura Metálica | 0d | 2026-06-05 | 2026-06-05 |  |  |  |  |
| 15 | 1.2 | **Área 0305 - Hot Blast Stoves** | 51d | 2026-04-27 A | 2026-07-08 |  | 5% | 0d |  |
| 16 |  | KOM - Início de projeto | 0d | 2026-04-27 A | 2026-04-27 A |  | 100% |  | start no earlier than 2026-04-27 |
| 17 | 1.2.2 | **Pendências** | 0d | 2026-04-29 A | 2026-04-29 A |  | 100% |  |  |
| 18 |  | Recebimento de dados de entrada | 0d | 2026-04-29 A | 2026-04-29 A |  | 100% |  |  |
| 19 | 1.2.3 | **Planejamento** | 25.4d | 2026-04-27 A | 2026-06-01 |  | 89% | 25.6d |  |
| 20 | 1.2.3.1 | **LD-F0009-0305-MB-F-00001** | 24d | 2026-04-27 A | 2026-05-28 |  | 91% | 27d |  |
| 21 |  | Emissão inicial | 3d | 2026-04-27 A | 2026-04-29 A | 16 | 100% |  |  |
| 22 |  | Análise Tecnored | 1d | 2026-04-30 A | 2026-04-30 A | 21 | 100% |  |  |
| 23 |  | Atendimento de comentários | 6d | 2026-05-06 A | 2026-05-13 A | 22FS+3d | 100% |  |  |
| 24 |  | Aprovação | 1d | 2026-05-28 | 2026-05-28 | 23FS+10d |  | 27d |  |
| 25 | 1.2.3.2 | **CR-F0009-0305-MB-F-00001** | 22.4d | 2026-04-30 A | 2026-06-01 |  | 86% | 25.6d |  |
| 26 |  | Emissão inicial | 3d | 2026-04-30 A | 2026-05-04 A | 21 | 100% |  |  |
| 27 |  | Análise Tecnored | 1d | 2026-05-05 A | 2026-05-05 A | 26 | 100% |  |  |
| 28 |  | Atendimento de comentários | 2d | 2026-05-13 A | 2026-05-18 A | 27FS+8d | 100% |  |  |
| 29 |  | Aprovação | 1d | 2026-05-29 | 2026-06-01 | 28FS+9d |  | 25.6d |  |
| 30 | 1.2.4 | **Coordenação** | 50d | 2026-04-27 A | 2026-07-07 |  | 16% | 1d |  |
| 31 | 1.2.4.1 | **RM-F0009-0305-MB-G-00001** | 7d | 2026-05-28 | 2026-06-09 |  |  | 1d |  |
| 32 |  | Emissão inicial | 3d | 2026-05-28 | 2026-06-01 | 16FS+23d |  | 1d |  |
| 33 |  | Análise Tecnored | 1d | 2026-06-02 | 2026-06-02 | 32 |  | 21d |  |
| 34 |  | Atendimento de comentários | 2d | 2026-06-03 | 2026-06-08 | 33 |  | 21d |  |
| 35 |  | Aprovação | 1d | 2026-06-09 | 2026-06-09 | 34 |  | 21d |  |
| 36 | 1.2.4.2 | **RM-F0009-0305MB-G-00002** | 7d | 2026-06-18 | 2026-06-26 |  |  | 1d |  |
| 37 |  | Emissão inicial | 3d | 2026-06-18 | 2026-06-22 | 32FS+10d |  | 1d |  |
| 38 |  | Análise Tecnored | 1d | 2026-06-23 | 2026-06-23 | 37 |  | 8d |  |
| 39 |  | Atendimento de comentários | 2d | 2026-06-24 | 2026-06-25 | 38 |  | 8d |  |
| 40 |  | Aprovação | 1d | 2026-06-26 | 2026-06-26 | 39 |  | 8d |  |
| 41 | 1.2.4.3 | **RL-F0009-0305-MB-G-00001** | 4d | 2026-07-02 | 2026-07-07 |  |  | 1d |  |
| 42 |  | Emissão inicial | 1d | 2026-07-02 | 2026-07-02 | 37FS+7d |  | 1d |  |
| 43 |  | Análise Tecnored | 1d | 2026-07-03 | 2026-07-03 | 42 |  | 1d |  |
| 44 |  | Atendimento de comentários | 1d | 2026-07-06 | 2026-07-06 | 43 |  | 1d |  |
| 45 |  | Aprovação | 1d | 2026-07-07 | 2026-07-07 | 44 |  | 1d |  |
| 46 | 1.2.4.4 | **LP-F0009-0305-MB-G-00001** | 37d | 2026-04-27 A | 2026-06-18 |  | 57% | 14d |  |
| 47 |  | Emissão inicial | 3d | 2026-04-27 A | 2026-04-29 A | 16 | 100% |  |  |
| 48 |  | Análise Tecnored | 1d | 2026-04-30 A | 2026-04-30 A | 47 | 100% |  |  |
| 49 |  | Atendimento de comentários | 2d | 2026-06-16 | 2026-06-17 | 48FS+30d |  | 14d |  |
| 50 |  | Aprovação | 1d | 2026-06-18 | 2026-06-18 | 49 |  | 14d |  |
| 51 | 1.2.5 | **Processo** | 10d | 2026-05-19 A | 2026-06-01 |  | 80% | 25d |  |
| 52 | 1.2.5.1 | **CP-F0009-0305-MB-P-00001** | 22d | 2026-05-11 | 2026-06-11 |  |  | 19d |  |
| 53 |  | Emissão inicial | 5d | 2026-05-11 | 2026-05-15 | 26FS+4d |  | 32d |  |
| 54 |  | Análise Tecnored | 1d | 2026-06-08 | 2026-06-08 | 53, 9 |  | 19d |  |
| 55 |  | Atendimento de comentários | 2d | 2026-06-09 | 2026-06-10 | 54 |  | 19d |  |
| 56 |  | Aprovação | 1d | 2026-06-11 | 2026-06-11 | 55 |  | 19d |  |
| 57 | 1.2.5.2 | **MD-F0009-0305-MB-P-00001** | 7d | 2026-06-19 | 2026-06-29 |  |  | 7d |  |
| 58 |  | Emissão inicial | 3d | 2026-06-19 | 2026-06-23 | 63FS+20d |  | 7d |  |
| 59 |  | Análise Tecnored | 1d | 2026-06-24 | 2026-06-24 | 58 |  | 7d |  |
| 60 |  | Atendimento de comentários | 2d | 2026-06-25 | 2026-06-26 | 59 |  | 7d |  |
| 61 |  | Aprovação | 1d | 2026-06-29 | 2026-06-29 | 60 |  | 7d |  |
| 62 | 1.2.5.3 | **FG-F0009-0305-MB-P-00001** | 10d | 2026-05-19 A | 2026-06-01 |  | 80% | 25d |  |
| 63 |  | Emissão inicial | 1d | 2026-05-19 A | 2026-05-19 A | 53FS+8d, 9 | 100% |  |  |
| 64 |  | Análise Tecnored | 1d | 2026-05-20 A | 2026-05-20 A | 63 | 100% |  |  |
| 65 |  | Atendimento de comentários | 2d | 2026-05-21 A | 2026-05-22 A | 64 | 100% |  |  |
| 66 |  | Aprovação | 1d | 2026-06-01 | 2026-06-01 | 65FS+5d |  | 25d |  |
| 67 | 1.2.6 | **Mecânica** | 30d | 2026-05-19 A | 2026-07-01 |  | 5% | 5d |  |
| 68 | 1.2.6.1 | **CP-F0009-0305-MB-M-00001** | 11d | 2026-05-08 | 2026-05-22 |  |  | 28d |  |
| 69 |  | Emissão inicial | 5d | 2026-05-08 | 2026-05-14 | 26FS+3d |  | 28d |  |
| 70 |  | Análise Tecnored | 1d | 2026-05-19 | 2026-05-19 | 69, 10 |  | 31d |  |

| ID | WBS | Task | Duration | Start | Finish | Predecessors | Complete | Total float |
| --- | --- | --- | --- | --- | --- | --- | --- | --- |
| 71 |  | Atendimento de comentários | 2d | 2026-05-20 | 2026-05-21 | 70 |  | 31d |
| 72 |  | Aprovação | 1d | 2026-05-22 | 2026-05-22 | 71 |  | 31d |
| 73 | 1.2.6.2 | **MD-F0009-0305-MB-M-00001** | 6d | 2026-06-02 | 2026-06-11 |  |  | 16d |
| 74 |  | Emissão inicial | 2d | 2026-06-02 | 2026-06-03 | 69, 81, 10 |  | 16d |
| 75 |  | Análise Tecnored | 1d | 2026-06-08 | 2026-06-08 | 74 |  | 19d |
| 76 |  | Atendimento de comentários | 2d | 2026-06-09 | 2026-06-10 | 75 |  | 19d |
| 77 |  | Aprovação | 1d | 2026-06-11 | 2026-06-11 | 76 |  | 19d |
| 78 | 1.2.6.3 | **LE-F0009-0305-MB-M-00001** | 6d | 2026-05-26 A | 2026-06-02 |  | 33% | 24d |
| 79 |  | Emissão inicial | 2d | 2026-05-26 A | 2026-05-27 A | 69, 10FS+5d | 100% |  |
| 80 |  | Análise Tecnored | 1d | 2026-05-28 | 2026-05-28 | 79 |  | 18d |
| 81 |  | Atendimento de comentários | 2d | 2026-05-29 | 2026-06-01 | 80 |  | 18d |
| 82 |  | Aprovação | 1d | 2026-06-02 | 2026-06-02 | 81 |  | 24d |
| 83 | 1.2.6.4 | **PQ-F0009-0305-MB-M-00001** | 7d | 2026-06-02 | 2026-06-12 |  |  | 18d |
| 84 |  | Emissão inicial | 3d | 2026-06-02 | 2026-06-08 | 74 |  | 18d |
| 85 |  | Análise Tecnored | 1d | 2026-06-09 | 2026-06-09 | 84 |  | 18d |
| 86 |  | Atendimento de comentários | 2d | 2026-06-10 | 2026-06-11 | 85 |  | 18d |
| 87 |  | Aprovação | 1d | 2026-06-12 | 2026-06-12 | 86 |  | 18d |
| 88 | 1.2.6.5 | **AG-F0009-0305-MB-L-00001** | 10d | 2026-06-18 | 2026-07-01 |  |  | 5d |
| 89 |  | Emissão inicial | 7d | 2026-06-18 | 2026-06-26 | 276 |  | 5d |
| 90 |  | Análise Tecnored | 1d | 2026-06-29 | 2026-06-29 | 89 |  | 5d |
| 91 |  | Atendimento de comentários | 1d | 2026-06-30 | 2026-06-30 | 90 |  | 5d |
| 92 |  | Aprovação | 1d | 2026-07-01 | 2026-07-01 | 91 |  | 5d |
| 93 | 1.2.6.6 | **AG-F0009-0305-MB-L-00002** | 10d | 2026-06-18 | 2026-07-01 |  |  | 5d |
| 94 |  | Emissão inicial | 7d | 2026-06-18 | 2026-06-26 | 276 |  | 5d |
| 95 |  | Análise Tecnored | 1d | 2026-06-29 | 2026-06-29 | 94 |  | 5d |
| 96 |  | Atendimento de comentários | 1d | 2026-06-30 | 2026-06-30 | 95 |  | 5d |
| 97 |  | Aprovação | 1d | 2026-07-01 | 2026-07-01 | 96 |  | 5d |
| 98 | 1.2.6.7 | **AG-F0009-0305-MB-L-00003** | 10d | 2026-06-18 | 2026-07-01 |  |  | 5d |
| 99 |  | Emissão inicial | 7d | 2026-06-18 | 2026-06-26 | 276 |  | 5d |
| 100 |  | Análise Tecnored | 1d | 2026-06-29 | 2026-06-29 | 99 |  | 5d |
| 101 |  | Atendimento de comentários | 1d | 2026-06-30 | 2026-06-30 | 100 |  | 5d |
| 102 |  | Aprovação | 1d | 2026-07-01 | 2026-07-01 | 101 |  | 5d |
| 103 | 1.2.6.8 | **AG-F0009-0305-MB-L-00004** | 10d | 2026-06-18 | 2026-07-01 |  |  | 5d |
| 104 |  | Emissão inicial | 7d | 2026-06-18 | 2026-06-26 | 276 |  | 5d |
| 105 |  | Análise Tecnored | 1d | 2026-06-29 | 2026-06-29 | 104 |  | 5d |
| 106 |  | Atendimento de comentários | 1d | 2026-06-30 | 2026-06-30 | 105 |  | 5d |
| 107 |  | Aprovação | 1d | 2026-07-01 | 2026-07-01 | 106 |  | 5d |
| 108 | 1.2.6.9 | **AG-F0009-0305-MB-L-00005** | 10d | 2026-06-18 | 2026-07-01 |  |  | 5d |
| 109 |  | Emissão inicial | 7d | 2026-06-18 | 2026-06-26 | 276 |  | 5d |
| 110 |  | Análise Tecnored | 1d | 2026-06-29 | 2026-06-29 | 109 |  | 5d |
| 111 |  | Atendimento de comentários | 1d | 2026-06-30 | 2026-06-30 | 110 |  | 5d |
| 112 |  | Aprovação | 1d | 2026-07-01 | 2026-07-01 | 111 |  | 5d |
| 113 | 1.2.6.10 | **AG-F0009-0305-MB-L-00006** | 10d | 2026-06-18 | 2026-07-01 |  |  | 5d |
| 114 |  | Emissão inicial | 7d | 2026-06-18 | 2026-06-26 | 276 |  | 5d |
| 115 |  | Análise Tecnored | 1d | 2026-06-29 | 2026-06-29 | 114 |  | 5d |
| 116 |  | Atendimento de comentários | 1d | 2026-06-30 | 2026-06-30 | 115 |  | 5d |
| 117 |  | Aprovação | 1d | 2026-07-01 | 2026-07-01 | 116 |  | 5d |
| 118 | 1.2.6.11 | **AG-F0009-0305-MB-L-00007** | 10d | 2026-06-18 | 2026-07-01 |  |  | 5d |
| 119 |  | Emissão inicial | 7d | 2026-06-18 | 2026-06-26 | 276 |  | 5d |
| 120 |  | Análise Tecnored | 1d | 2026-06-29 | 2026-06-29 | 119 |  | 5d |
| 121 |  | Atendimento de comentários | 1d | 2026-06-30 | 2026-06-30 | 120 |  | 5d |
| 122 |  | Aprovação | 1d | 2026-07-01 | 2026-07-01 | 121 |  | 5d |
| 123 | 1.2.6.12 | **AG-F0009-0305-MB-L-00008** | 10d | 2026-06-18 | 2026-07-01 |  |  | 5d |
| 124 |  | Emissão inicial | 7d | 2026-06-18 | 2026-06-26 | 276 |  | 5d |
| 125 |  | Análise Tecnored | 1d | 2026-06-29 | 2026-06-29 | 124 |  | 5d |
| 126 |  | Atendimento de comentários | 1d | 2026-06-30 | 2026-06-30 | 125 |  | 5d |
| 127 |  | Aprovação | 1d | 2026-07-01 | 2026-07-01 | 126 |  | 5d |
| 128 | 1.2.6.13 | **AG-F0009-0305-MB-L-00009** | 10d | 2026-06-18 | 2026-07-01 |  |  | 5d |
| 129 |  | Emissão inicial | 7d | 2026-06-18 | 2026-06-26 | 276 |  | 5d |
| 130 |  | Análise Tecnored | 1d | 2026-06-29 | 2026-06-29 | 129 |  | 5d |
| 131 |  | Atendimento de comentários | 1d | 2026-06-30 | 2026-06-30 | 130 |  | 5d |
| 132 |  | Aprovação | 1d | 2026-07-01 | 2026-07-01 | 131 |  | 5d |
| 133 | 1.2.6.14 | **PL-F0009-0305-MB-M-00001** | 12d | 2026-06-01 | 2026-06-18 |  |  | 14d |
| 134 |  | Emissão inicial | 8d | 2026-06-01 | 2026-06-12 | 160 |  | 14d |
| 135 |  | Análise Tecnored | 1d | 2026-06-15 | 2026-06-15 | 134 |  | 14d |
| 136 |  | Atendimento de comentários | 2d | 2026-06-16 | 2026-06-17 | 135 |  | 14d |
| 137 |  | Aprovação | 1d | 2026-06-18 | 2026-06-18 | 136 |  | 14d |
| 138 | 1.2.6.15 | **PL-F0009-0305-MB-M-00002** | 12d | 2026-06-01 | 2026-06-18 |  |  | 14d |
| 139 |  | Emissão inicial | 8d | 2026-06-01 | 2026-06-12 | 160 |  | 14d |
| 140 |  | Análise Tecnored | 1d | 2026-06-15 | 2026-06-15 | 139 |  | 14d |

| ID | WBS | Task | Duration | Start | Finish | Predecessors | Complete | Total float |
| --- | --- | --- | --- | --- | --- | --- | --- | --- |
| 141 |  | Atendimento de comentários | 2d | 2026-06-16 | 2026-06-17 | 140 |  | 14d |
| 142 |  | Aprovação | 1d | 2026-06-18 | 2026-06-18 | 141 |  | 14d |
| 143 | 1.2.6.16 | **PL-F0009-0305-MB-M-00003** | 12d | 2026-06-01 | 2026-06-18 |  |  | 14d |
| 144 |  | Emissão inicial | 8d | 2026-06-01 | 2026-06-12 | 160 |  | 14d |
| 145 |  | Análise Tecnored | 1d | 2026-06-15 | 2026-06-15 | 144 |  | 14d |
| 146 |  | Atendimento de comentários | 2d | 2026-06-16 | 2026-06-17 | 145 |  | 14d |
| 147 |  | Aprovação | 1d | 2026-06-18 | 2026-06-18 | 146 |  | 14d |
| 148 | 1.2.6.17 | **PL-F0009-0305-MB-M-00004** | 12d | 2026-06-01 | 2026-06-18 |  |  | 14d |
| 149 |  | Emissão inicial | 8d | 2026-06-01 | 2026-06-12 | 160 |  | 14d |
| 150 |  | Análise Tecnored | 1d | 2026-06-15 | 2026-06-15 | 149 |  | 14d |
| 151 |  | Atendimento de comentários | 2d | 2026-06-16 | 2026-06-17 | 150 |  | 14d |
| 152 |  | Aprovação | 1d | 2026-06-18 | 2026-06-18 | 151 |  | 14d |
| 153 | 1.2.6.18 | **MC-F0009-0305-MB-M-00001** | 14d | 2026-06-01 | 2026-06-22 |  |  | 0d |
| 154 |  | Emissão inicial | 10d | 2026-06-01 | 2026-06-16 | 160 |  | 0d |
| 155 |  | Análise Tecnored | 1d | 2026-06-17 | 2026-06-17 | 154 |  | 0d |
| 156 |  | Atendimento de comentários | 2d | 2026-06-18 | 2026-06-19 | 155 |  | 12d |
| 157 |  | Aprovação | 1d | 2026-06-22 | 2026-06-22 | 156 |  | 12d |
| 158 | 1.2.6.19 | **ML-F0009-0305-MB-M-00001** | 12d | 2026-05-19 A | 2026-06-03 |  | 67% | 23d |
| 159 |  | Emissão inicial | 8d | 2026-05-19 A | 2026-05-28 A | 69, 10 | 100% |  |
| 160 |  | Análise Tecnored | 1d | 2026-05-29 | 2026-05-29 | 159 |  | 0d |
| 161 |  | Atendimento de comentários | 2d | 2026-06-01 | 2026-06-02 | 160 |  | 23d |
| 162 |  | Aprovação | 1d | 2026-06-03 | 2026-06-03 | 161 |  | 23d |
| 163 | 1.2.6.20 | **FD-F0009-0305-MB-M-00001** | 7d | 2026-06-17 | 2026-06-25 |  |  | 9d |
| 164 |  | Emissão inicial | 3d | 2026-06-17 | 2026-06-19 | 154 |  | 9d |
| 165 |  | Análise Tecnored | 1d | 2026-06-22 | 2026-06-22 | 164 |  | 9d |
| 166 |  | Atendimento de comentários | 2d | 2026-06-23 | 2026-06-24 | 165 |  | 9d |
| 167 |  | Aprovação | 1d | 2026-06-25 | 2026-06-25 | 166 |  | 9d |
| 168 | 1.2.6.21 | **FD-F0009-0305-MB-M-00002** | 7d | 2026-06-17 | 2026-06-25 |  |  | 9d |
| 169 |  | Emissão inicial | 3d | 2026-06-17 | 2026-06-19 | 154 |  | 9d |
| 170 |  | Análise Tecnored | 1d | 2026-06-22 | 2026-06-22 | 169 |  | 9d |
| 171 |  | Atendimento de comentários | 2d | 2026-06-23 | 2026-06-24 | 170 |  | 9d |
| 172 |  | Aprovação | 1d | 2026-06-25 | 2026-06-25 | 171 |  | 9d |
| 173 | 1.2.6.22 | **FD-F0009-0305-MB-M-00003** | 7d | 2026-06-17 | 2026-06-25 |  |  | 9d |
| 174 |  | Emissão inicial | 3d | 2026-06-17 | 2026-06-19 | 154 |  | 9d |
| 175 |  | Análise Tecnored | 1d | 2026-06-22 | 2026-06-22 | 174 |  | 9d |
| 176 |  | Atendimento de comentários | 2d | 2026-06-23 | 2026-06-24 | 175 |  | 9d |
| 177 |  | Aprovação | 1d | 2026-06-25 | 2026-06-25 | 176 |  | 9d |
| 178 | 1.2.7 | **Tubulação/Utilidades** | 18d | 2026-06-10 | 2026-07-03 |  |  | 3d |
| 179 | 1.2.7.1 | **CP-F0009-0305-MB-T-00001** | 14d | 2026-05-08 | 2026-05-27 |  |  | 28d |
| 180 |  | Emissão inicial | 5d | 2026-05-08 | 2026-05-14 | 26FS+3d |  | 33d |
| 181 |  | Análise Tecnored | 1d | 2026-05-22 | 2026-05-22 | 180, 11 |  | 28d |
| 182 |  | Atendimento de comentários | 2d | 2026-05-25 | 2026-05-26 | 181 |  | 28d |
| 183 |  | Aprovação | 1d | 2026-05-27 | 2026-05-27 | 182 |  | 28d |
| 184 | 1.2.7.2 | **MD-F0009-0305-MB-U-00001** | 7d | 2026-07-09 | 2026-07-17 |  |  | -7d |
| 185 |  | Emissão inicial | 3d | 2026-07-09 | 2026-07-13 | 229FS+5d |  | -7d |
| 186 |  | Análise Tecnored | 1d | 2026-07-14 | 2026-07-14 | 185 |  | -7d |
| 187 |  | Atendimento de comentários | 2d | 2026-07-15 | 2026-07-16 | 186 |  | -7d |
| 188 |  | Aprovação | 1d | 2026-07-17 | 2026-07-17 | 187 |  | -7d |
| 189 | 1.2.7.3 | **ML-F0009-0305-MB-T-00001** | 7d | 2026-06-12 | 2026-06-22 |  |  | 5d |
| 190 |  | Emissão inicial | 3d | 2026-06-12 | 2026-06-16 | 159, 220 |  | 5d |
| 191 |  | Análise Tecnored | 1d | 2026-06-17 | 2026-06-17 | 190 |  | 5d |
| 192 |  | Atendimento de comentários | 2d | 2026-06-18 | 2026-06-19 | 191 |  | 5d |
| 193 |  | Aprovação | 1d | 2026-06-22 | 2026-06-22 | 192 |  | 5d |
| 194 | 1.2.7.4 | **ET-F0009-0305-MB-T-00001** | 7d | 2026-06-19 | 2026-06-29 |  |  | 7d |
| 195 |  | Emissão inicial | 3d | 2026-06-19 | 2026-06-23 | 200FS+2d |  | 7d |
| 196 |  | Análise Tecnored | 1d | 2026-06-24 | 2026-06-24 | 195 |  | 7d |
| 197 |  | Atendimento de comentários | 2d | 2026-06-25 | 2026-06-26 | 196 |  | 7d |
| 198 |  | Aprovação | 1d | 2026-06-29 | 2026-06-29 | 197 |  | 7d |
| 199 | 1.2.7.5 | **FD-F0009-0305-MB-T-00001** | 7d | 2026-06-12 | 2026-06-22 |  |  | 3d |
| 200 |  | Emissão inicial | 3d | 2026-06-12 | 2026-06-16 | 220 |  | 3d |
| 201 |  | Análise Tecnored | 1d | 2026-06-17 | 2026-06-17 | 200 |  | 12d |
| 202 |  | Atendimento de comentários | 2d | 2026-06-18 | 2026-06-19 | 201 |  | 12d |
| 203 |  | Aprovação | 1d | 2026-06-22 | 2026-06-22 | 202 |  | 12d |
| 204 | 1.2.7.6 | **FD-F0009-0305-MB-T-00002** | 7d | 2026-06-19 | 2026-06-29 |  |  | 7d |
| 205 |  | Emissão inicial | 3d | 2026-06-19 | 2026-06-23 | 215 |  | 7d |
| 206 |  | Análise Tecnored | 1d | 2026-06-24 | 2026-06-24 | 205 |  | 7d |
| 207 |  | Atendimento de comentários | 2d | 2026-06-25 | 2026-06-26 | 206 |  | 7d |
| 208 |  | Aprovação | 1d | 2026-06-29 | 2026-06-29 | 207 |  | 7d |
| 209 | 1.2.7.7 | **PQ-F0009-0305-MB-T-00001** | 7d | 2026-06-25 | 2026-07-03 |  |  | 3d |
| 210 |  | Emissão inicial | 3d | 2026-06-25 | 2026-06-29 | 218 |  | 3d |

| ID | WBS | Task | Duration | Start | Finish | Predecessors | Total float |
| --- | --- | --- | --- | --- | --- | --- | --- |
| 211 |  | Análise Tecnored | 1d | 2026-06-30 | 2026-06-30 | 210 | 3d |
| 212 |  | Atendimento de comentários | 2d | 2026-07-01 | 2026-07-02 | 211 | 3d |
| 213 |  | Aprovação | 1d | 2026-07-03 | 2026-07-03 | 212 | 3d |
| 214 | 1.2.7.8 | **MC-F0009-0305-MB-T-00001** | 9d | 2026-06-12 | 2026-06-24 |  | 3d |
| 215 |  | Emissão inicial | 5d | 2026-06-12 | 2026-06-18 | 200SS | 3d |
| 216 |  | Análise Tecnored | 1d | 2026-06-19 | 2026-06-19 | 215 | 3d |
| 217 |  | Atendimento de comentários | 2d | 2026-06-22 | 2026-06-23 | 216 | 3d |
| 218 |  | Aprovação | 1d | 2026-06-24 | 2026-06-24 | 217 | 3d |
| 219 | 1.2.7.9 | **FG-F0009-0305-MB-T-00001** | 6d | 2026-06-10 | 2026-06-17 |  | 3d |
| 220 |  | Emissão inicial | 2d | 2026-06-10 | 2026-06-11 | 63FS+13d | 3d |
| 221 |  | Análise Tecnored | 1d | 2026-06-12 | 2026-06-12 | 220 | 15d |
| 222 |  | Atendimento de comentários | 2d | 2026-06-15 | 2026-06-16 | 221 | 15d |
| 223 |  | Aprovação | 1d | 2026-06-17 | 2026-06-17 | 222 | 15d |
| 224 | 1.2.7.10 | **FG-F0009-0305-MB-T-00002** | 6d | 2026-06-03 | 2026-06-12 |  | 18d |
| 225 |  | Emissão inicial | 2d | 2026-06-03 | 2026-06-08 | 63FS+10d | 18d |
| 226 |  | Análise Tecnored | 1d | 2026-06-09 | 2026-06-09 | 225 | 18d |
| 227 |  | Atendimento de comentários | 2d | 2026-06-10 | 2026-06-11 | 226 | 18d |
| 228 |  | Aprovação | 1d | 2026-06-12 | 2026-06-12 | 227 | 18d |
| 229 | 1.2.7.11 | **AG-F0009-0305-MB-T-00001** | 7d | 2026-06-23 | 2026-07-01 |  | 5d |
| 230 |  | Emissão inicial | 3d | 2026-06-23 | 2026-06-25 | 193 | 5d |
| 231 |  | Análise Tecnored | 1d | 2026-06-26 | 2026-06-26 | 230 | 5d |
| 232 |  | Atendimento de comentários | 2d | 2026-06-29 | 2026-06-30 | 231 | 5d |
| 233 |  | Aprovação | 1d | 2026-07-01 | 2026-07-01 | 232 | 5d |
| 234 | 1.2.7.12 | **AG-F0009-0305-MB-T-00002** | 7d | 2026-06-23 | 2026-07-01 |  | 5d |
| 235 |  | Emissão inicial | 3d | 2026-06-23 | 2026-06-25 | 193 | 5d |
| 236 |  | Análise Tecnored | 1d | 2026-06-26 | 2026-06-26 | 235 | 5d |
| 237 |  | Atendimento de comentários | 2d | 2026-06-29 | 2026-06-30 | 236 | 5d |
| 238 |  | Aprovação | 1d | 2026-07-01 | 2026-07-01 | 237 | 5d |
| 239 | 1.2.7.13 | **AG-F0009-0305-MB-T-00003** | 7d | 2026-06-23 | 2026-07-01 |  | 5d |
| 240 |  | Emissão inicial | 3d | 2026-06-23 | 2026-06-25 | 193 | 5d |
| 241 |  | Análise Tecnored | 1d | 2026-06-26 | 2026-06-26 | 240 | 5d |
| 242 |  | Atendimento de comentários | 2d | 2026-06-29 | 2026-06-30 | 241 | 5d |
| 243 |  | Aprovação | 1d | 2026-07-01 | 2026-07-01 | 242 | 5d |
| 244 | 1.2.7.14 | **AG-F0009-0305-MB-T-00004** | 7d | 2026-06-03 | 2026-06-15 |  | 17d |
| 245 |  | Emissão inicial | 3d | 2026-06-03 | 2026-06-09 | 161 | 17d |
| 246 |  | Análise Tecnored | 1d | 2026-06-10 | 2026-06-10 | 245 | 17d |
| 247 |  | Atendimento de comentários | 2d | 2026-06-11 | 2026-06-12 | 246 | 17d |
| 248 |  | Aprovação | 1d | 2026-06-15 | 2026-06-15 | 247 | 17d |
| 249 | 1.2.7.15 | **AG-F0009-0305-MB-T-00005** | 7d | 2026-06-03 | 2026-06-15 |  | 17d |
| 250 |  | Emissão inicial | 3d | 2026-06-03 | 2026-06-09 | 161 | 17d |
| 251 |  | Análise Tecnored | 1d | 2026-06-10 | 2026-06-10 | 250 | 17d |
| 252 |  | Atendimento de comentários | 2d | 2026-06-11 | 2026-06-12 | 251 | 17d |
| 253 |  | Aprovação | 1d | 2026-06-15 | 2026-06-15 | 252 | 17d |
| 254 | 1.2.7.16 | **AG-F0009-0305-MB-T-00006** | 7d | 2026-06-03 | 2026-06-15 |  | 17d |
| 255 |  | Emissão inicial | 3d | 2026-06-03 | 2026-06-09 | 161 | 17d |
| 256 |  | Análise Tecnored | 1d | 2026-06-10 | 2026-06-10 | 255 | 17d |
| 257 |  | Atendimento de comentários | 2d | 2026-06-11 | 2026-06-12 | 256 | 17d |
| 258 |  | Aprovação | 1d | 2026-06-15 | 2026-06-15 | 257 | 17d |
| 259 | 1.2.7.17 | **LK-F0009-0305-MB-T-00001** | 6d | 2026-06-24 | 2026-07-01 |  | 5d |
| 260 |  | Emissão inicial | 2d | 2026-06-24 | 2026-06-25 | 217 | 5d |
| 261 |  | Análise Tecnored | 1d | 2026-06-26 | 2026-06-26 | 260 | 5d |
| 262 |  | Atendimento de comentários | 2d | 2026-06-29 | 2026-06-30 | 261 | 5d |
| 263 |  | Aprovação | 1d | 2026-07-01 | 2026-07-01 | 262 | 5d |
| 264 | 1.2.7.18 | **MC-F0009-0305-MB-T-00002** | 14d | 2026-05-29 | 2026-06-19 |  | 13d |
| 265 |  | Emissão inicial | 10d | 2026-05-29 | 2026-06-15 | 159 | 13d |
| 266 |  | Análise Tecnored | 1d | 2026-06-16 | 2026-06-16 | 265 | 13d |
| 267 |  | Atendimento de comentários | 2d | 2026-06-17 | 2026-06-18 | 266 | 13d |
| 268 |  | Aprovação | 1d | 2026-06-19 | 2026-06-19 | 267 | 13d |
| 269 | 1.2.8 | **Estrutura metálica** | 15d | 2026-06-15 | 2026-07-03 |  | 3d |
| 270 | 1.2.8.1 | **CP-F0009-0305-MB-S-00001** | 21d | 2026-05-12 | 2026-06-11 |  | 19d |
| 271 |  | Emissão inicial | 3d | 2026-05-12 | 2026-05-14 | 26FS+5d | 33d |
| 272 |  | Análise Tecnored | 1d | 2026-06-08 | 2026-06-08 | 271, 14 | 19d |
| 273 |  | Atendimento de comentários | 2d | 2026-06-09 | 2026-06-10 | 272 | 19d |
| 274 |  | Aprovação | 1d | 2026-06-11 | 2026-06-11 | 273 | 19d |
| 275 | 1.2.8.2 | **ML-F0009-0305-MB-S-00001** | 6d | 2026-06-15 | 2026-06-22 |  | 3d |
| 276 |  | Emissão inicial | 3d | 2026-06-15 | 2026-06-17 | 291FS-8d | 3d |
| 277 |  | Análise Tecnored | 1d | 2026-06-18 | 2026-06-18 | 276 | 3d |
| 278 |  | Atendimento de comentários | 1d | 2026-06-19 | 2026-06-19 | 277 | 3d |
| 279 |  | Aprovação | 1d | 2026-06-22 | 2026-06-22 | 278 | 5d |
| 280 | 1.2.8.3 | **PQ-F0009-0305-MB-S-00001** | 5d | 2026-06-25 | 2026-07-01 |  | 5d |

| ID | WBS | Task | Duration | Start | Finish | Predecessors | Complete | Total float |
| --- | --- | --- | --- | --- | --- | --- | --- | --- |
| 281 |  | Emissão inicial | 2d | 2026-06-25 | 2026-06-26 | 286 |  | 5d |
| 282 |  | Análise Tecnored | 1d | 2026-06-29 | 2026-06-29 | 281 |  | 5d |
| 283 |  | Atendimento de comentários | 1d | 2026-06-30 | 2026-06-30 | 282 |  | 5d |
| 284 |  | Aprovação | 1d | 2026-07-01 | 2026-07-01 | 283 |  | 5d |
| 285 | 1.2.8.4 | **LM-F0009-0305-MB-S-00001** | 5d | 2026-06-23 | 2026-06-29 |  |  | 5d |
| 286 |  | Emissão inicial | 2d | 2026-06-23 | 2026-06-24 | 279 |  | 5d |
| 287 |  | Análise Tecnored | 1d | 2026-06-25 | 2026-06-25 | 286 |  | 7d |
| 288 |  | Atendimento de comentários | 1d | 2026-06-26 | 2026-06-26 | 287 |  | 7d |
| 289 |  | Aprovação | 1d | 2026-06-29 | 2026-06-29 | 288 |  | 7d |
| 290 | 1.2.8.5 | **MC-F0009-0305-MB-S-00001** | 8d | 2026-06-18 | 2026-06-29 |  |  | 0d |
| 291 |  | Emissão inicial | 5d | 2026-06-18 | 2026-06-24 | 155 |  | 0d |
| 292 |  | Análise Tecnored | 1d | 2026-06-25 | 2026-06-25 | 291 |  | 7d |
| 293 |  | Atendimento de comentários | 1d | 2026-06-26 | 2026-06-26 | 292 |  | 7d |
| 294 |  | Aprovação | 1d | 2026-06-29 | 2026-06-29 | 293 |  | 7d |
| 295 | 1.2.8.6 | **AG-F0009-0305-MB-S-00001** | 9d | 2026-06-22 | 2026-07-02 |  |  | 4d |
| 296 |  | Emissão inicial | 6d | 2026-06-22 | 2026-06-29 | 278 |  | 4d |
| 297 |  | Análise Tecnored | 1d | 2026-06-30 | 2026-06-30 | 296 |  | 4d |
| 298 |  | Atendimento de comentários | 1d | 2026-07-01 | 2026-07-01 | 297 |  | 4d |
| 299 |  | Aprovação | 1d | 2026-07-02 | 2026-07-02 | 298 |  | 4d |
| 300 | 1.2.8.7 | **AG-F0009-0305-MB-S-00002** | 9d | 2026-06-22 | 2026-07-02 |  |  | 4d |
| 301 |  | Emissão inicial | 6d | 2026-06-22 | 2026-06-29 | 278 |  | 4d |
| 302 |  | Análise Tecnored | 1d | 2026-06-30 | 2026-06-30 | 301 |  | 4d |
| 303 |  | Atendimento de comentários | 1d | 2026-07-01 | 2026-07-01 | 302 |  | 4d |
| 304 |  | Aprovação | 1d | 2026-07-02 | 2026-07-02 | 303 |  | 4d |
| 305 | 1.2.8.8 | **AG-F0009-0305-MB-S-00003** | 9d | 2026-06-22 | 2026-07-02 |  |  | 4d |
| 306 |  | Emissão inicial | 6d | 2026-06-22 | 2026-06-29 | 278 |  | 4d |
| 307 |  | Análise Tecnored | 1d | 2026-06-30 | 2026-06-30 | 306 |  | 4d |
| 308 |  | Atendimento de comentários | 1d | 2026-07-01 | 2026-07-01 | 307 |  | 4d |
| 309 |  | Aprovação | 1d | 2026-07-02 | 2026-07-02 | 308 |  | 4d |
| 310 | 1.2.8.9 | **AG-F0009-0305-MB-S-00004** | 9d | 2026-06-22 | 2026-07-02 |  |  | 4d |
| 311 |  | Emissão inicial | 6d | 2026-06-22 | 2026-06-29 | 278 |  | 4d |
| 312 |  | Análise Tecnored | 1d | 2026-06-30 | 2026-06-30 | 311 |  | 4d |
| 313 |  | Atendimento de comentários | 1d | 2026-07-01 | 2026-07-01 | 312 |  | 4d |
| 314 |  | Aprovação | 1d | 2026-07-02 | 2026-07-02 | 313 |  | 4d |
| 315 | 1.2.8.10 | **AG-F0009-0305-MB-S-00005** | 10d | 2026-06-22 | 2026-07-03 |  |  | 3d |
| 316 |  | Emissão inicial | 6d | 2026-06-22 | 2026-06-29 | 278 |  | 3d |
| 317 |  | Análise Tecnored | 1d | 2026-06-30 | 2026-06-30 | 316 |  | 3d |
| 318 |  | Atendimento de comentários | 2d | 2026-07-01 | 2026-07-02 | 317 |  | 3d |
| 319 |  | Aprovação | 1d | 2026-07-03 | 2026-07-03 | 318 |  | 3d |
| 320 | 1.2.8.11 | **AG-F0009-0305-MB-S-00006** | 9d | 2026-06-22 | 2026-07-02 |  |  | 4d |
| 321 |  | Emissão inicial | 6d | 2026-06-22 | 2026-06-29 | 278 |  | 4d |
| 322 |  | Análise Tecnored | 1d | 2026-06-30 | 2026-06-30 | 321 |  | 4d |
| 323 |  | Atendimento de comentários | 1d | 2026-07-01 | 2026-07-01 | 322 |  | 4d |
| 324 |  | Aprovação | 1d | 2026-07-02 | 2026-07-02 | 323 |  | 4d |
| 325 | 1.2.8.12 | **AG-F0009-0305-MB-S-00007** | 9d | 2026-06-22 | 2026-07-02 |  |  | 4d |
| 326 |  | Emissão inicial | 6d | 2026-06-22 | 2026-06-29 | 278 |  | 4d |
| 327 |  | Análise Tecnored | 1d | 2026-06-30 | 2026-06-30 | 326 |  | 4d |
| 328 |  | Atendimento de comentários | 1d | 2026-07-01 | 2026-07-01 | 327 |  | 4d |
| 329 |  | Aprovação | 1d | 2026-07-02 | 2026-07-02 | 328 |  | 4d |
| 330 | 1.2.8.13 | **AG-F0009-0305-MB-S-00008** | 9d | 2026-06-22 | 2026-07-02 |  |  | 4d |
| 331 |  | Emissão inicial | 6d | 2026-06-22 | 2026-06-29 | 278 |  | 4d |
| 332 |  | Análise Tecnored | 1d | 2026-06-30 | 2026-06-30 | 331 |  | 4d |
| 333 |  | Atendimento de comentários | 1d | 2026-07-01 | 2026-07-01 | 332 |  | 4d |
| 334 |  | Aprovação | 1d | 2026-07-02 | 2026-07-02 | 333 |  | 4d |
| 335 | 1.2.8.14 | **AG-F0009-0305-MB-S-00009** | 9d | 2026-06-22 | 2026-07-02 |  |  | 4d |
| 336 |  | Emissão inicial | 6d | 2026-06-22 | 2026-06-29 | 278 |  | 4d |
| 337 |  | Análise Tecnored | 1d | 2026-06-30 | 2026-06-30 | 336 |  | 4d |
| 338 |  | Atendimento de comentários | 1d | 2026-07-01 | 2026-07-01 | 337 |  | 4d |
| 339 |  | Aprovação | 1d | 2026-07-02 | 2026-07-02 | 338 |  | 4d |
| 340 | 1.2.8.15 | **AG-F0009-0305-MB-S-00010** | 9d | 2026-06-22 | 2026-07-02 |  |  | 4d |
| 341 |  | Emissão inicial | 6d | 2026-06-22 | 2026-06-29 | 278 |  | 4d |
| 342 |  | Análise Tecnored | 1d | 2026-06-30 | 2026-06-30 | 341 |  | 4d |
| 343 |  | Atendimento de comentários | 1d | 2026-07-01 | 2026-07-01 | 342 |  | 4d |
| 344 |  | Aprovação | 1d | 2026-07-02 | 2026-07-02 | 343 |  | 4d |
| 345 | 1.2.8.16 | **PL-F0009-0305-MB-S-00001** | 8d | 2026-06-22 | 2026-07-01 |  |  | 5d |
| 346 |  | Emissão inicial | 5d | 2026-06-22 | 2026-06-26 | 278 |  | 5d |
| 347 |  | Análise Tecnored | 1d | 2026-06-29 | 2026-06-29 | 346 |  | 5d |
| 348 |  | Atendimento de comentários | 1d | 2026-06-30 | 2026-06-30 | 347 |  | 5d |
| 349 |  | Aprovação | 1d | 2026-07-01 | 2026-07-01 | 348 |  | 5d |
| 350 | 1.2.9 | **Elétrica** | 28d | 2026-05-28 A | 2026-07-08 |  | 4% | 0d |

| ID | WBS | Task | Duration | Start | Finish | Predecessors | Complete | Total float |
| --- | --- | --- | --- | --- | --- | --- | --- | --- |
| 351 | 1.2.9.1 | **CP-F0009-0305-MB-E-00001** | 23d | 2026-05-08 | 2026-06-11 |  |  | 19d |
| 352 |  | Emissão inicial | 5d | 2026-05-08 | 2026-05-14 | 26FS+3d |  | 33d |
| 353 |  | Análise Tecnored | 1d | 2026-06-08 | 2026-06-08 | 352, 12 |  | 19d |
| 354 |  | Atendimento de comentários | 2d | 2026-06-09 | 2026-06-10 | 353 |  | 19d |
| 355 |  | Aprovação | 1d | 2026-06-11 | 2026-06-11 | 354 |  | 19d |
| 356 | 1.2.9.2 | **ML-F0009-0305-MB-E-00001** | 10d | 2026-06-17 | 2026-06-30 |  |  | 0d |
| 357 |  | Emissão inicial | 7d | 2026-06-17 | 2026-06-25 | 392FS-5d |  | 0d |
| 358 |  | Análise Tecnored | 1d | 2026-06-26 | 2026-06-26 | 357 |  | 6d |
| 359 |  | Atendimento de comentários | 1d | 2026-06-29 | 2026-06-29 | 358 |  | 6d |
| 360 |  | Aprovação | 1d | 2026-06-30 | 2026-06-30 | 359 |  | 6d |
| 361 | 1.2.9.3 | **RL-F0009-0305-MB-E-00001** | 6d | 2026-06-02 | 2026-06-11 |  |  | 0d |
| 362 |  | Emissão inicial | 3d | 2026-06-02 | 2026-06-08 | 372 |  | 0d |
| 363 |  | Análise Tecnored | 1d | 2026-06-09 | 2026-06-09 | 362 |  | 19d |
| 364 |  | Atendimento de comentários | 1d | 2026-06-10 | 2026-06-10 | 363 |  | 19d |
| 365 |  | Aprovação | 1d | 2026-06-11 | 2026-06-11 | 364 |  | 19d |
| 366 | 1.2.9.4 | **LE-F0009-0305-MB-E-00001** | 6d | 2026-06-24 | 2026-07-01 |  |  | 5d |
| 367 |  | Emissão inicial | 3d | 2026-06-24 | 2026-06-26 | 392 |  | 5d |
| 368 |  | Análise Tecnored | 1d | 2026-06-29 | 2026-06-29 | 367 |  | 5d |
| 369 |  | Atendimento de comentários | 1d | 2026-06-30 | 2026-06-30 | 368 |  | 5d |
| 370 |  | Aprovação | 1d | 2026-07-01 | 2026-07-01 | 369 |  | 5d |
| 371 | 1.2.9.5 | **LR-F0009-0305-MB-E-00001** | 6d | 2026-05-28 A | 2026-06-08 |  | 50% | 22d |
| 372 |  | Emissão inicial | 3d | 2026-05-28 A | 2026-06-01 A | 79 | 100% |  |
| 373 |  | Análise Tecnored | 1d | 2026-06-02 | 2026-06-02 | 372 |  | 22d |
| 374 |  | Atendimento de comentários | 1d | 2026-06-03 | 2026-06-03 | 373 |  | 22d |
| 375 |  | Aprovação | 1d | 2026-06-08 | 2026-06-08 | 374 |  | 22d |
| 376 | 1.2.9.6 | **LM-F0009-0305-MB-E-00001** | 5d | 2026-07-02 | 2026-07-08 |  |  | 0d |
| 377 |  | Emissão inicial | 2d | 2026-07-02 | 2026-07-03 | 398 |  | 0d |
| 378 |  | Análise Tecnored | 1d | 2026-07-06 | 2026-07-06 | 377 |  | 0d |
| 379 |  | Atendimento de comentários | 1d | 2026-07-07 | 2026-07-07 | 378 |  | 0d |
| 380 |  | Aprovação | 1d | 2026-07-08 | 2026-07-08 | 379 |  | 0d |
| 381 | 1.2.9.7 | **PQ-F0009-0305-MB-E-00001** | 4d | 2026-07-02 | 2026-07-07 |  |  | 1d |
| 382 |  | Emissão inicial | 1d | 2026-07-02 | 2026-07-02 | 377SS |  | 1d |
| 383 |  | Análise Tecnored | 1d | 2026-07-03 | 2026-07-03 | 382 |  | 1d |
| 384 |  | Atendimento de comentários | 1d | 2026-07-06 | 2026-07-06 | 383 |  | 1d |
| 385 |  | Aprovação | 1d | 2026-07-07 | 2026-07-07 | 384 |  | 1d |
| 386 | 1.2.9.8 | **MD-F0009-0305-MB-E-00001** | 7d | 2026-07-02 | 2026-07-10 |  |  | -2d |
| 387 |  | Emissão inicial | 3d | 2026-07-02 | 2026-07-06 | 377FS-2d |  | -2d |
| 388 |  | Análise Tecnored | 1d | 2026-07-07 | 2026-07-07 | 387 |  | -2d |
| 389 |  | Atendimento de comentários | 2d | 2026-07-08 | 2026-07-09 | 388 |  | -2d |
| 390 |  | Aprovação | 1d | 2026-07-10 | 2026-07-10 | 389 |  | -2d |
| 391 | 1.2.9.9 | **MC-F0009-0305-MB-E-00001** | 8d | 2026-06-17 | 2026-06-26 |  |  | 0d |
| 392 |  | Emissão inicial | 5d | 2026-06-17 | 2026-06-23 | 412 |  | 0d |
| 393 |  | Análise Tecnored | 1d | 2026-06-24 | 2026-06-24 | 392 |  | 8d |
| 394 |  | Atendimento de comentários | 1d | 2026-06-25 | 2026-06-25 | 393 |  | 8d |
| 395 |  | Aprovação | 1d | 2026-06-26 | 2026-06-26 | 394 |  | 8d |
| 396 | 1.2.9.10 | **AG-F0009-0305-MB-E-00001** | 6d | 2026-06-26 | 2026-07-03 |  |  | 0d |
| 397 |  | Emissão inicial | 3d | 2026-06-26 | 2026-06-30 | 357 |  | 0d |
| 398 |  | Análise Tecnored | 1d | 2026-07-01 | 2026-07-01 | 397 |  | 0d |
| 399 |  | Atendimento de comentários | 1d | 2026-07-02 | 2026-07-02 | 398 |  | 3d |
| 400 |  | Aprovação | 1d | 2026-07-03 | 2026-07-03 | 399 |  | 3d |
| 401 | 1.2.9.11 | **DU-F0009-0305-MB-E-00001** | 6d | 2026-06-09 | 2026-06-16 |  |  | 0d |
| 402 |  | Emissão inicial | 3d | 2026-06-09 | 2026-06-11 | 362 |  | 0d |
| 403 |  | Análise Tecnored | 1d | 2026-06-12 | 2026-06-12 | 402 |  | 16d |
| 404 |  | Atendimento de comentários | 1d | 2026-06-15 | 2026-06-15 | 403 |  | 16d |
| 405 |  | Aprovação | 1d | 2026-06-16 | 2026-06-16 | 404 |  | 16d |
| 406 | 1.2.9.12 | **AG-F0009-0305-MB-E-00002** | 6d | 2026-06-26 | 2026-07-03 |  |  | 3d |
| 407 |  | Emissão inicial | 3d | 2026-06-26 | 2026-06-30 | 357 |  | 3d |
| 408 |  | Análise Tecnored | 1d | 2026-07-01 | 2026-07-01 | 407 |  | 3d |
| 409 |  | Atendimento de comentários | 1d | 2026-07-02 | 2026-07-02 | 408 |  | 3d |
| 410 |  | Aprovação | 1d | 2026-07-03 | 2026-07-03 | 409 |  | 3d |
| 411 | 1.2.9.13 | **FD-F0009-0305-MB-E-00013** | 6d | 2026-06-12 | 2026-06-19 |  |  | 0d |
| 412 |  | Emissão inicial | 3d | 2026-06-12 | 2026-06-16 | 402 |  | 0d |
| 413 |  | Análise Tecnored | 1d | 2026-06-17 | 2026-06-17 | 412 |  | 13d |
| 414 |  | Atendimento de comentários | 1d | 2026-06-18 | 2026-06-18 | 413 |  | 13d |
| 415 |  | Aprovação | 1d | 2026-06-19 | 2026-06-19 | 414 |  | 13d |
| 416 | 1.2.10 | **Automação e instrumentação** | 24d | 2026-06-03 | 2026-07-08 |  |  | 0d |
| 417 | 1.2.10.1 | **CP-F0009-0305-MB-J-00001** | 9d | 2026-06-08 | 2026-06-18 |  |  | 14d |
| 418 |  | Emissão inicial | 5d | 2026-06-08 | 2026-06-12 | 26FS+5d, 13 |  | 14d |
| 419 |  | Análise Tecnored | 1d | 2026-06-15 | 2026-06-15 | 418 |  | 14d |
| 420 |  | Atendimento de comentários | 2d | 2026-06-16 | 2026-06-17 | 419 |  | 14d |

| ID | WBS | Task | Duration | Start | Finish | Predecessors | Total float |
| --- | --- | --- | --- | --- | --- | --- | --- |
| 421 |  | Aprovação | 1d | 2026-06-18 | 2026-06-18 | 420 | 14d |
| 422 | 1.2.10.2 | **LI-F0009-0305-MB-J-00001** | 6d | 2026-06-09 | 2026-06-16 |  | 0d |
| 423 |  | Emissão inicial | 2d | 2026-06-09 | 2026-06-10 | 453 | 0d |
| 424 |  | Análise Tecnored | 1d | 2026-06-11 | 2026-06-11 | 423 | 16d |
| 425 |  | Atendimento de comentários | 2d | 2026-06-12 | 2026-06-15 | 424 | 16d |
| 426 |  | Aprovação | 1d | 2026-06-16 | 2026-06-16 | 425 | 16d |
| 427 | 1.2.10.3 | **LE-F0009-0305-MB-J-00001** | 6d | 2026-07-01 | 2026-07-08 |  | 0d |
| 428 |  | Emissão inicial | 2d | 2026-07-01 | 2026-07-02 | 503 | 0d |
| 429 |  | Análise Tecnored | 1d | 2026-07-03 | 2026-07-03 | 428 | 0d |
| 430 |  | Atendimento de comentários | 2d | 2026-07-06 | 2026-07-07 | 429 | 0d |
| 431 |  | Aprovação | 1d | 2026-07-08 | 2026-07-08 | 430 | 0d |
| 432 | 1.2.10.4 | **LZ-F0009-0305-MB-J-00001** | 6d | 2026-06-24 | 2026-07-01 |  | 0d |
| 433 |  | Emissão inicial | 2d | 2026-06-24 | 2026-06-25 | 483 | 0d |
| 434 |  | Análise Tecnored | 1d | 2026-06-26 | 2026-06-26 | 433 | 5d |
| 435 |  | Atendimento de comentários | 2d | 2026-06-29 | 2026-06-30 | 434 | 5d |
| 436 |  | Aprovação | 1d | 2026-07-01 | 2026-07-01 | 435 | 5d |
| 437 | 1.2.10.5 | **LE-F0009-0305-MB-J-00002** | 6d | 2026-07-01 | 2026-07-08 |  | 0d |
| 438 |  | Emissão inicial | 2d | 2026-07-01 | 2026-07-02 | 503 | 0d |
| 439 |  | Análise Tecnored | 1d | 2026-07-03 | 2026-07-03 | 438 | 0d |
| 440 |  | Atendimento de comentários | 2d | 2026-07-06 | 2026-07-07 | 439 | 0d |
| 441 |  | Aprovação | 1d | 2026-07-08 | 2026-07-08 | 440 | 0d |
| 442 | 1.2.10.6 | **PQ-F0009-0305-MB-J-00001** | 5d | 2026-06-09 | 2026-06-15 |  | 17d |
| 443 |  | Emissão inicial | 1d | 2026-06-09 | 2026-06-09 | 498FS-9d | 17d |
| 444 |  | Análise Tecnored | 1d | 2026-06-10 | 2026-06-10 | 443 | 17d |
| 445 |  | Atendimento de comentários | 2d | 2026-06-11 | 2026-06-12 | 444 | 17d |
| 446 |  | Aprovação | 1d | 2026-06-15 | 2026-06-15 | 445 | 17d |
| 447 | 1.2.10.7 | **FG-F0009-0305-MB-J-00001** | 6d | 2026-06-03 | 2026-06-12 |  | 18d |
| 448 |  | Emissão inicial | 2d | 2026-06-03 | 2026-06-08 | 63FS+10d | 18d |
| 449 |  | Análise Tecnored | 1d | 2026-06-09 | 2026-06-09 | 448 | 18d |
| 450 |  | Atendimento de comentários | 2d | 2026-06-10 | 2026-06-11 | 449 | 18d |
| 451 |  | Aprovação | 1d | 2026-06-12 | 2026-06-12 | 450 | 18d |
| 452 | 1.2.10.8 | **FG-F0009-0305-MB-J-00002** | 6d | 2026-06-03 | 2026-06-12 |  | 0d |
| 453 |  | Emissão inicial | 2d | 2026-06-03 | 2026-06-08 | 63FS+10d | 0d |
| 454 |  | Análise Tecnored | 1d | 2026-06-09 | 2026-06-09 | 453 | 18d |
| 455 |  | Atendimento de comentários | 2d | 2026-06-10 | 2026-06-11 | 454 | 18d |
| 456 |  | Aprovação | 1d | 2026-06-12 | 2026-06-12 | 455 | 18d |
| 457 | 1.2.10.9 | **FG-F0009-0305-MB-J-00003** | 6d | 2026-06-03 | 2026-06-12 |  | 18d |
| 458 |  | Emissão inicial | 2d | 2026-06-03 | 2026-06-08 | 63FS+10d | 18d |
| 459 |  | Análise Tecnored | 1d | 2026-06-09 | 2026-06-09 | 458 | 18d |
| 460 |  | Atendimento de comentários | 2d | 2026-06-10 | 2026-06-11 | 459 | 18d |
| 461 |  | Aprovação | 1d | 2026-06-12 | 2026-06-12 | 460 | 18d |
| 462 | 1.2.10.10 | **AG-F0009-0305-MB-J-00001** | 11d | 2026-06-11 | 2026-06-25 |  | 9d |
| 463 |  | Emissão inicial | 7d | 2026-06-11 | 2026-06-19 | 423 | 9d |
| 464 |  | Análise Tecnored | 1d | 2026-06-22 | 2026-06-22 | 463 | 9d |
| 465 |  | Atendimento de comentários | 2d | 2026-06-23 | 2026-06-24 | 464 | 9d |
| 466 |  | Aprovação | 1d | 2026-06-25 | 2026-06-25 | 465 | 9d |
| 467 | 1.2.10.11 | **AG-F0009-0305-MB-J-00002** | 11d | 2026-06-11 | 2026-06-25 |  | 9d |
| 468 |  | Emissão inicial | 7d | 2026-06-11 | 2026-06-19 | 423 | 9d |
| 469 |  | Análise Tecnored | 1d | 2026-06-22 | 2026-06-22 | 468 | 9d |
| 470 |  | Atendimento de comentários | 2d | 2026-06-23 | 2026-06-24 | 469 | 9d |
| 471 |  | Aprovação | 1d | 2026-06-25 | 2026-06-25 | 470 | 9d |
| 472 | 1.2.10.12 | **AG-F0009-0305-MB-J-00003** | 11d | 2026-06-11 | 2026-06-25 |  | 0d |
| 473 |  | Emissão inicial | 7d | 2026-06-11 | 2026-06-19 | 423 | 0d |
| 474 |  | Análise Tecnored | 1d | 2026-06-22 | 2026-06-22 | 473 | 9d |
| 475 |  | Atendimento de comentários | 2d | 2026-06-23 | 2026-06-24 | 474 | 9d |
| 476 |  | Aprovação | 1d | 2026-06-25 | 2026-06-25 | 475 | 9d |
| 477 | 1.2.10.13 | **AG-F0009-0305-MB-J-00004** | 11d | 2026-06-11 | 2026-06-25 |  | 9d |
| 478 |  | Emissão inicial | 7d | 2026-06-11 | 2026-06-19 | 423 | 9d |
| 479 |  | Análise Tecnored | 1d | 2026-06-22 | 2026-06-22 | 478 | 9d |
| 480 |  | Atendimento de comentários | 2d | 2026-06-23 | 2026-06-24 | 479 | 9d |
| 481 |  | Aprovação | 1d | 2026-06-25 | 2026-06-25 | 480 | 9d |
| 482 | 1.2.10.14 | **DI-F0009-0305-MB-J-00001** | 6d | 2026-06-22 | 2026-06-29 |  | 0d |
| 483 |  | Emissão inicial | 2d | 2026-06-22 | 2026-06-23 | 473 | 0d |
| 484 |  | Análise Tecnored | 1d | 2026-06-24 | 2026-06-24 | 483 | 7d |
| 485 |  | Atendimento de comentários | 2d | 2026-06-25 | 2026-06-26 | 484 | 7d |
| 486 |  | Aprovação | 1d | 2026-06-29 | 2026-06-29 | 485 | 7d |
| 487 | 1.2.10.15 | **LI-F0009-0305-MB-J-00002** | 5d | 2026-07-01 | 2026-07-07 |  | 1d |
| 488 |  | Emissão inicial | 2d | 2026-07-01 | 2026-07-02 | 503 | 1d |
| 489 |  | Análise Tecnored | 1d | 2026-07-03 | 2026-07-03 | 488 | 1d |
| 490 |  | Atendimento de comentários | 1d | 2026-07-06 | 2026-07-06 | 489 | 1d |

| ID | WBS | Task | Duration | Start | Finish | Predecessors | Total float |
| --- | --- | --- | --- | --- | --- | --- | --- |
| 491 |  | Aprovação | 1d | 2026-07-07 | 2026-07-07 | 490 | 1d |
| 492 | 1.2.10.16 | **LI-F0009-0305-MB-J-00003** | 5d | 2026-07-01 | 2026-07-07 |  | 1d |
| 493 |  | Emissão inicial | 2d | 2026-07-01 | 2026-07-02 | 503 | 1d |
| 494 |  | Análise Tecnored | 1d | 2026-07-03 | 2026-07-03 | 493 | 1d |
| 495 |  | Atendimento de comentários | 1d | 2026-07-06 | 2026-07-06 | 494 | 1d |
| 496 |  | Aprovação | 1d | 2026-07-07 | 2026-07-07 | 495 | 1d |
| 497 | 1.2.10.17 | **LM-F0009-0305-MB-J-00001** | 4d | 2026-06-19 | 2026-06-24 |  | 10d |
| 498 |  | Emissão inicial | 1d | 2026-06-19 | 2026-06-19 | 588FS-7d | 10d |
| 499 |  | Análise Tecnored | 1d | 2026-06-22 | 2026-06-22 | 498 | 10d |
| 500 |  | Atendimento de comentários | 1d | 2026-06-23 | 2026-06-23 | 499 | 10d |
| 501 |  | Aprovação | 1d | 2026-06-24 | 2026-06-24 | 500 | 10d |
| 502 | 1.2.10.18 | **ET-F0009-0305-MB-J-00001** | 7d | 2026-06-26 | 2026-07-06 |  | 0d |
| 503 |  | Emissão inicial | 3d | 2026-06-26 | 2026-06-30 | 433 | 0d |
| 504 |  | Análise Tecnored | 1d | 2026-07-01 | 2026-07-01 | 503 | 2d |
| 505 |  | Atendimento de comentários | 2d | 2026-07-02 | 2026-07-03 | 504 | 2d |
| 506 |  | Aprovação | 1d | 2026-07-06 | 2026-07-06 | 505 | 2d |
| 507 | 1.2.10.19 | **FD-F0009-0305-MB-J-00001** | 9d | 2026-06-26 | 2026-07-08 |  | 0d |
| 508 |  | Emissão inicial | 6d | 2026-06-26 | 2026-07-03 | 433 | 0d |
| 509 |  | Análise Tecnored | 1d | 2026-07-06 | 2026-07-06 | 508 | 0d |
| 510 |  | Atendimento de comentários | 1d | 2026-07-07 | 2026-07-07 | 509 | 0d |
| 511 |  | Aprovação | 1d | 2026-07-08 | 2026-07-08 | 510 | 0d |
| 512 | 1.2.10.20 | **FD-F0009-0305-MB-J-00002** | 9d | 2026-06-26 | 2026-07-08 |  | 0d |
| 513 |  | Emissão inicial | 6d | 2026-06-26 | 2026-07-03 | 433 | 0d |
| 514 |  | Análise Tecnored | 1d | 2026-07-06 | 2026-07-06 | 513 | 0d |
| 515 |  | Atendimento de comentários | 1d | 2026-07-07 | 2026-07-07 | 514 | 0d |
| 516 |  | Aprovação | 1d | 2026-07-08 | 2026-07-08 | 515 | 0d |
| 517 | 1.2.10.21 | **FD-F0009-0305-MB-J-00003** | 9d | 2026-06-26 | 2026-07-08 |  | 0d |
| 518 |  | Emissão inicial | 6d | 2026-06-26 | 2026-07-03 | 433 | 0d |
| 519 |  | Análise Tecnored | 1d | 2026-07-06 | 2026-07-06 | 518 | 0d |
| 520 |  | Atendimento de comentários | 1d | 2026-07-07 | 2026-07-07 | 519 | 0d |
| 521 |  | Aprovação | 1d | 2026-07-08 | 2026-07-08 | 520 | 0d |
| 522 | 1.2.10.22 | **FD-F0009-0305-MB-J-00004** | 9d | 2026-06-26 | 2026-07-08 |  | 0d |
| 523 |  | Emissão inicial | 6d | 2026-06-26 | 2026-07-03 | 433 | 0d |
| 524 |  | Análise Tecnored | 1d | 2026-07-06 | 2026-07-06 | 523 | 0d |
| 525 |  | Atendimento de comentários | 1d | 2026-07-07 | 2026-07-07 | 524 | 0d |
| 526 |  | Aprovação | 1d | 2026-07-08 | 2026-07-08 | 525 | 0d |
| 527 | 1.2.10.23 | **FD-F0009-0305-MB-J-00005** | 9d | 2026-06-26 | 2026-07-08 |  | 0d |
| 528 |  | Emissão inicial | 6d | 2026-06-26 | 2026-07-03 | 433 | 0d |
| 529 |  | Análise Tecnored | 1d | 2026-07-06 | 2026-07-06 | 528 | 0d |
| 530 |  | Atendimento de comentários | 1d | 2026-07-07 | 2026-07-07 | 529 | 0d |
| 531 |  | Aprovação | 1d | 2026-07-08 | 2026-07-08 | 530 | 0d |
| 532 | 1.2.10.24 | **FD-F0009-0305-MB-J-00006** | 9d | 2026-06-26 | 2026-07-08 |  | 0d |
| 533 |  | Emissão inicial | 6d | 2026-06-26 | 2026-07-03 | 433 | 0d |
| 534 |  | Análise Tecnored | 1d | 2026-07-06 | 2026-07-06 | 533 | 0d |
| 535 |  | Atendimento de comentários | 1d | 2026-07-07 | 2026-07-07 | 534 | 0d |
| 536 |  | Aprovação | 1d | 2026-07-08 | 2026-07-08 | 535 | 0d |
| 537 | 1.2.10.25 | **FD-F0009-0305-MB-J-00007** | 9d | 2026-06-26 | 2026-07-08 |  | 0d |
| 538 |  | Emissão inicial | 6d | 2026-06-26 | 2026-07-03 | 433 | 0d |
| 539 |  | Análise Tecnored | 1d | 2026-07-06 | 2026-07-06 | 538 | 0d |
| 540 |  | Atendimento de comentários | 1d | 2026-07-07 | 2026-07-07 | 539 | 0d |
| 541 |  | Aprovação | 1d | 2026-07-08 | 2026-07-08 | 540 | 0d |
| 542 | 1.2.10.26 | **FD-F0009-0305-MB-J-00008** | 9d | 2026-06-26 | 2026-07-08 |  | 0d |
| 543 |  | Emissão inicial | 6d | 2026-06-26 | 2026-07-03 | 433 | 0d |
| 544 |  | Análise Tecnored | 1d | 2026-07-06 | 2026-07-06 | 543 | 0d |
| 545 |  | Atendimento de comentários | 1d | 2026-07-07 | 2026-07-07 | 544 | 0d |
| 546 |  | Aprovação | 1d | 2026-07-08 | 2026-07-08 | 545 | 0d |
| 547 | 1.2.10.27 | **FD-F0009-0305-MB-J-00009** | 9d | 2026-06-26 | 2026-07-08 |  | 0d |
| 548 |  | Emissão inicial | 6d | 2026-06-26 | 2026-07-03 | 433 | 0d |
| 549 |  | Análise Tecnored | 1d | 2026-07-06 | 2026-07-06 | 548 | 0d |
| 550 |  | Atendimento de comentários | 1d | 2026-07-07 | 2026-07-07 | 549 | 0d |
| 551 |  | Aprovação | 1d | 2026-07-08 | 2026-07-08 | 550 | 0d |
| 552 | 1.2.10.28 | **FD-F0009-0305-MB-J-00010** | 9d | 2026-06-26 | 2026-07-08 |  | 0d |
| 553 |  | Emissão inicial | 6d | 2026-06-26 | 2026-07-03 | 433 | 0d |
| 554 |  | Análise Tecnored | 1d | 2026-07-06 | 2026-07-06 | 553 | 0d |
| 555 |  | Atendimento de comentários | 1d | 2026-07-07 | 2026-07-07 | 554 | 0d |
| 556 |  | Aprovação | 1d | 2026-07-08 | 2026-07-08 | 555 | 0d |
| 557 | 1.2.10.29 | **FD-F0009-0305-MB-J-00011** | 9d | 2026-06-26 | 2026-07-08 |  | 0d |
| 558 |  | Emissão inicial | 6d | 2026-06-26 | 2026-07-03 | 433 | 0d |
| 559 |  | Análise Tecnored | 1d | 2026-07-06 | 2026-07-06 | 558 | 0d |
| 560 |  | Atendimento de comentários | 1d | 2026-07-07 | 2026-07-07 | 559 | 0d |

| ID | WBS | Task | Duration | Start | Finish | Predecessors | Total float |
| --- | --- | --- | --- | --- | --- | --- | --- |
| 561 |  | Aprovação | 1d | 2026-07-08 | 2026-07-08 | 560 | 0d |
| 562 | 1.2.10.30 | **FD-F0009-0305-MB-J-00012** | 9d | 2026-06-26 | 2026-07-08 |  | 0d |
| 563 |  | Emissão inicial | 6d | 2026-06-26 | 2026-07-03 | 433 | 0d |
| 564 |  | Análise Tecnored | 1d | 2026-07-06 | 2026-07-06 | 563 | 0d |
| 565 |  | Atendimento de comentários | 1d | 2026-07-07 | 2026-07-07 | 564 | 0d |
| 566 |  | Aprovação | 1d | 2026-07-08 | 2026-07-08 | 565 | 0d |
| 567 | 1.2.10.31 | **FD-F0009-0305-MB-J-00013** | 9d | 2026-06-26 | 2026-07-08 |  | 0d |
| 568 |  | Emissão inicial | 6d | 2026-06-26 | 2026-07-03 | 433 | 0d |
| 569 |  | Análise Tecnored | 1d | 2026-07-06 | 2026-07-06 | 568 | 0d |
| 570 |  | Atendimento de comentários | 1d | 2026-07-07 | 2026-07-07 | 569 | 0d |
| 571 |  | Aprovação | 1d | 2026-07-08 | 2026-07-08 | 570 | 0d |
| 572 | 1.2.10.32 | **FD-F0009-0305-MB-J-00014** | 9d | 2026-06-26 | 2026-07-08 |  | 0d |
| 573 |  | Emissão inicial | 6d | 2026-06-26 | 2026-07-03 | 433 | 0d |
| 574 |  | Análise Tecnored | 1d | 2026-07-06 | 2026-07-06 | 573 | 0d |
| 575 |  | Atendimento de comentários | 1d | 2026-07-07 | 2026-07-07 | 574 | 0d |
| 576 |  | Aprovação | 1d | 2026-07-08 | 2026-07-08 | 575 | 0d |
| 577 | 1.2.10.33 | **FD-F0009-0305-MB-J-00015** | 9d | 2026-06-26 | 2026-07-08 |  | 0d |
| 578 |  | Emissão inicial | 6d | 2026-06-26 | 2026-07-03 | 433 | 0d |
| 579 |  | Análise Tecnored | 1d | 2026-07-06 | 2026-07-06 | 578 | 0d |
| 580 |  | Atendimento de comentários | 1d | 2026-07-07 | 2026-07-07 | 579 | 0d |
| 581 |  | Aprovação | 1d | 2026-07-08 | 2026-07-08 | 580 | 0d |
| 582 | 1.2.10.34 | **FD-F0009-0305-MB-J-00016** | 9d | 2026-06-26 | 2026-07-08 |  | 0d |
| 583 |  | Emissão inicial | 6d | 2026-06-26 | 2026-07-03 | 433 | 0d |
| 584 |  | Análise Tecnored | 1d | 2026-07-06 | 2026-07-06 | 583 | 0d |
| 585 |  | Atendimento de comentários | 1d | 2026-07-07 | 2026-07-07 | 584 | 0d |
| 586 |  | Aprovação | 1d | 2026-07-08 | 2026-07-08 | 585 | 0d |
| 587 | 1.2.10.35 | **DT-F0009-0305-MB-J-00001** | 7d | 2026-06-24 | 2026-07-02 |  | 4d |
| 588 |  | Emissão inicial | 4d | 2026-06-24 | 2026-06-29 | 493FS-7d | 4d |
| 589 |  | Análise Tecnored | 1d | 2026-06-30 | 2026-06-30 | 588 | 4d |
| 590 |  | Atendimento de comentários | 1d | 2026-07-01 | 2026-07-01 | 589 | 4d |
| 591 |  | Aprovação | 1d | 2026-07-02 | 2026-07-02 | 590 | 4d |
| 592 | 1.2.11 | **Civil** | 10d | 2026-06-25 | 2026-07-08 |  | 0d |
| 593 | 1.2.11.1 | **MC-F0009-0305-MB-C-00001** | 8d | 2026-06-25 | 2026-07-06 |  | 0d |
| 594 |  | Emissão inicial | 5d | 2026-06-25 | 2026-07-01 | 291 | 0d |
| 595 |  | Análise Tecnored | 1d | 2026-07-02 | 2026-07-02 | 594 | 2d |
| 596 |  | Atendimento de comentários | 1d | 2026-07-03 | 2026-07-03 | 595 | 2d |
| 597 |  | Aprovação | 1d | 2026-07-06 | 2026-07-06 | 596 | 2d |
| 598 | 1.2.11.2 | **PQ-F0009-0305-MB-C-00001** | 5d | 2026-07-02 | 2026-07-08 |  | 0d |
| 599 |  | Emissão inicial | 1d | 2026-07-02 | 2026-07-02 | 594 | 0d |
| 600 |  | Análise Tecnored | 1d | 2026-07-03 | 2026-07-03 | 599 | 0d |
| 601 |  | Atendimento de comentários | 2d | 2026-07-06 | 2026-07-07 | 600 | 0d |
| 602 |  | Aprovação | 1d | 2026-07-08 | 2026-07-08 | 601 | 0d |

## Version 2 (data date 2026-06-09, saved 2026-06-10, file CR-F0009-0305-MB-F-00001 090626.mpp)

Note of the change: Primeira versao dashboard

Last finish stays 2026-07-17. Complete tasks 18 → 22.

Changed:

| ID | Task | Start | Finish | Complete | Total float |
| --- | --- | --- | --- | --- | --- |
| 1 | **F0009 - Programa Marabá** |  |  | 5% → 6% |  |
| 15 | **Área 0305 - Hot Blast Stoves** |  |  | 5% → 6% |  |
| 67 | **Mecânica** |  |  | 5% → 7% |  |
| 78 | **LE-F0009-0305-MB-M-00001** |  |  | 33% → 42% |  |
| 80 | Análise Tecnored | 2026-05-28 A |  | 0% → 50% |  |
| 158 | **ML-F0009-0305-MB-M-00001** |  |  | 67% → 92% |  |
| 160 | Análise Tecnored | 2026-05-29 A | 2026-05-29 A | 0% → 100% | 0d → none |
| 161 | Atendimento de comentários | 2026-06-01 A |  | 0% → 75% | 23d → 0.5d |
| 162 | Aprovação | 2026-06-03 A |  | 0% → 50% |  |
| 350 | **Elétrica** |  |  | 4% → 13% |  |
| 361 | **RL-F0009-0305-MB-E-00001** | 2026-06-02 A |  | 0% → 75% | 0d → 19d |
| 362 | Emissão inicial | 2026-06-02 A | 2026-06-08 A | 0% → 100% | 0d → none |
| 363 | Análise Tecnored | 2026-06-09 A | 2026-06-09 A | 0% → 100% | 19d → none |
| 364 | Atendimento de comentários | 2026-06-10 A |  | 0% → 50% |  |
| 371 | **LR-F0009-0305-MB-E-00001** |  |  | 50% → 75% |  |
| 373 | Análise Tecnored | 2026-06-02 A | 2026-06-02 A | 0% → 100% | 22d → none |
| 374 | Atendimento de comentários | 2026-06-03 A |  | 0% → 50% |  |
| 416 | **Automação e instrumentação** | 2026-06-03 A |  | 0% → 1% |  |
| 447 | **FG-F0009-0305-MB-J-00001** | 2026-06-03 A |  | 0% → 17% |  |
| 448 | Emissão inicial | 2026-06-03 A |  | 0% → 50% |  |
| 457 | **FG-F0009-0305-MB-J-00003** | 2026-06-03 A |  | 0% → 17% |  |
| 458 | Emissão inicial | 2026-06-03 A |  | 0% → 50% |  |

## Version 3 (data date 2026-06-11, saved 2026-06-11, file CR-F0009-0305-MB-F-00001 11062026.mpp)

Note of the change: Primeira versao dashboard

Last finish stays 2026-07-17. Complete tasks 22 → 24.

Added:

| ID | Task | Duration | Start | Finish | Predecessors |
| --- | --- | --- | --- | --- | --- |
| 158 | **MC-F0009-0305-MB-M-00002** | 14d | 2026-06-01 | 2026-06-22 |  |
| 159 | Emissão inicial | 10d | 2026-06-01 | 2026-06-16 | 175 |
| 160 | Análise Tecnored | 1d | 2026-06-17 | 2026-06-17 | 159 |
| 161 | Atendimento de comentários | 2d | 2026-06-18 | 2026-06-19 | 160 |
| 162 | Aprovação | 1d | 2026-06-22 | 2026-06-22 | 161 |
| 163 | **MC-F0009-0305-MB-M-00003** | 14d | 2026-06-01 | 2026-06-22 |  |
| 164 | Emissão inicial | 10d | 2026-06-01 | 2026-06-16 | 175 |
| 165 | Análise Tecnored | 1d | 2026-06-17 | 2026-06-17 | 164 |
| 166 | Atendimento de comentários | 2d | 2026-06-18 | 2026-06-19 | 165 |
| 167 | Aprovação | 1d | 2026-06-22 | 2026-06-22 | 166 |
| 168 | **MC-F0009-0305-MB-M-00004** | 14d | 2026-06-01 | 2026-06-22 |  |
| 169 | Emissão inicial | 10d | 2026-06-01 | 2026-06-16 | 175 |
| 170 | Análise Tecnored | 1d | 2026-06-17 | 2026-06-17 | 169 |
| 171 | Atendimento de comentários | 2d | 2026-06-18 | 2026-06-19 | 170 |
| 172 | Aprovação | 1d | 2026-06-22 | 2026-06-22 | 171 |

Changed:

| ID | Task | Start | Finish | Duration | Complete | Total float | Predecessors | Other |
| --- | --- | --- | --- | --- | --- | --- | --- | --- |
| 1 | **F0009 - Programa Marabá** |  |  |  | 6% → 7% |  |  |  |
| 2 | **Área 0000 -Documento geral** |  | 2026-06-05 → 2026-06-15 (+10d) | 12d → 18d | 0% → 70% |  |  |  |
| 8 | **Marcos** |  | 2026-06-05 → 2026-06-15 (+10d) | 12d → 18d | 0% → 70% |  |  |  |
| 12 | Critério de projeto Elétrica | 2026-06-05 A | 2026-06-05 → 2026-06-15 (+10d) | 0d → 7d | 0% → 70% |  |  |  |
| 78 | **LE-F0009-0305-MB-M-00001** |  |  |  | 42% → 83% |  |  |  |
| 80 | Análise Tecnored |  | 2026-05-28 A |  | 50% → 100% | 18d → none |  |  |
| 81 | Atendimento de comentários | 2026-05-29 A | 2026-06-01 A |  | 0% → 100% | 18d → none |  |  |
| 179 | Emissão inicial |  |  |  |  |  | 154 → 154, 159, 164, 169 |  |
| 184 | Emissão inicial |  |  |  |  |  | 154 → 154, 159, 164, 169 |  |
| 189 | Emissão inicial |  |  |  |  |  | 154 → 154, 159, 164, 169 |  |
| 193 | **Tubulação/Utilidades** | 2026-06-10 A |  |  | 0% → 2% |  |  |  |
| 234 | **FG-F0009-0305-MB-T-00001** | 2026-06-10 A |  |  | 0% → 17% | 3d → 15d |  |  |
| 235 | Emissão inicial | 2026-06-10 A |  |  | 0% → 50% |  |  |  |
| 306 | Emissão inicial |  |  |  |  |  | 155 → 155, 160, 165, 170 |  |
| 365 | **Elétrica** |  | 2026-07-08 → 2026-06-29 (-9d) | 28d → 21d |  | 0d → 7d |  |  |
| 366 | **CP-F0009-0305-MB-E-00001** |  | 2026-06-11 → 2026-06-19 (+8d) | 23d → 29d |  | 19d → 13d |  |  |
| 368 | Análise Tecnored | 2026-06-08 → 2026-06-16 (+8d) | 2026-06-08 → 2026-06-16 (+8d) |  |  | 19d → 13d |  |  |
| 369 | Atendimento de comentários | 2026-06-09 → 2026-06-17 (+8d) | 2026-06-10 → 2026-06-18 (+8d) |  |  | 19d → 13d |  |  |
| 370 | Aprovação | 2026-06-11 → 2026-06-19 (+8d) | 2026-06-11 → 2026-06-19 (+8d) |  |  | 19d → 13d |  |  |
| 371 | **ML-F0009-0305-MB-E-00001** |  | 2026-06-30 → 2026-06-24 (-6d) | 10d → 6d |  | 0d → 7d |  |  |
| 372 | Emissão inicial |  | 2026-06-25 → 2026-06-22 (-3d) | 7d → 4d |  | 0d → 14d |  |  |
| 373 | Análise Tecnored | 2026-06-26 → 2026-06-23 (-3d) | 2026-06-26 → 2026-06-23 (-3d) |  |  | 6d → 17d |  |  |
| 374 | Atendimento de comentários | 2026-06-29 → 2026-06-24 (-5d) | 2026-06-29 → 2026-06-24 (-5d) |  |  | 6d → 17d |  |  |
| 375 | Aprovação | 2026-06-30 → 2026-06-24 (-6d) | 2026-06-30 → 2026-06-24 (-6d) |  |  | 6d → 17d | 374 → 374FF |  |
| 376 | **RL-F0009-0305-MB-E-00001** |  | 2026-06-11 → 2026-06-10 (-1d) | 6d → 5d | 75% → 70% | 19d → 20d |  |  |
| 377 | Emissão inicial |  | 2026-06-08 A → 2026-06-03 A (-5d) | 3d → 2d |  |  | 387 → 387FS-1d |  |
| 380 | Aprovação | 2026-06-11 → 2026-06-10 (-1d) | 2026-06-11 → 2026-06-10 (-1d) |  |  | 19d → 27d | 379 → 379FF |  |
| 381 | **LE-F0009-0305-MB-E-00001** | 2026-06-24 → 2026-06-23 (-1d) | 2026-07-01 → 2026-06-26 (-5d) | 6d → 4d |  | 5d → 8d |  |  |
| 382 | Emissão inicial | 2026-06-24 → 2026-06-23 (-1d) | 2026-06-26 → 2026-06-24 (-2d) | 3d → 2d |  | 5d → 15d | 407 → 407FS-1d |  |
| 383 | Análise Tecnored | 2026-06-29 → 2026-06-25 (-4d) | 2026-06-29 → 2026-06-25 (-4d) |  |  | 5d → 15d |  |  |
| 384 | Atendimento de comentários | 2026-06-30 → 2026-06-26 (-4d) | 2026-06-30 → 2026-06-26 (-4d) |  |  | 5d → 15d |  |  |
| 385 | Aprovação | 2026-07-01 → 2026-06-26 (-5d) | 2026-07-01 → 2026-06-26 (-5d) |  |  | 5d → 15d | 384 → 384FF |  |
| 386 | **LR-F0009-0305-MB-E-00001** |  | 2026-06-08 → 2026-06-03 (-5d) | 6d → 5d | 75% → 70% | 22d → 23d |  |  |
| 387 | Emissão inicial |  | 2026-06-01 A → 2026-05-29 A (-3d) | 3d → 2d |  |  | 79 → 79FS-1d |  |
| 390 | Aprovação | 2026-06-08 → 2026-06-03 (-5d) | 2026-06-08 → 2026-06-03 (-5d) |  |  | 22d → 30d | 389 → 389FF |  |
| 391 | **LM-F0009-0305-MB-E-00001** | 2026-07-02 → 2026-06-24 (-8d) | 2026-07-08 → 2026-06-29 (-9d) | 5d → 4d |  | 0d → 7d |  |  |
| 392 | Emissão inicial | 2026-07-02 → 2026-06-24 (-8d) | 2026-07-03 → 2026-06-25 (-8d) |  |  | 0d → 14d | 413 → 413FS-1d |  |
| 393 | Análise Tecnored | 2026-07-06 → 2026-06-26 (-10d) | 2026-07-06 → 2026-06-26 (-10d) |  |  | 0d → 14d |  |  |
| 394 | Atendimento de comentários | 2026-07-07 → 2026-06-29 (-8d) | 2026-07-07 → 2026-06-29 (-8d) |  |  | 0d → 14d |  |  |
| 395 | Aprovação | 2026-07-08 → 2026-06-29 (-9d) | 2026-07-08 → 2026-06-29 (-9d) |  |  | 0d → 14d | 394 → 394FF |  |
| 396 | **PQ-F0009-0305-MB-E-00001** | 2026-07-02 → 2026-06-24 (-8d) | 2026-07-07 → 2026-06-26 (-11d) | 4d → 3d |  | 1d → 8d |  |  |
| 397 | Emissão inicial | 2026-07-02 → 2026-06-24 (-8d) | 2026-07-02 → 2026-06-24 (-8d) |  |  | 1d → 15d |  |  |
| 398 | Análise Tecnored | 2026-07-03 → 2026-06-25 (-8d) | 2026-07-03 → 2026-06-25 (-8d) |  |  | 1d → 15d |  |  |
| 399 | Atendimento de comentários | 2026-07-06 → 2026-06-26 (-10d) | 2026-07-06 → 2026-06-26 (-10d) |  |  | 1d → 15d |  |  |
| 400 | Aprovação | 2026-07-07 → 2026-06-26 (-11d) | 2026-07-07 → 2026-06-26 (-11d) |  |  | 1d → 15d | 399 → 399FF |  |
| 401 | **MD-F0009-0305-MB-E-00001** | 2026-07-02 → 2026-06-24 (-8d) | 2026-07-10 → 2026-07-02 (-8d) |  |  | -2d → 4d |  |  |
| 402 | Emissão inicial | 2026-07-02 → 2026-06-24 (-8d) | 2026-07-06 → 2026-06-26 (-10d) |  |  | -2d → 4d |  |  |
| 403 | Análise Tecnored | 2026-07-07 → 2026-06-29 (-8d) | 2026-07-07 → 2026-06-29 (-8d) |  |  | -2d → 4d |  |  |
| 404 | Atendimento de comentários | 2026-07-08 → 2026-06-30 (-8d) | 2026-07-09 → 2026-07-01 (-8d) |  |  | -2d → 4d |  |  |
| 405 | Aprovação | 2026-07-10 → 2026-07-02 (-8d) | 2026-07-10 → 2026-07-02 (-8d) |  |  | -2d → 4d |  |  |
| 406 | **MC-F0009-0305-MB-E-00001** | 2026-06-17 → 2026-06-22 (+5d) | 2026-06-26 → 2026-06-25 (-1d) | 8d → 4d |  | 0d → 7d |  |  |
| 407 | Emissão inicial | 2026-06-17 → 2026-06-22 (+5d) |  | 5d → 2d |  | 0d → 14d | 427 → 427FS-1d |  |
| 410 | Aprovação | 2026-06-26 → 2026-06-25 (-1d) | 2026-06-26 → 2026-06-25 (-1d) |  |  | 8d → 16d | 409 → 409FF |  |
| 411 | **AG-F0009-0305-MB-E-00001** | 2026-06-26 → 2026-06-22 (-4d) | 2026-07-03 → 2026-06-25 (-8d) | 6d → 4d |  | 0d → 7d |  |  |
| 412 | Emissão inicial | 2026-06-26 → 2026-06-22 (-4d) | 2026-06-30 → 2026-06-23 (-7d) | 3d → 2d |  | 0d → 14d | 372 → 372FS-1d |  |
| 413 | Análise Tecnored | 2026-07-01 → 2026-06-24 (-7d) | 2026-07-01 → 2026-06-24 (-7d) |  |  | 0d → 14d |  |  |
| 414 | Atendimento de comentários | 2026-07-02 → 2026-06-25 (-7d) | 2026-07-02 → 2026-06-25 (-7d) |  |  | 3d → 16d |  |  |
| 415 | Aprovação | 2026-07-03 → 2026-06-25 (-8d) | 2026-07-03 → 2026-06-25 (-8d) |  |  | 3d → 16d | 414 → 414FF |  |
| 416 | **DU-F0009-0305-MB-E-00001** | 2026-06-09 → 2026-06-18 (+9d) | 2026-06-16 → 2026-06-23 (+7d) | 6d → 4d |  | 0d → 7d |  |  |
| 417 | Emissão inicial | 2026-06-09 → 2026-06-18 (+9d) | 2026-06-11 → 2026-06-19 (+8d) | 3d → 2d |  | 0d → 7d | 377 → 377FS-1d | constraint none → finish no earlier than 2026-06-19 |
| 418 | Análise Tecnored | 2026-06-12 → 2026-06-22 (+10d) | 2026-06-12 → 2026-06-22 (+10d) |  |  | 16d → 18d |  |  |
| 419 | Atendimento de comentários | 2026-06-15 → 2026-06-23 (+8d) | 2026-06-15 → 2026-06-23 (+8d) |  |  | 16d → 18d |  |  |
| 420 | Aprovação | 2026-06-16 → 2026-06-23 (+7d) | 2026-06-16 → 2026-06-23 (+7d) |  |  | 16d → 18d | 419 → 419FF |  |
| 421 | **AG-F0009-0305-MB-E-00002** | 2026-06-26 → 2026-06-24 (-2d) | 2026-07-03 → 2026-06-29 (-4d) | 6d → 4d |  | 3d → 7d |  |  |
| 422 | Emissão inicial | 2026-06-26 → 2026-06-24 (-2d) | 2026-06-30 → 2026-06-25 (-5d) | 3d → 2d |  | 3d → 14d | 372 → 372FS+1d |  |
| 423 | Análise Tecnored | 2026-07-01 → 2026-06-26 (-5d) | 2026-07-01 → 2026-06-26 (-5d) |  |  | 3d → 14d |  |  |
| 424 | Atendimento de comentários | 2026-07-02 → 2026-06-29 (-3d) | 2026-07-02 → 2026-06-29 (-3d) |  |  | 3d → 14d |  |  |
| 425 | Aprovação | 2026-07-03 → 2026-06-29 (-4d) | 2026-07-03 → 2026-06-29 (-4d) |  |  | 3d → 14d | 424 → 424FF |  |
| 426 | **FD-F0009-0305-MB-E-00013** | 2026-06-12 → 2026-06-19 (+7d) | 2026-06-19 → 2026-06-24 (+5d) | 6d → 4d |  | 0d → 7d |  |  |
| 427 | Emissão inicial | 2026-06-12 → 2026-06-19 (+7d) | 2026-06-16 → 2026-06-22 (+6d) | 3d → 2d |  | 0d → 14d | 417 → 417FS-1d |  |

| ID | Task | Start | Finish | Total float | Predecessors |
| --- | --- | --- | --- | --- | --- |
| 428 | Análise Tecnored | 2026-06-17 → 2026-06-23 (+6d) | 2026-06-17 → 2026-06-23 (+6d) | 13d → 17d |  |
| 429 | Atendimento de comentários | 2026-06-18 → 2026-06-24 (+6d) | 2026-06-18 → 2026-06-24 (+6d) | 13d → 17d |  |
| 430 | Aprovação | 2026-06-19 → 2026-06-24 (+5d) | 2026-06-19 → 2026-06-24 (+5d) | 13d → 17d | 429 → 429FF |

## Version 4 (data date 2026-06-12, saved 2026-06-16, file CR-F0009-0305-MB-F-00001 15062026.mpp)

Note of the change: Primeira versao dashboard

Last finish 2026-07-17 → 2026-07-23 (+6d). Complete tasks 24 → 28.

Changed:

| ID | Task | Start | Finish | Duration | Complete | Total float | Other |
| --- | --- | --- | --- | --- | --- | --- | --- |
| 1 | **F0009 - Programa Marabá** |  | 2026-07-08 → 2026-07-17 (+9d) | 51d → 58d | 7% → 8% |  |  |
| 2 | **Área 0000 -Documento geral** |  | 2026-06-15 → 2026-06-14 (-1d) | 18d → 17d | 70% → 99% |  |  |
| 8 | **Marcos** |  | 2026-06-15 → 2026-06-14 (-1d) | 18d → 17d | 70% → 99% |  |  |
| 12 | Critério de projeto Elétrica |  | 2026-06-15 → 2026-06-14 A (-1d) |  | 70% → 100% |  |  |
| 15 | **Área 0305 - Hot Blast Stoves** |  | 2026-07-08 → 2026-07-17 (+9d) | 51d → 58d | 6% → 8% |  |  |
| 30 | **Coordenação** |  | 2026-07-07 → 2026-07-17 (+10d) | 50d → 58d | 16% → 22% | 1d → 0d |  |
| 31 | **RM-F0009-0305-MB-G-00001** | 2026-05-28 → 2026-06-11 A (+14d) | 2026-06-09 → 2026-06-19 (+10d) |  | 0% → 21% | 1d → 20d |  |
| 32 | Emissão inicial | 2026-05-28 → 2026-06-11 A (+14d) | 2026-06-01 → 2026-06-15 (+14d) |  | 0% → 50% | 1d → 0d | constraint none → start no earlier than 2026-06-11 |
| 33 | Análise Tecnored | 2026-06-02 → 2026-06-16 (+14d) | 2026-06-02 → 2026-06-16 (+14d) |  |  | 21d → 20d |  |
| 34 | Atendimento de comentários | 2026-06-03 → 2026-06-17 (+14d) | 2026-06-08 → 2026-06-18 (+10d) |  |  | 21d → 20d |  |
| 35 | Aprovação | 2026-06-09 → 2026-06-19 (+10d) | 2026-06-09 → 2026-06-19 (+10d) |  |  | 21d → 20d |  |
| 36 | **RM-F0009-0305MB-G-00002** | 2026-06-18 → 2026-06-30 (+12d) | 2026-06-26 → 2026-07-08 (+12d) |  |  | 1d → 0d |  |
| 37 | Emissão inicial | 2026-06-18 → 2026-06-30 (+12d) | 2026-06-22 → 2026-07-02 (+10d) |  |  | 1d → 0d |  |
| 38 | Análise Tecnored | 2026-06-23 → 2026-07-03 (+10d) | 2026-06-23 → 2026-07-03 (+10d) |  |  | 8d → 7d |  |
| 39 | Atendimento de comentários | 2026-06-24 → 2026-07-06 (+12d) | 2026-06-25 → 2026-07-07 (+12d) |  |  | 8d → 7d |  |
| 40 | Aprovação | 2026-06-26 → 2026-07-08 (+12d) | 2026-06-26 → 2026-07-08 (+12d) |  |  | 8d → 7d |  |
| 41 | **RL-F0009-0305-MB-G-00001** | 2026-07-02 → 2026-07-14 (+12d) | 2026-07-07 → 2026-07-17 (+10d) |  |  | 1d → 0d |  |
| 42 | Emissão inicial | 2026-07-02 → 2026-07-14 (+12d) | 2026-07-02 → 2026-07-14 (+12d) |  |  | 1d → 0d |  |
| 43 | Análise Tecnored | 2026-07-03 → 2026-07-15 (+12d) | 2026-07-03 → 2026-07-15 (+12d) |  |  | 1d → 0d |  |
| 44 | Atendimento de comentários | 2026-07-06 → 2026-07-16 (+10d) | 2026-07-06 → 2026-07-16 (+10d) |  |  | 1d → 0d |  |
| 45 | Aprovação | 2026-07-07 → 2026-07-17 (+10d) | 2026-07-07 → 2026-07-17 (+10d) |  |  | 1d → 0d |  |
| 67 | **Mecânica** | 2026-05-19 A → 2026-05-15 A (-4d) |  | 30d → 32d |  | 5d → 12d |  |
| 83 | **PQ-F0009-0305-MB-M-00001** | 2026-06-02 → 2026-06-18 (+16d) | 2026-06-12 → 2026-06-26 (+14d) |  |  | 18d → 15d |  |
| 84 | Emissão inicial | 2026-06-02 → 2026-06-18 (+16d) | 2026-06-08 → 2026-06-22 (+14d) |  |  | 18d → 15d | constraint none → start no earlier than 2026-06-18 |
| 85 | Análise Tecnored | 2026-06-09 → 2026-06-23 (+14d) | 2026-06-09 → 2026-06-23 (+14d) |  |  | 18d → 15d |  |
| 86 | Atendimento de comentários | 2026-06-10 → 2026-06-24 (+14d) | 2026-06-11 → 2026-06-25 (+14d) |  |  | 18d → 15d |  |
| 87 | Aprovação | 2026-06-12 → 2026-06-26 (+14d) | 2026-06-12 → 2026-06-26 (+14d) |  |  | 18d → 15d |  |
| 133 | **PL-F0009-0305-MB-M-00001** | 2026-06-01 → 2026-06-15 (+14d) | 2026-06-18 → 2026-06-30 (+12d) |  |  | 14d → 13d |  |
| 134 | Emissão inicial | 2026-06-01 → 2026-06-15 (+14d) | 2026-06-12 → 2026-06-24 (+12d) |  |  | 14d → 13d | constraint none → start no earlier than 2026-06-15 |
| 135 | Análise Tecnored | 2026-06-15 → 2026-06-25 (+10d) | 2026-06-15 → 2026-06-25 (+10d) |  |  | 14d → 13d |  |
| 136 | Atendimento de comentários | 2026-06-16 → 2026-06-26 (+10d) | 2026-06-17 → 2026-06-29 (+12d) |  |  | 14d → 13d |  |
| 137 | Aprovação | 2026-06-18 → 2026-06-30 (+12d) | 2026-06-18 → 2026-06-30 (+12d) |  |  | 14d → 13d |  |
| 138 | **PL-F0009-0305-MB-M-00002** | 2026-06-01 → 2026-06-15 (+14d) | 2026-06-18 → 2026-06-30 (+12d) |  |  | 14d → 13d |  |
| 139 | Emissão inicial | 2026-06-01 → 2026-06-15 (+14d) | 2026-06-12 → 2026-06-24 (+12d) |  |  | 14d → 13d | constraint none → start no earlier than 2026-06-15 |
| 140 | Análise Tecnored | 2026-06-15 → 2026-06-25 (+10d) | 2026-06-15 → 2026-06-25 (+10d) |  |  | 14d → 13d |  |
| 141 | Atendimento de comentários | 2026-06-16 → 2026-06-26 (+10d) | 2026-06-17 → 2026-06-29 (+12d) |  |  | 14d → 13d |  |
| 142 | Aprovação | 2026-06-18 → 2026-06-30 (+12d) | 2026-06-18 → 2026-06-30 (+12d) |  |  | 14d → 13d |  |
| 143 | **PL-F0009-0305-MB-M-00003** | 2026-06-01 → 2026-06-15 (+14d) | 2026-06-18 → 2026-06-30 (+12d) |  |  | 14d → 13d |  |
| 144 | Emissão inicial | 2026-06-01 → 2026-06-15 (+14d) | 2026-06-12 → 2026-06-24 (+12d) |  |  | 14d → 13d | constraint none → start no earlier than 2026-06-15 |
| 145 | Análise Tecnored | 2026-06-15 → 2026-06-25 (+10d) | 2026-06-15 → 2026-06-25 (+10d) |  |  | 14d → 13d |  |
| 146 | Atendimento de comentários | 2026-06-16 → 2026-06-26 (+10d) | 2026-06-17 → 2026-06-29 (+12d) |  |  | 14d → 13d |  |
| 147 | Aprovação | 2026-06-18 → 2026-06-30 (+12d) | 2026-06-18 → 2026-06-30 (+12d) |  |  | 14d → 13d |  |
| 148 | **PL-F0009-0305-MB-M-00004** | 2026-06-01 → 2026-06-15 (+14d) | 2026-06-18 → 2026-06-30 (+12d) |  |  | 14d → 13d |  |
| 149 | Emissão inicial | 2026-06-01 → 2026-06-15 (+14d) | 2026-06-12 → 2026-06-24 (+12d) |  |  | 14d → 13d | constraint none → start no earlier than 2026-06-15 |
| 150 | Análise Tecnored | 2026-06-15 → 2026-06-25 (+10d) | 2026-06-15 → 2026-06-25 (+10d) |  |  | 14d → 13d |  |
| 151 | Atendimento de comentários | 2026-06-16 → 2026-06-26 (+10d) | 2026-06-17 → 2026-06-29 (+12d) |  |  | 14d → 13d |  |
| 152 | Aprovação | 2026-06-18 → 2026-06-30 (+12d) | 2026-06-18 → 2026-06-30 (+12d) |  |  | 14d → 13d |  |
| 173 | **ML-F0009-0305-MB-M-00001** | 2026-05-19 A → 2026-05-15 A (-4d) |  | 12d → 14d |  | 23d → 30d |  |
| 174 | Emissão inicial | 2026-05-19 A → 2026-05-15 A (-4d) | 2026-05-28 A → 2026-05-26 A (-2d) |  |  |  |  |
| 193 | **Tubulação/Utilidades** |  | 2026-07-03 → 2026-07-07 (+4d) | 18d → 20d | 2% → 5% | 3d → 8d |  |
| 199 | **MD-F0009-0305-MB-U-00001** | 2026-07-09 → 2026-07-15 (+6d) | 2026-07-17 → 2026-07-23 (+6d) |  |  | -7d → -4d |  |
| 200 | Emissão inicial | 2026-07-09 → 2026-07-15 (+6d) | 2026-07-13 → 2026-07-17 (+4d) |  |  | -7d → -4d |  |
| 201 | Análise Tecnored | 2026-07-14 → 2026-07-20 (+6d) | 2026-07-14 → 2026-07-20 (+6d) |  |  | -7d → -4d |  |
| 202 | Atendimento de comentários | 2026-07-15 → 2026-07-21 (+6d) | 2026-07-16 → 2026-07-22 (+6d) |  |  | -7d → -4d |  |
| 203 | Aprovação | 2026-07-17 → 2026-07-23 (+6d) | 2026-07-17 → 2026-07-23 (+6d) |  |  | -7d → -4d |  |
| 204 | **ML-F0009-0305-MB-T-00001** | 2026-06-12 → 2026-06-18 (+6d) | 2026-06-22 → 2026-06-26 (+4d) |  |  | 5d → 8d |  |
| 205 | Emissão inicial | 2026-06-12 → 2026-06-18 (+6d) | 2026-06-16 → 2026-06-22 (+6d) |  |  | 5d → 8d | constraint none → start no earlier than 2026-06-18 |
| 206 | Análise Tecnored | 2026-06-17 → 2026-06-23 (+6d) | 2026-06-17 → 2026-06-23 (+6d) |  |  | 5d → 8d |  |
| 207 | Atendimento de comentários | 2026-06-18 → 2026-06-24 (+6d) | 2026-06-19 → 2026-06-25 (+6d) |  |  | 5d → 8d |  |
| 208 | Aprovação | 2026-06-22 → 2026-06-26 (+4d) | 2026-06-22 → 2026-06-26 (+4d) |  |  | 5d → 8d |  |
| 209 | **ET-F0009-0305-MB-T-00001** | 2026-06-19 → 2026-06-29 (+10d) | 2026-06-29 → 2026-07-07 (+8d) |  |  | 7d → 8d |  |
| 210 | Emissão inicial | 2026-06-19 → 2026-06-29 (+10d) | 2026-06-23 → 2026-07-01 (+8d) |  |  | 7d → 8d |  |
| 211 | Análise Tecnored | 2026-06-24 → 2026-07-02 (+8d) | 2026-06-24 → 2026-07-02 (+8d) |  |  | 7d → 8d |  |
| 212 | Atendimento de comentários | 2026-06-25 → 2026-07-03 (+8d) | 2026-06-26 → 2026-07-06 (+10d) |  |  | 7d → 8d |  |
| 213 | Aprovação | 2026-06-29 → 2026-07-07 (+8d) | 2026-06-29 → 2026-07-07 (+8d) |  |  | 7d → 8d |  |
| 214 | **FD-F0009-0305-MB-T-00001** | 2026-06-12 → 2026-06-22 (+10d) | 2026-06-22 → 2026-06-30 (+8d) |  |  | 3d → 13d |  |
| 215 | Emissão inicial | 2026-06-12 → 2026-06-22 (+10d) | 2026-06-16 → 2026-06-24 (+8d) |  |  | 3d → 13d | constraint none → start no earlier than 2026-06-22 |
| 216 | Análise Tecnored | 2026-06-17 → 2026-06-25 (+8d) | 2026-06-17 → 2026-06-25 (+8d) |  |  | 12d → 13d |  |
| 217 | Atendimento de comentários | 2026-06-18 → 2026-06-26 (+8d) | 2026-06-19 → 2026-06-29 (+10d) |  |  | 12d → 13d |  |
| 218 | Aprovação | 2026-06-22 → 2026-06-30 (+8d) | 2026-06-22 → 2026-06-30 (+8d) |  |  | 12d → 13d |  |

| ID | Task | Start | Finish | Duration | Complete | Total float | Predecessors | Other |
| --- | --- | --- | --- | --- | --- | --- | --- | --- |
| 219 | **FD-F0009-0305-MB-T-00002** | 2026-06-19 → 2026-06-29 (+10d) | 2026-06-29 → 2026-07-07 (+8d) |  |  | 7d → 8d |  |  |
| 220 | Emissão inicial | 2026-06-19 → 2026-06-29 (+10d) | 2026-06-23 → 2026-07-01 (+8d) |  |  | 7d → 8d |  |  |
| 221 | Análise Tecnored | 2026-06-24 → 2026-07-02 (+8d) | 2026-06-24 → 2026-07-02 (+8d) |  |  | 7d → 8d |  |  |
| 222 | Atendimento de comentários | 2026-06-25 → 2026-07-03 (+8d) | 2026-06-26 → 2026-07-06 (+10d) |  |  | 7d → 8d |  |  |
| 223 | Aprovação | 2026-06-29 → 2026-07-07 (+8d) | 2026-06-29 → 2026-07-07 (+8d) |  |  | 7d → 8d |  |  |
| 224 | **PQ-F0009-0305-MB-T-00001** | 2026-06-25 → 2026-06-22 (-3d) | 2026-07-03 → 2026-06-30 (-3d) |  |  | 3d → 13d |  |  |
| 225 | Emissão inicial | 2026-06-25 → 2026-06-22 (-3d) | 2026-06-29 → 2026-06-24 (-5d) |  |  | 3d → 13d |  |  |
| 226 | Análise Tecnored | 2026-06-30 → 2026-06-25 (-5d) | 2026-06-30 → 2026-06-25 (-5d) |  |  | 3d → 13d |  |  |
| 227 | Atendimento de comentários | 2026-07-01 → 2026-06-26 (-5d) | 2026-07-02 → 2026-06-29 (-3d) |  |  | 3d → 13d |  |  |
| 228 | Aprovação | 2026-07-03 → 2026-06-30 (-3d) | 2026-07-03 → 2026-06-30 (-3d) |  |  | 3d → 13d |  |  |
| 229 | **MC-F0009-0305-MB-T-00001** | 2026-06-12 → 2026-06-22 (+10d) | 2026-06-24 → 2026-07-02 (+8d) |  |  | 3d → 4d |  |  |
| 230 | Emissão inicial | 2026-06-12 → 2026-06-22 (+10d) | 2026-06-18 → 2026-06-26 (+8d) |  |  | 3d → 4d |  |  |
| 231 | Análise Tecnored | 2026-06-19 → 2026-06-29 (+10d) | 2026-06-19 → 2026-06-29 (+10d) |  |  | 3d → 4d |  |  |
| 232 | Atendimento de comentários | 2026-06-22 → 2026-06-30 (+8d) | 2026-06-23 → 2026-07-01 (+8d) |  |  | 3d → 4d |  |  |
| 233 | Aprovação | 2026-06-24 → 2026-07-02 (+8d) | 2026-06-24 → 2026-07-02 (+8d) |  |  | 3d → 4d |  |  |
| 234 | **FG-F0009-0305-MB-T-00001** |  | 2026-06-17 → 2026-06-18 (+1d) | 6d → 7d | 17% → 43% | 15d → 21d |  |  |
| 235 | Emissão inicial |  | 2026-06-11 → 2026-06-12 A (+1d) | 2d → 3d | 50% → 100% | 3d → none |  | constraint none → finish no earlier than 2026-06-12 |
| 236 | Análise Tecnored | 2026-06-12 → 2026-06-15 (+3d) | 2026-06-12 → 2026-06-15 (+3d) |  |  | 15d → 21d |  |  |
| 237 | Atendimento de comentários | 2026-06-15 → 2026-06-16 (+1d) | 2026-06-16 → 2026-06-17 (+1d) |  |  | 15d → 21d |  |  |
| 238 | Aprovação | 2026-06-17 → 2026-06-18 (+1d) | 2026-06-17 → 2026-06-18 (+1d) |  |  | 15d → 21d |  |  |
| 244 | **AG-F0009-0305-MB-T-00001** | 2026-06-23 → 2026-06-29 (+6d) | 2026-07-01 → 2026-07-07 (+6d) |  |  | 5d → 8d |  |  |
| 245 | Emissão inicial | 2026-06-23 → 2026-06-29 (+6d) | 2026-06-25 → 2026-07-01 (+6d) |  |  | 5d → 8d |  |  |
| 246 | Análise Tecnored | 2026-06-26 → 2026-07-02 (+6d) | 2026-06-26 → 2026-07-02 (+6d) |  |  | 5d → 8d |  |  |
| 247 | Atendimento de comentários | 2026-06-29 → 2026-07-03 (+4d) | 2026-06-30 → 2026-07-06 (+6d) |  |  | 5d → 8d |  |  |
| 248 | Aprovação | 2026-07-01 → 2026-07-07 (+6d) | 2026-07-01 → 2026-07-07 (+6d) |  |  | 5d → 8d |  |  |
| 249 | **AG-F0009-0305-MB-T-00002** | 2026-06-23 → 2026-06-29 (+6d) | 2026-07-01 → 2026-07-07 (+6d) |  |  | 5d → 8d |  |  |
| 250 | Emissão inicial | 2026-06-23 → 2026-06-29 (+6d) | 2026-06-25 → 2026-07-01 (+6d) |  |  | 5d → 8d |  |  |
| 251 | Análise Tecnored | 2026-06-26 → 2026-07-02 (+6d) | 2026-06-26 → 2026-07-02 (+6d) |  |  | 5d → 8d |  |  |
| 252 | Atendimento de comentários | 2026-06-29 → 2026-07-03 (+4d) | 2026-06-30 → 2026-07-06 (+6d) |  |  | 5d → 8d |  |  |
| 253 | Aprovação | 2026-07-01 → 2026-07-07 (+6d) | 2026-07-01 → 2026-07-07 (+6d) |  |  | 5d → 8d |  |  |
| 254 | **AG-F0009-0305-MB-T-00003** | 2026-06-23 → 2026-06-29 (+6d) | 2026-07-01 → 2026-07-07 (+6d) |  |  | 5d → 8d |  |  |
| 255 | Emissão inicial | 2026-06-23 → 2026-06-29 (+6d) | 2026-06-25 → 2026-07-01 (+6d) |  |  | 5d → 8d |  |  |
| 256 | Análise Tecnored | 2026-06-26 → 2026-07-02 (+6d) | 2026-06-26 → 2026-07-02 (+6d) |  |  | 5d → 8d |  |  |
| 257 | Atendimento de comentários | 2026-06-29 → 2026-07-03 (+4d) | 2026-06-30 → 2026-07-06 (+6d) |  |  | 5d → 8d |  |  |
| 258 | Aprovação | 2026-07-01 → 2026-07-07 (+6d) | 2026-07-01 → 2026-07-07 (+6d) |  |  | 5d → 8d |  |  |
| 274 | **LK-F0009-0305-MB-T-00001** | 2026-06-24 → 2026-06-22 (-2d) | 2026-07-01 → 2026-06-29 (-2d) |  |  | 5d → 14d |  |  |
| 275 | Emissão inicial | 2026-06-24 → 2026-06-22 (-2d) | 2026-06-25 → 2026-06-23 (-2d) |  |  | 5d → 14d |  |  |
| 276 | Análise Tecnored | 2026-06-26 → 2026-06-24 (-2d) | 2026-06-26 → 2026-06-24 (-2d) |  |  | 5d → 14d |  |  |
| 277 | Atendimento de comentários | 2026-06-29 → 2026-06-25 (-4d) | 2026-06-30 → 2026-06-26 (-4d) |  |  | 5d → 14d |  |  |
| 278 | Aprovação | 2026-07-01 → 2026-06-29 (-2d) | 2026-07-01 → 2026-06-29 (-2d) |  |  | 5d → 14d |  |  |
| 279 | **MC-F0009-0305-MB-T-00002** | 2026-05-29 → 2026-05-27 (-2d) | 2026-06-19 → 2026-06-17 (-2d) |  |  | 13d → 22d |  |  |
| 280 | Emissão inicial | 2026-05-29 → 2026-05-27 (-2d) | 2026-06-15 → 2026-06-11 (-4d) |  |  | 13d → 22d |  |  |
| 281 | Análise Tecnored | 2026-06-16 → 2026-06-12 (-4d) | 2026-06-16 → 2026-06-12 (-4d) |  |  | 13d → 22d |  |  |
| 282 | Atendimento de comentários | 2026-06-17 → 2026-06-15 (-2d) | 2026-06-18 → 2026-06-16 (-2d) |  |  | 13d → 22d |  |  |
| 283 | Aprovação | 2026-06-19 → 2026-06-17 (-2d) | 2026-06-19 → 2026-06-17 (-2d) |  |  | 13d → 22d |  |  |
| 366 | **CP-F0009-0305-MB-E-00001** |  | 2026-06-19 → 2026-06-18 (-1d) | 29d → 28d |  | 13d → 21d |  |  |
| 368 | Análise Tecnored | 2026-06-16 → 2026-06-15 (-1d) | 2026-06-16 → 2026-06-15 (-1d) |  |  | 13d → 21d |  |  |
| 369 | Atendimento de comentários | 2026-06-17 → 2026-06-16 (-1d) | 2026-06-18 → 2026-06-17 (-1d) |  |  | 13d → 21d |  |  |
| 370 | Aprovação | 2026-06-19 → 2026-06-18 (-1d) | 2026-06-19 → 2026-06-18 (-1d) |  |  | 13d → 21d |  |  |
| 431 | **Automação e instrumentação** | 2026-06-03 A → 2026-06-01 A (-2d) |  | 24d → 26d | 1% → 4% | 0d → 7d |  |  |
| 437 | **LI-F0009-0305-MB-J-00001** | 2026-06-09 → 2026-06-15 (+6d) | 2026-06-16 → 2026-06-29 (+13d) | 6d → 11d |  | 0d → 12d |  |  |
| 438 | Emissão inicial | 2026-06-09 → 2026-06-15 (+6d) | 2026-06-10 → 2026-06-19 (+9d) | 2d → 5d |  | 0d → 12d |  | constraint none → finish no earlier than 2026-06-19 |
| 439 | Análise Tecnored | 2026-06-11 → 2026-06-22 (+11d) | 2026-06-11 → 2026-06-22 (+11d) |  |  |  |  |  |
| 440 | Atendimento de comentários | 2026-06-12 → 2026-06-23 (+11d) | 2026-06-15 → 2026-06-24 (+9d) |  |  |  |  |  |
| 441 | Aprovação | 2026-06-16 → 2026-06-29 (+13d) | 2026-06-16 → 2026-06-29 (+13d) |  |  | 16d → 14d |  | constraint none → finish no earlier than 2026-06-29 |
| 442 | **LE-F0009-0305-MB-J-00001** | 2026-07-01 → 2026-06-26 (-5d) | 2026-07-08 → 2026-07-07 (-1d) | 6d → 8d |  | 0d → 8d |  |  |
| 443 | Emissão inicial | 2026-07-01 → 2026-06-26 (-5d) | 2026-07-02 → 2026-07-01 (-1d) | 2d → 4d |  | 0d → 8d | 518 → none | constraint none → finish no earlier than 2026-07-01 |
| 444 | Análise Tecnored | 2026-07-03 → 2026-07-02 (-1d) | 2026-07-03 → 2026-07-02 (-1d) |  |  | 0d → 8d |  | constraint none → start no earlier than 2026-07-02 |
| 445 | Atendimento de comentários | 2026-07-06 → 2026-07-03 (-3d) | 2026-07-07 → 2026-07-06 (-1d) |  |  | 0d → 8d |  | constraint none → start no earlier than 2026-07-03 |
| 446 | Aprovação | 2026-07-08 → 2026-07-07 (-1d) | 2026-07-08 → 2026-07-07 (-1d) |  |  | 0d → 8d |  | constraint none → start no earlier than 2026-07-07 |
| 447 | **LZ-F0009-0305-MB-J-00001** | 2026-06-24 → 2026-06-26 (+2d) | 2026-07-01 → 2026-07-07 (+6d) | 6d → 8d |  | 0d → 8d |  |  |
| 448 | Emissão inicial | 2026-06-24 → 2026-06-26 (+2d) | 2026-06-25 → 2026-07-01 (+6d) | 2d → 4d |  | 0d → 8d |  | constraint none → finish no earlier than 2026-07-01 |
| 449 | Análise Tecnored | 2026-06-26 → 2026-07-02 (+6d) | 2026-06-26 → 2026-07-02 (+6d) |  |  | 5d → 8d |  | constraint none → start no earlier than 2026-07-02 |
| 450 | Atendimento de comentários | 2026-06-29 → 2026-07-03 (+4d) | 2026-06-30 → 2026-07-06 (+6d) |  |  | 5d → 8d |  | constraint none → start no earlier than 2026-07-03 |
| 451 | Aprovação | 2026-07-01 → 2026-07-07 (+6d) | 2026-07-01 → 2026-07-07 (+6d) |  |  | 5d → 8d |  | constraint none → start no earlier than 2026-07-07 |
| 452 | **LE-F0009-0305-MB-J-00002** | 2026-07-01 → 2026-06-26 (-5d) | 2026-07-08 → 2026-07-07 (-1d) | 6d → 8d |  | 0d → 8d |  |  |
| 453 | Emissão inicial | 2026-07-01 → 2026-06-26 (-5d) | 2026-07-02 → 2026-07-01 (-1d) | 2d → 4d |  | 0d → 8d | 518 → none | constraint none → finish no earlier than 2026-07-01 |
| 454 | Análise Tecnored | 2026-07-03 → 2026-07-02 (-1d) | 2026-07-03 → 2026-07-02 (-1d) |  |  | 0d → 8d |  | constraint none → start no earlier than 2026-07-02 |
| 455 | Atendimento de comentários | 2026-07-06 → 2026-07-03 (-3d) | 2026-07-07 → 2026-07-06 (-1d) |  |  | 0d → 8d |  | constraint none → start no earlier than 2026-07-03 |
| 456 | Aprovação | 2026-07-08 → 2026-07-07 (-1d) | 2026-07-08 → 2026-07-07 (-1d) |  |  | 0d → 8d |  | constraint none → start no earlier than 2026-07-07 |

| ID | Task | Start | Finish | Duration | Complete | Total float | Predecessors | Other |
| --- | --- | --- | --- | --- | --- | --- | --- | --- |
| 457 | **PQ-F0009-0305-MB-J-00001** | 2026-06-09 → 2026-06-25 (+16d) | 2026-06-15 → 2026-07-07 (+22d) | 5d → 9d |  | 17d → 8d |  |  |
| 458 | Emissão inicial | 2026-06-09 → 2026-06-25 (+16d) | 2026-06-09 → 2026-07-02 (+23d) | 1d → 6d |  | 17d → 8d |  | constraint none → start no earlier than 2026-06-25 |
| 459 | Análise Tecnored | 2026-06-10 → 2026-07-03 (+23d) | 2026-06-10 → 2026-07-03 (+23d) |  |  | 17d → 8d |  |  |
| 460 | Atendimento de comentários | 2026-06-11 → 2026-07-06 (+25d) | 2026-06-12 → 2026-07-06 (+24d) | 2d → 1d |  | 17d → 8d |  |  |
| 461 | Aprovação | 2026-06-15 → 2026-07-07 (+22d) | 2026-06-15 → 2026-07-07 (+22d) |  |  | 17d → 8d |  |  |
| 462 | **FG-F0009-0305-MB-J-00001** | 2026-06-03 A → 2026-06-01 A (-2d) | 2026-06-12 → 2026-06-18 (+6d) | 6d → 12d | 17% → 60% | 18d → 21d |  |  |
| 463 | Emissão inicial | 2026-06-03 A → 2026-06-01 A (-2d) | 2026-06-08 → 2026-06-12 A (+4d) | 2d → 6d | 50% → 100% | 18d → none |  | constraint none → finish no earlier than 2026-06-12 |
| 464 | Análise Tecnored | 2026-06-09 → 2026-06-15 (+6d) | 2026-06-09 → 2026-06-15 (+6d) |  |  | 18d → 21d |  |  |
| 465 | Atendimento de comentários | 2026-06-10 → 2026-06-16 (+6d) | 2026-06-11 → 2026-06-17 (+6d) |  |  | 18d → 21d |  |  |
| 466 | Aprovação | 2026-06-12 → 2026-06-18 (+6d) | 2026-06-12 → 2026-06-18 (+6d) |  |  | 18d → 21d |  |  |
| 467 | **FG-F0009-0305-MB-J-00002** | 2026-06-03 A | 2026-06-12 → 2026-06-18 (+6d) | 6d → 10d | 0% → 60% | 0d → 21d |  |  |
| 468 | Emissão inicial | 2026-06-03 A | 2026-06-08 → 2026-06-12 A (+4d) | 2d → 6d | 0% → 100% | 0d → none |  | constraint none → start no earlier than 2026-06-01 |
| 469 | Análise Tecnored | 2026-06-09 → 2026-06-15 (+6d) | 2026-06-09 → 2026-06-15 (+6d) |  |  | 18d → 21d |  |  |
| 470 | Atendimento de comentários | 2026-06-10 → 2026-06-16 (+6d) | 2026-06-11 → 2026-06-17 (+6d) |  |  | 18d → 21d |  |  |
| 471 | Aprovação | 2026-06-12 → 2026-06-18 (+6d) | 2026-06-12 → 2026-06-18 (+6d) |  |  | 18d → 21d |  |  |
| 472 | **FG-F0009-0305-MB-J-00003** |  | 2026-06-12 → 2026-06-18 (+6d) | 6d → 10d | 17% → 10% | 18d → 21d |  |  |
| 473 | Emissão inicial |  | 2026-06-08 → 2026-06-12 (+4d) | 2d → 6d | 50% → 17% | 18d → 21d |  | constraint none → finish no earlier than 2026-06-12 |
| 474 | Análise Tecnored | 2026-06-09 → 2026-06-15 (+6d) | 2026-06-09 → 2026-06-15 (+6d) |  |  | 18d → 21d |  |  |
| 475 | Atendimento de comentários | 2026-06-10 → 2026-06-16 (+6d) | 2026-06-11 → 2026-06-17 (+6d) |  |  | 18d → 21d |  |  |
| 476 | Aprovação | 2026-06-12 → 2026-06-18 (+6d) | 2026-06-12 → 2026-06-18 (+6d) |  |  | 18d → 21d |  |  |
| 477 | **AG-F0009-0305-MB-J-00001** | 2026-06-11 → 2026-06-24 (+13d) | 2026-06-25 → 2026-07-03 (+8d) | 11d → 8d |  | 9d → 10d |  |  |
| 478 | Emissão inicial | 2026-06-11 → 2026-06-24 (+13d) | 2026-06-19 → 2026-06-29 (+10d) | 7d → 4d |  | 9d → 10d |  | constraint none → start no earlier than 2026-06-24 |
| 479 | Análise Tecnored | 2026-06-22 → 2026-06-30 (+8d) | 2026-06-22 → 2026-06-30 (+8d) |  |  | 9d → 10d |  |  |
| 480 | Atendimento de comentários | 2026-06-23 → 2026-07-01 (+8d) | 2026-06-24 → 2026-07-02 (+8d) |  |  | 9d → 10d |  |  |
| 481 | Aprovação | 2026-06-25 → 2026-07-03 (+8d) | 2026-06-25 → 2026-07-03 (+8d) |  |  | 9d → 10d |  | constraint none → finish no earlier than 2026-07-03 |
| 482 | **AG-F0009-0305-MB-J-00002** | 2026-06-11 → 2026-06-24 (+13d) | 2026-06-25 → 2026-07-02 (+7d) | 11d → 7d |  | 9d → 11d |  |  |
| 483 | Emissão inicial | 2026-06-11 → 2026-06-24 (+13d) | 2026-06-19 → 2026-06-26 (+7d) | 7d → 3d |  | 9d → 11d |  | constraint none → start no earlier than 2026-06-24 |
| 484 | Análise Tecnored | 2026-06-22 → 2026-06-29 (+7d) | 2026-06-22 → 2026-06-29 (+7d) |  |  | 9d → 11d |  |  |
| 485 | Atendimento de comentários | 2026-06-23 → 2026-06-30 (+7d) | 2026-06-24 → 2026-07-01 (+7d) |  |  | 9d → 11d |  |  |
| 486 | Aprovação | 2026-06-25 → 2026-07-02 (+7d) | 2026-06-25 → 2026-07-02 (+7d) |  |  | 9d → 11d |  | constraint none → finish no earlier than 2026-07-02 |
| 487 | **AG-F0009-0305-MB-J-00003** | 2026-06-11 → 2026-06-24 (+13d) | 2026-06-25 → 2026-07-02 (+7d) | 11d → 7d |  | 0d → 11d |  |  |
| 488 | Emissão inicial | 2026-06-11 → 2026-06-24 (+13d) | 2026-06-19 → 2026-06-26 (+7d) | 7d → 3d |  | 0d → 11d |  | constraint none → start no earlier than 2026-06-24 |
| 489 | Análise Tecnored | 2026-06-22 → 2026-06-29 (+7d) | 2026-06-22 → 2026-06-29 (+7d) |  |  | 9d → 11d |  |  |
| 490 | Atendimento de comentários | 2026-06-23 → 2026-06-30 (+7d) | 2026-06-24 → 2026-07-01 (+7d) |  |  | 9d → 11d |  |  |
| 491 | Aprovação | 2026-06-25 → 2026-07-02 (+7d) | 2026-06-25 → 2026-07-02 (+7d) |  |  | 9d → 11d |  |  |
| 492 | **AG-F0009-0305-MB-J-00004** | 2026-06-11 → 2026-06-24 (+13d) | 2026-06-25 → 2026-07-01 (+6d) | 11d → 6d |  | 9d → 12d |  |  |
| 493 | Emissão inicial | 2026-06-11 → 2026-06-24 (+13d) | 2026-06-19 → 2026-06-25 (+6d) | 7d → 2d |  | 9d → 12d |  | constraint none → start no earlier than 2026-06-24 |
| 494 | Análise Tecnored | 2026-06-22 → 2026-06-26 (+4d) | 2026-06-22 → 2026-06-26 (+4d) |  |  | 9d → 12d |  |  |
| 495 | Atendimento de comentários | 2026-06-23 → 2026-06-29 (+6d) | 2026-06-24 → 2026-06-30 (+6d) |  |  | 9d → 12d |  |  |
| 496 | Aprovação | 2026-06-25 → 2026-07-01 (+6d) | 2026-06-25 → 2026-07-01 (+6d) |  |  | 9d → 12d |  |  |
| 497 | **DI-F0009-0305-MB-J-00001** | 2026-06-22 → 2026-06-17 (-5d) | 2026-06-29 → 2026-06-26 (-3d) | 6d → 8d |  | 0d → 11d |  |  |
| 498 | Emissão inicial | 2026-06-22 → 2026-06-17 (-5d) | 2026-06-23 → 2026-06-22 (-1d) | 2d → 4d |  | 0d → 11d | 488 → none | constraint none → start no earlier than 2026-06-17 |
| 499 | Análise Tecnored | 2026-06-24 → 2026-06-23 (-1d) | 2026-06-24 → 2026-06-23 (-1d) |  |  | 7d → 15d |  |  |
| 500 | Atendimento de comentários | 2026-06-25 → 2026-06-24 (-1d) | 2026-06-26 → 2026-06-25 (-1d) |  |  | 7d → 15d |  |  |
| 501 | Aprovação | 2026-06-29 → 2026-06-26 (-3d) | 2026-06-29 → 2026-06-26 (-3d) |  |  | 7d → 15d |  |  |
| 502 | **LI-F0009-0305-MB-J-00002** | 2026-07-01 → 2026-06-17 (-14d) | 2026-07-07 → 2026-06-29 (-8d) | 5d → 9d |  | 1d → 14d |  |  |
| 503 | Emissão inicial | 2026-07-01 → 2026-06-17 (-14d) | 2026-07-02 → 2026-06-23 (-9d) | 2d → 5d |  | 1d → 14d | 518 → none | constraint none → start no earlier than 2026-06-17 |
| 504 | Análise Tecnored | 2026-07-03 → 2026-06-24 (-9d) | 2026-07-03 → 2026-06-24 (-9d) |  |  | 1d → 14d |  |  |
| 505 | Atendimento de comentários | 2026-07-06 → 2026-06-25 (-11d) | 2026-07-06 → 2026-06-26 (-10d) | 1d → 2d |  | 1d → 14d |  |  |
| 506 | Aprovação | 2026-07-07 → 2026-06-29 (-8d) | 2026-07-07 → 2026-06-29 (-8d) |  |  | 1d → 14d |  |  |
| 507 | **LI-F0009-0305-MB-J-00003** | 2026-07-01 → 2026-06-17 (-14d) | 2026-07-07 → 2026-06-29 (-8d) | 5d → 9d |  | 1d → 14d |  |  |
| 508 | Emissão inicial | 2026-07-01 → 2026-06-17 (-14d) | 2026-07-02 → 2026-06-23 (-9d) | 2d → 5d |  | 1d → 14d | 518 → none | constraint none → start no earlier than 2026-06-17 |
| 509 | Análise Tecnored | 2026-07-03 → 2026-06-24 (-9d) | 2026-07-03 → 2026-06-24 (-9d) |  |  | 1d → 14d |  |  |
| 510 | Atendimento de comentários | 2026-07-06 → 2026-06-25 (-11d) | 2026-07-06 → 2026-06-26 (-10d) | 1d → 2d |  | 1d → 14d |  |  |
| 511 | Aprovação | 2026-07-07 → 2026-06-29 (-8d) | 2026-07-07 → 2026-06-29 (-8d) |  |  | 1d → 14d |  |  |
| 512 | **LM-F0009-0305-MB-J-00001** | 2026-06-19 → 2026-06-26 (+7d) | 2026-06-24 → 2026-07-06 (+12d) | 4d → 7d |  | 10d → 9d |  |  |
| 513 | Emissão inicial | 2026-06-19 → 2026-06-26 (+7d) | 2026-06-19 → 2026-07-01 (+12d) | 1d → 4d |  | 10d → 9d |  | constraint none → start no earlier than 2026-06-26 |
| 514 | Análise Tecnored | 2026-06-22 → 2026-07-02 (+10d) | 2026-06-22 → 2026-07-02 (+10d) |  |  | 10d → 9d |  |  |
| 515 | Atendimento de comentários | 2026-06-23 → 2026-07-03 (+10d) | 2026-06-23 → 2026-07-03 (+10d) |  |  | 10d → 9d |  |  |
| 516 | Aprovação | 2026-06-24 → 2026-07-06 (+12d) | 2026-06-24 → 2026-07-06 (+12d) |  |  | 10d → 9d |  |  |
| 518 | Emissão inicial |  |  |  |  | 0d → 9d | 448 → 448SS | constraint none → start no earlier than 2026-06-26 |
| 522 | **FD-F0009-0305-MB-J-00001** | 2026-06-26 → 2026-06-17 (-9d) | 2026-07-08 → 2026-06-30 (-8d) | 9d → 10d |  | 0d → 7d |  |  |
| 523 | Emissão inicial | 2026-06-26 → 2026-06-17 (-9d) | 2026-07-03 → 2026-06-25 (-8d) | 6d → 7d |  | 0d → 7d | 448 → none | constraint none → start no earlier than 2026-06-17 |
| 524 | Análise Tecnored | 2026-07-06 → 2026-06-26 (-10d) | 2026-07-06 → 2026-06-26 (-10d) |  |  | 0d → 13d |  |  |
| 525 | Atendimento de comentários | 2026-07-07 → 2026-06-29 (-8d) | 2026-07-07 → 2026-06-29 (-8d) |  |  | 0d → 13d |  |  |
| 526 | Aprovação | 2026-07-08 → 2026-06-30 (-8d) | 2026-07-08 → 2026-06-30 (-8d) |  |  | 0d → 13d |  |  |
| 527 | **FD-F0009-0305-MB-J-00002** | 2026-06-26 → 2026-06-17 (-9d) | 2026-07-08 → 2026-06-30 (-8d) | 9d → 10d |  | 0d → 13d |  |  |
| 528 | Emissão inicial | 2026-06-26 → 2026-06-17 (-9d) | 2026-07-03 → 2026-06-25 (-8d) | 6d → 7d |  | 0d → 13d | 448 → 523SS |  |
| 529 | Análise Tecnored | 2026-07-06 → 2026-06-26 (-10d) | 2026-07-06 → 2026-06-26 (-10d) |  |  | 0d → 13d |  |  |
| 530 | Atendimento de comentários | 2026-07-07 → 2026-06-29 (-8d) | 2026-07-07 → 2026-06-29 (-8d) |  |  | 0d → 13d |  |  |

| ID | Task | Start | Finish | Duration | Total float | Predecessors |
| --- | --- | --- | --- | --- | --- | --- |
| 531 | Aprovação | 2026-07-08 → 2026-06-30 (-8d) | 2026-07-08 → 2026-06-30 (-8d) |  | 0d → 13d |  |
| 532 | **FD-F0009-0305-MB-J-00003** | 2026-06-26 → 2026-06-17 (-9d) | 2026-07-08 → 2026-06-30 (-8d) | 9d → 10d | 0d → 13d |  |
| 533 | Emissão inicial | 2026-06-26 → 2026-06-17 (-9d) | 2026-07-03 → 2026-06-25 (-8d) | 6d → 7d | 0d → 13d | 448 → 523SS |
| 534 | Análise Tecnored | 2026-07-06 → 2026-06-26 (-10d) | 2026-07-06 → 2026-06-26 (-10d) |  | 0d → 13d |  |
| 535 | Atendimento de comentários | 2026-07-07 → 2026-06-29 (-8d) | 2026-07-07 → 2026-06-29 (-8d) |  | 0d → 13d |  |
| 536 | Aprovação | 2026-07-08 → 2026-06-30 (-8d) | 2026-07-08 → 2026-06-30 (-8d) |  | 0d → 13d |  |
| 537 | **FD-F0009-0305-MB-J-00004** | 2026-06-26 → 2026-06-17 (-9d) | 2026-07-08 → 2026-06-29 (-9d) |  | 0d → 14d |  |
| 538 | Emissão inicial | 2026-06-26 → 2026-06-17 (-9d) | 2026-07-03 → 2026-06-24 (-9d) |  | 0d → 14d | 448 → 523SS |
| 539 | Análise Tecnored | 2026-07-06 → 2026-06-25 (-11d) | 2026-07-06 → 2026-06-25 (-11d) |  | 0d → 14d |  |
| 540 | Atendimento de comentários | 2026-07-07 → 2026-06-26 (-11d) | 2026-07-07 → 2026-06-26 (-11d) |  | 0d → 14d |  |
| 541 | Aprovação | 2026-07-08 → 2026-06-29 (-9d) | 2026-07-08 → 2026-06-29 (-9d) |  | 0d → 14d |  |
| 542 | **FD-F0009-0305-MB-J-00005** | 2026-06-26 → 2026-06-17 (-9d) | 2026-07-08 → 2026-06-30 (-8d) | 9d → 10d | 0d → 13d |  |
| 543 | Emissão inicial | 2026-06-26 → 2026-06-17 (-9d) | 2026-07-03 → 2026-06-25 (-8d) | 6d → 7d | 0d → 13d | 448 → 523SS |
| 544 | Análise Tecnored | 2026-07-06 → 2026-06-26 (-10d) | 2026-07-06 → 2026-06-26 (-10d) |  | 0d → 13d |  |
| 545 | Atendimento de comentários | 2026-07-07 → 2026-06-29 (-8d) | 2026-07-07 → 2026-06-29 (-8d) |  | 0d → 13d |  |
| 546 | Aprovação | 2026-07-08 → 2026-06-30 (-8d) | 2026-07-08 → 2026-06-30 (-8d) |  | 0d → 13d |  |
| 547 | **FD-F0009-0305-MB-J-00006** | 2026-06-26 → 2026-06-17 (-9d) | 2026-07-08 → 2026-06-30 (-8d) | 9d → 10d | 0d → 13d |  |
| 548 | Emissão inicial | 2026-06-26 → 2026-06-17 (-9d) | 2026-07-03 → 2026-06-25 (-8d) | 6d → 7d | 0d → 13d | 448 → 523SS |
| 549 | Análise Tecnored | 2026-07-06 → 2026-06-26 (-10d) | 2026-07-06 → 2026-06-26 (-10d) |  | 0d → 13d |  |
| 550 | Atendimento de comentários | 2026-07-07 → 2026-06-29 (-8d) | 2026-07-07 → 2026-06-29 (-8d) |  | 0d → 13d |  |
| 551 | Aprovação | 2026-07-08 → 2026-06-30 (-8d) | 2026-07-08 → 2026-06-30 (-8d) |  | 0d → 13d |  |
| 552 | **FD-F0009-0305-MB-J-00007** | 2026-06-26 → 2026-06-17 (-9d) | 2026-07-08 → 2026-06-30 (-8d) | 9d → 10d | 0d → 13d |  |
| 553 | Emissão inicial | 2026-06-26 → 2026-06-17 (-9d) | 2026-07-03 → 2026-06-25 (-8d) | 6d → 7d | 0d → 13d | 448 → 523SS |
| 554 | Análise Tecnored | 2026-07-06 → 2026-06-26 (-10d) | 2026-07-06 → 2026-06-26 (-10d) |  | 0d → 13d |  |
| 555 | Atendimento de comentários | 2026-07-07 → 2026-06-29 (-8d) | 2026-07-07 → 2026-06-29 (-8d) |  | 0d → 13d |  |
| 556 | Aprovação | 2026-07-08 → 2026-06-30 (-8d) | 2026-07-08 → 2026-06-30 (-8d) |  | 0d → 13d |  |
| 557 | **FD-F0009-0305-MB-J-00008** | 2026-06-26 → 2026-06-17 (-9d) | 2026-07-08 → 2026-06-30 (-8d) | 9d → 10d | 0d → 13d |  |
| 558 | Emissão inicial | 2026-06-26 → 2026-06-17 (-9d) | 2026-07-03 → 2026-06-25 (-8d) | 6d → 7d | 0d → 13d | 448 → 523SS |
| 559 | Análise Tecnored | 2026-07-06 → 2026-06-26 (-10d) | 2026-07-06 → 2026-06-26 (-10d) |  | 0d → 13d |  |
| 560 | Atendimento de comentários | 2026-07-07 → 2026-06-29 (-8d) | 2026-07-07 → 2026-06-29 (-8d) |  | 0d → 13d |  |
| 561 | Aprovação | 2026-07-08 → 2026-06-30 (-8d) | 2026-07-08 → 2026-06-30 (-8d) |  | 0d → 13d |  |
| 562 | **FD-F0009-0305-MB-J-00009** | 2026-06-26 → 2026-06-17 (-9d) | 2026-07-08 → 2026-06-30 (-8d) | 9d → 10d | 0d → 13d |  |
| 563 | Emissão inicial | 2026-06-26 → 2026-06-17 (-9d) | 2026-07-03 → 2026-06-25 (-8d) | 6d → 7d | 0d → 13d | 448 → 523SS |
| 564 | Análise Tecnored | 2026-07-06 → 2026-06-26 (-10d) | 2026-07-06 → 2026-06-26 (-10d) |  | 0d → 13d |  |
| 565 | Atendimento de comentários | 2026-07-07 → 2026-06-29 (-8d) | 2026-07-07 → 2026-06-29 (-8d) |  | 0d → 13d |  |
| 566 | Aprovação | 2026-07-08 → 2026-06-30 (-8d) | 2026-07-08 → 2026-06-30 (-8d) |  | 0d → 13d |  |
| 567 | **FD-F0009-0305-MB-J-00010** | 2026-06-26 → 2026-06-17 (-9d) | 2026-07-08 → 2026-06-30 (-8d) | 9d → 10d | 0d → 13d |  |
| 568 | Emissão inicial | 2026-06-26 → 2026-06-17 (-9d) | 2026-07-03 → 2026-06-25 (-8d) | 6d → 7d | 0d → 13d | 448 → 523SS |
| 569 | Análise Tecnored | 2026-07-06 → 2026-06-26 (-10d) | 2026-07-06 → 2026-06-26 (-10d) |  | 0d → 13d |  |
| 570 | Atendimento de comentários | 2026-07-07 → 2026-06-29 (-8d) | 2026-07-07 → 2026-06-29 (-8d) |  | 0d → 13d |  |
| 571 | Aprovação | 2026-07-08 → 2026-06-30 (-8d) | 2026-07-08 → 2026-06-30 (-8d) |  | 0d → 13d |  |
| 572 | **FD-F0009-0305-MB-J-00011** | 2026-06-26 → 2026-06-17 (-9d) | 2026-07-08 → 2026-06-30 (-8d) | 9d → 10d | 0d → 13d |  |
| 573 | Emissão inicial | 2026-06-26 → 2026-06-17 (-9d) | 2026-07-03 → 2026-06-25 (-8d) | 6d → 7d | 0d → 13d | 448 → 523SS |
| 574 | Análise Tecnored | 2026-07-06 → 2026-06-26 (-10d) | 2026-07-06 → 2026-06-26 (-10d) |  | 0d → 13d |  |
| 575 | Atendimento de comentários | 2026-07-07 → 2026-06-29 (-8d) | 2026-07-07 → 2026-06-29 (-8d) |  | 0d → 13d |  |
| 576 | Aprovação | 2026-07-08 → 2026-06-30 (-8d) | 2026-07-08 → 2026-06-30 (-8d) |  | 0d → 13d |  |
| 577 | **FD-F0009-0305-MB-J-00012** | 2026-06-26 → 2026-06-17 (-9d) | 2026-07-08 → 2026-06-30 (-8d) | 9d → 10d | 0d → 13d |  |
| 578 | Emissão inicial | 2026-06-26 → 2026-06-17 (-9d) | 2026-07-03 → 2026-06-25 (-8d) | 6d → 7d | 0d → 13d | 448 → 523SS |
| 579 | Análise Tecnored | 2026-07-06 → 2026-06-26 (-10d) | 2026-07-06 → 2026-06-26 (-10d) |  | 0d → 13d |  |
| 580 | Atendimento de comentários | 2026-07-07 → 2026-06-29 (-8d) | 2026-07-07 → 2026-06-29 (-8d) |  | 0d → 13d |  |
| 581 | Aprovação | 2026-07-08 → 2026-06-30 (-8d) | 2026-07-08 → 2026-06-30 (-8d) |  | 0d → 13d |  |
| 582 | **FD-F0009-0305-MB-J-00013** | 2026-06-26 → 2026-06-17 (-9d) | 2026-07-08 → 2026-06-30 (-8d) | 9d → 10d | 0d → 13d |  |
| 583 | Emissão inicial | 2026-06-26 → 2026-06-17 (-9d) | 2026-07-03 → 2026-06-25 (-8d) | 6d → 7d | 0d → 13d | 448 → 523SS |
| 584 | Análise Tecnored | 2026-07-06 → 2026-06-26 (-10d) | 2026-07-06 → 2026-06-26 (-10d) |  | 0d → 13d |  |
| 585 | Atendimento de comentários | 2026-07-07 → 2026-06-29 (-8d) | 2026-07-07 → 2026-06-29 (-8d) |  | 0d → 13d |  |
| 586 | Aprovação | 2026-07-08 → 2026-06-30 (-8d) | 2026-07-08 → 2026-06-30 (-8d) |  | 0d → 13d |  |
| 587 | **FD-F0009-0305-MB-J-00014** | 2026-06-26 → 2026-06-17 (-9d) | 2026-07-08 → 2026-06-30 (-8d) | 9d → 10d | 0d → 13d |  |
| 588 | Emissão inicial | 2026-06-26 → 2026-06-17 (-9d) | 2026-07-03 → 2026-06-25 (-8d) | 6d → 7d | 0d → 13d | 448 → 523SS |
| 589 | Análise Tecnored | 2026-07-06 → 2026-06-26 (-10d) | 2026-07-06 → 2026-06-26 (-10d) |  | 0d → 13d |  |
| 590 | Atendimento de comentários | 2026-07-07 → 2026-06-29 (-8d) | 2026-07-07 → 2026-06-29 (-8d) |  | 0d → 13d |  |
| 591 | Aprovação | 2026-07-08 → 2026-06-30 (-8d) | 2026-07-08 → 2026-06-30 (-8d) |  | 0d → 13d |  |
| 592 | **FD-F0009-0305-MB-J-00015** | 2026-06-26 → 2026-06-17 (-9d) | 2026-07-08 → 2026-06-30 (-8d) | 9d → 10d | 0d → 13d |  |
| 593 | Emissão inicial | 2026-06-26 → 2026-06-17 (-9d) | 2026-07-03 → 2026-06-25 (-8d) | 6d → 7d | 0d → 13d | 448 → 523SS |
| 594 | Análise Tecnored | 2026-07-06 → 2026-06-26 (-10d) | 2026-07-06 → 2026-06-26 (-10d) |  | 0d → 13d |  |
| 595 | Atendimento de comentários | 2026-07-07 → 2026-06-29 (-8d) | 2026-07-07 → 2026-06-29 (-8d) |  | 0d → 13d |  |
| 596 | Aprovação | 2026-07-08 → 2026-06-30 (-8d) | 2026-07-08 → 2026-06-30 (-8d) |  | 0d → 13d |  |
| 597 | **FD-F0009-0305-MB-J-00016** | 2026-06-26 → 2026-06-17 (-9d) |  | 9d → 16d | 0d → 7d |  |
| 598 | Emissão inicial | 2026-06-26 → 2026-06-17 (-9d) | 2026-07-03 → 2026-06-25 (-8d) | 6d → 7d | 0d → 7d | 448 → 523SS |
| 599 | Análise Tecnored | 2026-07-06 → 2026-06-26 (-10d) | 2026-07-06 → 2026-07-03 (-3d) | 1d → 6d | 0d → 7d |  |
| 600 | Atendimento de comentários | 2026-07-07 → 2026-07-06 (-1d) | 2026-07-07 → 2026-07-06 (-1d) |  | 0d → 7d |  |

| ID | Task | Start | Finish | Duration | Total float | Other |
| --- | --- | --- | --- | --- | --- | --- |
| 601 | Aprovação | 2026-07-08 → 2026-07-07 (-1d) |  | 1d → 2d | 0d → 7d |  |
| 602 | **DT-F0009-0305-MB-J-00001** | 2026-06-24 → 2026-06-17 (-7d) | 2026-07-02 → 2026-06-26 (-6d) | 7d → 8d | 4d → 15d |  |
| 603 | Emissão inicial | 2026-06-24 → 2026-06-17 (-7d) | 2026-06-29 → 2026-06-22 (-7d) |  | 4d → 15d | constraint none → start no earlier than 2026-06-17 |
| 604 | Análise Tecnored | 2026-06-30 → 2026-06-23 (-7d) | 2026-06-30 → 2026-06-23 (-7d) |  | 4d → 15d |  |
| 605 | Atendimento de comentários | 2026-07-01 → 2026-06-24 (-7d) | 2026-07-01 → 2026-06-25 (-6d) | 1d → 2d | 4d → 15d |  |
| 606 | Aprovação | 2026-07-02 → 2026-06-26 (-6d) | 2026-07-02 → 2026-06-26 (-6d) |  | 4d → 15d |  |

## Version 5 (data date 2026-06-17, saved 2026-06-18, file CR-F0009-0305-MB-F-00001 18062026.mpp)

Note of the change: Primeira versao dashboard

Last finish stays 2026-07-23. Complete tasks 28 → 33.

Added:

| ID | Task | Duration | Start | Finish | Predecessors | Constraint |
| --- | --- | --- | --- | --- | --- | --- |
| 447 | **LL-F0009-0305-MB-J-00001** | 8d | 2026-06-26 | 2026-07-07 |  |  |
| 448 | Emissão inicial | 4d | 2026-06-26 | 2026-07-01 | 503 | finish no earlier than 2026-07-01 |
| 449 | Análise Tecnored | 1d | 2026-07-02 | 2026-07-02 | 448 | start no earlier than 2026-07-02 |
| 450 | Atendimento de comentários | 2d | 2026-07-03 | 2026-07-06 | 449 | start no earlier than 2026-07-03 |
| 451 | Aprovação | 1d | 2026-07-07 | 2026-07-07 | 450 | start no earlier than 2026-07-07 |

Changed:

| ID | Task | Start | Finish | Duration | Complete | Total float | Predecessors | Other |
| --- | --- | --- | --- | --- | --- | --- | --- | --- |
| 1 | **F0009 - Programa Marabá** |  |  |  | 8% → 15% |  |  |  |
| 15 | **Área 0305 - Hot Blast Stoves** |  |  |  | 8% → 14% |  |  |  |
| 37 | Emissão inicial |  |  |  |  |  |  | constraint none → start no earlier than 2026-06-22 |
| 51 | **Processo** |  | 2026-06-01 → 2026-06-11 (+10d) | 10d → 16d | 80% → 73% | 32d → 26d |  |  |
| 62 | **FG-F0009-0305-MB-P-00001** |  | 2026-06-01 → 2026-06-11 (+10d) | 10d → 16d | 80% → 73% | 32d → 26d |  |  |
| 64 | Análise Tecnored |  | 2026-05-20 A → 2026-05-28 A (+8d) | 1d → 7d |  |  |  |  |
| 65 | Atendimento de comentários | 2026-05-21 A → 2026-05-29 (+8d) | 2026-05-22 A → 2026-06-01 (+10d) |  | 100% → 0% | none → 26d |  |  |
| 66 | Aprovação | 2026-06-01 → 2026-06-11 (+10d) | 2026-06-01 → 2026-06-11 (+10d) |  |  | 32d → 26d |  |  |
| 67 | **Mecânica** |  |  |  | 7% → 28% |  |  |  |
| 88 | **AG-F0009-0305-MB-L-00001** | 2026-06-18 → 2026-06-24 (+6d) |  | 10d → 6d |  |  |  |  |
| 89 | Emissão inicial | 2026-06-18 → 2026-06-24 (+6d) |  | 7d → 3d |  |  |  | constraint none → finish no earlier than 2026-06-26 |
| 93 | **AG-F0009-0305-MB-L-00002** | 2026-06-18 → 2026-06-24 (+6d) |  | 10d → 6d |  |  |  |  |
| 94 | Emissão inicial | 2026-06-18 → 2026-06-24 (+6d) |  | 7d → 3d |  |  |  |  |
| 98 | **AG-F0009-0305-MB-L-00003** | 2026-06-18 → 2026-06-24 (+6d) |  | 10d → 6d |  |  |  |  |
| 99 | Emissão inicial | 2026-06-18 → 2026-06-24 (+6d) |  | 7d → 3d |  |  |  |  |
| 103 | **AG-F0009-0305-MB-L-00004** | 2026-06-18 → 2026-06-24 (+6d) |  | 10d → 6d |  |  |  |  |
| 104 | Emissão inicial | 2026-06-18 → 2026-06-24 (+6d) |  | 7d → 3d |  |  |  |  |
| 108 | **AG-F0009-0305-MB-L-00005** | 2026-06-18 → 2026-06-24 (+6d) |  | 10d → 6d |  |  |  |  |
| 109 | Emissão inicial | 2026-06-18 → 2026-06-24 (+6d) |  | 7d → 3d |  |  |  |  |
| 113 | **AG-F0009-0305-MB-L-00006** | 2026-06-18 → 2026-06-24 (+6d) |  | 10d → 6d |  |  |  |  |
| 114 | Emissão inicial | 2026-06-18 → 2026-06-24 (+6d) |  | 7d → 3d |  |  |  |  |
| 118 | **AG-F0009-0305-MB-L-00007** | 2026-06-18 → 2026-06-24 (+6d) |  | 10d → 6d |  |  |  |  |
| 119 | Emissão inicial | 2026-06-18 → 2026-06-24 (+6d) |  | 7d → 3d |  |  |  |  |
| 123 | **AG-F0009-0305-MB-L-00008** | 2026-06-18 → 2026-06-24 (+6d) |  | 10d → 6d |  |  |  |  |
| 124 | Emissão inicial | 2026-06-18 → 2026-06-24 (+6d) |  | 7d → 3d |  |  |  |  |
| 128 | **AG-F0009-0305-MB-L-00009** | 2026-06-18 → 2026-06-24 (+6d) |  | 10d → 6d |  |  |  |  |
| 129 | Emissão inicial | 2026-06-18 → 2026-06-24 (+6d) |  | 7d → 3d |  |  |  |  |
| 153 | **MC-F0009-0305-MB-M-00001** | 2026-06-01 A |  |  | 0% → 75% | 7d → 19d |  |  |
| 154 | Emissão inicial | 2026-06-01 A | 2026-06-16 A |  | 0% → 100% | 7d → none |  |  |
| 155 | Análise Tecnored | 2026-06-17 A |  |  | 0% → 50% | 7d → 19d |  |  |
| 158 | **MC-F0009-0305-MB-M-00002** | 2026-06-01 A |  |  | 0% → 75% | 7d → 19d |  |  |
| 159 | Emissão inicial | 2026-06-01 A | 2026-06-16 A |  | 0% → 100% | 7d → none |  |  |
| 160 | Análise Tecnored | 2026-06-17 A |  |  | 0% → 50% | 7d → 19d |  |  |
| 163 | **MC-F0009-0305-MB-M-00003** | 2026-06-01 A |  |  | 0% → 79% | 7d → 19d |  |  |
| 164 | Emissão inicial | 2026-06-01 A | 2026-06-16 A |  | 0% → 100% | 7d → none |  |  |
| 165 | Análise Tecnored | 2026-06-17 A | 2026-06-17 A |  | 0% → 100% | 7d → none |  |  |
| 168 | **MC-F0009-0305-MB-M-00004** | 2026-06-01 A |  |  | 0% → 71% | 7d → 19d |  |  |
| 169 | Emissão inicial | 2026-06-01 A | 2026-06-16 A |  | 0% → 100% | 7d → none |  |  |
| 193 | **Tubulação/Utilidades** |  |  |  | 5% → 6% |  |  |  |
| 234 | **FG-F0009-0305-MB-T-00001** |  |  |  | 43% → 50% |  |  |  |
| 236 | Análise Tecnored | 2026-06-15 A |  |  | 0% → 50% |  |  |  |
| 284 | **Estrutura metálica** | 2026-06-15 → 2026-06-17 (+2d) | 2026-07-03 → 2026-07-09 (+6d) | 15d → 17d |  | 10d → 6d |  |  |
| 290 | **ML-F0009-0305-MB-S-00001** | 2026-06-15 → 2026-06-19 (+4d) | 2026-06-22 → 2026-06-26 (+4d) |  |  | 10d → 6d |  |  |
| 291 | Emissão inicial | 2026-06-15 → 2026-06-19 (+4d) | 2026-06-17 → 2026-06-23 (+6d) |  |  | 10d → 6d |  | constraint none → start no earlier than 2026-06-19 |
| 292 | Análise Tecnored | 2026-06-18 → 2026-06-24 (+6d) | 2026-06-18 → 2026-06-24 (+6d) |  |  | 10d → 6d |  |  |
| 293 | Atendimento de comentários | 2026-06-19 → 2026-06-25 (+6d) | 2026-06-19 → 2026-06-25 (+6d) |  |  | 10d → 6d |  |  |
| 294 | Aprovação | 2026-06-22 → 2026-06-26 (+4d) | 2026-06-22 → 2026-06-26 (+4d) |  |  | 12d → 8d |  |  |
| 295 | **PQ-F0009-0305-MB-S-00001** | 2026-06-25 → 2026-07-01 (+6d) | 2026-07-01 → 2026-07-07 (+6d) |  |  | 12d → 8d |  |  |
| 296 | Emissão inicial | 2026-06-25 → 2026-07-01 (+6d) | 2026-06-26 → 2026-07-02 (+6d) |  |  | 12d → 8d |  |  |
| 297 | Análise Tecnored | 2026-06-29 → 2026-07-03 (+4d) | 2026-06-29 → 2026-07-03 (+4d) |  |  | 12d → 8d |  |  |
| 298 | Atendimento de comentários | 2026-06-30 → 2026-07-06 (+6d) | 2026-06-30 → 2026-07-06 (+6d) |  |  | 12d → 8d |  |  |
| 299 | Aprovação | 2026-07-01 → 2026-07-07 (+6d) | 2026-07-01 → 2026-07-07 (+6d) |  |  | 12d → 8d |  |  |
| 300 | **LM-F0009-0305-MB-S-00001** | 2026-06-23 → 2026-06-29 (+6d) | 2026-06-29 → 2026-07-03 (+4d) |  |  | 12d → 8d |  |  |
| 301 | Emissão inicial | 2026-06-23 → 2026-06-29 (+6d) | 2026-06-24 → 2026-06-30 (+6d) |  |  | 12d → 8d |  |  |
| 302 | Análise Tecnored | 2026-06-25 → 2026-07-01 (+6d) | 2026-06-25 → 2026-07-01 (+6d) |  |  | 14d → 10d |  |  |
| 303 | Atendimento de comentários | 2026-06-26 → 2026-07-02 (+6d) | 2026-06-26 → 2026-07-02 (+6d) |  |  | 14d → 10d |  |  |
| 304 | Aprovação | 2026-06-29 → 2026-07-03 (+4d) | 2026-06-29 → 2026-07-03 (+4d) |  |  | 14d → 10d |  |  |
| 305 | **MC-F0009-0305-MB-S-00001** | 2026-06-18 → 2026-06-17 (-1d) | 2026-06-29 → 2026-06-26 (-3d) |  |  | 7d → 8d |  |  |
| 306 | Emissão inicial | 2026-06-18 → 2026-06-17 (-1d) | 2026-06-24 → 2026-06-23 (-1d) |  |  | 7d → 8d | 155, 160, 165, 170 → 159, 164, 169, 154 | constraint none → start no earlier than 2026-06-17 |
| 307 | Análise Tecnored | 2026-06-25 → 2026-06-24 (-1d) | 2026-06-25 → 2026-06-24 (-1d) |  |  | 14d → 15d |  |  |
| 308 | Atendimento de comentários | 2026-06-26 → 2026-06-25 (-1d) | 2026-06-26 → 2026-06-25 (-1d) |  |  | 14d → 15d |  |  |
| 309 | Aprovação | 2026-06-29 → 2026-06-26 (-3d) | 2026-06-29 → 2026-06-26 (-3d) |  |  | 14d → 15d |  |  |
| 310 | **AG-F0009-0305-MB-S-00001** | 2026-06-22 → 2026-06-26 (+4d) | 2026-07-02 → 2026-07-08 (+6d) |  |  | 11d → 7d |  |  |
| 311 | Emissão inicial | 2026-06-22 → 2026-06-26 (+4d) | 2026-06-29 → 2026-07-03 (+4d) |  |  | 11d → 7d |  |  |
| 312 | Análise Tecnored | 2026-06-30 → 2026-07-06 (+6d) | 2026-06-30 → 2026-07-06 (+6d) |  |  | 11d → 7d |  |  |
| 313 | Atendimento de comentários | 2026-07-01 → 2026-07-07 (+6d) | 2026-07-01 → 2026-07-07 (+6d) |  |  | 11d → 7d |  |  |
| 314 | Aprovação | 2026-07-02 → 2026-07-08 (+6d) | 2026-07-02 → 2026-07-08 (+6d) |  |  | 11d → 7d |  |  |
| 315 | **AG-F0009-0305-MB-S-00002** | 2026-06-22 → 2026-06-26 (+4d) | 2026-07-02 → 2026-07-08 (+6d) |  |  | 11d → 7d |  |  |
| 316 | Emissão inicial | 2026-06-22 → 2026-06-26 (+4d) | 2026-06-29 → 2026-07-03 (+4d) |  |  | 11d → 7d |  |  |
| 317 | Análise Tecnored | 2026-06-30 → 2026-07-06 (+6d) | 2026-06-30 → 2026-07-06 (+6d) |  |  | 11d → 7d |  |  |

| ID | Task | Start | Finish | Complete | Total float | Predecessors |
| --- | --- | --- | --- | --- | --- | --- |
| 318 | Atendimento de comentários | 2026-07-01 → 2026-07-07 (+6d) | 2026-07-01 → 2026-07-07 (+6d) |  | 11d → 7d |  |
| 319 | Aprovação | 2026-07-02 → 2026-07-08 (+6d) | 2026-07-02 → 2026-07-08 (+6d) |  | 11d → 7d |  |
| 320 | **AG-F0009-0305-MB-S-00003** | 2026-06-22 → 2026-06-26 (+4d) | 2026-07-02 → 2026-07-08 (+6d) |  | 11d → 7d |  |
| 321 | Emissão inicial | 2026-06-22 → 2026-06-26 (+4d) | 2026-06-29 → 2026-07-03 (+4d) |  | 11d → 7d |  |
| 322 | Análise Tecnored | 2026-06-30 → 2026-07-06 (+6d) | 2026-06-30 → 2026-07-06 (+6d) |  | 11d → 7d |  |
| 323 | Atendimento de comentários | 2026-07-01 → 2026-07-07 (+6d) | 2026-07-01 → 2026-07-07 (+6d) |  | 11d → 7d |  |
| 324 | Aprovação | 2026-07-02 → 2026-07-08 (+6d) | 2026-07-02 → 2026-07-08 (+6d) |  | 11d → 7d |  |
| 325 | **AG-F0009-0305-MB-S-00004** | 2026-06-22 → 2026-06-26 (+4d) | 2026-07-02 → 2026-07-08 (+6d) |  | 11d → 7d |  |
| 326 | Emissão inicial | 2026-06-22 → 2026-06-26 (+4d) | 2026-06-29 → 2026-07-03 (+4d) |  | 11d → 7d |  |
| 327 | Análise Tecnored | 2026-06-30 → 2026-07-06 (+6d) | 2026-06-30 → 2026-07-06 (+6d) |  | 11d → 7d |  |
| 328 | Atendimento de comentários | 2026-07-01 → 2026-07-07 (+6d) | 2026-07-01 → 2026-07-07 (+6d) |  | 11d → 7d |  |
| 329 | Aprovação | 2026-07-02 → 2026-07-08 (+6d) | 2026-07-02 → 2026-07-08 (+6d) |  | 11d → 7d |  |
| 330 | **AG-F0009-0305-MB-S-00005** | 2026-06-22 → 2026-06-26 (+4d) | 2026-07-03 → 2026-07-09 (+6d) |  | 10d → 6d |  |
| 331 | Emissão inicial | 2026-06-22 → 2026-06-26 (+4d) | 2026-06-29 → 2026-07-03 (+4d) |  | 10d → 6d |  |
| 332 | Análise Tecnored | 2026-06-30 → 2026-07-06 (+6d) | 2026-06-30 → 2026-07-06 (+6d) |  | 10d → 6d |  |
| 333 | Atendimento de comentários | 2026-07-01 → 2026-07-07 (+6d) | 2026-07-02 → 2026-07-08 (+6d) |  | 10d → 6d |  |
| 334 | Aprovação | 2026-07-03 → 2026-07-09 (+6d) | 2026-07-03 → 2026-07-09 (+6d) |  | 10d → 6d |  |
| 335 | **AG-F0009-0305-MB-S-00006** | 2026-06-22 → 2026-06-26 (+4d) | 2026-07-02 → 2026-07-08 (+6d) |  | 11d → 7d |  |
| 336 | Emissão inicial | 2026-06-22 → 2026-06-26 (+4d) | 2026-06-29 → 2026-07-03 (+4d) |  | 11d → 7d |  |
| 337 | Análise Tecnored | 2026-06-30 → 2026-07-06 (+6d) | 2026-06-30 → 2026-07-06 (+6d) |  | 11d → 7d |  |
| 338 | Atendimento de comentários | 2026-07-01 → 2026-07-07 (+6d) | 2026-07-01 → 2026-07-07 (+6d) |  | 11d → 7d |  |
| 339 | Aprovação | 2026-07-02 → 2026-07-08 (+6d) | 2026-07-02 → 2026-07-08 (+6d) |  | 11d → 7d |  |
| 340 | **AG-F0009-0305-MB-S-00007** | 2026-06-22 → 2026-06-26 (+4d) | 2026-07-02 → 2026-07-08 (+6d) |  | 11d → 7d |  |
| 341 | Emissão inicial | 2026-06-22 → 2026-06-26 (+4d) | 2026-06-29 → 2026-07-03 (+4d) |  | 11d → 7d |  |
| 342 | Análise Tecnored | 2026-06-30 → 2026-07-06 (+6d) | 2026-06-30 → 2026-07-06 (+6d) |  | 11d → 7d |  |
| 343 | Atendimento de comentários | 2026-07-01 → 2026-07-07 (+6d) | 2026-07-01 → 2026-07-07 (+6d) |  | 11d → 7d |  |
| 344 | Aprovação | 2026-07-02 → 2026-07-08 (+6d) | 2026-07-02 → 2026-07-08 (+6d) |  | 11d → 7d |  |
| 345 | **AG-F0009-0305-MB-S-00008** | 2026-06-22 → 2026-06-26 (+4d) | 2026-07-02 → 2026-07-08 (+6d) |  | 11d → 7d |  |
| 346 | Emissão inicial | 2026-06-22 → 2026-06-26 (+4d) | 2026-06-29 → 2026-07-03 (+4d) |  | 11d → 7d |  |
| 347 | Análise Tecnored | 2026-06-30 → 2026-07-06 (+6d) | 2026-06-30 → 2026-07-06 (+6d) |  | 11d → 7d |  |
| 348 | Atendimento de comentários | 2026-07-01 → 2026-07-07 (+6d) | 2026-07-01 → 2026-07-07 (+6d) |  | 11d → 7d |  |
| 349 | Aprovação | 2026-07-02 → 2026-07-08 (+6d) | 2026-07-02 → 2026-07-08 (+6d) |  | 11d → 7d |  |
| 350 | **AG-F0009-0305-MB-S-00009** | 2026-06-22 → 2026-06-26 (+4d) | 2026-07-02 → 2026-07-08 (+6d) |  | 11d → 7d |  |
| 351 | Emissão inicial | 2026-06-22 → 2026-06-26 (+4d) | 2026-06-29 → 2026-07-03 (+4d) |  | 11d → 7d |  |
| 352 | Análise Tecnored | 2026-06-30 → 2026-07-06 (+6d) | 2026-06-30 → 2026-07-06 (+6d) |  | 11d → 7d |  |
| 353 | Atendimento de comentários | 2026-07-01 → 2026-07-07 (+6d) | 2026-07-01 → 2026-07-07 (+6d) |  | 11d → 7d |  |
| 354 | Aprovação | 2026-07-02 → 2026-07-08 (+6d) | 2026-07-02 → 2026-07-08 (+6d) |  | 11d → 7d |  |
| 355 | **AG-F0009-0305-MB-S-00010** | 2026-06-22 → 2026-06-26 (+4d) | 2026-07-02 → 2026-07-08 (+6d) |  | 11d → 7d |  |
| 356 | Emissão inicial | 2026-06-22 → 2026-06-26 (+4d) | 2026-06-29 → 2026-07-03 (+4d) |  | 11d → 7d |  |
| 357 | Análise Tecnored | 2026-06-30 → 2026-07-06 (+6d) | 2026-06-30 → 2026-07-06 (+6d) |  | 11d → 7d |  |
| 358 | Atendimento de comentários | 2026-07-01 → 2026-07-07 (+6d) | 2026-07-01 → 2026-07-07 (+6d) |  | 11d → 7d |  |
| 359 | Aprovação | 2026-07-02 → 2026-07-08 (+6d) | 2026-07-02 → 2026-07-08 (+6d) |  | 11d → 7d |  |
| 360 | **PL-F0009-0305-MB-S-00001** | 2026-06-22 → 2026-06-26 (+4d) | 2026-07-01 → 2026-07-07 (+6d) |  | 12d → 8d |  |
| 361 | Emissão inicial | 2026-06-22 → 2026-06-26 (+4d) | 2026-06-26 → 2026-07-02 (+6d) |  | 12d → 8d |  |
| 362 | Análise Tecnored | 2026-06-29 → 2026-07-03 (+4d) | 2026-06-29 → 2026-07-03 (+4d) |  | 12d → 8d |  |
| 363 | Atendimento de comentários | 2026-06-30 → 2026-07-06 (+6d) | 2026-06-30 → 2026-07-06 (+6d) |  | 12d → 8d |  |
| 364 | Aprovação | 2026-07-01 → 2026-07-07 (+6d) | 2026-07-01 → 2026-07-07 (+6d) |  | 12d → 8d |  |
| 431 | **Automação e instrumentação** |  |  | 4% → 6% |  |  |
| 467 | **FG-F0009-0305-MB-J-00001** |  |  | 60% → 65% |  |  |
| 469 | Análise Tecnored | 2026-06-15 A |  | 0% → 50% |  |  |
| 472 | **FG-F0009-0305-MB-J-00002** |  |  | 60% → 65% |  |  |
| 474 | Análise Tecnored | 2026-06-15 A |  | 0% → 50% |  |  |
| 477 | **FG-F0009-0305-MB-J-00003** |  |  | 10% → 65% |  |  |
| 478 | Emissão inicial |  | 2026-06-12 A | 17% → 100% | 21d → none |  |
| 479 | Análise Tecnored | 2026-06-15 A |  | 0% → 50% |  |  |
| 523 | Emissão inicial |  |  |  |  | 453SS → 453SS, 448SS |
| 612 | **Civil** | 2026-06-25 → 2026-06-24 (-1d) | 2026-07-08 → 2026-07-07 (-1d) |  | 7d → 8d |  |
| 613 | **MC-F0009-0305-MB-C-00001** | 2026-06-25 → 2026-06-24 (-1d) | 2026-07-06 → 2026-07-03 (-3d) |  | 7d → 8d |  |
| 614 | Emissão inicial | 2026-06-25 → 2026-06-24 (-1d) | 2026-07-01 → 2026-06-30 (-1d) |  | 7d → 8d |  |
| 615 | Análise Tecnored | 2026-07-02 → 2026-07-01 (-1d) | 2026-07-02 → 2026-07-01 (-1d) |  | 9d → 10d |  |
| 616 | Atendimento de comentários | 2026-07-03 → 2026-07-02 (-1d) | 2026-07-03 → 2026-07-02 (-1d) |  | 9d → 10d |  |
| 617 | Aprovação | 2026-07-06 → 2026-07-03 (-3d) | 2026-07-06 → 2026-07-03 (-3d) |  | 9d → 10d |  |
| 618 | **PQ-F0009-0305-MB-C-00001** | 2026-07-02 → 2026-07-01 (-1d) | 2026-07-08 → 2026-07-07 (-1d) |  | 7d → 8d |  |
| 619 | Emissão inicial | 2026-07-02 → 2026-07-01 (-1d) | 2026-07-02 → 2026-07-01 (-1d) |  | 7d → 8d |  |
| 620 | Análise Tecnored | 2026-07-03 → 2026-07-02 (-1d) | 2026-07-03 → 2026-07-02 (-1d) |  | 7d → 8d |  |
| 621 | Atendimento de comentários | 2026-07-06 → 2026-07-03 (-3d) | 2026-07-07 → 2026-07-06 (-1d) |  | 7d → 8d |  |
| 622 | Aprovação | 2026-07-08 → 2026-07-07 (-1d) | 2026-07-08 → 2026-07-07 (-1d) |  | 7d → 8d |  |

## Version 6 (data date 2026-06-19, saved 2026-06-22, file CR-F0009-0305-MB-F-00001 19062026.mpp)

Note of the change: Primeira versao dashboard

Last finish 2026-07-23 → 2026-07-27 (+4d). Complete tasks 33 → 40.

Added:

| ID | Task | Duration | Start | Finish | Predecessors | Constraint |
| --- | --- | --- | --- | --- | --- | --- |
| 607 | **RE-F0009-0305-MB-J-00001** | 8d | 2026-06-19 | 2026-06-30 |  |  |
| 608 | Emissão inicial | 4d | 2026-06-19 | 2026-06-24 | 513FS-7d | start no earlier than 2026-06-19 |
| 609 | Análise Tecnored | 1d | 2026-06-25 | 2026-06-25 | 608 |  |
| 610 | Atendimento de comentários | 2d | 2026-06-26 | 2026-06-29 | 609 |  |
| 611 | Aprovação | 1d | 2026-06-30 | 2026-06-30 | 610 |  |

Changed:

| ID | Task | Start | Finish | Duration | Complete | Total float | Predecessors | Other |
| --- | --- | --- | --- | --- | --- | --- | --- | --- |
| 1 | **F0009 - Programa Marabá** |  | 2026-07-17 → 2026-07-13 (-4d) | 58d → 54d | 15% → 20% |  |  |  |
| 15 | **Área 0305 - Hot Blast Stoves** |  | 2026-07-17 → 2026-07-13 (-4d) | 58d → 54d | 14% → 19% |  |  |  |
| 19 | **Planejamento** |  | 2026-06-01 A |  | 89% → 100% | 32.6d → none |  |  |
| 20 | **LD-F0009-0305-MB-F-00001** |  | 2026-05-28 A |  | 91% → 100% | 34d → none |  |  |
| 24 | Aprovação | 2026-05-28 A | 2026-05-28 A |  | 0% → 100% | 34d → none |  |  |
| 25 | **CR-F0009-0305-MB-F-00001** |  | 2026-06-01 A |  | 86% → 100% | 32.6d → none |  |  |
| 29 | Aprovação | 2026-05-29 A | 2026-06-01 A |  | 0% → 100% | 32.6d → none |  |  |
| 30 | **Coordenação** |  | 2026-07-17 → 2026-06-30 (-17d) | 58d → 45d | 22% → 79% | 0d → 9d |  |  |
| 31 | **RM-F0009-0305-MB-G-00001** | 2026-06-11 A → 2026-06-19 A (+8d) | 2026-06-19 → 2026-06-29 (+10d) |  |  | 20d → 10d |  |  |
| 32 | Emissão inicial | 2026-06-11 A → 2026-06-19 A (+8d) | 2026-06-15 → 2026-06-23 (+8d) |  |  | 0d → 10d |  | constraint start no earlier than 2026-06-11 → finish no earlier than 2026-06-23 |
| 33 | Análise Tecnored | 2026-06-16 → 2026-06-24 (+8d) | 2026-06-16 → 2026-06-24 (+8d) |  |  | 20d → 10d |  |  |
| 34 | Atendimento de comentários | 2026-06-17 → 2026-06-25 (+8d) | 2026-06-18 → 2026-06-26 (+8d) |  |  | 20d → 10d |  |  |
| 35 | Aprovação | 2026-06-19 → 2026-06-29 (+10d) | 2026-06-19 → 2026-06-29 (+10d) |  |  | 20d → 10d |  |  |
| 36 | **RM-F0009-0305MB-G-00002** | 2026-06-30 → 2026-07-08 (+8d) | 2026-07-08 → 2026-07-16 (+8d) |  |  | 0d → -3d |  |  |
| 37 | Emissão inicial | 2026-06-30 → 2026-07-08 (+8d) | 2026-07-02 → 2026-07-10 (+8d) |  |  | 0d → -3d |  |  |
| 38 | Análise Tecnored | 2026-07-03 → 2026-07-13 (+10d) | 2026-07-03 → 2026-07-13 (+10d) |  |  | 7d → -3d |  |  |
| 39 | Atendimento de comentários | 2026-07-06 → 2026-07-14 (+8d) | 2026-07-07 → 2026-07-15 (+8d) |  |  | 7d → -3d |  |  |
| 40 | Aprovação | 2026-07-08 → 2026-07-16 (+8d) | 2026-07-08 → 2026-07-16 (+8d) |  |  | 7d → -3d |  |  |
| 41 | **RL-F0009-0305-MB-G-00001** | 2026-07-14 → 2026-06-25 (-19d) | 2026-07-17 → 2026-06-30 (-17d) |  |  | 0d → 9d |  |  |
| 42 | Emissão inicial | 2026-07-14 → 2026-06-25 (-19d) | 2026-07-14 → 2026-06-25 (-19d) |  |  | 0d → 9d | 37FS+7d → none | constraint none → finish no earlier than 2026-06-25 |
| 43 | Análise Tecnored | 2026-07-15 → 2026-06-26 (-19d) | 2026-07-15 → 2026-06-26 (-19d) |  |  | 0d → 9d |  | constraint none → start no earlier than 2026-06-26 |
| 44 | Atendimento de comentários | 2026-07-16 → 2026-06-29 (-17d) | 2026-07-16 → 2026-06-29 (-17d) |  |  | 0d → 9d |  | constraint none → start no earlier than 2026-06-29 |
| 45 | Aprovação | 2026-07-17 → 2026-06-30 (-17d) | 2026-07-17 → 2026-06-30 (-17d) |  |  | 0d → 9d |  | constraint none → start no earlier than 2026-06-30 |
| 46 | **LP-F0009-0305-MB-G-00001** |  | 2026-06-18 → 2026-06-30 (+12d) | 37d → 45d | 57% → 94% | 21d → 9d |  |  |
| 47 | Emissão inicial |  | 2026-04-29 A → 2026-06-29 A (+61d) | 3d → 44d |  |  |  | constraint none → finish no earlier than 2026-06-29 |
| 49 | Atendimento de comentários | 2026-06-16 → 2026-06-26 (+10d) | 2026-06-17 → 2026-06-29 (+12d) |  |  | 21d → 9d | 48FS+30d → 48FS+38d |  |
| 50 | Aprovação | 2026-06-18 → 2026-06-30 (+12d) | 2026-06-18 → 2026-06-30 (+12d) |  |  | 21d → 9d |  |  |
| 51 | **Processo** | 2026-05-19 A → 2026-06-18 A (+30d) | 2026-06-11 → 2026-07-09 (+28d) |  | 73% → 41% | 26d → 2d |  |  |
| 57 | **MD-F0009-0305-MB-P-00001** | 2026-06-19 → 2026-07-17 (+28d) | 2026-06-29 → 2026-07-27 (+28d) |  |  | 14d → -10d |  |  |
| 58 | Emissão inicial | 2026-06-19 → 2026-07-17 (+28d) | 2026-06-23 → 2026-07-21 (+28d) |  |  | 14d → -10d |  |  |
| 59 | Análise Tecnored | 2026-06-24 → 2026-07-22 (+28d) | 2026-06-24 → 2026-07-22 (+28d) |  |  | 14d → -10d |  |  |
| 60 | Atendimento de comentários | 2026-06-25 → 2026-07-23 (+28d) | 2026-06-26 → 2026-07-24 (+28d) |  |  | 14d → -10d |  |  |
| 61 | Aprovação | 2026-06-29 → 2026-07-27 (+28d) | 2026-06-29 → 2026-07-27 (+28d) |  |  | 14d → -10d |  |  |
| 62 | **FG-F0009-0305-MB-P-00001** | 2026-05-19 A → 2026-06-18 A (+30d) | 2026-06-11 → 2026-07-09 (+28d) |  | 73% → 41% | 26d → 2d |  |  |
| 63 | Emissão inicial | 2026-05-19 A → 2026-06-18 A (+30d) | 2026-05-19 A → 2026-06-18 A (+30d) |  |  |  |  | constraint none → finish no earlier than 2026-06-18 |
| 64 | Análise Tecnored | 2026-05-20 A → 2026-06-19 A (+30d) | 2026-05-28 A → 2026-06-29 (+32d) |  | 100% → 50% | none → 2d |  |  |
| 65 | Atendimento de comentários | 2026-05-29 → 2026-06-30 (+32d) | 2026-06-01 → 2026-07-01 (+30d) |  |  | 26d → 2d |  |  |
| 66 | Aprovação | 2026-06-11 → 2026-07-09 (+28d) | 2026-06-11 → 2026-07-09 (+28d) |  |  | 26d → 2d |  |  |
| 67 | **Mecânica** |  | 2026-07-01 → 2026-07-03 (+2d) | 32d → 34d | 28% → 31% | 12d → 6d |  |  |
| 88 | **AG-F0009-0305-MB-L-00001** | 2026-06-24 → 2026-06-26 (+2d) | 2026-07-01 → 2026-07-03 (+2d) |  |  | 12d → 6d |  |  |
| 89 | Emissão inicial | 2026-06-24 → 2026-06-26 (+2d) | 2026-06-26 → 2026-06-30 (+4d) |  |  | 12d → 6d |  |  |
| 90 | Análise Tecnored | 2026-06-29 → 2026-07-01 (+2d) | 2026-06-29 → 2026-07-01 (+2d) |  |  | 12d → 6d |  |  |
| 91 | Atendimento de comentários | 2026-06-30 → 2026-07-02 (+2d) | 2026-06-30 → 2026-07-02 (+2d) |  |  | 12d → 6d |  |  |
| 92 | Aprovação | 2026-07-01 → 2026-07-03 (+2d) | 2026-07-01 → 2026-07-03 (+2d) |  |  | 12d → 6d |  |  |
| 93 | **AG-F0009-0305-MB-L-00002** | 2026-06-24 → 2026-06-26 (+2d) | 2026-07-01 → 2026-07-03 (+2d) |  |  | 12d → 6d |  |  |
| 94 | Emissão inicial | 2026-06-24 → 2026-06-26 (+2d) | 2026-06-26 → 2026-06-30 (+4d) |  |  | 12d → 6d |  |  |
| 95 | Análise Tecnored | 2026-06-29 → 2026-07-01 (+2d) | 2026-06-29 → 2026-07-01 (+2d) |  |  | 12d → 6d |  |  |
| 96 | Atendimento de comentários | 2026-06-30 → 2026-07-02 (+2d) | 2026-06-30 → 2026-07-02 (+2d) |  |  | 12d → 6d |  |  |
| 97 | Aprovação | 2026-07-01 → 2026-07-03 (+2d) | 2026-07-01 → 2026-07-03 (+2d) |  |  | 12d → 6d |  |  |
| 98 | **AG-F0009-0305-MB-L-00003** | 2026-06-24 → 2026-06-26 (+2d) | 2026-07-01 → 2026-07-03 (+2d) |  |  | 12d → 6d |  |  |
| 99 | Emissão inicial | 2026-06-24 → 2026-06-26 (+2d) | 2026-06-26 → 2026-06-30 (+4d) |  |  | 12d → 6d |  |  |
| 100 | Análise Tecnored | 2026-06-29 → 2026-07-01 (+2d) | 2026-06-29 → 2026-07-01 (+2d) |  |  | 12d → 6d |  |  |
| 101 | Atendimento de comentários | 2026-06-30 → 2026-07-02 (+2d) | 2026-06-30 → 2026-07-02 (+2d) |  |  | 12d → 6d |  |  |
| 102 | Aprovação | 2026-07-01 → 2026-07-03 (+2d) | 2026-07-01 → 2026-07-03 (+2d) |  |  | 12d → 6d |  |  |
| 103 | **AG-F0009-0305-MB-L-00004** | 2026-06-24 → 2026-06-26 (+2d) | 2026-07-01 → 2026-07-03 (+2d) |  |  | 12d → 6d |  |  |
| 104 | Emissão inicial | 2026-06-24 → 2026-06-26 (+2d) | 2026-06-26 → 2026-06-30 (+4d) |  |  | 12d → 6d |  |  |
| 105 | Análise Tecnored | 2026-06-29 → 2026-07-01 (+2d) | 2026-06-29 → 2026-07-01 (+2d) |  |  | 12d → 6d |  |  |
| 106 | Atendimento de comentários | 2026-06-30 → 2026-07-02 (+2d) | 2026-06-30 → 2026-07-02 (+2d) |  |  | 12d → 6d |  |  |
| 107 | Aprovação | 2026-07-01 → 2026-07-03 (+2d) | 2026-07-01 → 2026-07-03 (+2d) |  |  | 12d → 6d |  |  |
| 108 | **AG-F0009-0305-MB-L-00005** | 2026-06-24 → 2026-06-26 (+2d) | 2026-07-01 → 2026-07-03 (+2d) |  |  | 12d → 6d |  |  |
| 109 | Emissão inicial | 2026-06-24 → 2026-06-26 (+2d) | 2026-06-26 → 2026-06-30 (+4d) |  |  | 12d → 6d |  |  |
| 110 | Análise Tecnored | 2026-06-29 → 2026-07-01 (+2d) | 2026-06-29 → 2026-07-01 (+2d) |  |  | 12d → 6d |  |  |
| 111 | Atendimento de comentários | 2026-06-30 → 2026-07-02 (+2d) | 2026-06-30 → 2026-07-02 (+2d) |  |  | 12d → 6d |  |  |
| 112 | Aprovação | 2026-07-01 → 2026-07-03 (+2d) | 2026-07-01 → 2026-07-03 (+2d) |  |  | 12d → 6d |  |  |
| 113 | **AG-F0009-0305-MB-L-00006** | 2026-06-24 → 2026-06-26 (+2d) | 2026-07-01 → 2026-07-03 (+2d) |  |  | 12d → 6d |  |  |
| 114 | Emissão inicial | 2026-06-24 → 2026-06-26 (+2d) | 2026-06-26 → 2026-06-30 (+4d) |  |  | 12d → 6d |  |  |
| 115 | Análise Tecnored | 2026-06-29 → 2026-07-01 (+2d) | 2026-06-29 → 2026-07-01 (+2d) |  |  | 12d → 6d |  |  |
| 116 | Atendimento de comentários | 2026-06-30 → 2026-07-02 (+2d) | 2026-06-30 → 2026-07-02 (+2d) |  |  | 12d → 6d |  |  |
| 117 | Aprovação | 2026-07-01 → 2026-07-03 (+2d) | 2026-07-01 → 2026-07-03 (+2d) |  |  | 12d → 6d |  |  |
| 118 | **AG-F0009-0305-MB-L-00007** | 2026-06-24 → 2026-06-26 (+2d) | 2026-07-01 → 2026-07-03 (+2d) |  |  | 12d → 6d |  |  |

| ID | Task | Start | Finish | Duration | Complete | Total float | Other |
| --- | --- | --- | --- | --- | --- | --- | --- |
| 119 | Emissão inicial | 2026-06-24 → 2026-06-26 (+2d) | 2026-06-26 → 2026-06-30 (+4d) |  |  | 12d → 6d |  |
| 120 | Análise Tecnored | 2026-06-29 → 2026-07-01 (+2d) | 2026-06-29 → 2026-07-01 (+2d) |  |  | 12d → 6d |  |
| 121 | Atendimento de comentários | 2026-06-30 → 2026-07-02 (+2d) | 2026-06-30 → 2026-07-02 (+2d) |  |  | 12d → 6d |  |
| 122 | Aprovação | 2026-07-01 → 2026-07-03 (+2d) | 2026-07-01 → 2026-07-03 (+2d) |  |  | 12d → 6d |  |
| 123 | **AG-F0009-0305-MB-L-00008** | 2026-06-24 → 2026-06-26 (+2d) | 2026-07-01 → 2026-07-03 (+2d) |  |  | 12d → 6d |  |
| 124 | Emissão inicial | 2026-06-24 → 2026-06-26 (+2d) | 2026-06-26 → 2026-06-30 (+4d) |  |  | 12d → 6d |  |
| 125 | Análise Tecnored | 2026-06-29 → 2026-07-01 (+2d) | 2026-06-29 → 2026-07-01 (+2d) |  |  | 12d → 6d |  |
| 126 | Atendimento de comentários | 2026-06-30 → 2026-07-02 (+2d) | 2026-06-30 → 2026-07-02 (+2d) |  |  | 12d → 6d |  |
| 127 | Aprovação | 2026-07-01 → 2026-07-03 (+2d) | 2026-07-01 → 2026-07-03 (+2d) |  |  | 12d → 6d |  |
| 128 | **AG-F0009-0305-MB-L-00009** | 2026-06-24 → 2026-06-26 (+2d) | 2026-07-01 → 2026-07-03 (+2d) |  |  | 12d → 6d |  |
| 129 | Emissão inicial | 2026-06-24 → 2026-06-26 (+2d) | 2026-06-26 → 2026-06-30 (+4d) |  |  | 12d → 6d |  |
| 130 | Análise Tecnored | 2026-06-29 → 2026-07-01 (+2d) | 2026-06-29 → 2026-07-01 (+2d) |  |  | 12d → 6d |  |
| 131 | Atendimento de comentários | 2026-06-30 → 2026-07-02 (+2d) | 2026-06-30 → 2026-07-02 (+2d) |  |  | 12d → 6d |  |
| 132 | Aprovação | 2026-07-01 → 2026-07-03 (+2d) | 2026-07-01 → 2026-07-03 (+2d) |  |  | 12d → 6d |  |
| 153 | **MC-F0009-0305-MB-M-00001** |  |  |  | 75% → 79% | 19d → 15d |  |
| 155 | Análise Tecnored |  | 2026-06-17 A |  | 50% → 100% | 19d → none |  |
| 158 | **MC-F0009-0305-MB-M-00002** |  |  |  | 75% → 71% | 19d → 15d |  |
| 160 | Análise Tecnored | 2026-06-17 A → 2026-06-17 |  |  | 50% → 0% | 19d → 15d |  |
| 178 | **FD-F0009-0305-MB-M-00001** | 2026-06-17 A |  |  | 0% → 43% | 16d → 12d |  |
| 179 | Emissão inicial | 2026-06-17 A | 2026-06-19 A |  | 0% → 100% | 16d → none |  |
| 183 | **FD-F0009-0305-MB-M-00002** | 2026-06-17 A |  |  | 0% → 43% | 16d → 12d |  |
| 184 | Emissão inicial | 2026-06-17 A | 2026-06-19 A |  | 0% → 100% | 16d → none |  |
| 239 | **FG-F0009-0305-MB-T-00002** | 2026-06-03 → 2026-07-03 (+30d) | 2026-06-12 → 2026-07-10 (+28d) |  |  | 25d → 1d |  |
| 240 | Emissão inicial | 2026-06-03 → 2026-07-03 (+30d) | 2026-06-08 → 2026-07-06 (+28d) |  |  | 25d → 1d |  |
| 241 | Análise Tecnored | 2026-06-09 → 2026-07-07 (+28d) | 2026-06-09 → 2026-07-07 (+28d) |  |  | 25d → 1d |  |
| 242 | Atendimento de comentários | 2026-06-10 → 2026-07-08 (+28d) | 2026-06-11 → 2026-07-09 (+28d) |  |  | 25d → 1d |  |
| 243 | Aprovação | 2026-06-12 → 2026-07-10 (+28d) | 2026-06-12 → 2026-07-10 (+28d) |  |  | 25d → 1d |  |
| 284 | **Estrutura metálica** | 2026-06-17 → 2026-06-19 (+2d) | 2026-07-09 → 2026-07-13 (+4d) |  |  | 6d → 0d |  |
| 290 | **ML-F0009-0305-MB-S-00001** | 2026-06-19 → 2026-06-23 (+4d) | 2026-06-26 → 2026-06-30 (+4d) |  |  | 6d → 0d |  |
| 291 | Emissão inicial | 2026-06-19 → 2026-06-23 (+4d) | 2026-06-23 → 2026-06-25 (+2d) |  |  | 6d → 0d | constraint start no earlier than 2026-06-19 → start no earlier than 2026-06-23 |
| 292 | Análise Tecnored | 2026-06-24 → 2026-06-26 (+2d) | 2026-06-24 → 2026-06-26 (+2d) |  |  | 6d → 0d |  |
| 293 | Atendimento de comentários | 2026-06-25 → 2026-06-29 (+4d) | 2026-06-25 → 2026-06-29 (+4d) |  |  | 6d → 0d |  |
| 294 | Aprovação | 2026-06-26 → 2026-06-30 (+4d) | 2026-06-26 → 2026-06-30 (+4d) |  |  | 8d → 1d |  |
| 295 | **PQ-F0009-0305-MB-S-00001** | 2026-07-01 → 2026-07-03 (+2d) | 2026-07-07 → 2026-07-10 (+3d) | 5d → 6d |  | 8d → 1d |  |
| 296 | Emissão inicial | 2026-07-01 → 2026-07-03 (+2d) | 2026-07-02 → 2026-07-07 (+5d) | 2d → 3d |  | 8d → 1d | constraint none → finish no earlier than 2026-06-29 |
| 297 | Análise Tecnored | 2026-07-03 → 2026-07-08 (+5d) | 2026-07-03 → 2026-07-08 (+5d) |  |  | 8d → 1d | constraint none → start no earlier than 2026-06-30 |
| 298 | Atendimento de comentários | 2026-07-06 → 2026-07-09 (+3d) | 2026-07-06 → 2026-07-09 (+3d) |  |  | 8d → 1d | constraint none → start no earlier than 2026-07-01 |
| 299 | Aprovação | 2026-07-07 → 2026-07-10 (+3d) | 2026-07-07 → 2026-07-10 (+3d) |  |  | 8d → 1d | constraint none → start no earlier than 2026-07-02 |
| 300 | **LM-F0009-0305-MB-S-00001** | 2026-06-29 → 2026-07-01 (+2d) | 2026-07-03 → 2026-07-07 (+4d) |  |  | 8d → 1d |  |
| 301 | Emissão inicial | 2026-06-29 → 2026-07-01 (+2d) | 2026-06-30 → 2026-07-02 (+2d) |  |  | 8d → 1d |  |
| 302 | Análise Tecnored | 2026-07-01 → 2026-07-03 (+2d) | 2026-07-01 → 2026-07-03 (+2d) |  |  | 10d → 4d |  |
| 303 | Atendimento de comentários | 2026-07-02 → 2026-07-06 (+4d) | 2026-07-02 → 2026-07-06 (+4d) |  |  | 10d → 4d |  |
| 304 | Aprovação | 2026-07-03 → 2026-07-07 (+4d) | 2026-07-03 → 2026-07-07 (+4d) |  |  | 10d → 4d |  |
| 305 | **MC-F0009-0305-MB-S-00001** | 2026-06-17 → 2026-06-19 (+2d) |  | 8d → 6d |  | 8d → 4d |  |
| 306 | Emissão inicial | 2026-06-17 → 2026-06-19 (+2d) |  | 5d → 3d |  | 8d → 4d | constraint start no earlier than 2026-06-17 → start no earlier than 2026-06-19 |
| 310 | **AG-F0009-0305-MB-S-00001** | 2026-06-26 → 2026-06-30 (+4d) | 2026-07-08 → 2026-07-10 (+2d) |  |  | 7d → 1d |  |
| 311 | Emissão inicial | 2026-06-26 → 2026-06-30 (+4d) | 2026-07-03 → 2026-07-07 (+4d) |  |  | 7d → 1d |  |
| 312 | Análise Tecnored | 2026-07-06 → 2026-07-08 (+2d) | 2026-07-06 → 2026-07-08 (+2d) |  |  | 7d → 1d |  |
| 313 | Atendimento de comentários | 2026-07-07 → 2026-07-09 (+2d) | 2026-07-07 → 2026-07-09 (+2d) |  |  | 7d → 1d |  |
| 314 | Aprovação | 2026-07-08 → 2026-07-10 (+2d) | 2026-07-08 → 2026-07-10 (+2d) |  |  | 7d → 1d |  |
| 315 | **AG-F0009-0305-MB-S-00002** | 2026-06-26 → 2026-06-30 (+4d) | 2026-07-08 → 2026-07-10 (+2d) |  |  | 7d → 1d |  |
| 316 | Emissão inicial | 2026-06-26 → 2026-06-30 (+4d) | 2026-07-03 → 2026-07-07 (+4d) |  |  | 7d → 1d |  |
| 317 | Análise Tecnored | 2026-07-06 → 2026-07-08 (+2d) | 2026-07-06 → 2026-07-08 (+2d) |  |  | 7d → 1d |  |
| 318 | Atendimento de comentários | 2026-07-07 → 2026-07-09 (+2d) | 2026-07-07 → 2026-07-09 (+2d) |  |  | 7d → 1d |  |
| 319 | Aprovação | 2026-07-08 → 2026-07-10 (+2d) | 2026-07-08 → 2026-07-10 (+2d) |  |  | 7d → 1d |  |
| 320 | **AG-F0009-0305-MB-S-00003** | 2026-06-26 → 2026-06-30 (+4d) | 2026-07-08 → 2026-07-10 (+2d) |  |  | 7d → 1d |  |
| 321 | Emissão inicial | 2026-06-26 → 2026-06-30 (+4d) | 2026-07-03 → 2026-07-07 (+4d) |  |  | 7d → 1d |  |
| 322 | Análise Tecnored | 2026-07-06 → 2026-07-08 (+2d) | 2026-07-06 → 2026-07-08 (+2d) |  |  | 7d → 1d |  |
| 323 | Atendimento de comentários | 2026-07-07 → 2026-07-09 (+2d) | 2026-07-07 → 2026-07-09 (+2d) |  |  | 7d → 1d |  |
| 324 | Aprovação | 2026-07-08 → 2026-07-10 (+2d) | 2026-07-08 → 2026-07-10 (+2d) |  |  | 7d → 1d |  |
| 325 | **AG-F0009-0305-MB-S-00004** | 2026-06-26 → 2026-06-30 (+4d) | 2026-07-08 → 2026-07-10 (+2d) |  |  | 7d → 1d |  |
| 326 | Emissão inicial | 2026-06-26 → 2026-06-30 (+4d) | 2026-07-03 → 2026-07-07 (+4d) |  |  | 7d → 1d |  |
| 327 | Análise Tecnored | 2026-07-06 → 2026-07-08 (+2d) | 2026-07-06 → 2026-07-08 (+2d) |  |  | 7d → 1d |  |
| 328 | Atendimento de comentários | 2026-07-07 → 2026-07-09 (+2d) | 2026-07-07 → 2026-07-09 (+2d) |  |  | 7d → 1d |  |
| 329 | Aprovação | 2026-07-08 → 2026-07-10 (+2d) | 2026-07-08 → 2026-07-10 (+2d) |  |  | 7d → 1d |  |
| 330 | **AG-F0009-0305-MB-S-00005** | 2026-06-26 → 2026-06-30 (+4d) | 2026-07-09 → 2026-07-13 (+4d) |  |  | 6d → 0d |  |
| 331 | Emissão inicial | 2026-06-26 → 2026-06-30 (+4d) | 2026-07-03 → 2026-07-07 (+4d) |  |  | 6d → 0d |  |
| 332 | Análise Tecnored | 2026-07-06 → 2026-07-08 (+2d) | 2026-07-06 → 2026-07-08 (+2d) |  |  | 6d → 0d |  |
| 333 | Atendimento de comentários | 2026-07-07 → 2026-07-09 (+2d) | 2026-07-08 → 2026-07-10 (+2d) |  |  | 6d → 0d |  |
| 334 | Aprovação | 2026-07-09 → 2026-07-13 (+4d) | 2026-07-09 → 2026-07-13 (+4d) |  |  | 6d → 0d |  |

| ID | Task | Start | Finish | Complete | Total float | Predecessors | Other |
| --- | --- | --- | --- | --- | --- | --- | --- |
| 335 | **AG-F0009-0305-MB-S-00006** | 2026-06-26 → 2026-06-30 (+4d) | 2026-07-08 → 2026-07-10 (+2d) |  | 7d → 1d |  |  |
| 336 | Emissão inicial | 2026-06-26 → 2026-06-30 (+4d) | 2026-07-03 → 2026-07-07 (+4d) |  | 7d → 1d |  |  |
| 337 | Análise Tecnored | 2026-07-06 → 2026-07-08 (+2d) | 2026-07-06 → 2026-07-08 (+2d) |  | 7d → 1d |  |  |
| 338 | Atendimento de comentários | 2026-07-07 → 2026-07-09 (+2d) | 2026-07-07 → 2026-07-09 (+2d) |  | 7d → 1d |  |  |
| 339 | Aprovação | 2026-07-08 → 2026-07-10 (+2d) | 2026-07-08 → 2026-07-10 (+2d) |  | 7d → 1d |  |  |
| 340 | **AG-F0009-0305-MB-S-00007** | 2026-06-26 → 2026-06-30 (+4d) | 2026-07-08 → 2026-07-10 (+2d) |  | 7d → 1d |  |  |
| 341 | Emissão inicial | 2026-06-26 → 2026-06-30 (+4d) | 2026-07-03 → 2026-07-07 (+4d) |  | 7d → 1d |  |  |
| 342 | Análise Tecnored | 2026-07-06 → 2026-07-08 (+2d) | 2026-07-06 → 2026-07-08 (+2d) |  | 7d → 1d |  |  |
| 343 | Atendimento de comentários | 2026-07-07 → 2026-07-09 (+2d) | 2026-07-07 → 2026-07-09 (+2d) |  | 7d → 1d |  |  |
| 344 | Aprovação | 2026-07-08 → 2026-07-10 (+2d) | 2026-07-08 → 2026-07-10 (+2d) |  | 7d → 1d |  |  |
| 345 | **AG-F0009-0305-MB-S-00008** | 2026-06-26 → 2026-06-30 (+4d) | 2026-07-08 → 2026-07-10 (+2d) |  | 7d → 1d |  |  |
| 346 | Emissão inicial | 2026-06-26 → 2026-06-30 (+4d) | 2026-07-03 → 2026-07-07 (+4d) |  | 7d → 1d |  |  |
| 347 | Análise Tecnored | 2026-07-06 → 2026-07-08 (+2d) | 2026-07-06 → 2026-07-08 (+2d) |  | 7d → 1d |  |  |
| 348 | Atendimento de comentários | 2026-07-07 → 2026-07-09 (+2d) | 2026-07-07 → 2026-07-09 (+2d) |  | 7d → 1d |  |  |
| 349 | Aprovação | 2026-07-08 → 2026-07-10 (+2d) | 2026-07-08 → 2026-07-10 (+2d) |  | 7d → 1d |  |  |
| 350 | **AG-F0009-0305-MB-S-00009** | 2026-06-26 → 2026-06-30 (+4d) | 2026-07-08 → 2026-07-10 (+2d) |  | 7d → 1d |  |  |
| 351 | Emissão inicial | 2026-06-26 → 2026-06-30 (+4d) | 2026-07-03 → 2026-07-07 (+4d) |  | 7d → 1d |  |  |
| 352 | Análise Tecnored | 2026-07-06 → 2026-07-08 (+2d) | 2026-07-06 → 2026-07-08 (+2d) |  | 7d → 1d |  |  |
| 353 | Atendimento de comentários | 2026-07-07 → 2026-07-09 (+2d) | 2026-07-07 → 2026-07-09 (+2d) |  | 7d → 1d |  |  |
| 354 | Aprovação | 2026-07-08 → 2026-07-10 (+2d) | 2026-07-08 → 2026-07-10 (+2d) |  | 7d → 1d |  |  |
| 355 | **AG-F0009-0305-MB-S-00010** | 2026-06-26 → 2026-06-30 (+4d) | 2026-07-08 → 2026-07-10 (+2d) |  | 7d → 1d |  |  |
| 356 | Emissão inicial | 2026-06-26 → 2026-06-30 (+4d) | 2026-07-03 → 2026-07-07 (+4d) |  | 7d → 1d |  |  |
| 357 | Análise Tecnored | 2026-07-06 → 2026-07-08 (+2d) | 2026-07-06 → 2026-07-08 (+2d) |  | 7d → 1d |  |  |
| 358 | Atendimento de comentários | 2026-07-07 → 2026-07-09 (+2d) | 2026-07-07 → 2026-07-09 (+2d) |  | 7d → 1d |  |  |
| 359 | Aprovação | 2026-07-08 → 2026-07-10 (+2d) | 2026-07-08 → 2026-07-10 (+2d) |  | 7d → 1d |  |  |
| 360 | **PL-F0009-0305-MB-S-00001** | 2026-06-26 → 2026-06-30 (+4d) | 2026-07-07 → 2026-07-09 (+2d) |  | 8d → 2d |  |  |
| 361 | Emissão inicial | 2026-06-26 → 2026-06-30 (+4d) | 2026-07-02 → 2026-07-06 (+4d) |  | 8d → 2d |  |  |
| 362 | Análise Tecnored | 2026-07-03 → 2026-07-07 (+4d) | 2026-07-03 → 2026-07-07 (+4d) |  | 8d → 2d |  |  |
| 363 | Atendimento de comentários | 2026-07-06 → 2026-07-08 (+2d) | 2026-07-06 → 2026-07-08 (+2d) |  | 8d → 2d |  |  |
| 364 | Aprovação | 2026-07-07 → 2026-07-09 (+2d) | 2026-07-07 → 2026-07-09 (+2d) |  | 8d → 2d |  |  |
| 431 | **Automação e instrumentação** |  |  | 6% → 7% | 7d → 3d |  |  |
| 438 | Emissão inicial |  | 2026-06-19 → 2026-06-20 (+1d) |  | 12d → 8d |  | constraint finish no earlier than 2026-06-19 → finish no earlier than 2026-06-20 |
| 467 | **FG-F0009-0305-MB-J-00001** |  |  | 65% → 80% | 21d → 17d |  |  |
| 469 | Análise Tecnored |  | 2026-06-15 A | 50% → 100% | 21d → none |  |  |
| 470 | Atendimento de comentários | 2026-06-16 A |  | 0% → 50% | 21d → 17d |  |  |
| 472 | **FG-F0009-0305-MB-J-00002** |  |  | 65% → 80% | 21d → 17d |  |  |
| 474 | Análise Tecnored |  | 2026-06-15 A | 50% → 100% | 21d → none |  |  |
| 475 | Atendimento de comentários | 2026-06-16 A |  | 0% → 50% | 21d → 17d |  |  |
| 477 | **FG-F0009-0305-MB-J-00003** |  |  | 65% → 80% | 21d → 17d |  |  |
| 479 | Análise Tecnored |  | 2026-06-15 A | 50% → 100% | 21d → none |  |  |
| 480 | Atendimento de comentários | 2026-06-16 A |  | 0% → 50% | 21d → 17d |  |  |
| 518 | Emissão inicial |  |  |  | 9d → 5d | 613FS-7d → 613FS-7d, 608FS-7d |  |

## Version 7 (data date 2026-06-22, saved 2026-06-23, file CR-F0009-0305-MB-F-00001 22062026.mpp)

Note of the change: Primeira versao dashboard

Last finish stays 2026-07-27. Complete tasks 40 → 42.

Changed:

| ID | Task | Start | Finish | Duration | Complete | Total float |
| --- | --- | --- | --- | --- | --- | --- |
| 2 | **Área 0000 -Documento geral** |  | 2026-06-14 → 2026-06-23 (+9d) | 17d → 24d | 99% → 50% |  |
| 8 | **Marcos** |  | 2026-06-14 → 2026-06-23 (+9d) | 17d → 24d | 99% → 50% |  |
| 9 | Critério de projeto Processo |  |  | 0d → 1d |  |  |
| 10 | Critério de projeto Mecânica |  |  | 0d → 1d |  |  |
| 11 | Critério de projeto Tubulação |  |  | 0d → 1d |  |  |
| 12 | Critério de projeto Elétrica |  | 2026-06-14 A → 2026-06-05 A (-9d) | 7d → 1d |  |  |
| 13 | Critério de projeto Automação |  |  | 0d → 1d | 75% → 0% |  |
| 14 | Critério de projeto Estrutura Metálica | 2026-06-05 → 2026-06-23 (+18d) | 2026-06-05 → 2026-06-23 (+18d) | 0d → 1d |  |  |
| 15 | **Área 0305 - Hot Blast Stoves** |  |  |  | 19% → 20% |  |
| 67 | **Mecânica** |  |  |  | 31% → 33% |  |
| 68 | **CP-F0009-0305-MB-M-00001** |  | 2026-05-22 → 2026-05-25 (+3d) | 11d → 12d |  |  |
| 70 | Análise Tecnored | 2026-05-19 → 2026-05-20 (+1d) | 2026-05-19 → 2026-05-20 (+1d) |  |  | 34d → 33d |
| 71 | Atendimento de comentários | 2026-05-20 → 2026-05-21 (+1d) | 2026-05-21 → 2026-05-22 (+1d) |  |  | 34d → 33d |
| 72 | Aprovação | 2026-05-22 → 2026-05-25 (+3d) | 2026-05-22 → 2026-05-25 (+3d) |  |  | 34d → 33d |
| 78 | **LE-F0009-0305-MB-M-00001** |  | 2026-06-02 A |  | 83% → 100% | 27d → none |
| 82 | Aprovação | 2026-06-02 A | 2026-06-02 A |  | 0% → 100% | 27d → none |
| 173 | **ML-F0009-0305-MB-M-00001** |  |  |  | 92% → 88% |  |
| 177 | Aprovação | 2026-06-03 A → 2026-06-03 |  |  | 50% → 0% |  |
| 188 | **FD-F0009-0305-MB-M-00003** | 2026-06-17 A |  |  | 0% → 43% |  |
| 189 | Emissão inicial | 2026-06-17 A | 2026-06-19 A |  | 0% → 100% | 12d → none |
| 194 | **CP-F0009-0305-MB-T-00001** |  | 2026-05-27 → 2026-05-28 (+1d) | 14d → 15d |  | 31d → 30d |
| 196 | Análise Tecnored | 2026-05-22 → 2026-05-25 (+3d) | 2026-05-22 → 2026-05-25 (+3d) |  |  | 31d → 30d |
| 197 | Atendimento de comentários | 2026-05-25 → 2026-05-26 (+1d) | 2026-05-26 → 2026-05-27 (+1d) |  |  | 31d → 30d |
| 198 | Aprovação | 2026-05-27 → 2026-05-28 (+1d) | 2026-05-27 → 2026-05-28 (+1d) |  |  | 31d → 30d |
| 285 | **CP-F0009-0305-MB-S-00001** |  | 2026-06-11 → 2026-06-29 (+18d) | 21d → 33d |  | 22d → 10d |
| 287 | Análise Tecnored | 2026-06-08 → 2026-06-24 (+16d) | 2026-06-08 → 2026-06-24 (+16d) |  |  | 22d → 10d |
| 288 | Atendimento de comentários | 2026-06-09 → 2026-06-25 (+16d) | 2026-06-10 → 2026-06-26 (+16d) |  |  | 22d → 10d |
| 289 | Aprovação | 2026-06-11 → 2026-06-29 (+18d) | 2026-06-11 → 2026-06-29 (+18d) |  |  | 22d → 10d |
| 366 | **CP-F0009-0305-MB-E-00001** |  | 2026-06-18 → 2026-06-11 (-7d) | 28d → 23d |  | 17d → 22d |
| 368 | Análise Tecnored | 2026-06-15 → 2026-06-08 (-7d) | 2026-06-15 → 2026-06-08 (-7d) |  |  | 17d → 22d |
| 369 | Atendimento de comentários | 2026-06-16 → 2026-06-09 (-7d) | 2026-06-17 → 2026-06-10 (-7d) |  |  | 17d → 22d |
| 370 | Aprovação | 2026-06-18 → 2026-06-11 (-7d) | 2026-06-18 → 2026-06-11 (-7d) |  |  | 17d → 22d |

## Version 8 (data date 2026-06-25, saved 2026-06-25, file CR-F0009-0305-MB-F-00001 25062026.mpp)

Note of the change: Primeira versao dashboard

Last finish stays 2026-07-27. Complete tasks 42 → 55.

Changed:

| ID | Task | Start | Finish | Duration | Complete | Total float | Other |
| --- | --- | --- | --- | --- | --- | --- | --- |
| 1 | **F0009 - Programa Marabá** |  |  |  | 20% → 30% |  |  |
| 15 | **Área 0305 - Hot Blast Stoves** |  |  |  | 20% → 30% |  |  |
| 30 | **Coordenação** |  |  |  | 79% → 31% |  |  |
| 46 | **LP-F0009-0305-MB-G-00001** |  |  |  | 94% → 57% |  |  |
| 47 | Emissão inicial |  | 2026-06-29 A → 2026-04-29 A (-61d) | 44d → 3d |  |  |  |
| 49 | Atendimento de comentários |  |  |  |  |  | constraint none → start no earlier than 2026-06-12 |
| 50 | Aprovação |  |  |  |  |  | constraint none → start no earlier than 2026-06-16 |
| 51 | **Processo** |  |  |  | 41% → 60% |  |  |
| 62 | **FG-F0009-0305-MB-P-00001** |  |  |  | 41% → 60% |  |  |
| 64 | Análise Tecnored |  | 2026-06-29 → 2026-06-19 A (-10d) | 7d → 1d | 50% → 100% | 2d → none |  |
| 65 | Atendimento de comentários | 2026-06-30 A |  |  | 0% → 50% |  |  |
| 67 | **Mecânica** |  | 2026-07-03 → 2026-07-06 (+3d) | 34d → 35d | 33% → 35% | 6d → 5d |  |
| 88 | **AG-F0009-0305-MB-L-00001** | 2026-06-26 → 2026-06-29 (+3d) | 2026-07-03 → 2026-07-06 (+3d) |  |  | 6d → 5d |  |
| 89 | Emissão inicial | 2026-06-26 → 2026-06-29 (+3d) | 2026-06-30 → 2026-07-01 (+1d) |  |  | 6d → 5d |  |
| 90 | Análise Tecnored | 2026-07-01 → 2026-07-02 (+1d) | 2026-07-01 → 2026-07-02 (+1d) |  |  | 6d → 5d |  |
| 91 | Atendimento de comentários | 2026-07-02 → 2026-07-03 (+1d) | 2026-07-02 → 2026-07-03 (+1d) |  |  | 6d → 5d |  |
| 92 | Aprovação | 2026-07-03 → 2026-07-06 (+3d) | 2026-07-03 → 2026-07-06 (+3d) |  |  | 6d → 5d |  |
| 93 | **AG-F0009-0305-MB-L-00002** | 2026-06-26 → 2026-06-29 (+3d) | 2026-07-03 → 2026-07-06 (+3d) |  |  | 6d → 5d |  |
| 94 | Emissão inicial | 2026-06-26 → 2026-06-29 (+3d) | 2026-06-30 → 2026-07-01 (+1d) |  |  | 6d → 5d |  |
| 95 | Análise Tecnored | 2026-07-01 → 2026-07-02 (+1d) | 2026-07-01 → 2026-07-02 (+1d) |  |  | 6d → 5d |  |
| 96 | Atendimento de comentários | 2026-07-02 → 2026-07-03 (+1d) | 2026-07-02 → 2026-07-03 (+1d) |  |  | 6d → 5d |  |
| 97 | Aprovação | 2026-07-03 → 2026-07-06 (+3d) | 2026-07-03 → 2026-07-06 (+3d) |  |  | 6d → 5d |  |
| 98 | **AG-F0009-0305-MB-L-00003** | 2026-06-26 → 2026-06-29 (+3d) | 2026-07-03 → 2026-07-06 (+3d) |  |  | 6d → 5d |  |
| 99 | Emissão inicial | 2026-06-26 → 2026-06-29 (+3d) | 2026-06-30 → 2026-07-01 (+1d) |  |  | 6d → 5d |  |
| 100 | Análise Tecnored | 2026-07-01 → 2026-07-02 (+1d) | 2026-07-01 → 2026-07-02 (+1d) |  |  | 6d → 5d |  |
| 101 | Atendimento de comentários | 2026-07-02 → 2026-07-03 (+1d) | 2026-07-02 → 2026-07-03 (+1d) |  |  | 6d → 5d |  |
| 102 | Aprovação | 2026-07-03 → 2026-07-06 (+3d) | 2026-07-03 → 2026-07-06 (+3d) |  |  | 6d → 5d |  |
| 103 | **AG-F0009-0305-MB-L-00004** | 2026-06-26 → 2026-06-29 (+3d) | 2026-07-03 → 2026-07-06 (+3d) |  |  | 6d → 5d |  |
| 104 | Emissão inicial | 2026-06-26 → 2026-06-29 (+3d) | 2026-06-30 → 2026-07-01 (+1d) |  |  | 6d → 5d |  |
| 105 | Análise Tecnored | 2026-07-01 → 2026-07-02 (+1d) | 2026-07-01 → 2026-07-02 (+1d) |  |  | 6d → 5d |  |
| 106 | Atendimento de comentários | 2026-07-02 → 2026-07-03 (+1d) | 2026-07-02 → 2026-07-03 (+1d) |  |  | 6d → 5d |  |
| 107 | Aprovação | 2026-07-03 → 2026-07-06 (+3d) | 2026-07-03 → 2026-07-06 (+3d) |  |  | 6d → 5d |  |
| 108 | **AG-F0009-0305-MB-L-00005** | 2026-06-26 → 2026-06-29 (+3d) | 2026-07-03 → 2026-07-06 (+3d) |  |  | 6d → 5d |  |
| 109 | Emissão inicial | 2026-06-26 → 2026-06-29 (+3d) | 2026-06-30 → 2026-07-01 (+1d) |  |  | 6d → 5d |  |
| 110 | Análise Tecnored | 2026-07-01 → 2026-07-02 (+1d) | 2026-07-01 → 2026-07-02 (+1d) |  |  | 6d → 5d |  |
| 111 | Atendimento de comentários | 2026-07-02 → 2026-07-03 (+1d) | 2026-07-02 → 2026-07-03 (+1d) |  |  | 6d → 5d |  |
| 112 | Aprovação | 2026-07-03 → 2026-07-06 (+3d) | 2026-07-03 → 2026-07-06 (+3d) |  |  | 6d → 5d |  |
| 113 | **AG-F0009-0305-MB-L-00006** | 2026-06-26 → 2026-06-29 (+3d) | 2026-07-03 → 2026-07-06 (+3d) |  |  | 6d → 5d |  |
| 114 | Emissão inicial | 2026-06-26 → 2026-06-29 (+3d) | 2026-06-30 → 2026-07-01 (+1d) |  |  | 6d → 5d |  |
| 115 | Análise Tecnored | 2026-07-01 → 2026-07-02 (+1d) | 2026-07-01 → 2026-07-02 (+1d) |  |  | 6d → 5d |  |
| 116 | Atendimento de comentários | 2026-07-02 → 2026-07-03 (+1d) | 2026-07-02 → 2026-07-03 (+1d) |  |  | 6d → 5d |  |
| 117 | Aprovação | 2026-07-03 → 2026-07-06 (+3d) | 2026-07-03 → 2026-07-06 (+3d) |  |  | 6d → 5d |  |
| 118 | **AG-F0009-0305-MB-L-00007** | 2026-06-26 → 2026-06-29 (+3d) | 2026-07-03 → 2026-07-06 (+3d) |  |  | 6d → 5d |  |
| 119 | Emissão inicial | 2026-06-26 → 2026-06-29 (+3d) | 2026-06-30 → 2026-07-01 (+1d) |  |  | 6d → 5d |  |
| 120 | Análise Tecnored | 2026-07-01 → 2026-07-02 (+1d) | 2026-07-01 → 2026-07-02 (+1d) |  |  | 6d → 5d |  |
| 121 | Atendimento de comentários | 2026-07-02 → 2026-07-03 (+1d) | 2026-07-02 → 2026-07-03 (+1d) |  |  | 6d → 5d |  |
| 122 | Aprovação | 2026-07-03 → 2026-07-06 (+3d) | 2026-07-03 → 2026-07-06 (+3d) |  |  | 6d → 5d |  |
| 123 | **AG-F0009-0305-MB-L-00008** | 2026-06-26 → 2026-06-29 (+3d) | 2026-07-03 → 2026-07-06 (+3d) |  |  | 6d → 5d |  |
| 124 | Emissão inicial | 2026-06-26 → 2026-06-29 (+3d) | 2026-06-30 → 2026-07-01 (+1d) |  |  | 6d → 5d |  |
| 125 | Análise Tecnored | 2026-07-01 → 2026-07-02 (+1d) | 2026-07-01 → 2026-07-02 (+1d) |  |  | 6d → 5d |  |
| 126 | Atendimento de comentários | 2026-07-02 → 2026-07-03 (+1d) | 2026-07-02 → 2026-07-03 (+1d) |  |  | 6d → 5d |  |
| 127 | Aprovação | 2026-07-03 → 2026-07-06 (+3d) | 2026-07-03 → 2026-07-06 (+3d) |  |  | 6d → 5d |  |
| 128 | **AG-F0009-0305-MB-L-00009** | 2026-06-26 → 2026-06-29 (+3d) | 2026-07-03 → 2026-07-06 (+3d) |  |  | 6d → 5d |  |
| 129 | Emissão inicial | 2026-06-26 → 2026-06-29 (+3d) | 2026-06-30 → 2026-07-01 (+1d) |  |  | 6d → 5d |  |
| 130 | Análise Tecnored | 2026-07-01 → 2026-07-02 (+1d) | 2026-07-01 → 2026-07-02 (+1d) |  |  | 6d → 5d |  |
| 131 | Atendimento de comentários | 2026-07-02 → 2026-07-03 (+1d) | 2026-07-02 → 2026-07-03 (+1d) |  |  | 6d → 5d |  |
| 132 | Aprovação | 2026-07-03 → 2026-07-06 (+3d) | 2026-07-03 → 2026-07-06 (+3d) |  |  | 6d → 5d |  |
| 153 | **MC-F0009-0305-MB-M-00001** |  |  |  | 79% → 86% |  |  |
| 156 | Atendimento de comentários | 2026-06-18 A |  |  | 0% → 50% |  |  |
| 158 | **MC-F0009-0305-MB-M-00002** |  |  |  | 71% → 75% |  |  |
| 160 | Análise Tecnored | 2026-06-17 A |  |  | 0% → 50% |  |  |
| 163 | **MC-F0009-0305-MB-M-00003** |  |  |  | 79% → 86% |  |  |
| 166 | Atendimento de comentários | 2026-06-18 A |  |  | 0% → 50% |  |  |
| 168 | **MC-F0009-0305-MB-M-00004** |  |  |  | 71% → 75% |  |  |
| 170 | Análise Tecnored | 2026-06-17 A |  |  | 0% → 50% |  |  |
| 173 | **ML-F0009-0305-MB-M-00001** |  |  |  | 88% → 92% |  |  |
| 177 | Aprovação | 2026-06-03 A |  |  | 0% → 50% |  |  |
| 183 | **FD-F0009-0305-MB-M-00002** |  |  |  | 43% → 50% |  |  |
| 185 | Análise Tecnored | 2026-06-22 A |  |  | 0% → 50% |  |  |
| 193 | **Tubulação/Utilidades** |  | 2026-07-07 → 2026-07-08 (+1d) | 20d → 21d | 6% → 13% | 4d → 3d |  |

| ID | Task | Start | Finish | Complete | Total float | Predecessors | Other |
| --- | --- | --- | --- | --- | --- | --- | --- |
| 199 | **MD-F0009-0305-MB-U-00001** | 2026-07-15 → 2026-07-16 (+1d) | 2026-07-23 → 2026-07-24 (+1d) |  | -8d → -9d |  |  |
| 200 | Emissão inicial | 2026-07-15 → 2026-07-16 (+1d) | 2026-07-17 → 2026-07-20 (+3d) |  | -8d → -9d |  |  |
| 201 | Análise Tecnored | 2026-07-20 → 2026-07-21 (+1d) | 2026-07-20 → 2026-07-21 (+1d) |  | -8d → -9d |  |  |
| 202 | Atendimento de comentários | 2026-07-21 → 2026-07-22 (+1d) | 2026-07-22 → 2026-07-23 (+1d) |  | -8d → -9d |  |  |
| 203 | Aprovação | 2026-07-23 → 2026-07-24 (+1d) | 2026-07-23 → 2026-07-24 (+1d) |  | -8d → -9d |  |  |
| 204 | **ML-F0009-0305-MB-T-00001** | 2026-06-18 → 2026-06-24 A (+6d) | 2026-06-26 → 2026-07-02 (+6d) | 0% → 32% | 4d → 7d |  |  |
| 205 | Emissão inicial | 2026-06-18 → 2026-06-24 A (+6d) | 2026-06-22 → 2026-06-26 (+4d) | 0% → 75% | 4d → 3d |  | constraint start no earlier than 2026-06-18 → start no earlier than 2026-06-24 |
| 206 | Análise Tecnored | 2026-06-23 → 2026-06-29 (+6d) | 2026-06-23 → 2026-06-29 (+6d) |  | 4d → 3d |  |  |
| 207 | Atendimento de comentários | 2026-06-24 → 2026-06-30 (+6d) | 2026-06-25 → 2026-07-01 (+6d) |  | 4d → 7d |  |  |
| 208 | Aprovação | 2026-06-26 → 2026-07-02 (+6d) | 2026-06-26 → 2026-07-02 (+6d) |  | 4d → 7d |  |  |
| 224 | **PQ-F0009-0305-MB-T-00001** | 2026-06-22 → 2026-06-29 (+7d) | 2026-06-30 → 2026-07-07 (+7d) |  | 9d → 4d |  |  |
| 225 | Emissão inicial | 2026-06-22 → 2026-06-29 (+7d) | 2026-06-24 → 2026-07-01 (+7d) |  | 9d → 4d | 233 → none | constraint none → start no earlier than 2026-06-29 |
| 226 | Análise Tecnored | 2026-06-25 → 2026-07-02 (+7d) | 2026-06-25 → 2026-07-02 (+7d) |  | 9d → 4d |  |  |
| 227 | Atendimento de comentários | 2026-06-26 → 2026-07-03 (+7d) | 2026-06-29 → 2026-07-06 (+7d) |  | 9d → 4d |  |  |
| 228 | Aprovação | 2026-06-30 → 2026-07-07 (+7d) | 2026-06-30 → 2026-07-07 (+7d) |  | 9d → 4d |  |  |
| 234 | **FG-F0009-0305-MB-T-00001** |  |  | 50% → 71% |  |  |  |
| 236 | Análise Tecnored |  | 2026-06-15 A | 50% → 100% | 17d → none |  |  |
| 237 | Atendimento de comentários | 2026-06-16 A |  | 0% → 50% |  |  |  |
| 244 | **AG-F0009-0305-MB-T-00001** | 2026-06-29 → 2026-06-30 (+1d) | 2026-07-07 → 2026-07-08 (+1d) |  | 4d → 3d |  |  |
| 245 | Emissão inicial | 2026-06-29 → 2026-06-30 (+1d) | 2026-07-01 → 2026-07-02 (+1d) |  | 4d → 3d | 208 → 206 |  |
| 246 | Análise Tecnored | 2026-07-02 → 2026-07-03 (+1d) | 2026-07-02 → 2026-07-03 (+1d) |  | 4d → 3d |  |  |
| 247 | Atendimento de comentários | 2026-07-03 → 2026-07-06 (+3d) | 2026-07-06 → 2026-07-07 (+1d) |  | 4d → 3d |  |  |
| 248 | Aprovação | 2026-07-07 → 2026-07-08 (+1d) | 2026-07-07 → 2026-07-08 (+1d) |  | 4d → 3d |  |  |
| 249 | **AG-F0009-0305-MB-T-00002** | 2026-06-29 → 2026-06-30 (+1d) | 2026-07-07 → 2026-07-08 (+1d) |  | 4d → 3d |  |  |
| 250 | Emissão inicial | 2026-06-29 → 2026-06-30 (+1d) | 2026-07-01 → 2026-07-02 (+1d) |  | 4d → 3d | 208 → 206 |  |
| 251 | Análise Tecnored | 2026-07-02 → 2026-07-03 (+1d) | 2026-07-02 → 2026-07-03 (+1d) |  | 4d → 3d |  |  |
| 252 | Atendimento de comentários | 2026-07-03 → 2026-07-06 (+3d) | 2026-07-06 → 2026-07-07 (+1d) |  | 4d → 3d |  |  |
| 253 | Aprovação | 2026-07-07 → 2026-07-08 (+1d) | 2026-07-07 → 2026-07-08 (+1d) |  | 4d → 3d |  |  |
| 254 | **AG-F0009-0305-MB-T-00003** | 2026-06-29 → 2026-06-30 (+1d) | 2026-07-07 → 2026-07-08 (+1d) |  | 4d → 3d |  |  |
| 255 | Emissão inicial | 2026-06-29 → 2026-06-30 (+1d) | 2026-07-01 → 2026-07-02 (+1d) |  | 4d → 3d | 208 → 206 |  |
| 256 | Análise Tecnored | 2026-07-02 → 2026-07-03 (+1d) | 2026-07-02 → 2026-07-03 (+1d) |  | 4d → 3d |  |  |
| 257 | Atendimento de comentários | 2026-07-03 → 2026-07-06 (+3d) | 2026-07-06 → 2026-07-07 (+1d) |  | 4d → 3d |  |  |
| 258 | Aprovação | 2026-07-07 → 2026-07-08 (+1d) | 2026-07-07 → 2026-07-08 (+1d) |  | 4d → 3d |  |  |
| 274 | **LK-F0009-0305-MB-T-00001** | 2026-06-22 → 2026-07-01 (+9d) | 2026-06-29 → 2026-07-08 (+9d) |  | 10d → 3d |  |  |
| 275 | Emissão inicial | 2026-06-22 → 2026-07-01 (+9d) | 2026-06-23 → 2026-07-02 (+9d) |  | 10d → 3d |  | constraint none → start no earlier than 2026-07-01 |
| 276 | Análise Tecnored | 2026-06-24 → 2026-07-03 (+9d) | 2026-06-24 → 2026-07-03 (+9d) |  | 10d → 3d |  |  |
| 277 | Atendimento de comentários | 2026-06-25 → 2026-07-06 (+11d) | 2026-06-26 → 2026-07-07 (+11d) |  | 10d → 3d |  |  |
| 278 | Aprovação | 2026-06-29 → 2026-07-08 (+9d) | 2026-06-29 → 2026-07-08 (+9d) |  | 10d → 3d |  |  |
| 284 | **Estrutura metálica** | 2026-06-19 A |  | 0% → 2% |  |  |  |
| 290 | **ML-F0009-0305-MB-S-00001** | 2026-06-23 → 2026-06-24 A (+1d) | 2026-06-30 → 2026-07-01 (+1d) | 0% → 38% |  |  |  |
| 291 | Emissão inicial | 2026-06-23 → 2026-06-24 A (+1d) | 2026-06-25 → 2026-06-26 (+1d) | 0% → 75% |  |  |  |
| 292 | Análise Tecnored | 2026-06-26 → 2026-06-29 (+3d) | 2026-06-26 → 2026-06-29 (+3d) |  |  |  |  |
| 293 | Atendimento de comentários | 2026-06-29 → 2026-06-30 (+1d) | 2026-06-29 → 2026-06-30 (+1d) |  |  |  |  |
| 294 | Aprovação | 2026-06-30 → 2026-07-01 (+1d) | 2026-06-30 → 2026-07-01 (+1d) |  | 1d → 0d |  |  |
| 295 | **PQ-F0009-0305-MB-S-00001** | 2026-07-03 → 2026-07-06 (+3d) | 2026-07-10 → 2026-07-13 (+3d) |  | 1d → 0d |  |  |
| 296 | Emissão inicial | 2026-07-03 → 2026-07-06 (+3d) | 2026-07-07 → 2026-07-08 (+1d) |  | 1d → 0d |  | constraint finish no earlier than 2026-06-29 → finish no earlier than 2026-07-02 |
| 297 | Análise Tecnored | 2026-07-08 → 2026-07-09 (+1d) | 2026-07-08 → 2026-07-09 (+1d) |  | 1d → 0d |  |  |
| 298 | Atendimento de comentários | 2026-07-09 → 2026-07-10 (+1d) | 2026-07-09 → 2026-07-10 (+1d) |  | 1d → 0d |  |  |
| 299 | Aprovação | 2026-07-10 → 2026-07-13 (+3d) | 2026-07-10 → 2026-07-13 (+3d) |  | 1d → 0d |  |  |
| 300 | **LM-F0009-0305-MB-S-00001** | 2026-07-01 → 2026-07-02 (+1d) | 2026-07-07 → 2026-07-08 (+1d) |  | 1d → 0d |  |  |
| 301 | Emissão inicial | 2026-07-01 → 2026-07-02 (+1d) | 2026-07-02 → 2026-07-03 (+1d) |  | 1d → 0d |  |  |
| 302 | Análise Tecnored | 2026-07-03 → 2026-07-06 (+3d) | 2026-07-03 → 2026-07-06 (+3d) |  | 4d → 3d |  |  |
| 303 | Atendimento de comentários | 2026-07-06 → 2026-07-07 (+1d) | 2026-07-06 → 2026-07-07 (+1d) |  | 4d → 3d |  |  |
| 304 | Aprovação | 2026-07-07 → 2026-07-08 (+1d) | 2026-07-07 → 2026-07-08 (+1d) |  | 4d → 3d |  |  |
| 310 | **AG-F0009-0305-MB-S-00001** | 2026-06-30 → 2026-07-01 (+1d) | 2026-07-10 → 2026-07-13 (+3d) |  | 1d → 0d |  |  |
| 311 | Emissão inicial | 2026-06-30 → 2026-07-01 (+1d) | 2026-07-07 → 2026-07-08 (+1d) |  | 1d → 0d |  |  |
| 312 | Análise Tecnored | 2026-07-08 → 2026-07-09 (+1d) | 2026-07-08 → 2026-07-09 (+1d) |  | 1d → 0d |  |  |
| 313 | Atendimento de comentários | 2026-07-09 → 2026-07-10 (+1d) | 2026-07-09 → 2026-07-10 (+1d) |  | 1d → 0d |  |  |
| 314 | Aprovação | 2026-07-10 → 2026-07-13 (+3d) | 2026-07-10 → 2026-07-13 (+3d) |  | 1d → 0d |  |  |
| 315 | **AG-F0009-0305-MB-S-00002** | 2026-06-30 → 2026-07-01 (+1d) | 2026-07-10 → 2026-07-13 (+3d) |  | 1d → 0d |  |  |
| 316 | Emissão inicial | 2026-06-30 → 2026-07-01 (+1d) | 2026-07-07 → 2026-07-08 (+1d) |  | 1d → 0d |  |  |
| 317 | Análise Tecnored | 2026-07-08 → 2026-07-09 (+1d) | 2026-07-08 → 2026-07-09 (+1d) |  | 1d → 0d |  |  |
| 318 | Atendimento de comentários | 2026-07-09 → 2026-07-10 (+1d) | 2026-07-09 → 2026-07-10 (+1d) |  | 1d → 0d |  |  |
| 319 | Aprovação | 2026-07-10 → 2026-07-13 (+3d) | 2026-07-10 → 2026-07-13 (+3d) |  | 1d → 0d |  |  |
| 320 | **AG-F0009-0305-MB-S-00003** | 2026-06-30 → 2026-07-01 (+1d) | 2026-07-10 → 2026-07-13 (+3d) |  | 1d → 0d |  |  |
| 321 | Emissão inicial | 2026-06-30 → 2026-07-01 (+1d) | 2026-07-07 → 2026-07-08 (+1d) |  | 1d → 0d |  |  |
| 322 | Análise Tecnored | 2026-07-08 → 2026-07-09 (+1d) | 2026-07-08 → 2026-07-09 (+1d) |  | 1d → 0d |  |  |
| 323 | Atendimento de comentários | 2026-07-09 → 2026-07-10 (+1d) | 2026-07-09 → 2026-07-10 (+1d) |  | 1d → 0d |  |  |
| 324 | Aprovação | 2026-07-10 → 2026-07-13 (+3d) | 2026-07-10 → 2026-07-13 (+3d) |  | 1d → 0d |  |  |
| 325 | **AG-F0009-0305-MB-S-00004** | 2026-06-30 → 2026-07-01 (+1d) | 2026-07-10 → 2026-07-13 (+3d) |  | 1d → 0d |  |  |

| ID | Task | Start | Finish | Duration | Complete | Total float | Other |
| --- | --- | --- | --- | --- | --- | --- | --- |
| 326 | Emissão inicial | 2026-06-30 → 2026-07-01 (+1d) | 2026-07-07 → 2026-07-08 (+1d) |  |  | 1d → 0d |  |
| 327 | Análise Tecnored | 2026-07-08 → 2026-07-09 (+1d) | 2026-07-08 → 2026-07-09 (+1d) |  |  | 1d → 0d |  |
| 328 | Atendimento de comentários | 2026-07-09 → 2026-07-10 (+1d) | 2026-07-09 → 2026-07-10 (+1d) |  |  | 1d → 0d |  |
| 329 | Aprovação | 2026-07-10 → 2026-07-13 (+3d) | 2026-07-10 → 2026-07-13 (+3d) |  |  | 1d → 0d |  |
| 330 | **AG-F0009-0305-MB-S-00005** | 2026-06-30 → 2026-07-01 (+1d) |  | 10d → 9d |  |  |  |
| 331 | Emissão inicial | 2026-06-30 → 2026-07-01 (+1d) | 2026-07-07 → 2026-07-08 (+1d) |  |  |  |  |
| 332 | Análise Tecnored | 2026-07-08 → 2026-07-09 (+1d) | 2026-07-08 → 2026-07-09 (+1d) |  |  |  |  |
| 333 | Atendimento de comentários | 2026-07-09 → 2026-07-10 (+1d) |  | 2d → 1d |  |  | constraint none → finish no earlier than 2026-07-10 |
| 334 | Aprovação |  |  |  |  |  | constraint none → start no earlier than 2026-07-13 |
| 335 | **AG-F0009-0305-MB-S-00006** | 2026-06-30 → 2026-07-01 (+1d) | 2026-07-10 → 2026-07-13 (+3d) |  |  | 1d → 0d |  |
| 336 | Emissão inicial | 2026-06-30 → 2026-07-01 (+1d) | 2026-07-07 → 2026-07-08 (+1d) |  |  | 1d → 0d |  |
| 337 | Análise Tecnored | 2026-07-08 → 2026-07-09 (+1d) | 2026-07-08 → 2026-07-09 (+1d) |  |  | 1d → 0d |  |
| 338 | Atendimento de comentários | 2026-07-09 → 2026-07-10 (+1d) | 2026-07-09 → 2026-07-10 (+1d) |  |  | 1d → 0d |  |
| 339 | Aprovação | 2026-07-10 → 2026-07-13 (+3d) | 2026-07-10 → 2026-07-13 (+3d) |  |  | 1d → 0d |  |
| 340 | **AG-F0009-0305-MB-S-00007** | 2026-06-30 → 2026-07-01 (+1d) | 2026-07-10 → 2026-07-13 (+3d) |  |  | 1d → 0d |  |
| 341 | Emissão inicial | 2026-06-30 → 2026-07-01 (+1d) | 2026-07-07 → 2026-07-08 (+1d) |  |  | 1d → 0d |  |
| 342 | Análise Tecnored | 2026-07-08 → 2026-07-09 (+1d) | 2026-07-08 → 2026-07-09 (+1d) |  |  | 1d → 0d |  |
| 343 | Atendimento de comentários | 2026-07-09 → 2026-07-10 (+1d) | 2026-07-09 → 2026-07-10 (+1d) |  |  | 1d → 0d |  |
| 344 | Aprovação | 2026-07-10 → 2026-07-13 (+3d) | 2026-07-10 → 2026-07-13 (+3d) |  |  | 1d → 0d |  |
| 345 | **AG-F0009-0305-MB-S-00008** | 2026-06-30 → 2026-07-01 (+1d) | 2026-07-10 → 2026-07-13 (+3d) |  |  | 1d → 0d |  |
| 346 | Emissão inicial | 2026-06-30 → 2026-07-01 (+1d) | 2026-07-07 → 2026-07-08 (+1d) |  |  | 1d → 0d |  |
| 347 | Análise Tecnored | 2026-07-08 → 2026-07-09 (+1d) | 2026-07-08 → 2026-07-09 (+1d) |  |  | 1d → 0d |  |
| 348 | Atendimento de comentários | 2026-07-09 → 2026-07-10 (+1d) | 2026-07-09 → 2026-07-10 (+1d) |  |  | 1d → 0d |  |
| 349 | Aprovação | 2026-07-10 → 2026-07-13 (+3d) | 2026-07-10 → 2026-07-13 (+3d) |  |  | 1d → 0d |  |
| 350 | **AG-F0009-0305-MB-S-00009** | 2026-06-30 → 2026-07-01 (+1d) | 2026-07-10 → 2026-07-13 (+3d) |  |  | 1d → 0d |  |
| 351 | Emissão inicial | 2026-06-30 → 2026-07-01 (+1d) | 2026-07-07 → 2026-07-08 (+1d) |  |  | 1d → 0d |  |
| 352 | Análise Tecnored | 2026-07-08 → 2026-07-09 (+1d) | 2026-07-08 → 2026-07-09 (+1d) |  |  | 1d → 0d |  |
| 353 | Atendimento de comentários | 2026-07-09 → 2026-07-10 (+1d) | 2026-07-09 → 2026-07-10 (+1d) |  |  | 1d → 0d |  |
| 354 | Aprovação | 2026-07-10 → 2026-07-13 (+3d) | 2026-07-10 → 2026-07-13 (+3d) |  |  | 1d → 0d |  |
| 355 | **AG-F0009-0305-MB-S-00010** | 2026-06-30 → 2026-07-01 (+1d) | 2026-07-10 → 2026-07-13 (+3d) |  |  | 1d → 0d |  |
| 356 | Emissão inicial | 2026-06-30 → 2026-07-01 (+1d) | 2026-07-07 → 2026-07-08 (+1d) |  |  | 1d → 0d |  |
| 357 | Análise Tecnored | 2026-07-08 → 2026-07-09 (+1d) | 2026-07-08 → 2026-07-09 (+1d) |  |  | 1d → 0d |  |
| 358 | Atendimento de comentários | 2026-07-09 → 2026-07-10 (+1d) | 2026-07-09 → 2026-07-10 (+1d) |  |  | 1d → 0d |  |
| 359 | Aprovação | 2026-07-10 → 2026-07-13 (+3d) | 2026-07-10 → 2026-07-13 (+3d) |  |  | 1d → 0d |  |
| 360 | **PL-F0009-0305-MB-S-00001** | 2026-06-30 → 2026-07-01 (+1d) | 2026-07-09 → 2026-07-10 (+1d) |  |  | 2d → 1d |  |
| 361 | Emissão inicial | 2026-06-30 → 2026-07-01 (+1d) | 2026-07-06 → 2026-07-07 (+1d) |  |  | 2d → 1d |  |
| 362 | Análise Tecnored | 2026-07-07 → 2026-07-08 (+1d) | 2026-07-07 → 2026-07-08 (+1d) |  |  | 2d → 1d |  |
| 363 | Atendimento de comentários | 2026-07-08 → 2026-07-09 (+1d) | 2026-07-08 → 2026-07-09 (+1d) |  |  | 2d → 1d |  |
| 364 | Aprovação | 2026-07-09 → 2026-07-10 (+1d) | 2026-07-09 → 2026-07-10 (+1d) |  |  | 2d → 1d |  |
| 365 | **Elétrica** |  | 2026-06-29 → 2026-06-10 (-19d) | 21d → 8d | 13% → 47% | 10d → 23d |  |
| 371 | **ML-F0009-0305-MB-E-00001** | 2026-06-17 → 2026-05-29 (-19d) | 2026-06-24 → 2026-06-09 (-15d) |  |  | 10d → 18d |  |
| 372 | Emissão inicial | 2026-06-17 → 2026-05-29 (-19d) | 2026-06-22 → 2026-06-03 (-19d) |  |  | 10d → 18d |  |
| 373 | Análise Tecnored | 2026-06-23 → 2026-06-08 (-15d) | 2026-06-23 → 2026-06-08 (-15d) |  |  | 13d → 24d |  |
| 374 | Atendimento de comentários | 2026-06-24 → 2026-06-09 (-15d) | 2026-06-24 → 2026-06-09 (-15d) |  |  | 13d → 24d |  |
| 375 | Aprovação | 2026-06-24 → 2026-06-09 (-15d) | 2026-06-24 → 2026-06-09 (-15d) |  |  | 13d → 24d |  |
| 381 | **LE-F0009-0305-MB-E-00001** | 2026-06-23 → 2026-06-08 (-15d) | 2026-06-26 → 2026-06-11 (-15d) |  |  | 11d → 22d |  |
| 382 | Emissão inicial | 2026-06-23 → 2026-06-08 (-15d) | 2026-06-24 → 2026-06-09 (-15d) |  |  | 11d → 22d |  |
| 383 | Análise Tecnored | 2026-06-25 → 2026-06-10 (-15d) | 2026-06-25 → 2026-06-10 (-15d) |  |  | 11d → 22d |  |
| 384 | Atendimento de comentários | 2026-06-26 → 2026-06-11 (-15d) | 2026-06-26 → 2026-06-11 (-15d) |  |  | 11d → 22d |  |
| 385 | Aprovação | 2026-06-26 → 2026-06-11 (-15d) | 2026-06-26 → 2026-06-11 (-15d) |  |  | 11d → 22d |  |
| 391 | **LM-F0009-0305-MB-E-00001** | 2026-06-24 → 2026-06-09 (-15d) | 2026-06-29 → 2026-06-12 (-17d) |  |  | 10d → 18d |  |
| 392 | Emissão inicial | 2026-06-24 → 2026-06-09 (-15d) | 2026-06-25 → 2026-06-10 (-15d) |  |  | 10d → 18d |  |
| 393 | Análise Tecnored | 2026-06-26 → 2026-06-11 (-15d) | 2026-06-26 → 2026-06-11 (-15d) |  |  | 10d → 21d |  |
| 394 | Atendimento de comentários | 2026-06-29 → 2026-06-12 (-17d) | 2026-06-29 → 2026-06-12 (-17d) |  |  | 10d → 21d |  |
| 395 | Aprovação | 2026-06-29 → 2026-06-12 (-17d) | 2026-06-29 → 2026-06-12 (-17d) |  |  | 10d → 21d |  |
| 396 | **PQ-F0009-0305-MB-E-00001** | 2026-06-24 → 2026-06-09 (-15d) | 2026-06-26 → 2026-06-11 (-15d) |  |  | 11d → 22d |  |
| 397 | Emissão inicial | 2026-06-24 → 2026-06-09 (-15d) | 2026-06-24 → 2026-06-09 (-15d) |  |  | 11d → 22d |  |
| 398 | Análise Tecnored | 2026-06-25 → 2026-06-10 (-15d) | 2026-06-25 → 2026-06-10 (-15d) |  |  | 11d → 22d |  |
| 399 | Atendimento de comentários | 2026-06-26 → 2026-06-11 (-15d) | 2026-06-26 → 2026-06-11 (-15d) |  |  | 11d → 22d |  |
| 400 | Aprovação | 2026-06-26 → 2026-06-11 (-15d) | 2026-06-26 → 2026-06-11 (-15d) |  |  | 11d → 22d |  |
| 401 | **MD-F0009-0305-MB-E-00001** | 2026-06-24 → 2026-06-09 (-15d) | 2026-07-02 → 2026-06-17 (-15d) |  |  | 7d → 18d |  |
| 402 | Emissão inicial | 2026-06-24 → 2026-06-09 (-15d) | 2026-06-26 → 2026-06-11 (-15d) |  |  | 7d → 18d |  |
| 403 | Análise Tecnored | 2026-06-29 → 2026-06-12 (-17d) | 2026-06-29 → 2026-06-12 (-17d) |  |  | 7d → 18d |  |
| 404 | Atendimento de comentários | 2026-06-30 → 2026-06-15 (-15d) | 2026-07-01 → 2026-06-16 (-15d) |  |  | 7d → 18d |  |
| 405 | Aprovação | 2026-07-02 → 2026-06-17 (-15d) | 2026-07-02 → 2026-06-17 (-15d) |  |  | 7d → 18d |  |
| 406 | **MC-F0009-0305-MB-E-00001** | 2026-06-22 → 2026-06-03 (-19d) | 2026-06-25 → 2026-06-10 (-15d) |  |  | 10d → 23d |  |
| 407 | Emissão inicial | 2026-06-22 → 2026-06-03 (-19d) | 2026-06-23 → 2026-06-08 (-15d) |  |  | 10d → 23d |  |
| 408 | Análise Tecnored | 2026-06-24 → 2026-06-09 (-15d) | 2026-06-24 → 2026-06-09 (-15d) |  |  | 12d → 23d |  |
| 409 | Atendimento de comentários | 2026-06-25 → 2026-06-10 (-15d) | 2026-06-25 → 2026-06-10 (-15d) |  |  | 12d → 23d |  |
| 410 | Aprovação | 2026-06-25 → 2026-06-10 (-15d) | 2026-06-25 → 2026-06-10 (-15d) |  |  | 12d → 23d |  |

| ID | Task | Start | Finish | Duration | Complete | Total float | Other |
| --- | --- | --- | --- | --- | --- | --- | --- |
| 411 | **AG-F0009-0305-MB-E-00001** | 2026-06-22 → 2026-06-03 (-19d) | 2026-06-25 → 2026-06-10 (-15d) |  |  | 10d → 18d |  |
| 412 | Emissão inicial | 2026-06-22 → 2026-06-03 (-19d) | 2026-06-23 → 2026-06-08 (-15d) |  |  | 10d → 18d |  |
| 413 | Análise Tecnored | 2026-06-24 → 2026-06-09 (-15d) | 2026-06-24 → 2026-06-09 (-15d) |  |  | 10d → 18d |  |
| 414 | Atendimento de comentários | 2026-06-25 → 2026-06-10 (-15d) | 2026-06-25 → 2026-06-10 (-15d) |  |  | 12d → 23d |  |
| 415 | Aprovação | 2026-06-25 → 2026-06-10 (-15d) | 2026-06-25 → 2026-06-10 (-15d) |  |  | 12d → 23d |  |
| 421 | **AG-F0009-0305-MB-E-00002** | 2026-06-24 → 2026-06-09 (-15d) | 2026-06-29 → 2026-06-12 (-17d) |  |  | 10d → 21d |  |
| 422 | Emissão inicial | 2026-06-24 → 2026-06-09 (-15d) | 2026-06-25 → 2026-06-10 (-15d) |  |  | 10d → 21d |  |
| 423 | Análise Tecnored | 2026-06-26 → 2026-06-11 (-15d) | 2026-06-26 → 2026-06-11 (-15d) |  |  | 10d → 21d |  |
| 424 | Atendimento de comentários | 2026-06-29 → 2026-06-12 (-17d) | 2026-06-29 → 2026-06-12 (-17d) |  |  | 10d → 21d |  |
| 425 | Aprovação | 2026-06-29 → 2026-06-12 (-17d) | 2026-06-29 → 2026-06-12 (-17d) |  |  | 10d → 21d |  |
| 426 | **FD-F0009-0305-MB-E-0001** |  |  |  |  | 10d → 12d | was named FD-F0009-0305-MB-E-00013 |
| 431 | **Automação e instrumentação** |  | 2026-07-08 → 2026-07-07 (-1d) | 26d → 25d | 7% → 37% | 3d → 4d |  |
| 482 | **AG-F0009-0305-MB-J-00001** | 2026-06-24 → 2026-06-22 A (-2d) |  | 8d → 10d | 0% → 50% |  |  |
| 483 | Emissão inicial | 2026-06-24 → 2026-06-22 A (-2d) | 2026-06-29 → 2026-06-25 A (-4d) |  | 0% → 100% | 6d → none |  |
| 484 | Análise Tecnored | 2026-06-30 → 2026-06-26 (-4d) | 2026-06-30 → 2026-06-26 (-4d) |  |  | 6d → 8d |  |
| 485 | Atendimento de comentários | 2026-07-01 → 2026-06-29 (-2d) | 2026-07-02 → 2026-06-30 (-2d) |  |  | 6d → 8d |  |
| 487 | **AG-F0009-0305-MB-J-00002** | 2026-06-24 → 2026-06-19 A (-5d) |  | 7d → 10d | 0% → 56% |  |  |
| 488 | Emissão inicial | 2026-06-24 → 2026-06-19 A (-5d) | 2026-06-26 → 2026-06-24 A (-2d) | 3d → 4d | 0% → 100% | 7d → none | constraint start no earlier than 2026-06-24 → finish no earlier than 2026-06-24 |
| 489 | Análise Tecnored | 2026-06-29 → 2026-06-25 A (-4d) | 2026-06-29 → 2026-06-25 (-4d) |  | 0% → 50% | 7d → 9d |  |
| 490 | Atendimento de comentários | 2026-06-30 → 2026-06-26 (-4d) | 2026-07-01 → 2026-06-29 (-2d) |  |  | 7d → 9d |  |
| 497 | **AG-F0009-0305-MB-J-00004** | 2026-06-24 → 2026-06-19 A (-5d) | 2026-07-01 → 2026-06-30 (-1d) | 6d → 8d | 0% → 56% | 8d → 9d |  |
| 498 | Emissão inicial | 2026-06-24 → 2026-06-19 A (-5d) | 2026-06-25 → 2026-06-24 A (-1d) | 2d → 4d | 0% → 100% | 8d → none | constraint start no earlier than 2026-06-24 → finish no earlier than 2026-06-24 |
| 499 | Análise Tecnored | 2026-06-26 → 2026-06-25 A (-1d) | 2026-06-26 → 2026-06-25 (-1d) |  | 0% → 50% | 8d → 9d |  |
| 500 | Atendimento de comentários | 2026-06-29 → 2026-06-26 (-3d) | 2026-06-30 → 2026-06-29 (-1d) |  |  | 8d → 9d |  |
| 501 | Aprovação | 2026-07-01 → 2026-06-30 (-1d) | 2026-07-01 → 2026-06-30 (-1d) |  |  | 8d → 9d |  |
| 527 | **FD-F0009-0305-MB-J-00001** | 2026-06-17 → 2026-06-15 A (-2d) | 2026-06-30 → 2026-06-26 (-4d) |  | 0% → 53% | 3d → 11d |  |
| 528 | Emissão inicial | 2026-06-17 → 2026-06-15 A (-2d) | 2026-06-25 → 2026-06-23 (-2d) |  | 0% → 75% | 3d → 11d | constraint start no earlier than 2026-06-17 → finish no earlier than 2026-06-23 |
| 529 | Análise Tecnored | 2026-06-26 → 2026-06-24 (-2d) | 2026-06-26 → 2026-06-24 (-2d) |  |  | 9d → 11d |  |
| 530 | Atendimento de comentários | 2026-06-29 → 2026-06-25 (-4d) | 2026-06-29 → 2026-06-25 (-4d) |  |  | 9d → 11d |  |
| 531 | Aprovação | 2026-06-30 → 2026-06-26 (-4d) | 2026-06-30 → 2026-06-26 (-4d) |  |  | 9d → 11d |  |
| 532 | **FD-F0009-0305-MB-J-00002** | 2026-06-17 → 2026-06-16 A (-1d) | 2026-06-30 → 2026-06-29 (-1d) |  | 0% → 75% | 9d → 10d |  |
| 533 | Emissão inicial | 2026-06-17 → 2026-06-16 A (-1d) | 2026-06-25 → 2026-06-24 A (-1d) |  | 0% → 100% | 9d → none |  |
| 534 | Análise Tecnored | 2026-06-26 → 2026-06-25 A (-1d) | 2026-06-26 → 2026-06-25 (-1d) |  | 0% → 50% | 9d → 10d |  |
| 535 | Atendimento de comentários | 2026-06-29 → 2026-06-26 (-3d) | 2026-06-29 → 2026-06-26 (-3d) |  |  | 9d → 10d |  |
| 536 | Aprovação | 2026-06-30 → 2026-06-29 (-1d) | 2026-06-30 → 2026-06-29 (-1d) |  |  | 9d → 10d |  |
| 537 | **FD-F0009-0305-MB-J-00003** | 2026-06-17 → 2026-06-16 A (-1d) | 2026-06-30 → 2026-06-29 (-1d) |  | 0% → 75% | 9d → 10d |  |
| 538 | Emissão inicial | 2026-06-17 → 2026-06-16 A (-1d) | 2026-06-25 → 2026-06-24 A (-1d) |  | 0% → 100% | 9d → none |  |
| 539 | Análise Tecnored | 2026-06-26 → 2026-06-25 A (-1d) | 2026-06-26 → 2026-06-25 (-1d) |  | 0% → 50% | 9d → 10d |  |
| 540 | Atendimento de comentários | 2026-06-29 → 2026-06-26 (-3d) | 2026-06-29 → 2026-06-26 (-3d) |  |  | 9d → 10d |  |
| 541 | Aprovação | 2026-06-30 → 2026-06-29 (-1d) | 2026-06-30 → 2026-06-29 (-1d) |  |  | 9d → 10d |  |
| 542 | **FD-F0009-0305-MB-J-00004** | 2026-06-17 → 2026-06-16 A (-1d) |  | 9d → 10d | 0% → 75% |  |  |
| 543 | Emissão inicial | 2026-06-17 → 2026-06-16 A (-1d) | 2026-06-24 A | 6d → 7d | 0% → 100% | 10d → none | constraint none → start no earlier than 2026-06-16 |
| 544 | Análise Tecnored | 2026-06-25 A |  |  | 0% → 50% |  |  |
| 547 | **FD-F0009-0305-MB-J-00005** | 2026-06-17 → 2026-06-16 A (-1d) | 2026-06-30 → 2026-06-29 (-1d) |  | 0% → 75% | 9d → 10d |  |
| 548 | Emissão inicial | 2026-06-17 → 2026-06-16 A (-1d) | 2026-06-25 → 2026-06-24 A (-1d) |  | 0% → 100% | 9d → none |  |
| 549 | Análise Tecnored | 2026-06-26 → 2026-06-25 A (-1d) | 2026-06-26 → 2026-06-25 (-1d) |  | 0% → 50% | 9d → 10d |  |
| 550 | Atendimento de comentários | 2026-06-29 → 2026-06-26 (-3d) | 2026-06-29 → 2026-06-26 (-3d) |  |  | 9d → 10d |  |
| 551 | Aprovação | 2026-06-30 → 2026-06-29 (-1d) | 2026-06-30 → 2026-06-29 (-1d) |  |  | 9d → 10d |  |
| 552 | **FD-F0009-0305-MB-J-00006** | 2026-06-17 → 2026-06-16 A (-1d) | 2026-06-30 → 2026-06-29 (-1d) |  | 0% → 75% | 9d → 10d |  |
| 553 | Emissão inicial | 2026-06-17 → 2026-06-16 A (-1d) | 2026-06-25 → 2026-06-24 A (-1d) |  | 0% → 100% | 9d → none |  |
| 554 | Análise Tecnored | 2026-06-26 → 2026-06-25 A (-1d) | 2026-06-26 → 2026-06-25 (-1d) |  | 0% → 50% | 9d → 10d |  |
| 555 | Atendimento de comentários | 2026-06-29 → 2026-06-26 (-3d) | 2026-06-29 → 2026-06-26 (-3d) |  |  | 9d → 10d |  |
| 556 | Aprovação | 2026-06-30 → 2026-06-29 (-1d) | 2026-06-30 → 2026-06-29 (-1d) |  |  | 9d → 10d |  |
| 557 | **FD-F0009-0305-MB-J-00007** | 2026-06-17 → 2026-06-16 A (-1d) | 2026-06-30 → 2026-06-29 (-1d) |  | 0% → 75% | 9d → 10d |  |
| 558 | Emissão inicial | 2026-06-17 → 2026-06-16 A (-1d) | 2026-06-25 → 2026-06-24 A (-1d) |  | 0% → 100% | 9d → none |  |
| 559 | Análise Tecnored | 2026-06-26 → 2026-06-25 A (-1d) | 2026-06-26 → 2026-06-25 (-1d) |  | 0% → 50% | 9d → 10d |  |
| 560 | Atendimento de comentários | 2026-06-29 → 2026-06-26 (-3d) | 2026-06-29 → 2026-06-26 (-3d) |  |  | 9d → 10d |  |
| 561 | Aprovação | 2026-06-30 → 2026-06-29 (-1d) | 2026-06-30 → 2026-06-29 (-1d) |  |  | 9d → 10d |  |
| 562 | **FD-F0009-0305-MB-J-00008** | 2026-06-17 → 2026-06-16 A (-1d) | 2026-06-30 → 2026-06-29 (-1d) |  | 0% → 75% | 9d → 10d |  |
| 563 | Emissão inicial | 2026-06-17 → 2026-06-16 A (-1d) | 2026-06-25 → 2026-06-24 A (-1d) |  | 0% → 100% | 9d → none | constraint none → start no earlier than 2026-06-16 |
| 564 | Análise Tecnored | 2026-06-26 → 2026-06-25 A (-1d) | 2026-06-26 → 2026-06-25 (-1d) |  | 0% → 50% | 9d → 10d |  |
| 565 | Atendimento de comentários | 2026-06-29 → 2026-06-26 (-3d) | 2026-06-29 → 2026-06-26 (-3d) |  |  | 9d → 10d |  |
| 566 | Aprovação | 2026-06-30 → 2026-06-29 (-1d) | 2026-06-30 → 2026-06-29 (-1d) |  |  | 9d → 10d |  |
| 567 | **FD-F0009-0305-MB-J-00009** | 2026-06-17 → 2026-06-15 A (-2d) | 2026-06-30 → 2026-06-26 (-4d) |  | 0% → 70% | 9d → 11d |  |
| 568 | Emissão inicial | 2026-06-17 → 2026-06-15 A (-2d) | 2026-06-25 → 2026-06-23 A (-2d) |  | 0% → 100% | 9d → none |  |
| 569 | Análise Tecnored | 2026-06-26 → 2026-06-24 (-2d) | 2026-06-26 → 2026-06-24 (-2d) |  |  | 9d → 11d |  |
| 570 | Atendimento de comentários | 2026-06-29 → 2026-06-25 (-4d) | 2026-06-29 → 2026-06-25 (-4d) |  |  | 9d → 11d |  |
| 571 | Aprovação | 2026-06-30 → 2026-06-26 (-4d) | 2026-06-30 → 2026-06-26 (-4d) |  |  | 9d → 11d |  |
| 572 | **FD-F0009-0305-MB-J-00010** | 2026-06-17 → 2026-06-15 A (-2d) | 2026-06-30 → 2026-06-26 (-4d) |  | 0% → 21% | 9d → 11d |  |
| 573 | Emissão inicial | 2026-06-17 → 2026-06-15 A (-2d) | 2026-06-25 → 2026-06-23 (-2d) |  | 0% → 30% | 9d → 11d |  |

| ID | Task | Start | Finish | Duration | Complete | Total float |
| --- | --- | --- | --- | --- | --- | --- |
| 574 | Análise Tecnored | 2026-06-26 → 2026-06-24 (-2d) | 2026-06-26 → 2026-06-24 (-2d) |  |  | 9d → 11d |
| 575 | Atendimento de comentários | 2026-06-29 → 2026-06-25 (-4d) | 2026-06-29 → 2026-06-25 (-4d) |  |  | 9d → 11d |
| 576 | Aprovação | 2026-06-30 → 2026-06-26 (-4d) | 2026-06-30 → 2026-06-26 (-4d) |  |  | 9d → 11d |
| 577 | **FD-F0009-0305-MB-J-00011** | 2026-06-17 → 2026-06-15 A (-2d) | 2026-06-30 → 2026-06-26 (-4d) |  | 0% → 21% | 9d → 11d |
| 578 | Emissão inicial | 2026-06-17 → 2026-06-15 A (-2d) | 2026-06-25 → 2026-06-23 (-2d) |  | 0% → 30% | 9d → 11d |
| 579 | Análise Tecnored | 2026-06-26 → 2026-06-24 (-2d) | 2026-06-26 → 2026-06-24 (-2d) |  |  | 9d → 11d |
| 580 | Atendimento de comentários | 2026-06-29 → 2026-06-25 (-4d) | 2026-06-29 → 2026-06-25 (-4d) |  |  | 9d → 11d |
| 581 | Aprovação | 2026-06-30 → 2026-06-26 (-4d) | 2026-06-30 → 2026-06-26 (-4d) |  |  | 9d → 11d |
| 582 | **FD-F0009-0305-MB-J-00012** | 2026-06-17 → 2026-06-15 A (-2d) | 2026-06-30 → 2026-06-26 (-4d) |  | 0% → 21% | 9d → 11d |
| 583 | Emissão inicial | 2026-06-17 → 2026-06-15 A (-2d) | 2026-06-25 → 2026-06-23 (-2d) |  | 0% → 30% | 9d → 11d |
| 584 | Análise Tecnored | 2026-06-26 → 2026-06-24 (-2d) | 2026-06-26 → 2026-06-24 (-2d) |  |  | 9d → 11d |
| 585 | Atendimento de comentários | 2026-06-29 → 2026-06-25 (-4d) | 2026-06-29 → 2026-06-25 (-4d) |  |  | 9d → 11d |
| 586 | Aprovação | 2026-06-30 → 2026-06-26 (-4d) | 2026-06-30 → 2026-06-26 (-4d) |  |  | 9d → 11d |
| 587 | **FD-F0009-0305-MB-J-00013** | 2026-06-17 → 2026-06-15 A (-2d) | 2026-06-30 → 2026-06-26 (-4d) |  | 0% → 21% | 9d → 11d |
| 588 | Emissão inicial | 2026-06-17 → 2026-06-15 A (-2d) | 2026-06-25 → 2026-06-23 (-2d) |  | 0% → 30% | 9d → 11d |
| 589 | Análise Tecnored | 2026-06-26 → 2026-06-24 (-2d) | 2026-06-26 → 2026-06-24 (-2d) |  |  | 9d → 11d |
| 590 | Atendimento de comentários | 2026-06-29 → 2026-06-25 (-4d) | 2026-06-29 → 2026-06-25 (-4d) |  |  | 9d → 11d |
| 591 | Aprovação | 2026-06-30 → 2026-06-26 (-4d) | 2026-06-30 → 2026-06-26 (-4d) |  |  | 9d → 11d |
| 592 | **FD-F0009-0305-MB-J-00014** | 2026-06-17 → 2026-06-15 A (-2d) | 2026-06-30 → 2026-06-26 (-4d) |  | 0% → 21% | 9d → 11d |
| 593 | Emissão inicial | 2026-06-17 → 2026-06-15 A (-2d) | 2026-06-25 → 2026-06-23 (-2d) |  | 0% → 30% | 9d → 11d |
| 594 | Análise Tecnored | 2026-06-26 → 2026-06-24 (-2d) | 2026-06-26 → 2026-06-24 (-2d) |  |  | 9d → 11d |
| 595 | Atendimento de comentários | 2026-06-29 → 2026-06-25 (-4d) | 2026-06-29 → 2026-06-25 (-4d) |  |  | 9d → 11d |
| 596 | Aprovação | 2026-06-30 → 2026-06-26 (-4d) | 2026-06-30 → 2026-06-26 (-4d) |  |  | 9d → 11d |
| 597 | **FD-F0009-0305-MB-J-00015** | 2026-06-17 → 2026-06-15 A (-2d) | 2026-06-30 → 2026-06-26 (-4d) |  | 0% → 21% | 9d → 11d |
| 598 | Emissão inicial | 2026-06-17 → 2026-06-15 A (-2d) | 2026-06-25 → 2026-06-23 (-2d) |  | 0% → 30% | 9d → 11d |
| 599 | Análise Tecnored | 2026-06-26 → 2026-06-24 (-2d) | 2026-06-26 → 2026-06-24 (-2d) |  |  | 9d → 11d |
| 600 | Atendimento de comentários | 2026-06-29 → 2026-06-25 (-4d) | 2026-06-29 → 2026-06-25 (-4d) |  |  | 9d → 11d |
| 601 | Aprovação | 2026-06-30 → 2026-06-26 (-4d) | 2026-06-30 → 2026-06-26 (-4d) |  |  | 9d → 11d |
| 602 | **FD-F0009-0305-MB-J-00016** | 2026-06-17 → 2026-06-15 A (-2d) | 2026-07-08 → 2026-06-26 (-12d) | 16d → 10d | 0% → 21% | 3d → 11d |
| 603 | Emissão inicial | 2026-06-17 → 2026-06-15 A (-2d) | 2026-06-25 → 2026-06-23 (-2d) |  | 0% → 30% | 3d → 11d |
| 604 | Análise Tecnored | 2026-06-26 → 2026-06-24 (-2d) | 2026-07-03 → 2026-06-24 (-9d) | 6d → 1d |  | 3d → 11d |
| 605 | Atendimento de comentários | 2026-07-06 → 2026-06-25 (-11d) | 2026-07-06 → 2026-06-25 (-11d) |  |  | 3d → 11d |
| 606 | Aprovação | 2026-07-07 → 2026-06-26 (-11d) | 2026-07-08 → 2026-06-26 (-12d) | 2d → 1d |  | 3d → 11d |

## Version 9 (data date 2026-06-26, saved 2026-06-26, file CR-F0009-0305-MB-F-00001 26062026.mpp)

Note of the change: Primeira versao dashboard

Last finish stays 2026-07-27. Complete tasks 55 → 69.

Added:

| ID | Task | Duration | Start | Finish | Predecessors |
| --- | --- | --- | --- | --- | --- |
| 607 | **FD-F0009-0305-MB-J-00017** | 10d | 2026-06-15 A | 2026-06-26 |  |
| 608 | Emissão inicial | 7d | 2026-06-15 A | 2026-06-23 A | 528SS |
| 609 | Análise Tecnored | 1d | 2026-06-24 A | 2026-06-24 | 608 |
| 610 | Atendimento de comentários | 1d | 2026-06-25 | 2026-06-25 | 609 |
| 611 | Aprovação | 1d | 2026-06-26 | 2026-06-26 | 610 |
| 612 | **FD-F0009-0305-MB-J-00018** | 10d | 2026-06-15 A | 2026-06-26 |  |
| 613 | Emissão inicial | 7d | 2026-06-15 A | 2026-06-23 A | 528SS |
| 614 | Análise Tecnored | 1d | 2026-06-24 A | 2026-06-24 | 613 |
| 615 | Atendimento de comentários | 1d | 2026-06-25 | 2026-06-25 | 614 |
| 616 | Aprovação | 1d | 2026-06-26 | 2026-06-26 | 615 |
| 617 | **FD-F0009-0305-MB-J-00019** | 10d | 2026-06-15 A | 2026-06-26 |  |
| 618 | Emissão inicial | 7d | 2026-06-15 A | 2026-06-23 A | 528SS |
| 619 | Análise Tecnored | 1d | 2026-06-24 A | 2026-06-24 | 618 |
| 620 | Atendimento de comentários | 1d | 2026-06-25 | 2026-06-25 | 619 |
| 621 | Aprovação | 1d | 2026-06-26 | 2026-06-26 | 620 |
| 622 | **FD-F0009-0305-MB-J-00020** | 10d | 2026-06-15 A | 2026-06-26 |  |
| 623 | Emissão inicial | 7d | 2026-06-15 A | 2026-06-23 A | 528SS |
| 624 | Análise Tecnored | 1d | 2026-06-24 A | 2026-06-24 | 623 |
| 625 | Atendimento de comentários | 1d | 2026-06-25 | 2026-06-25 | 624 |
| 626 | Aprovação | 1d | 2026-06-26 | 2026-06-26 | 625 |
| 627 | **FD-F0009-0305-MB-J-00021** | 10d | 2026-06-15 A | 2026-06-26 |  |
| 628 | Emissão inicial | 7d | 2026-06-15 A | 2026-06-23 A | 528SS |
| 629 | Análise Tecnored | 1d | 2026-06-24 A | 2026-06-24 | 628 |
| 630 | Atendimento de comentários | 1d | 2026-06-25 | 2026-06-25 | 629 |
| 631 | Aprovação | 1d | 2026-06-26 | 2026-06-26 | 630 |

Changed:

| ID | Task | Start | Finish | Duration | Complete | Total float | Other |
| --- | --- | --- | --- | --- | --- | --- | --- |
| 1 | **F0009 - Programa Marabá** |  | 2026-07-13 → 2026-07-14 (+1d) | 54d → 55d | 30% → 42% |  |  |
| 15 | **Área 0305 - Hot Blast Stoves** |  | 2026-07-13 → 2026-07-14 (+1d) | 54d → 55d | 30% → 42% |  |  |
| 30 | **Coordenação** |  | 2026-06-30 → 2026-07-02 (+2d) | 45d → 47d |  | 9d → 8d |  |
| 31 | **RM-F0009-0305-MB-G-00001** | 2026-06-19 A → 2026-06-24 A (+5d) | 2026-06-29 → 2026-07-02 (+3d) |  |  | 10d → 8d |  |
| 32 | Emissão inicial | 2026-06-19 A → 2026-06-24 A (+5d) | 2026-06-23 → 2026-06-28 (+5d) |  |  | 10d → 8d | constraint finish no earlier than 2026-06-23 → finish no earlier than 2026-06-28 |
| 33 | Análise Tecnored | 2026-06-24 → 2026-06-29 (+5d) | 2026-06-24 → 2026-06-29 (+5d) |  |  | 10d → 8d |  |
| 34 | Atendimento de comentários | 2026-06-25 → 2026-06-30 (+5d) | 2026-06-26 → 2026-07-01 (+5d) |  |  | 10d → 8d |  |
| 35 | Aprovação | 2026-06-29 → 2026-07-02 (+3d) | 2026-06-29 → 2026-07-02 (+3d) |  |  | 10d → 8d |  |
| 36 | **RM-F0009-0305MB-G-00002** | 2026-07-08 → 2026-07-13 (+5d) | 2026-07-16 → 2026-07-21 (+5d) |  |  | -3d → -5d |  |
| 37 | Emissão inicial | 2026-07-08 → 2026-07-13 (+5d) | 2026-07-10 → 2026-07-15 (+5d) |  |  | -3d → -5d |  |
| 38 | Análise Tecnored | 2026-07-13 → 2026-07-16 (+3d) | 2026-07-13 → 2026-07-16 (+3d) |  |  | -3d → -5d |  |
| 39 | Atendimento de comentários | 2026-07-14 → 2026-07-17 (+3d) | 2026-07-15 → 2026-07-20 (+5d) |  |  | -3d → -5d |  |
| 40 | Aprovação | 2026-07-16 → 2026-07-21 (+5d) | 2026-07-16 → 2026-07-21 (+5d) |  |  | -3d → -5d |  |
| 41 | **RL-F0009-0305-MB-G-00001** | 2026-06-25 → 2026-06-26 (+1d) | 2026-06-30 → 2026-07-01 (+1d) |  |  |  |  |
| 42 | Emissão inicial | 2026-06-25 → 2026-06-26 (+1d) | 2026-06-25 → 2026-06-28 (+3d) |  |  |  | constraint finish no earlier than 2026-06-25 → finish no earlier than 2026-06-28 |
| 43 | Análise Tecnored | 2026-06-26 → 2026-06-29 (+3d) | 2026-06-26 → 2026-06-29 (+3d) |  |  |  |  |
| 44 | Atendimento de comentários | 2026-06-29 → 2026-06-30 (+1d) | 2026-06-29 → 2026-06-30 (+1d) |  |  |  |  |
| 45 | Aprovação | 2026-06-30 → 2026-07-01 (+1d) | 2026-06-30 → 2026-07-01 (+1d) |  |  |  |  |
| 67 | **Mecânica** |  |  |  | 35% → 43% | 5d → 6d |  |
| 83 | **PQ-F0009-0305-MB-M-00001** | 2026-06-18 → 2026-06-25 (+7d) | 2026-06-26 → 2026-07-03 (+7d) |  |  | 11d → 7d |  |
| 84 | Emissão inicial | 2026-06-18 → 2026-06-25 (+7d) | 2026-06-22 → 2026-06-29 (+7d) |  |  | 11d → 7d | constraint start no earlier than 2026-06-18 → start no earlier than 2026-06-25 |
| 85 | Análise Tecnored | 2026-06-23 → 2026-06-30 (+7d) | 2026-06-23 → 2026-06-30 (+7d) |  |  | 11d → 7d |  |
| 86 | Atendimento de comentários | 2026-06-24 → 2026-07-01 (+7d) | 2026-06-25 → 2026-07-02 (+7d) |  |  | 11d → 7d |  |
| 87 | Aprovação | 2026-06-26 → 2026-07-03 (+7d) | 2026-06-26 → 2026-07-03 (+7d) |  |  | 11d → 7d |  |
| 133 | **PL-F0009-0305-MB-M-00001** | 2026-06-15 → 2026-06-17 A (+2d) | 2026-06-30 → 2026-07-02 (+2d) |  | 0% → 33% | 9d → 8d |  |
| 134 | Emissão inicial | 2026-06-15 → 2026-06-17 A (+2d) | 2026-06-24 → 2026-06-26 (+2d) |  | 0% → 50% | 9d → 8d |  |
| 135 | Análise Tecnored | 2026-06-25 → 2026-06-29 (+4d) | 2026-06-25 → 2026-06-29 (+4d) |  |  | 9d → 8d |  |
| 136 | Atendimento de comentários | 2026-06-26 → 2026-06-30 (+4d) | 2026-06-29 → 2026-07-01 (+2d) |  |  | 9d → 8d |  |
| 137 | Aprovação | 2026-06-30 → 2026-07-02 (+2d) | 2026-06-30 → 2026-07-02 (+2d) |  |  | 9d → 8d |  |
| 138 | **PL-F0009-0305-MB-M-00002** | 2026-06-15 → 2026-06-17 A (+2d) | 2026-06-30 → 2026-07-02 (+2d) |  | 0% → 33% | 9d → 8d |  |
| 139 | Emissão inicial | 2026-06-15 → 2026-06-17 A (+2d) | 2026-06-24 → 2026-06-26 (+2d) |  | 0% → 50% | 9d → 8d |  |
| 140 | Análise Tecnored | 2026-06-25 → 2026-06-29 (+4d) | 2026-06-25 → 2026-06-29 (+4d) |  |  | 9d → 8d |  |
| 141 | Atendimento de comentários | 2026-06-26 → 2026-06-30 (+4d) | 2026-06-29 → 2026-07-01 (+2d) |  |  | 9d → 8d |  |
| 142 | Aprovação | 2026-06-30 → 2026-07-02 (+2d) | 2026-06-30 → 2026-07-02 (+2d) |  |  | 9d → 8d |  |
| 143 | **PL-F0009-0305-MB-M-00003** | 2026-06-15 → 2026-06-17 A (+2d) | 2026-06-30 → 2026-07-02 (+2d) |  | 0% → 33% | 9d → 8d |  |
| 144 | Emissão inicial | 2026-06-15 → 2026-06-17 A (+2d) | 2026-06-24 → 2026-06-26 (+2d) |  | 0% → 50% | 9d → 8d |  |
| 145 | Análise Tecnored | 2026-06-25 → 2026-06-29 (+4d) | 2026-06-25 → 2026-06-29 (+4d) |  |  | 9d → 8d |  |
| 146 | Atendimento de comentários | 2026-06-26 → 2026-06-30 (+4d) | 2026-06-29 → 2026-07-01 (+2d) |  |  | 9d → 8d |  |
| 147 | Aprovação | 2026-06-30 → 2026-07-02 (+2d) | 2026-06-30 → 2026-07-02 (+2d) |  |  | 9d → 8d |  |
| 148 | **PL-F0009-0305-MB-M-00004** | 2026-06-15 → 2026-06-17 A (+2d) | 2026-06-30 → 2026-07-02 (+2d) |  | 0% → 33% | 9d → 8d |  |
| 149 | Emissão inicial | 2026-06-15 → 2026-06-17 A (+2d) | 2026-06-24 → 2026-06-26 (+2d) |  | 0% → 50% | 9d → 8d |  |
| 150 | Análise Tecnored | 2026-06-25 → 2026-06-29 (+4d) | 2026-06-25 → 2026-06-29 (+4d) |  |  | 9d → 8d |  |
| 151 | Atendimento de comentários | 2026-06-26 → 2026-06-30 (+4d) | 2026-06-29 → 2026-07-01 (+2d) |  |  | 9d → 8d |  |
| 152 | Aprovação | 2026-06-30 → 2026-07-02 (+2d) | 2026-06-30 → 2026-07-02 (+2d) |  |  | 9d → 8d |  |
| 193 | **Tubulação/Utilidades** |  |  |  | 13% → 14% | 3d → 4d |  |
| 204 | **ML-F0009-0305-MB-T-00001** |  |  |  | 32% → 39% | 7d → 8d |  |
| 205 | Emissão inicial |  |  |  | 75% → 90% | 3d → 4d |  |
| 365 | **Elétrica** |  |  |  | 47% → 28% | 23d → 24d |  |
| 391 | **LM-F0009-0305-MB-E-00001** | 2026-06-09 → 2026-06-02 (-7d) | 2026-06-12 → 2026-06-09 (-3d) |  |  | 18d → 22d |  |
| 392 | Emissão inicial | 2026-06-09 → 2026-06-02 (-7d) | 2026-06-10 → 2026-06-03 (-7d) |  |  | 18d → 22d |  |
| 393 | Análise Tecnored | 2026-06-11 → 2026-06-08 (-3d) | 2026-06-11 → 2026-06-08 (-3d) |  |  | 21d → 25d |  |
| 394 | Atendimento de comentários | 2026-06-12 → 2026-06-09 (-3d) | 2026-06-12 → 2026-06-09 (-3d) |  |  | 21d → 25d |  |
| 395 | Aprovação | 2026-06-12 → 2026-06-09 (-3d) | 2026-06-12 → 2026-06-09 (-3d) |  |  | 21d → 25d |  |
| 396 | **PQ-F0009-0305-MB-E-00001** | 2026-06-09 → 2026-06-02 (-7d) | 2026-06-11 → 2026-06-08 (-3d) |  |  | 22d → 26d |  |
| 397 | Emissão inicial | 2026-06-09 → 2026-06-02 (-7d) | 2026-06-09 → 2026-06-02 (-7d) |  |  | 22d → 26d |  |
| 398 | Análise Tecnored | 2026-06-10 → 2026-06-03 (-7d) | 2026-06-10 → 2026-06-03 (-7d) |  |  | 22d → 26d |  |
| 399 | Atendimento de comentários | 2026-06-11 → 2026-06-08 (-3d) | 2026-06-11 → 2026-06-08 (-3d) |  |  | 22d → 26d |  |
| 400 | Aprovação | 2026-06-11 → 2026-06-08 (-3d) | 2026-06-11 → 2026-06-08 (-3d) |  |  | 22d → 26d |  |
| 401 | **MD-F0009-0305-MB-E-00001** | 2026-06-09 → 2026-06-02 (-7d) | 2026-06-17 → 2026-06-12 (-5d) |  |  | 18d → 22d |  |
| 402 | Emissão inicial | 2026-06-09 → 2026-06-02 (-7d) | 2026-06-11 → 2026-06-08 (-3d) |  |  | 18d → 22d |  |
| 403 | Análise Tecnored | 2026-06-12 → 2026-06-09 (-3d) | 2026-06-12 → 2026-06-09 (-3d) |  |  | 18d → 22d |  |
| 404 | Atendimento de comentários | 2026-06-15 → 2026-06-10 (-5d) | 2026-06-16 → 2026-06-11 (-5d) |  |  | 18d → 22d |  |
| 405 | Aprovação | 2026-06-17 → 2026-06-12 (-5d) | 2026-06-17 → 2026-06-12 (-5d) |  |  | 18d → 22d |  |
| 411 | **AG-F0009-0305-MB-E-00001** | 2026-06-03 → 2026-05-29 (-5d) | 2026-06-10 → 2026-06-03 (-7d) |  |  | 18d → 27d |  |
| 412 | Emissão inicial | 2026-06-03 → 2026-05-29 (-5d) | 2026-06-08 → 2026-06-01 (-7d) |  |  | 18d → 27d |  |
| 413 | Análise Tecnored | 2026-06-09 → 2026-06-02 (-7d) | 2026-06-09 → 2026-06-02 (-7d) |  |  | 18d → 27d |  |
| 414 | Atendimento de comentários | 2026-06-10 → 2026-06-03 (-7d) | 2026-06-10 → 2026-06-03 (-7d) |  |  | 23d → 27d |  |
| 415 | Aprovação | 2026-06-10 → 2026-06-03 (-7d) | 2026-06-10 → 2026-06-03 (-7d) |  |  | 23d → 27d |  |
| 421 | **AG-F0009-0305-MB-E-00002** | 2026-06-09 → 2026-05-29 (-11d) | 2026-06-12 → 2026-06-03 (-9d) |  |  | 21d → 27d |  |
| 422 | Emissão inicial | 2026-06-09 → 2026-05-29 (-11d) | 2026-06-10 → 2026-06-01 (-9d) |  |  | 21d → 27d |  |

| ID | Task | Start | Finish | Duration | Complete | Total float | Predecessors | Other |
| --- | --- | --- | --- | --- | --- | --- | --- | --- |
| 423 | Análise Tecnored | 2026-06-11 → 2026-06-02 (-9d) | 2026-06-11 → 2026-06-02 (-9d) |  |  | 21d → 27d |  |  |
| 424 | Atendimento de comentários | 2026-06-12 → 2026-06-03 (-9d) | 2026-06-12 → 2026-06-03 (-9d) |  |  | 21d → 27d |  |  |
| 425 | Aprovação | 2026-06-12 → 2026-06-03 (-9d) | 2026-06-12 → 2026-06-03 (-9d) |  |  | 21d → 27d |  |  |
| 431 | **Automação e instrumentação** |  | 2026-07-07 → 2026-07-14 (+7d) | 25d → 30d | 37% → 59% | 4d → 0d |  |  |
| 437 | **LI-F0009-0305-MB-J-00001** | 2026-06-15 A |  |  | 0% → 50% | 9d → 4d |  |  |
| 438 | Emissão inicial | 2026-06-15 A |  |  | 0% → 90% | 9d → 6d |  |  |
| 442 | **LE-F0009-0305-MB-J-00001** | 2026-06-26 → 2026-06-24 (-2d) |  | 8d → 10d |  | 4d → 5d |  |  |
| 443 | Emissão inicial | 2026-06-26 → 2026-06-24 (-2d) | 2026-07-01 → 2026-06-29 (-2d) |  |  | 4d → 7d |  | constraint finish no earlier than 2026-07-01 → start no earlier than 2026-06-24 |
| 447 | **LL-F0009-0305-MB-J-00001** | 2026-06-26 → 2026-06-25 (-1d) |  | 8d → 9d |  | 4d → 5d |  |  |
| 448 | Emissão inicial | 2026-06-26 → 2026-06-25 (-1d) | 2026-07-01 → 2026-06-30 (-1d) |  |  | 4d → 6d |  | constraint finish no earlier than 2026-07-01 → start no earlier than 2026-06-25 |
| 462 | **PQ-F0009-0305-MB-J-00001** | 2026-06-25 → 2026-07-02 (+7d) | 2026-07-07 → 2026-07-14 (+7d) |  |  | 4d → 0d |  |  |
| 463 | Emissão inicial | 2026-06-25 → 2026-07-02 (+7d) | 2026-07-02 → 2026-07-09 (+7d) |  |  | 4d → 0d |  | constraint start no earlier than 2026-06-25 → start no earlier than 2026-07-02 |
| 464 | Análise Tecnored | 2026-07-03 → 2026-07-10 (+7d) | 2026-07-03 → 2026-07-10 (+7d) |  |  | 4d → 0d |  |  |
| 465 | Atendimento de comentários | 2026-07-06 → 2026-07-13 (+7d) | 2026-07-06 → 2026-07-13 (+7d) |  |  | 4d → 0d |  |  |
| 466 | Aprovação | 2026-07-07 → 2026-07-14 (+7d) | 2026-07-07 → 2026-07-14 (+7d) |  |  | 4d → 0d |  |  |
| 482 | **AG-F0009-0305-MB-J-00001** |  |  |  | 50% → 56% | 6d → 7d |  |  |
| 484 | Análise Tecnored | 2026-06-26 A |  |  | 0% → 50% | 8d → 9d |  |  |
| 492 | **AG-F0009-0305-MB-J-00003** | 2026-06-24 A |  |  | 0% → 50% | 7d → 8d |  |  |
| 493 | Emissão inicial | 2026-06-24 A | 2026-06-26 A |  | 0% → 100% | 7d → none |  |  |
| 494 | Análise Tecnored | 2026-06-29 A |  |  | 0% → 50% | 7d → 8d |  |  |
| 502 | **DI-F0009-0305-MB-J-00001** | 2026-06-17 A |  |  | 0% → 25% | 7d → 12d |  |  |
| 503 | Emissão inicial | 2026-06-17 A |  |  | 0% → 50% | 7d → 8d |  |  |
| 517 | **LM-F0009-0305-MB-J-00001** | 2026-06-26 → 2026-06-30 (+4d) | 2026-07-06 → 2026-07-08 (+2d) |  |  | 5d → 4d |  |  |
| 518 | Emissão inicial | 2026-06-26 → 2026-06-30 (+4d) | 2026-07-01 → 2026-07-03 (+2d) |  |  | 5d → 4d | 638FS-7d, 633FS-7d → 638FS-7d, 633FS-7d, 437 |  |
| 519 | Análise Tecnored | 2026-07-02 → 2026-07-06 (+4d) | 2026-07-02 → 2026-07-06 (+4d) |  |  | 5d → 4d |  |  |
| 520 | Atendimento de comentários | 2026-07-03 → 2026-07-07 (+4d) | 2026-07-03 → 2026-07-07 (+4d) |  |  | 5d → 4d |  |  |
| 521 | Aprovação | 2026-07-06 → 2026-07-08 (+2d) | 2026-07-06 → 2026-07-08 (+2d) |  |  | 5d → 4d |  |  |
| 522 | **ET-F0009-0305-MB-J-00001** | 2026-06-26 → 2026-07-01 (+5d) | 2026-07-06 → 2026-07-09 (+3d) |  |  | 5d → 3d |  |  |
| 523 | Emissão inicial | 2026-06-26 → 2026-07-01 (+5d) | 2026-06-30 → 2026-07-03 (+3d) |  |  | 5d → 3d |  | constraint start no earlier than 2026-06-26 → start no earlier than 2026-07-01 |
| 524 | Análise Tecnored | 2026-07-01 → 2026-07-06 (+5d) | 2026-07-01 → 2026-07-06 (+5d) |  |  | 5d → 3d |  |  |
| 525 | Atendimento de comentários | 2026-07-02 → 2026-07-07 (+5d) | 2026-07-03 → 2026-07-08 (+5d) |  |  | 5d → 3d |  |  |
| 526 | Aprovação | 2026-07-06 → 2026-07-09 (+3d) | 2026-07-06 → 2026-07-09 (+3d) |  |  | 5d → 3d |  |  |
| 527 | **FD-F0009-0305-MB-J-00001** |  |  |  | 53% → 70% | 11d → 12d |  |  |
| 528 | Emissão inicial |  | 2026-06-23 A |  | 75% → 100% | 11d → none |  |  |
| 567 | **FD-F0009-0305-MB-J-00009** |  |  |  | 70% → 72% | 11d → 12d |  |  |
| 569 | Análise Tecnored | 2026-06-24 A |  |  | 0% → 15% | 11d → 12d |  |  |
| 572 | **FD-F0009-0305-MB-J-00010** |  |  |  | 21% → 72% | 11d → 12d |  |  |
| 573 | Emissão inicial |  | 2026-06-23 A |  | 30% → 100% | 11d → none |  |  |
| 574 | Análise Tecnored | 2026-06-24 A |  |  | 0% → 15% | 11d → 12d |  |  |
| 577 | **FD-F0009-0305-MB-J-00011** |  |  |  | 21% → 72% | 11d → 12d |  |  |
| 578 | Emissão inicial |  | 2026-06-23 A |  | 30% → 100% | 11d → none |  |  |
| 579 | Análise Tecnored | 2026-06-24 A |  |  | 0% → 15% | 11d → 12d |  |  |
| 582 | **FD-F0009-0305-MB-J-00012** | 2026-06-15 A → 2026-06-18 A (+3d) | 2026-06-26 → 2026-07-01 (+5d) |  | 21% → 72% | 11d → 9d |  |  |
| 583 | Emissão inicial | 2026-06-15 A → 2026-06-18 A (+3d) | 2026-06-23 → 2026-06-26 A (+3d) |  | 30% → 100% | 11d → none |  |  |
| 584 | Análise Tecnored | 2026-06-24 → 2026-06-29 A (+5d) | 2026-06-24 → 2026-06-29 (+5d) |  | 0% → 15% | 11d → 9d |  |  |
| 585 | Atendimento de comentários | 2026-06-25 → 2026-06-30 (+5d) | 2026-06-25 → 2026-06-30 (+5d) |  |  | 11d → 9d |  |  |
| 586 | Aprovação | 2026-06-26 → 2026-07-01 (+5d) | 2026-06-26 → 2026-07-01 (+5d) |  |  | 11d → 9d |  |  |
| 587 | **FD-F0009-0305-MB-J-00013** | 2026-06-15 A → 2026-06-18 A (+3d) | 2026-06-26 → 2026-07-01 (+5d) |  | 21% → 72% | 11d → 9d |  |  |
| 588 | Emissão inicial | 2026-06-15 A → 2026-06-18 A (+3d) | 2026-06-23 → 2026-06-26 A (+3d) |  | 30% → 100% | 11d → none |  |  |
| 589 | Análise Tecnored | 2026-06-24 → 2026-06-29 A (+5d) | 2026-06-24 → 2026-06-29 (+5d) |  | 0% → 15% | 11d → 9d |  |  |
| 590 | Atendimento de comentários | 2026-06-25 → 2026-06-30 (+5d) | 2026-06-25 → 2026-06-30 (+5d) |  |  | 11d → 9d |  |  |
| 591 | Aprovação | 2026-06-26 → 2026-07-01 (+5d) | 2026-06-26 → 2026-07-01 (+5d) |  |  | 11d → 9d |  |  |
| 592 | **FD-F0009-0305-MB-J-00014** | 2026-06-15 A → 2026-06-18 A (+3d) | 2026-06-26 → 2026-07-01 (+5d) |  | 21% → 72% | 11d → 9d |  |  |
| 593 | Emissão inicial | 2026-06-15 A → 2026-06-18 A (+3d) | 2026-06-23 → 2026-06-26 A (+3d) |  | 30% → 100% | 11d → none |  |  |
| 594 | Análise Tecnored | 2026-06-24 → 2026-06-29 A (+5d) | 2026-06-24 → 2026-06-29 (+5d) |  | 0% → 15% | 11d → 9d |  |  |
| 595 | Atendimento de comentários | 2026-06-25 → 2026-06-30 (+5d) | 2026-06-25 → 2026-06-30 (+5d) |  |  | 11d → 9d |  |  |
| 596 | Aprovação | 2026-06-26 → 2026-07-01 (+5d) | 2026-06-26 → 2026-07-01 (+5d) |  |  | 11d → 9d |  |  |
| 597 | **FD-F0009-0305-MB-J-00015** |  |  |  | 21% → 72% | 11d → 12d |  |  |
| 598 | Emissão inicial |  | 2026-06-23 A |  | 30% → 100% | 11d → none |  |  |
| 599 | Análise Tecnored | 2026-06-24 A |  |  | 0% → 15% | 11d → 12d |  |  |
| 602 | **FD-F0009-0305-MB-J-00016** |  |  |  | 21% → 72% | 11d → 12d |  |  |
| 603 | Emissão inicial |  | 2026-06-23 A |  | 30% → 100% | 11d → none |  |  |
| 604 | Análise Tecnored | 2026-06-24 A |  |  | 0% → 15% | 11d → 12d |  |  |
| 632 | **RE-F0009-0305-MB-J-00001** | 2026-06-19 → 2026-06-30 (+11d) | 2026-06-30 → 2026-07-09 (+9d) |  |  | 9d → 3d |  |  |
| 633 | Emissão inicial | 2026-06-19 → 2026-06-30 (+11d) | 2026-06-24 → 2026-07-03 (+9d) |  |  | 9d → 3d |  | constraint start no earlier than 2026-06-19 → finish no earlier than 2026-07-03 |
| 634 | Análise Tecnored | 2026-06-25 → 2026-07-06 (+11d) | 2026-06-25 → 2026-07-06 (+11d) |  |  | 9d → 3d |  |  |
| 635 | Atendimento de comentários | 2026-06-26 → 2026-07-07 (+11d) | 2026-06-29 → 2026-07-08 (+9d) |  |  | 9d → 3d |  |  |
| 636 | Aprovação | 2026-06-30 → 2026-07-09 (+9d) | 2026-06-30 → 2026-07-09 (+9d) |  |  | 9d → 3d |  |  |
| 637 | **DT-F0009-0305-MB-J-00001** | 2026-06-17 → 2026-06-30 A (+13d) | 2026-06-26 → 2026-07-09 (+13d) |  | 0% → 25% | 11d → 3d |  |  |
| 638 | Emissão inicial | 2026-06-17 → 2026-06-30 A (+13d) | 2026-06-22 → 2026-07-03 (+11d) |  | 0% → 50% | 11d → 3d |  |  |

| ID | Task | Start | Finish | Complete | Total float | Other |
| --- | --- | --- | --- | --- | --- | --- |
| 639 | Análise Tecnored | 2026-06-23 → 2026-07-06 (+13d) | 2026-06-23 → 2026-07-06 (+13d) |  | 11d → 3d |  |
| 640 | Atendimento de comentários | 2026-06-24 → 2026-07-07 (+13d) | 2026-06-25 → 2026-07-08 (+13d) |  | 11d → 3d |  |
| 641 | Aprovação | 2026-06-26 → 2026-07-09 (+13d) | 2026-06-26 → 2026-07-09 (+13d) |  | 11d → 3d |  |
| 642 | **Civil** | 2026-06-24 → 2026-06-29 A (+5d) | 2026-07-07 → 2026-07-10 (+3d) | 0% → 4% | 4d → 2d |  |
| 643 | **MC-F0009-0305-MB-C-00001** | 2026-06-24 → 2026-06-29 A (+5d) | 2026-07-03 → 2026-07-08 (+5d) | 0% → 6% |  |  |
| 644 | Emissão inicial | 2026-06-24 → 2026-06-29 A (+5d) | 2026-06-30 → 2026-07-03 (+3d) | 0% → 10% | 4d → 2d | constraint none → start no earlier than 2026-06-29 |
| 645 | Análise Tecnored | 2026-07-01 → 2026-07-06 (+5d) | 2026-07-01 → 2026-07-06 (+5d) |  | 6d → 4d |  |
| 646 | Atendimento de comentários | 2026-07-02 → 2026-07-07 (+5d) | 2026-07-02 → 2026-07-07 (+5d) |  | 6d → 4d |  |
| 647 | Aprovação | 2026-07-03 → 2026-07-08 (+5d) | 2026-07-03 → 2026-07-08 (+5d) |  | 6d → 4d |  |
| 648 | **PQ-F0009-0305-MB-C-00001** | 2026-07-01 → 2026-07-06 (+5d) | 2026-07-07 → 2026-07-10 (+3d) |  | 4d → 2d |  |
| 649 | Emissão inicial | 2026-07-01 → 2026-07-06 (+5d) | 2026-07-01 → 2026-07-06 (+5d) |  | 4d → 2d |  |
| 650 | Análise Tecnored | 2026-07-02 → 2026-07-07 (+5d) | 2026-07-02 → 2026-07-07 (+5d) |  | 4d → 2d |  |
| 651 | Atendimento de comentários | 2026-07-03 → 2026-07-08 (+5d) | 2026-07-06 → 2026-07-09 (+3d) |  | 4d → 2d |  |
| 652 | Aprovação | 2026-07-07 → 2026-07-10 (+3d) | 2026-07-07 → 2026-07-10 (+3d) |  | 4d → 2d |  |

## Version 10 (data date 2026-06-30, saved 2026-07-01, file CR-F0009-0305-MB-F-00001 30062026.mpp)

Note of the change: Primeira versao dashboard

Last finish stays 2026-07-27. Complete tasks 69 → 73.

Added:

| ID | Task | Duration | Start | Finish | Predecessors |
| --- | --- | --- | --- | --- | --- |
| 628 | Emissão inicial | 7d | 2026-06-15 A | 2026-06-23 A | 528SS |
| 629 | Análise Tecnored | 1d | 2026-06-24 A | 2026-06-24 | 628 |
| 630 | Atendimento de comentários | 1d | 2026-06-25 | 2026-06-25 | 629 |
| 631 | Aprovação | 1d | 2026-06-26 | 2026-06-26 | 630 |
| 632 | **FD-F0009-0305-MB-J-00022** | 9.85d | 2026-06-19 A | 2026-07-02 |  |
| 633 | Emissão inicial | 7d | 2026-06-19 A | 2026-06-29 A | 528SS |
| 634 | Análise Tecnored | 1d | 2026-06-24 A | 2026-06-30 | 633 |
| 635 | Atendimento de comentários | 1d | 2026-06-30 | 2026-07-01 | 634 |
| 636 | Aprovação | 1d | 2026-07-01 | 2026-07-02 | 635 |
| 637 | **FD-F0009-0305-MB-J-00023** | 9.85d | 2026-06-19 A | 2026-07-02 |  |
| 638 | Emissão inicial | 7d | 2026-06-19 A | 2026-06-29 A | 528SS |
| 639 | Análise Tecnored | 1d | 2026-06-24 A | 2026-06-30 | 638 |
| 640 | Atendimento de comentários | 1d | 2026-06-30 | 2026-07-01 | 639 |
| 641 | Aprovação | 1d | 2026-07-01 | 2026-07-02 | 640 |
| 642 | **FD-F0009-0305-MB-J-00024** | 9.85d | 2026-06-19 A | 2026-07-02 |  |
| 643 | Emissão inicial | 7d | 2026-06-19 A | 2026-06-29 A | 528SS |
| 644 | Análise Tecnored | 1d | 2026-06-24 A | 2026-06-30 | 643 |
| 645 | Atendimento de comentários | 1d | 2026-06-30 | 2026-07-01 | 644 |
| 646 | Aprovação | 1d | 2026-07-01 | 2026-07-02 | 645 |
| 647 | **FD-F0009-0305-MB-J-00025** | 9.85d | 2026-06-19 A | 2026-07-02 |  |

Changed:

| ID | Task | Start | Finish | Duration | Complete | Total float | Predecessors | Other |
| --- | --- | --- | --- | --- | --- | --- | --- | --- |
| 1 | **F0009 - Programa Marabá** |  | 2026-07-14 → 2026-07-21 (+7d) | 55d → 60d | 42% → 44% |  |  |  |
| 10 | **Área 0305 - Hot Blast Stoves** |  | 2026-07-14 → 2026-07-21 (+7d) | 55d → 60d | 42% → 44% |  |  |  |
| 67 | **Mecânica** |  | 2026-07-06 → 2026-07-16 (+10d) | 35d → 43d |  | 6d → 3d |  |  |
| 88 | **AG-F0009-0305-MB-L-00001** | 2026-06-29 → 2026-07-09 (+10d) | 2026-07-06 → 2026-07-16 (+10d) |  |  | 6d → 3d |  |  |
| 89 | Emissão inicial | 2026-06-29 → 2026-07-09 (+10d) | 2026-07-01 → 2026-07-13 (+12d) |  |  | 6d → 3d |  |  |
| 90 | Análise Tecnored | 2026-07-02 → 2026-07-14 (+12d) | 2026-07-02 → 2026-07-14 (+12d) |  |  | 6d → 3d |  |  |
| 91 | Atendimento de comentários | 2026-07-03 → 2026-07-15 (+12d) | 2026-07-03 → 2026-07-15 (+12d) |  |  | 6d → 3d |  |  |
| 92 | Aprovação | 2026-07-06 → 2026-07-16 (+10d) | 2026-07-06 → 2026-07-16 (+10d) |  |  | 6d → 3d |  |  |
| 93 | **AG-F0009-0305-MB-L-00002** | 2026-06-29 → 2026-07-09 (+10d) | 2026-07-06 → 2026-07-16 (+10d) |  |  | 6d → 3d |  |  |
| 94 | Emissão inicial | 2026-06-29 → 2026-07-09 (+10d) | 2026-07-01 → 2026-07-13 (+12d) |  |  | 6d → 3d |  |  |
| 95 | Análise Tecnored | 2026-07-02 → 2026-07-14 (+12d) | 2026-07-02 → 2026-07-14 (+12d) |  |  | 6d → 3d |  |  |
| 96 | Atendimento de comentários | 2026-07-03 → 2026-07-15 (+12d) | 2026-07-03 → 2026-07-15 (+12d) |  |  | 6d → 3d |  |  |
| 97 | Aprovação | 2026-07-06 → 2026-07-16 (+10d) | 2026-07-06 → 2026-07-16 (+10d) |  |  | 6d → 3d |  |  |
| 98 | **AG-F0009-0305-MB-L-00003** | 2026-06-29 → 2026-07-09 (+10d) | 2026-07-06 → 2026-07-16 (+10d) |  |  | 6d → 3d |  |  |
| 99 | Emissão inicial | 2026-06-29 → 2026-07-09 (+10d) | 2026-07-01 → 2026-07-13 (+12d) |  |  | 6d → 3d |  |  |
| 100 | Análise Tecnored | 2026-07-02 → 2026-07-14 (+12d) | 2026-07-02 → 2026-07-14 (+12d) |  |  | 6d → 3d |  |  |
| 101 | Atendimento de comentários | 2026-07-03 → 2026-07-15 (+12d) | 2026-07-03 → 2026-07-15 (+12d) |  |  | 6d → 3d |  |  |
| 102 | Aprovação | 2026-07-06 → 2026-07-16 (+10d) | 2026-07-06 → 2026-07-16 (+10d) |  |  | 6d → 3d |  |  |
| 103 | **AG-F0009-0305-MB-L-00004** | 2026-06-29 → 2026-07-09 (+10d) | 2026-07-06 → 2026-07-16 (+10d) |  |  | 6d → 3d |  |  |
| 104 | Emissão inicial | 2026-06-29 → 2026-07-09 (+10d) | 2026-07-01 → 2026-07-13 (+12d) |  |  | 6d → 3d |  |  |
| 105 | Análise Tecnored | 2026-07-02 → 2026-07-14 (+12d) | 2026-07-02 → 2026-07-14 (+12d) |  |  | 6d → 3d |  |  |
| 106 | Atendimento de comentários | 2026-07-03 → 2026-07-15 (+12d) | 2026-07-03 → 2026-07-15 (+12d) |  |  | 6d → 3d |  |  |
| 107 | Aprovação | 2026-07-06 → 2026-07-16 (+10d) | 2026-07-06 → 2026-07-16 (+10d) |  |  | 6d → 3d |  |  |
| 108 | **AG-F0009-0305-MB-L-00005** | 2026-06-29 → 2026-07-09 (+10d) | 2026-07-06 → 2026-07-16 (+10d) |  |  | 6d → 3d |  |  |
| 109 | Emissão inicial | 2026-06-29 → 2026-07-09 (+10d) | 2026-07-01 → 2026-07-13 (+12d) |  |  | 6d → 3d |  |  |
| 110 | Análise Tecnored | 2026-07-02 → 2026-07-14 (+12d) | 2026-07-02 → 2026-07-14 (+12d) |  |  | 6d → 3d |  |  |
| 111 | Atendimento de comentários | 2026-07-03 → 2026-07-15 (+12d) | 2026-07-03 → 2026-07-15 (+12d) |  |  | 6d → 3d |  |  |
| 112 | Aprovação | 2026-07-06 → 2026-07-16 (+10d) | 2026-07-06 → 2026-07-16 (+10d) |  |  | 6d → 3d |  |  |
| 113 | **AG-F0009-0305-MB-L-00006** | 2026-06-29 → 2026-07-09 (+10d) | 2026-07-06 → 2026-07-16 (+10d) |  |  | 6d → 3d |  |  |
| 114 | Emissão inicial | 2026-06-29 → 2026-07-09 (+10d) | 2026-07-01 → 2026-07-13 (+12d) |  |  | 6d → 3d |  |  |
| 115 | Análise Tecnored | 2026-07-02 → 2026-07-14 (+12d) | 2026-07-02 → 2026-07-14 (+12d) |  |  | 6d → 3d |  |  |
| 116 | Atendimento de comentários | 2026-07-03 → 2026-07-15 (+12d) | 2026-07-03 → 2026-07-15 (+12d) |  |  | 6d → 3d |  |  |
| 117 | Aprovação | 2026-07-06 → 2026-07-16 (+10d) | 2026-07-06 → 2026-07-16 (+10d) |  |  | 6d → 3d |  |  |
| 118 | **AG-F0009-0305-MB-L-00007** | 2026-06-29 → 2026-07-09 (+10d) | 2026-07-06 → 2026-07-16 (+10d) |  |  | 6d → 3d |  |  |
| 119 | Emissão inicial | 2026-06-29 → 2026-07-09 (+10d) | 2026-07-01 → 2026-07-13 (+12d) |  |  | 6d → 3d |  |  |
| 120 | Análise Tecnored | 2026-07-02 → 2026-07-14 (+12d) | 2026-07-02 → 2026-07-14 (+12d) |  |  | 6d → 3d |  |  |
| 121 | Atendimento de comentários | 2026-07-03 → 2026-07-15 (+12d) | 2026-07-03 → 2026-07-15 (+12d) |  |  | 6d → 3d |  |  |
| 122 | Aprovação | 2026-07-06 → 2026-07-16 (+10d) | 2026-07-06 → 2026-07-16 (+10d) |  |  | 6d → 3d |  |  |
| 123 | **AG-F0009-0305-MB-L-00008** | 2026-06-29 → 2026-07-09 (+10d) | 2026-07-06 → 2026-07-16 (+10d) |  |  | 6d → 3d |  |  |
| 124 | Emissão inicial | 2026-06-29 → 2026-07-09 (+10d) | 2026-07-01 → 2026-07-13 (+12d) |  |  | 6d → 3d |  |  |
| 125 | Análise Tecnored | 2026-07-02 → 2026-07-14 (+12d) | 2026-07-02 → 2026-07-14 (+12d) |  |  | 6d → 3d |  |  |
| 126 | Atendimento de comentários | 2026-07-03 → 2026-07-15 (+12d) | 2026-07-03 → 2026-07-15 (+12d) |  |  | 6d → 3d |  |  |
| 127 | Aprovação | 2026-07-06 → 2026-07-16 (+10d) | 2026-07-06 → 2026-07-16 (+10d) |  |  | 6d → 3d |  |  |
| 128 | **AG-F0009-0305-MB-L-00009** | 2026-06-29 → 2026-07-09 (+10d) | 2026-07-06 → 2026-07-16 (+10d) |  |  | 6d → 3d |  |  |
| 129 | Emissão inicial | 2026-06-29 → 2026-07-09 (+10d) | 2026-07-01 → 2026-07-13 (+12d) |  |  | 6d → 3d |  |  |
| 130 | Análise Tecnored | 2026-07-02 → 2026-07-14 (+12d) | 2026-07-02 → 2026-07-14 (+12d) |  |  | 6d → 3d |  |  |
| 131 | Atendimento de comentários | 2026-07-03 → 2026-07-15 (+12d) | 2026-07-03 → 2026-07-15 (+12d) |  |  | 6d → 3d |  |  |
| 132 | Aprovação | 2026-07-06 → 2026-07-16 (+10d) | 2026-07-06 → 2026-07-16 (+10d) |  |  | 6d → 3d |  |  |
| 284 | **Estrutura metálica** | 2026-06-19 A → 2026-06-29 A (+10d) | 2026-07-13 → 2026-07-21 (+8d) |  |  | 1d → 0d |  |  |
| 290 | **ML-F0009-0305-MB-S-00001** | 2026-06-24 A → 2026-07-06 A (+12d) | 2026-07-01 → 2026-07-13 (+12d) |  |  | 1d → 6d |  |  |
| 291 | Emissão inicial | 2026-06-24 A → 2026-07-06 A (+12d) | 2026-06-26 → 2026-07-08 (+12d) |  |  | 1d → 0d |  |  |
| 292 | Análise Tecnored | 2026-06-29 → 2026-07-09 (+10d) | 2026-06-29 → 2026-07-09 (+10d) |  |  | 1d → 0d |  |  |
| 293 | Atendimento de comentários | 2026-06-30 → 2026-07-10 (+10d) | 2026-06-30 → 2026-07-10 (+10d) |  |  | 1d → 0d |  |  |
| 294 | Aprovação | 2026-07-01 → 2026-07-13 (+12d) | 2026-07-01 → 2026-07-13 (+12d) |  |  | 1d → 6d |  |  |
| 295 | **PQ-F0009-0305-MB-S-00001** | 2026-07-06 → 2026-07-09 (+3d) | 2026-07-13 → 2026-07-16 (+3d) |  |  | 1d → 3d |  |  |
| 296 | Emissão inicial | 2026-07-06 → 2026-07-09 (+3d) | 2026-07-08 → 2026-07-13 (+5d) |  |  | 1d → 3d | 301 → 291 |  |
| 297 | Análise Tecnored | 2026-07-09 → 2026-07-14 (+5d) | 2026-07-09 → 2026-07-14 (+5d) |  |  | 1d → 3d |  |  |
| 298 | Atendimento de comentários | 2026-07-10 → 2026-07-15 (+5d) | 2026-07-10 → 2026-07-15 (+5d) |  |  | 1d → 3d |  |  |
| 299 | Aprovação | 2026-07-13 → 2026-07-16 (+3d) | 2026-07-13 → 2026-07-16 (+3d) |  |  | 1d → 3d |  |  |
| 300 | **LM-F0009-0305-MB-S-00001** | 2026-07-02 → 2026-07-14 (+12d) | 2026-07-08 → 2026-07-20 (+12d) |  |  |  |  |  |
| 301 | Emissão inicial | 2026-07-02 → 2026-07-14 (+12d) | 2026-07-03 → 2026-07-15 (+12d) |  |  |  |  |  |
| 302 | Análise Tecnored | 2026-07-06 → 2026-07-16 (+10d) | 2026-07-06 → 2026-07-16 (+10d) |  |  | 4d → 1d |  |  |
| 303 | Atendimento de comentários | 2026-07-07 → 2026-07-17 (+10d) | 2026-07-07 → 2026-07-17 (+10d) |  |  | 4d → 1d |  |  |
| 304 | Aprovação | 2026-07-08 → 2026-07-20 (+12d) | 2026-07-08 → 2026-07-20 (+12d) |  |  | 4d → 1d |  |  |
| 305 | **MC-F0009-0305-MB-S-00001** | 2026-06-19 → 2026-07-01 (+12d) | 2026-06-26 → 2026-07-08 (+12d) |  |  | 3.5d → 0d |  |  |
| 306 | Emissão inicial | 2026-06-19 → 2026-07-01 (+12d) | 2026-06-23 → 2026-07-03 (+10d) |  |  | 3.5d → 0d |  | constraint start no earlier than 2026-06-19 → start no earlier than 2026-07-01 |
| 307 | Análise Tecnored | 2026-06-24 → 2026-07-06 (+12d) | 2026-06-24 → 2026-07-06 (+12d) |  |  | 12d → 9d |  |  |
| 308 | Atendimento de comentários | 2026-06-25 → 2026-07-07 (+12d) | 2026-06-25 → 2026-07-07 (+12d) |  |  | 12d → 9d |  |  |
| 309 | Aprovação | 2026-06-26 → 2026-07-08 (+12d) | 2026-06-26 → 2026-07-08 (+12d) |  |  | 12d → 9d |  |  |
| 310 | **AG-F0009-0305-MB-S-00001** | 2026-07-01 → 2026-07-13 (+12d) | 2026-07-13 → 2026-07-21 (+8d) | 9d → 7d |  | 1d → 0d |  |  |

| ID | Task | Start | Finish | Duration | Total float | Predecessors |
| --- | --- | --- | --- | --- | --- | --- |
| 311 | Emissão inicial | 2026-07-01 → 2026-07-13 (+12d) | 2026-07-08 → 2026-07-16 (+8d) | 6d → 4d | 1d → 0d |  |
| 312 | Análise Tecnored | 2026-07-09 → 2026-07-17 (+8d) | 2026-07-09 → 2026-07-17 (+8d) |  | 1d → 0d |  |
| 313 | Atendimento de comentários | 2026-07-10 → 2026-07-20 (+10d) | 2026-07-10 → 2026-07-20 (+10d) |  | 1d → 0d |  |
| 314 | Aprovação | 2026-07-13 → 2026-07-21 (+8d) | 2026-07-13 → 2026-07-21 (+8d) |  | 1d → 0d |  |
| 315 | **AG-F0009-0305-MB-S-00002** | 2026-07-01 → 2026-07-13 (+12d) | 2026-07-13 → 2026-07-21 (+8d) | 9d → 7d | 1d → 0d |  |
| 316 | Emissão inicial | 2026-07-01 → 2026-07-13 (+12d) | 2026-07-08 → 2026-07-16 (+8d) | 6d → 4d | 1d → 0d |  |
| 317 | Análise Tecnored | 2026-07-09 → 2026-07-17 (+8d) | 2026-07-09 → 2026-07-17 (+8d) |  | 1d → 0d |  |
| 318 | Atendimento de comentários | 2026-07-10 → 2026-07-20 (+10d) | 2026-07-10 → 2026-07-20 (+10d) |  | 1d → 0d |  |
| 319 | Aprovação | 2026-07-13 → 2026-07-21 (+8d) | 2026-07-13 → 2026-07-21 (+8d) |  | 1d → 0d |  |
| 320 | **AG-F0009-0305-MB-S-00003** | 2026-07-01 → 2026-07-13 (+12d) | 2026-07-13 → 2026-07-21 (+8d) | 9d → 7d | 1d → 0d |  |
| 321 | Emissão inicial | 2026-07-01 → 2026-07-13 (+12d) | 2026-07-08 → 2026-07-16 (+8d) | 6d → 4d | 1d → 0d |  |
| 322 | Análise Tecnored | 2026-07-09 → 2026-07-17 (+8d) | 2026-07-09 → 2026-07-17 (+8d) |  | 1d → 0d |  |
| 323 | Atendimento de comentários | 2026-07-10 → 2026-07-20 (+10d) | 2026-07-10 → 2026-07-20 (+10d) |  | 1d → 0d |  |
| 324 | Aprovação | 2026-07-13 → 2026-07-21 (+8d) | 2026-07-13 → 2026-07-21 (+8d) |  | 1d → 0d |  |
| 325 | **AG-F0009-0305-MB-S-00004** | 2026-07-01 → 2026-07-13 (+12d) | 2026-07-13 → 2026-07-21 (+8d) | 9d → 7d | 1d → 0d |  |
| 326 | Emissão inicial | 2026-07-01 → 2026-07-13 (+12d) | 2026-07-08 → 2026-07-16 (+8d) | 6d → 4d | 1d → 0d |  |
| 327 | Análise Tecnored | 2026-07-09 → 2026-07-17 (+8d) | 2026-07-09 → 2026-07-17 (+8d) |  | 1d → 0d |  |
| 328 | Atendimento de comentários | 2026-07-10 → 2026-07-20 (+10d) | 2026-07-10 → 2026-07-20 (+10d) |  | 1d → 0d |  |
| 329 | Aprovação | 2026-07-13 → 2026-07-21 (+8d) | 2026-07-13 → 2026-07-21 (+8d) |  | 1d → 0d |  |
| 330 | **AG-F0009-0305-MB-S-00005** | 2026-07-01 → 2026-07-13 (+12d) | 2026-07-13 → 2026-07-21 (+8d) | 9d → 7d | 1d → 0d |  |
| 331 | Emissão inicial | 2026-07-01 → 2026-07-13 (+12d) | 2026-07-08 → 2026-07-16 (+8d) | 6d → 4d | 1d → 0d |  |
| 332 | Análise Tecnored | 2026-07-09 → 2026-07-17 (+8d) | 2026-07-09 → 2026-07-17 (+8d) |  | 1d → 0d |  |
| 333 | Atendimento de comentários | 2026-07-10 → 2026-07-20 (+10d) | 2026-07-10 → 2026-07-20 (+10d) |  | 1d → 0d |  |
| 334 | Aprovação | 2026-07-13 → 2026-07-21 (+8d) | 2026-07-13 → 2026-07-21 (+8d) |  | 1d → 0d |  |
| 335 | **AG-F0009-0305-MB-S-00006** | 2026-07-01 → 2026-07-13 (+12d) | 2026-07-13 → 2026-07-21 (+8d) | 9d → 7d | 1d → 0d |  |
| 336 | Emissão inicial | 2026-07-01 → 2026-07-13 (+12d) | 2026-07-08 → 2026-07-16 (+8d) | 6d → 4d | 1d → 0d |  |
| 337 | Análise Tecnored | 2026-07-09 → 2026-07-17 (+8d) | 2026-07-09 → 2026-07-17 (+8d) |  | 1d → 0d |  |
| 338 | Atendimento de comentários | 2026-07-10 → 2026-07-20 (+10d) | 2026-07-10 → 2026-07-20 (+10d) |  | 1d → 0d |  |
| 339 | Aprovação | 2026-07-13 → 2026-07-21 (+8d) | 2026-07-13 → 2026-07-21 (+8d) |  | 1d → 0d |  |
| 340 | **AG-F0009-0305-MB-S-00007** | 2026-07-01 → 2026-07-13 (+12d) | 2026-07-13 → 2026-07-21 (+8d) | 9d → 7d | 1d → 0d |  |
| 341 | Emissão inicial | 2026-07-01 → 2026-07-13 (+12d) | 2026-07-08 → 2026-07-16 (+8d) | 6d → 4d | 1d → 0d |  |
| 342 | Análise Tecnored | 2026-07-09 → 2026-07-17 (+8d) | 2026-07-09 → 2026-07-17 (+8d) |  | 1d → 0d |  |
| 343 | Atendimento de comentários | 2026-07-10 → 2026-07-20 (+10d) | 2026-07-10 → 2026-07-20 (+10d) |  | 1d → 0d |  |
| 344 | Aprovação | 2026-07-13 → 2026-07-21 (+8d) | 2026-07-13 → 2026-07-21 (+8d) |  | 1d → 0d |  |
| 345 | **AG-F0009-0305-MB-S-00008** | 2026-07-01 → 2026-07-13 (+12d) | 2026-07-13 → 2026-07-21 (+8d) | 9d → 7d | 1d → 0d |  |
| 346 | Emissão inicial | 2026-07-01 → 2026-07-13 (+12d) | 2026-07-08 → 2026-07-16 (+8d) | 6d → 4d | 1d → 0d |  |
| 347 | Análise Tecnored | 2026-07-09 → 2026-07-17 (+8d) | 2026-07-09 → 2026-07-17 (+8d) |  | 1d → 0d |  |
| 348 | Atendimento de comentários | 2026-07-10 → 2026-07-20 (+10d) | 2026-07-10 → 2026-07-20 (+10d) |  | 1d → 0d |  |
| 349 | Aprovação | 2026-07-13 → 2026-07-21 (+8d) | 2026-07-13 → 2026-07-21 (+8d) |  | 1d → 0d |  |
| 350 | **AG-F0009-0305-MB-S-00009** | 2026-07-01 → 2026-07-13 (+12d) | 2026-07-13 → 2026-07-21 (+8d) | 9d → 7d | 1d → 0d |  |
| 351 | Emissão inicial | 2026-07-01 → 2026-07-13 (+12d) | 2026-07-08 → 2026-07-16 (+8d) | 6d → 4d | 1d → 0d |  |
| 352 | Análise Tecnored | 2026-07-09 → 2026-07-17 (+8d) | 2026-07-09 → 2026-07-17 (+8d) |  | 1d → 0d |  |
| 353 | Atendimento de comentários | 2026-07-10 → 2026-07-20 (+10d) | 2026-07-10 → 2026-07-20 (+10d) |  | 1d → 0d |  |
| 354 | Aprovação | 2026-07-13 → 2026-07-21 (+8d) | 2026-07-13 → 2026-07-21 (+8d) |  | 1d → 0d |  |
| 355 | **AG-F0009-0305-MB-S-00010** | 2026-07-01 → 2026-07-13 (+12d) | 2026-07-13 → 2026-07-21 (+8d) | 9d → 7d | 1d → 0d |  |
| 356 | Emissão inicial | 2026-07-01 → 2026-07-13 (+12d) | 2026-07-08 → 2026-07-16 (+8d) | 6d → 4d | 1d → 0d |  |
| 357 | Análise Tecnored | 2026-07-09 → 2026-07-17 (+8d) | 2026-07-09 → 2026-07-17 (+8d) |  | 1d → 0d |  |
| 358 | Atendimento de comentários | 2026-07-10 → 2026-07-20 (+10d) | 2026-07-10 → 2026-07-20 (+10d) |  | 1d → 0d |  |
| 359 | Aprovação | 2026-07-13 → 2026-07-21 (+8d) | 2026-07-13 → 2026-07-21 (+8d) |  | 1d → 0d |  |
| 360 | **PL-F0009-0305-MB-S-00001** | 2026-07-01 → 2026-06-29 (-2d) | 2026-07-10 → 2026-07-08 (-2d) |  | 2d → 9d |  |
| 361 | Emissão inicial | 2026-07-01 → 2026-06-29 (-2d) | 2026-07-07 → 2026-07-03 (-4d) |  | 2d → 9d | 293 → 306FF |
| 362 | Análise Tecnored | 2026-07-08 → 2026-07-06 (-2d) | 2026-07-08 → 2026-07-06 (-2d) |  | 2d → 9d |  |
| 363 | Atendimento de comentários | 2026-07-09 → 2026-07-07 (-2d) | 2026-07-09 → 2026-07-07 (-2d) |  | 2d → 9d |  |
| 364 | Aprovação | 2026-07-10 → 2026-07-08 (-2d) | 2026-07-10 → 2026-07-08 (-2d) |  | 2d → 9d |  |
| 365 | **Elétrica** |  | 2026-06-10 → 2026-07-07 (+27d) | 8d → 27d | 24d → 10d |  |
| 371 | **ML-F0009-0305-MB-E-00001** | 2026-05-29 → 2026-06-23 (+25d) | 2026-06-09 → 2026-06-30 (+21d) |  | 22d → 12d |  |
| 372 | Emissão inicial | 2026-05-29 → 2026-06-23 (+25d) | 2026-06-03 → 2026-06-26 (+23d) |  | 22d → 12d |  |
| 373 | Análise Tecnored | 2026-06-08 → 2026-06-29 (+21d) | 2026-06-08 → 2026-06-29 (+21d) |  | 25d → 15d |  |
| 374 | Atendimento de comentários | 2026-06-09 → 2026-06-30 (+21d) | 2026-06-09 → 2026-06-30 (+21d) |  | 25d → 15d |  |
| 375 | Aprovação | 2026-06-09 → 2026-06-30 (+21d) | 2026-06-09 → 2026-06-30 (+21d) |  | 25d → 15d |  |
| 381 | **LE-F0009-0305-MB-E-00001** | 2026-06-08 → 2026-06-29 (+21d) | 2026-06-11 → 2026-07-02 (+21d) |  | 23d → 13d |  |
| 382 | Emissão inicial | 2026-06-08 → 2026-06-29 (+21d) | 2026-06-09 → 2026-06-30 (+21d) |  | 23d → 13d |  |
| 383 | Análise Tecnored | 2026-06-10 → 2026-07-01 (+21d) | 2026-06-10 → 2026-07-01 (+21d) |  | 23d → 13d |  |
| 384 | Atendimento de comentários | 2026-06-11 → 2026-07-02 (+21d) | 2026-06-11 → 2026-07-02 (+21d) |  | 23d → 13d |  |
| 385 | Aprovação | 2026-06-11 → 2026-07-02 (+21d) | 2026-06-11 → 2026-07-02 (+21d) |  | 23d → 13d |  |
| 391 | **LM-F0009-0305-MB-E-00001** | 2026-06-02 → 2026-07-03 (+31d) | 2026-06-09 → 2026-07-08 (+29d) |  | 22d → 6d |  |
| 392 | Emissão inicial | 2026-06-02 → 2026-07-03 (+31d) | 2026-06-03 → 2026-07-06 (+33d) |  | 22d → 6d |  |
| 393 | Análise Tecnored | 2026-06-08 → 2026-07-07 (+29d) | 2026-06-08 → 2026-07-07 (+29d) |  | 25d → 9d |  |
| 394 | Atendimento de comentários | 2026-06-09 → 2026-07-08 (+29d) | 2026-06-09 → 2026-07-08 (+29d) |  | 25d → 9d |  |
| 395 | Aprovação | 2026-06-09 → 2026-07-08 (+29d) | 2026-06-09 → 2026-07-08 (+29d) |  | 25d → 9d |  |

| ID | Task | Start | Finish | Duration | Complete | Total float | Other |
| --- | --- | --- | --- | --- | --- | --- | --- |
| 396 | **PQ-F0009-0305-MB-E-00001** | 2026-06-02 → 2026-07-03 (+31d) | 2026-06-08 → 2026-07-07 (+29d) |  |  | 26d → 10d |  |
| 397 | Emissão inicial | 2026-06-02 → 2026-07-03 (+31d) | 2026-06-02 → 2026-07-03 (+31d) |  |  | 26d → 10d |  |
| 398 | Análise Tecnored | 2026-06-03 → 2026-07-06 (+33d) | 2026-06-03 → 2026-07-06 (+33d) |  |  | 26d → 10d |  |
| 399 | Atendimento de comentários | 2026-06-08 → 2026-07-07 (+29d) | 2026-06-08 → 2026-07-07 (+29d) |  |  | 26d → 10d |  |
| 400 | Aprovação | 2026-06-08 → 2026-07-07 (+29d) | 2026-06-08 → 2026-07-07 (+29d) |  |  | 26d → 10d |  |
| 401 | **MD-F0009-0305-MB-E-00001** | 2026-06-02 → 2026-07-03 (+31d) | 2026-06-12 → 2026-07-13 (+31d) |  |  | 22d → 6d |  |
| 402 | Emissão inicial | 2026-06-02 → 2026-07-03 (+31d) | 2026-06-08 → 2026-07-07 (+29d) |  |  | 22d → 6d |  |
| 403 | Análise Tecnored | 2026-06-09 → 2026-07-08 (+29d) | 2026-06-09 → 2026-07-08 (+29d) |  |  | 22d → 6d |  |
| 404 | Atendimento de comentários | 2026-06-10 → 2026-07-09 (+29d) | 2026-06-11 → 2026-07-10 (+29d) |  |  | 22d → 6d |  |
| 405 | Aprovação | 2026-06-12 → 2026-07-13 (+31d) | 2026-06-12 → 2026-07-13 (+31d) |  |  | 22d → 6d |  |
| 406 | **MC-F0009-0305-MB-E-00001** | 2026-06-03 → 2026-06-26 (+23d) | 2026-06-10 → 2026-07-01 (+21d) |  |  | 23d → 13d |  |
| 407 | Emissão inicial | 2026-06-03 → 2026-06-26 (+23d) | 2026-06-08 → 2026-06-29 (+21d) |  |  | 23d → 13d | constraint none → start no earlier than 2026-06-26 |
| 408 | Análise Tecnored | 2026-06-09 → 2026-06-30 (+21d) | 2026-06-09 → 2026-06-30 (+21d) |  |  | 24d → 14d |  |
| 409 | Atendimento de comentários | 2026-06-10 → 2026-07-01 (+21d) | 2026-06-10 → 2026-07-01 (+21d) |  |  | 24d → 14d |  |
| 410 | Aprovação | 2026-06-10 → 2026-07-01 (+21d) | 2026-06-10 → 2026-07-01 (+21d) |  |  | 24d → 14d |  |
| 411 | **AG-F0009-0305-MB-E-00001** | 2026-05-29 → 2026-07-01 (+33d) | 2026-06-03 → 2026-07-06 (+33d) |  |  | 27d → 11d |  |
| 412 | Emissão inicial | 2026-05-29 → 2026-07-01 (+33d) | 2026-06-01 → 2026-07-02 (+31d) |  |  | 27d → 11d | constraint none → start no earlier than 2026-07-01 |
| 413 | Análise Tecnored | 2026-06-02 → 2026-07-03 (+31d) | 2026-06-02 → 2026-07-03 (+31d) |  |  | 27d → 11d |  |
| 414 | Atendimento de comentários | 2026-06-03 → 2026-07-06 (+33d) | 2026-06-03 → 2026-07-06 (+33d) |  |  | 27d → 11d |  |
| 415 | Aprovação | 2026-06-03 → 2026-07-06 (+33d) | 2026-06-03 → 2026-07-06 (+33d) |  |  | 27d → 11d |  |
| 421 | **AG-F0009-0305-MB-E-00002** | 2026-05-29 → 2026-07-02 (+34d) | 2026-06-03 → 2026-07-07 (+34d) |  |  | 27d → 10d |  |
| 422 | Emissão inicial | 2026-05-29 → 2026-07-02 (+34d) | 2026-06-01 → 2026-07-03 (+32d) |  |  | 27d → 10d | constraint none → start no earlier than 2026-07-02 |
| 423 | Análise Tecnored | 2026-06-02 → 2026-07-06 (+34d) | 2026-06-02 → 2026-07-06 (+34d) |  |  | 27d → 10d |  |
| 424 | Atendimento de comentários | 2026-06-03 → 2026-07-07 (+34d) | 2026-06-03 → 2026-07-07 (+34d) |  |  | 27d → 10d |  |
| 425 | Aprovação | 2026-06-03 → 2026-07-07 (+34d) | 2026-06-03 → 2026-07-07 (+34d) |  |  | 27d → 10d |  |
| 431 | **Automação e instrumentação** |  | 2026-07-14 → 2026-07-13 (-1d) | 30d → 29d | 59% → 60% | 0d → 6d |  |
| 462 | **PQ-F0009-0305-MB-J-00001** |  | 2026-07-14 → 2026-07-13 (-1d) | 9d → 8d |  | 0d → 6d |  |
| 463 | Emissão inicial |  | 2026-07-09 → 2026-07-08 (-1d) | 6d → 5d |  | 0d → 6d |  |
| 464 | Análise Tecnored | 2026-07-10 → 2026-07-09 (-1d) | 2026-07-10 → 2026-07-09 (-1d) |  |  | 0d → 6d |  |
| 465 | Atendimento de comentários | 2026-07-13 → 2026-07-10 (-3d) | 2026-07-13 → 2026-07-10 (-3d) |  |  | 0d → 6d |  |
| 466 | Aprovação | 2026-07-14 → 2026-07-13 (-1d) | 2026-07-14 → 2026-07-13 (-1d) |  |  | 0d → 6d |  |
| 527 | **FD-F0009-0305-MB-J-00001** |  |  |  | 70% → 75% | 12d → 17d |  |
| 529 | Análise Tecnored | 2026-06-24 A |  |  | 0% → 50% | 12d → 17d |  |
| 648 | Emissão inicial | 2026-06-15 A → 2026-06-19 A (+4d) | 2026-06-23 A → 2026-06-29 A (+6d) |  |  |  |  |
| 649 | Análise Tecnored |  | 2026-06-24 → 2026-06-30 (+6d) |  |  | 12d → 13.15d |  |
| 650 | Atendimento de comentários | 2026-06-25 → 2026-06-30 (+5d) | 2026-06-25 → 2026-07-01 (+6d) |  |  | 12d → 13.15d |  |
| 651 | Aprovação | 2026-06-26 → 2026-07-01 (+5d) | 2026-06-26 → 2026-07-02 (+6d) |  |  | 12d → 13.15d |  |
| 662 | **Civil** |  | 2026-07-10 → 2026-07-17 (+7d) | 10d → 14.5d |  | 2d → 2.5d |  |
| 663 | **MC-F0009-0305-MB-C-00001** |  | 2026-07-08 → 2026-07-15 (+7d) | 8d → 12.5d |  | 4d → 4.5d |  |
| 664 | Emissão inicial |  | 2026-07-03 → 2026-07-10 (+7d) |  |  | 2d → 2.5d |  |
| 665 | Análise Tecnored | 2026-07-06 → 2026-07-10 (+4d) | 2026-07-06 → 2026-07-13 (+7d) |  |  | 4d → 4.5d |  |
| 666 | Atendimento de comentários | 2026-07-07 → 2026-07-13 (+6d) | 2026-07-07 → 2026-07-14 (+7d) |  |  | 4d → 4.5d |  |
| 667 | Aprovação | 2026-07-08 → 2026-07-14 (+6d) | 2026-07-08 → 2026-07-15 (+7d) |  |  | 4d → 4.5d |  |
| 668 | **PQ-F0009-0305-MB-C-00001** | 2026-07-06 → 2026-07-10 (+4d) | 2026-07-10 → 2026-07-17 (+7d) |  |  | 2d → 2.5d |  |
| 669 | Emissão inicial | 2026-07-06 → 2026-07-10 (+4d) | 2026-07-06 → 2026-07-13 (+7d) |  |  | 2d → 2.5d |  |
| 670 | Análise Tecnored | 2026-07-07 → 2026-07-13 (+6d) | 2026-07-07 → 2026-07-14 (+7d) |  |  | 2d → 2.5d |  |
| 671 | Atendimento de comentários | 2026-07-08 → 2026-07-14 (+6d) | 2026-07-09 → 2026-07-16 (+7d) |  |  | 2d → 2.5d |  |
| 672 | Aprovação | 2026-07-10 → 2026-07-16 (+6d) | 2026-07-10 → 2026-07-17 (+7d) |  |  | 2d → 2.5d |  |
