# CR-F0009-0305-MB-F-00001

How a schedule from MS Project changed from version to version. A marks actual dates.

## Version 1 (saved 2026-05-28, file CR-F0009-0306-MB-F-00001.mpp)

Note of the change: Primeira versao dashboard

| ID | WBS | Task | Duration | Start | Finish | Predecessors | Complete | Total float | Constraint |
| --- | --- | --- | --- | --- | --- | --- | --- | --- | --- |
| 1 | 1 | **F0009 - Programa Marabá** | 53d | 2026-04-27 A | 2026-07-08 |  | 3% | 0d |  |
| 2 | 1.1 | **Área 0306 - Sopradores** | 53d | 2026-04-27 A | 2026-07-08 |  | 3% | 0d |  |
| 3 |  | KOM - Início de projeto | 0d | 2026-04-27 A | 2026-04-27 A |  | 100% |  | start no earlier than 2026-04-27 |
| 4 | 1.1.2 | **Marcos** | 13d | 2026-05-19 A | 2026-06-05 |  |  | 0d |  |
| 5 |  | Critério de Projeto de Processo | 0d | 2026-06-05 | 2026-06-05 |  |  |  |  |
| 6 |  | Critério de Projeto de Mecânica | 0d | 2026-05-19 A | 2026-05-19 A |  | 100% |  |  |
| 7 |  | Critério de Projeto de Elétrica | 0d | 2026-06-05 | 2026-06-05 |  |  |  |  |
| 8 |  | Critério de Projeto de automação | 0d | 2026-06-05 | 2026-06-05 |  |  |  |  |
| 9 |  | Critério de Projeto de Tubulação | 0d | 2026-05-22 A | 2026-05-22 A |  | 100% |  |  |
| 10 |  | Critério de Projeto de Estrutura metálica | 0d | 2026-06-05 | 2026-06-05 |  |  |  |  |
| 11 | 1.1.3 | **Pendências** | 0d | 2026-04-29 A | 2026-04-29 A |  | 100% |  |  |
| 12 |  | Recebimento de dados de entrada | 0d | 2026-04-29 A | 2026-04-29 A |  | 100% |  |  |
| 13 | 1.1.4 | **Planejamento** | 25.4d | 2026-04-27 A | 2026-06-01 |  | 86% | 27.6d |  |
| 14 | 1.1.4.1 | **LD-F0009-0306-MB-F-00001** | 25.4d | 2026-04-27 A | 2026-06-01 |  | 86% | 27.6d |  |
| 15 |  | Emissão inicial | 3d | 2026-04-27 A | 2026-04-29 A | 3 | 100% |  |  |
| 16 |  | Análise Tecnored | 1d | 2026-04-30 A | 2026-04-30 A | 15 | 100% |  |  |
| 17 |  | Atendimento de comentários | 2d | 2026-05-01 A | 2026-05-12 A | 16FS+7d | 100% |  |  |
| 18 |  | Aprovação | 1d | 2026-05-29 | 2026-06-01 | 17FS+13d |  | 27.6d |  |
| 19 | 1.1.4.2 | **CR-F0009-0306-MB-F-00001** | 21.4d | 2026-04-30 A | 2026-05-29 |  | 86% | 28.6d |  |
| 20 |  | Emissão inicial | 3d | 2026-04-30 A | 2026-05-04 A | 15 | 100% |  |  |
| 21 |  | Análise Tecnored | 1d | 2026-05-05 A | 2026-05-05 A | 20 | 100% |  |  |
| 22 |  | Atendimento de comentários | 2d | 2026-05-06 A | 2026-05-15 A | 21FS+7d | 100% |  |  |
| 23 |  | Aprovação | 1d | 2026-05-28 | 2026-05-29 | 22FS+9d |  | 28.6d |  |
| 24 | 1.1.5 | **Coordenação** | 52d | 2026-04-27 A | 2026-07-07 |  | 11% | 1d |  |
| 25 | 1.1.5.1 | **RM-F0009-0306-MB-G-00001** | 7d | 2026-06-01 | 2026-06-09 |  |  | 1d |  |
| 26 |  | Emissão inicial | 3d | 2026-06-01 | 2026-06-03 | 3FS+25d |  | 1d |  |
| 27 |  | Análise Tecnored | 1d | 2026-06-04 | 2026-06-04 | 26 |  | 21d |  |
| 28 |  | Atendimento de comentários | 2d | 2026-06-05 | 2026-06-08 | 27 |  | 21d |  |
| 29 |  | Aprovação | 1d | 2026-06-09 | 2026-06-09 | 28 |  | 21d |  |
| 30 | 1.1.5.2 | **RM-F0009-0306-MB-G-00002** | 7d | 2026-06-18 | 2026-06-26 |  |  | 1d |  |
| 31 |  | Emissão inicial | 3d | 2026-06-18 | 2026-06-22 | 26FS+10d |  | 1d |  |
| 32 |  | Análise Tecnored | 1d | 2026-06-23 | 2026-06-23 | 31 |  | 8d |  |
| 33 |  | Atendimento de comentários | 2d | 2026-06-24 | 2026-06-25 | 32 |  | 8d |  |
| 34 |  | Aprovação | 1d | 2026-06-26 | 2026-06-26 | 33 |  | 8d |  |
| 35 | 1.1.5.3 | **RL-F0009-0306-MB-G-00001** | 6d | 2026-06-30 | 2026-07-07 |  |  | 1d |  |
| 36 |  | Emissão inicial | 2d | 2026-06-30 | 2026-07-01 | 31FS+5d |  | 1d |  |
| 37 |  | Análise Tecnored | 1d | 2026-07-02 | 2026-07-02 | 36 |  | 1d |  |
| 38 |  | Atendimento de comentários | 2d | 2026-07-03 | 2026-07-06 | 37 |  | 1d |  |
| 39 |  | Aprovação | 1d | 2026-07-07 | 2026-07-07 | 38 |  | 1d |  |
| 40 | 1.1.5.4 | **LP-F0009-0306-MB-G-00001** | 47d | 2026-04-27 A | 2026-06-30 |  | 43% | 6d |  |
| 41 |  | Emissão inicial | 3d | 2026-04-27 A | 2026-04-29 A | 3 | 100% |  |  |
| 42 |  | Análise Tecnored | 1d | 2026-06-11 | 2026-06-11 | 41FS+30d |  | 6d |  |
| 43 |  | Atendimento de comentários | 2d | 2026-06-26 | 2026-06-29 | 42FS+10d |  | 6d |  |
| 44 |  | Aprovação | 1d | 2026-06-30 | 2026-06-30 | 43 |  | 6d |  |
| 45 | 1.1.6 | **Processo** | 5d | 2026-06-05 A | 2026-06-11 |  | 80% | 19d |  |
| 46 | 1.1.6.1 | **CP-F0009-0306-MB-P-00001** | 27d | 2026-05-05 | 2026-06-10 |  |  | 20d |  |
| 47 |  | Emissão inicial | 7d | 2026-05-05 | 2026-05-13 | 20 |  | 36d |  |
| 48 |  | Análise Tecnored | 1d | 2026-06-05 | 2026-06-05 | 47, 5 |  | 20d |  |
| 49 |  | Atendimento de comentários | 2d | 2026-06-08 | 2026-06-09 | 48 |  | 20d |  |
| 50 |  | Aprovação | 1d | 2026-06-10 | 2026-06-10 | 49 |  | 20d |  |
| 51 | 1.1.6.2 | **MD-F0009-0306-MB-P-00001** | 7d | 2026-06-22 | 2026-06-30 |  |  | 6d |  |
| 52 |  | Emissão inicial | 3d | 2026-06-22 | 2026-06-24 | 57FS+10d |  | 6d |  |
| 53 |  | Análise Tecnored | 1d | 2026-06-25 | 2026-06-25 | 52 |  | 6d |  |
| 54 |  | Atendimento de comentários | 2d | 2026-06-26 | 2026-06-29 | 53 |  | 6d |  |
| 55 |  | Aprovação | 1d | 2026-06-30 | 2026-06-30 | 54 |  | 6d |  |
| 56 | 1.1.6.3 | **FG-F0009-0306-MB-P-00001** | 5d | 2026-06-05 A | 2026-06-11 |  | 80% | 19d |  |
| 57 |  | Emissão inicial | 1d | 2026-06-05 A | 2026-06-05 A | 47, 5 | 100% |  |  |
| 58 |  | Análise Tecnored | 1d | 2026-06-08 A | 2026-06-08 A | 57 | 100% |  |  |
| 59 |  | Atendimento de comentários | 2d | 2026-06-09 A | 2026-06-10 A | 58 | 100% |  |  |
| 60 |  | Aprovação | 1d | 2026-06-11 | 2026-06-11 | 59 |  | 19d |  |
| 61 | 1.1.7 | **Mecânica** | 26d | 2026-05-26 A | 2026-06-30 |  | 7% | 6d |  |
| 62 | 1.1.7.1 | **CP-F0009-0306-MB-M-00001** | 14d | 2026-05-05 | 2026-05-22 |  |  | 0d |  |
| 63 |  | Emissão inicial | 7d | 2026-05-05 | 2026-05-13 | 20 |  | 0d |  |
| 64 |  | Análise Tecnored | 1d | 2026-05-19 | 2026-05-19 | 63, 6 |  | 33d |  |
| 65 |  | Atendimento de comentários | 2d | 2026-05-20 | 2026-05-21 | 64 |  | 33d |  |
| 66 |  | Aprovação | 1d | 2026-05-22 | 2026-05-22 | 65 |  | 33d |  |
| 67 | 1.1.7.2 | **MD-F0009-0306-MB-M-00001** | 7d | 2026-06-02 | 2026-06-10 |  |  | -13d |  |
| 68 |  | Emissão inicial | 3d | 2026-06-02 | 2026-06-04 | 63, 75, 6 |  | -13d |  |
| 69 |  | Análise Tecnored | 1d | 2026-06-05 | 2026-06-05 | 68 |  | 20d |  |
| 70 |  | Atendimento de comentários | 2d | 2026-06-08 | 2026-06-09 | 69 |  | 20d |  |

| ID | WBS | Task | Duration | Start | Finish | Predecessors | Complete | Total float |
| --- | --- | --- | --- | --- | --- | --- | --- | --- |
| 71 |  | Aprovação | 1d | 2026-06-10 | 2026-06-10 | 70 |  | 20d |
| 72 | 1.1.7.3 | **LE-F0009-0306-MB-M-00001** | 6d | 2026-05-26 A | 2026-06-02 |  | 33% | 26d |
| 73 |  | Emissão inicial | 2d | 2026-05-26 A | 2026-05-27 A | 63, 6FS+5d | 100% |  |
| 74 |  | Análise Tecnored | 1d | 2026-05-28 | 2026-05-28 | 73 |  | -10d |
| 75 |  | Atendimento de comentários | 2d | 2026-05-29 | 2026-06-01 | 74 |  | -10d |
| 76 |  | Aprovação | 1d | 2026-06-02 | 2026-06-02 | 75 |  | 26d |
| 77 | 1.1.7.4 | **PQ-F0009-0306-MB-M-00001** | 7d | 2026-06-02 | 2026-06-10 |  |  | 20d |
| 78 |  | Emissão inicial | 3d | 2026-06-02 | 2026-06-04 | 68FS+30d |  | 20d |
| 79 |  | Análise Tecnored | 1d | 2026-06-05 | 2026-06-05 | 78 |  | 20d |
| 80 |  | Atendimento de comentários | 2d | 2026-06-08 | 2026-06-09 | 79 |  | 20d |
| 81 |  | Aprovação | 1d | 2026-06-10 | 2026-06-10 | 80 |  | 20d |
| 82 | 1.1.7.5 | **AG-F0009-0306-MB-L-00001** | 9d | 2026-06-18 | 2026-06-30 |  |  | 6d |
| 83 |  | Emissão inicial | 5d | 2026-06-18 | 2026-06-24 | 230 |  | 6d |
| 84 |  | Análise Tecnored | 1d | 2026-06-25 | 2026-06-25 | 83 |  | 6d |
| 85 |  | Atendimento de comentários | 2d | 2026-06-26 | 2026-06-29 | 84 |  | 6d |
| 86 |  | Aprovação | 1d | 2026-06-30 | 2026-06-30 | 85 |  | 6d |
| 87 | 1.1.7.6 | **AG-F0009-0306-MB-L-00002** | 9d | 2026-06-18 | 2026-06-30 |  |  | 6d |
| 88 |  | Emissão inicial | 5d | 2026-06-18 | 2026-06-24 | 230 |  | 6d |
| 89 |  | Análise Tecnored | 1d | 2026-06-25 | 2026-06-25 | 88 |  | 6d |
| 90 |  | Atendimento de comentários | 2d | 2026-06-26 | 2026-06-29 | 89 |  | 6d |
| 91 |  | Aprovação | 1d | 2026-06-30 | 2026-06-30 | 90 |  | 6d |
| 92 | 1.1.7.7 | **AG-F0009-0306-MB-L-00003** | 9d | 2026-06-18 | 2026-06-30 |  |  | 6d |
| 93 |  | Emissão inicial | 5d | 2026-06-18 | 2026-06-24 | 230 |  | 6d |
| 94 |  | Análise Tecnored | 1d | 2026-06-25 | 2026-06-25 | 93 |  | 6d |
| 95 |  | Atendimento de comentários | 2d | 2026-06-26 | 2026-06-29 | 94 |  | 6d |
| 96 |  | Aprovação | 1d | 2026-06-30 | 2026-06-30 | 95 |  | 6d |
| 97 | 1.1.7.8 | **AG-F0009-0306-MB-L-00004** | 9d | 2026-06-18 | 2026-06-30 |  |  | 6d |
| 98 |  | Emissão inicial | 5d | 2026-06-18 | 2026-06-24 | 230 |  | 6d |
| 99 |  | Análise Tecnored | 1d | 2026-06-25 | 2026-06-25 | 98 |  | 6d |
| 100 |  | Atendimento de comentários | 2d | 2026-06-26 | 2026-06-29 | 99 |  | 6d |
| 101 |  | Aprovação | 1d | 2026-06-30 | 2026-06-30 | 100 |  | 6d |
| 102 | 1.1.7.9 | **PL-F0009-0306-MB-M-00001** | 12d | 2026-06-03 | 2026-06-18 |  |  | 14d |
| 103 |  | Emissão inicial | 8d | 2026-06-03 | 2026-06-12 | 119 |  | 14d |
| 104 |  | Análise Tecnored | 1d | 2026-06-15 | 2026-06-15 | 103 |  | 14d |
| 105 |  | Atendimento de comentários | 2d | 2026-06-16 | 2026-06-17 | 104 |  | 14d |
| 106 |  | Aprovação | 1d | 2026-06-18 | 2026-06-18 | 105 |  | 14d |
| 107 | 1.1.7.10 | **PL-F0009-0306-MB-M-00002** | 12d | 2026-06-03 | 2026-06-18 |  |  | 14d |
| 108 |  | Emissão inicial | 8d | 2026-06-03 | 2026-06-12 | 119 |  | 14d |
| 109 |  | Análise Tecnored | 1d | 2026-06-15 | 2026-06-15 | 108 |  | 14d |
| 110 |  | Atendimento de comentários | 2d | 2026-06-16 | 2026-06-17 | 109 |  | 14d |
| 111 |  | Aprovação | 1d | 2026-06-18 | 2026-06-18 | 110 |  | 14d |
| 112 | 1.1.7.11 | **MC-F0009-0306-MB-M-00001** | 9d | 2026-06-03 | 2026-06-15 |  |  | 1d |
| 113 |  | Emissão inicial | 5d | 2026-06-03 | 2026-06-09 | 119 |  | 1d |
| 114 |  | Análise Tecnored | 1d | 2026-06-10 | 2026-06-10 | 113 |  | 1d |
| 115 |  | Atendimento de comentários | 2d | 2026-06-11 | 2026-06-12 | 114 |  | 17d |
| 116 |  | Aprovação | 1d | 2026-06-15 | 2026-06-15 | 115 |  | 17d |
| 117 | 1.1.7.12 | **ML-F0009-0306-MB-M-00001** | 9d | 2026-05-26 A | 2026-06-05 |  | 56% | 23d |
| 118 |  | Emissão inicial | 5d | 2026-05-26 A | 2026-06-01 A | 63, 6FS+5d | 100% |  |
| 119 |  | Análise Tecnored | 1d | 2026-06-02 | 2026-06-02 | 118 |  | 1d |
| 120 |  | Atendimento de comentários | 2d | 2026-06-03 | 2026-06-04 | 119 |  | 7d |
| 121 |  | Aprovação | 1d | 2026-06-05 | 2026-06-05 | 120 |  | 23d |
| 122 | 1.1.7.13 | **FD-F0009-0306-MB-M-00001** | 7d | 2026-06-10 | 2026-06-18 |  |  | 14d |
| 123 |  | Emissão inicial | 3d | 2026-06-10 | 2026-06-12 | 113 |  | 14d |
| 124 |  | Análise Tecnored | 1d | 2026-06-15 | 2026-06-15 | 123 |  | 14d |
| 125 |  | Atendimento de comentários | 2d | 2026-06-16 | 2026-06-17 | 124 |  | 14d |
| 126 |  | Aprovação | 1d | 2026-06-18 | 2026-06-18 | 125 |  | 14d |
| 127 | 1.1.7.14 | **FD-F0009-0306-MB-M-00002** | 7d | 2026-06-10 | 2026-06-18 |  |  | 14d |
| 128 |  | Emissão inicial | 3d | 2026-06-10 | 2026-06-12 | 113 |  | 14d |
| 129 |  | Análise Tecnored | 1d | 2026-06-15 | 2026-06-15 | 128 |  | 14d |
| 130 |  | Atendimento de comentários | 2d | 2026-06-16 | 2026-06-17 | 129 |  | 14d |
| 131 |  | Aprovação | 1d | 2026-06-18 | 2026-06-18 | 130 |  | 14d |
| 132 | 1.1.8 | **Tubulação/Utilidades** | 20d | 2026-06-02 | 2026-06-29 |  |  | 7d |
| 133 | 1.1.8.1 | **CP-F0009-0306-MB-T-00001** | 17d | 2026-05-05 | 2026-05-27 |  |  | 30d |
| 134 |  | Emissão inicial | 7d | 2026-05-05 | 2026-05-13 | 20 |  | 36d |
| 135 |  | Análise Tecnored | 1d | 2026-05-22 | 2026-05-22 | 134, 9 |  | 30d |
| 136 |  | Atendimento de comentários | 2d | 2026-05-25 | 2026-05-26 | 135 |  | 30d |
| 137 |  | Aprovação | 1d | 2026-05-27 | 2026-05-27 | 136 |  | 30d |
| 138 | 1.1.8.2 | **MD-F0009-0306-MB-U-00001** | 7d | 2026-06-16 | 2026-06-24 |  |  | 7d |
| 139 |  | Emissão inicial | 3d | 2026-06-16 | 2026-06-18 | 183 |  | 7d |
| 140 |  | Análise Tecnored | 1d | 2026-06-19 | 2026-06-19 | 139 |  | 10d |

| ID | WBS | Task | Duration | Start | Finish | Predecessors | Total float |
| --- | --- | --- | --- | --- | --- | --- | --- |
| 141 |  | Atendimento de comentários | 2d | 2026-06-22 | 2026-06-23 | 140 | 10d |
| 142 |  | Aprovação | 1d | 2026-06-24 | 2026-06-24 | 141 | 10d |
| 143 | 1.1.8.3 | **ML-F0009-0306-MB-T-00001** | 7d | 2026-06-02 | 2026-06-10 |  | 20d |
| 144 |  | Emissão inicial | 3d | 2026-06-02 | 2026-06-04 | 118 | 20d |
| 145 |  | Análise Tecnored | 1d | 2026-06-05 | 2026-06-05 | 144 | 20d |
| 146 |  | Atendimento de comentários | 2d | 2026-06-08 | 2026-06-09 | 145 | 20d |
| 147 |  | Aprovação | 1d | 2026-06-10 | 2026-06-10 | 146 | 20d |
| 148 | 1.1.8.4 | **ET-F0009-0306-MB-T-00001** | 7d | 2026-06-10 | 2026-06-18 |  | 14d |
| 149 |  | Emissão inicial | 3d | 2026-06-10 | 2026-06-12 | 154 | 14d |
| 150 |  | Análise Tecnored | 1d | 2026-06-15 | 2026-06-15 | 149 | 14d |
| 151 |  | Atendimento de comentários | 2d | 2026-06-16 | 2026-06-17 | 150 | 14d |
| 152 |  | Aprovação | 1d | 2026-06-18 | 2026-06-18 | 151 | 14d |
| 153 | 1.1.8.5 | **FD-F0009-0306-MB-T-00001** | 7d | 2026-06-05 | 2026-06-15 |  | 14d |
| 154 |  | Emissão inicial | 3d | 2026-06-05 | 2026-06-09 | 169 | 14d |
| 155 |  | Análise Tecnored | 1d | 2026-06-10 | 2026-06-10 | 154 | 17d |
| 156 |  | Atendimento de comentários | 2d | 2026-06-11 | 2026-06-12 | 155 | 17d |
| 157 |  | Aprovação | 1d | 2026-06-15 | 2026-06-15 | 156 | 17d |
| 158 | 1.1.8.6 | **FD-F0009-0306-MB-T-00002** | 7d | 2026-06-05 | 2026-06-15 |  | 17d |
| 159 |  | Emissão inicial | 3d | 2026-06-05 | 2026-06-09 | 169 | 17d |
| 160 |  | Análise Tecnored | 1d | 2026-06-10 | 2026-06-10 | 159 | 17d |
| 161 |  | Atendimento de comentários | 2d | 2026-06-11 | 2026-06-12 | 160 | 17d |
| 162 |  | Aprovação | 1d | 2026-06-15 | 2026-06-15 | 161 | 17d |
| 163 | 1.1.8.7 | **PQ-F0009-0306-MB-T-00001** | 7d | 2026-06-19 | 2026-06-29 |  | 7d |
| 164 |  | Emissão inicial | 3d | 2026-06-19 | 2026-06-23 | 139 | 7d |
| 165 |  | Análise Tecnored | 1d | 2026-06-24 | 2026-06-24 | 164 | 7d |
| 166 |  | Atendimento de comentários | 2d | 2026-06-25 | 2026-06-26 | 165 | 7d |
| 167 |  | Aprovação | 1d | 2026-06-29 | 2026-06-29 | 166 | 7d |
| 168 | 1.1.8.8 | **MC-F0009-0306-MB-T-00001** | 7d | 2026-06-02 | 2026-06-10 |  | 14d |
| 169 |  | Emissão inicial | 3d | 2026-06-02 | 2026-06-04 | 118 | 14d |
| 170 |  | Análise Tecnored | 1d | 2026-06-05 | 2026-06-05 | 169 | 20d |
| 171 |  | Atendimento de comentários | 2d | 2026-06-08 | 2026-06-09 | 170 | 20d |
| 172 |  | Aprovação | 1d | 2026-06-10 | 2026-06-10 | 171 | 20d |
| 173 | 1.1.8.9 | **FG-F0009-0306-MB-T-00001** | 14d | 2026-06-08 | 2026-06-25 |  | 9d |
| 174 |  | Emissão inicial | 10d | 2026-06-08 | 2026-06-19 | 57 | 9d |
| 175 |  | Análise Tecnored | 1d | 2026-06-22 | 2026-06-22 | 174 | 9d |
| 176 |  | Atendimento de comentários | 2d | 2026-06-23 | 2026-06-24 | 175 | 9d |
| 177 |  | Aprovação | 1d | 2026-06-25 | 2026-06-25 | 176 | 9d |
| 178 | 1.1.8.10 | **FG-F0009-0306-MB-T-00002** | 14d | 2026-06-08 | 2026-06-25 |  | 9d |
| 179 |  | Emissão inicial | 10d | 2026-06-08 | 2026-06-19 | 57 | 9d |
| 180 |  | Análise Tecnored | 1d | 2026-06-22 | 2026-06-22 | 179 | 9d |
| 181 |  | Atendimento de comentários | 2d | 2026-06-23 | 2026-06-24 | 180 | 9d |
| 182 |  | Aprovação | 1d | 2026-06-25 | 2026-06-25 | 181 | 9d |
| 183 | 1.1.8.11 | **AG-F0009-0306-MB-T-00001** | 7d | 2026-06-05 | 2026-06-15 |  | 7d |
| 184 |  | Emissão inicial | 3d | 2026-06-05 | 2026-06-09 | 120 | 7d |
| 185 |  | Análise Tecnored | 1d | 2026-06-10 | 2026-06-10 | 184 | 7d |
| 186 |  | Atendimento de comentários | 2d | 2026-06-11 | 2026-06-12 | 185 | 7d |
| 187 |  | Aprovação | 1d | 2026-06-15 | 2026-06-15 | 186 | 7d |
| 188 | 1.1.8.12 | **AG-F0009-0306-MB-T-00002** | 7d | 2026-06-05 | 2026-06-15 |  | 17d |
| 189 |  | Emissão inicial | 3d | 2026-06-05 | 2026-06-09 | 120 | 17d |
| 190 |  | Análise Tecnored | 1d | 2026-06-10 | 2026-06-10 | 189 | 17d |
| 191 |  | Atendimento de comentários | 2d | 2026-06-11 | 2026-06-12 | 190 | 17d |
| 192 |  | Aprovação | 1d | 2026-06-15 | 2026-06-15 | 191 | 17d |
| 193 | 1.1.8.13 | **AG-F0009-0306-MB-T-00003** | 7d | 2026-06-05 | 2026-06-15 |  | 17d |
| 194 |  | Emissão inicial | 3d | 2026-06-05 | 2026-06-09 | 120 | 17d |
| 195 |  | Análise Tecnored | 1d | 2026-06-10 | 2026-06-10 | 194 | 17d |
| 196 |  | Atendimento de comentários | 2d | 2026-06-11 | 2026-06-12 | 195 | 17d |
| 197 |  | Aprovação | 1d | 2026-06-15 | 2026-06-15 | 196 | 17d |
| 198 | 1.1.8.14 | **AG-F0009-0306-MB-T-00004** | 7d | 2026-06-05 | 2026-06-15 |  | 17d |
| 199 |  | Emissão inicial | 3d | 2026-06-05 | 2026-06-09 | 120 | 17d |
| 200 |  | Análise Tecnored | 1d | 2026-06-10 | 2026-06-10 | 199 | 17d |
| 201 |  | Atendimento de comentários | 2d | 2026-06-11 | 2026-06-12 | 200 | 17d |
| 202 |  | Aprovação | 1d | 2026-06-15 | 2026-06-15 | 201 | 17d |
| 203 | 1.1.8.15 | **AG-F0009-0306-MB-T-00005** | 7d | 2026-06-05 | 2026-06-15 |  | 17d |
| 204 |  | Emissão inicial | 3d | 2026-06-05 | 2026-06-09 | 120 | 17d |
| 205 |  | Análise Tecnored | 1d | 2026-06-10 | 2026-06-10 | 204 | 17d |
| 206 |  | Atendimento de comentários | 2d | 2026-06-11 | 2026-06-12 | 205 | 17d |
| 207 |  | Aprovação | 1d | 2026-06-15 | 2026-06-15 | 206 | 17d |
| 208 | 1.1.8.16 | **AG-F0009-0306-MB-T-00006** | 7d | 2026-06-05 | 2026-06-15 |  | 17d |
| 209 |  | Emissão inicial | 3d | 2026-06-05 | 2026-06-09 | 120 | 17d |
| 210 |  | Análise Tecnored | 1d | 2026-06-10 | 2026-06-10 | 209 | 17d |

| ID | WBS | Task | Duration | Start | Finish | Predecessors | Total float |
| --- | --- | --- | --- | --- | --- | --- | --- |
| 211 |  | Atendimento de comentários | 2d | 2026-06-11 | 2026-06-12 | 210 | 17d |
| 212 |  | Aprovação | 1d | 2026-06-15 | 2026-06-15 | 211 | 17d |
| 213 | 1.1.8.17 | **LK-F0009-0306-MB-T-00001** | 7d | 2026-06-05 | 2026-06-15 |  | 17d |
| 214 |  | Emissão inicial | 3d | 2026-06-05 | 2026-06-09 | 120 | 17d |
| 215 |  | Análise Tecnored | 1d | 2026-06-10 | 2026-06-10 | 214 | 17d |
| 216 |  | Atendimento de comentários | 2d | 2026-06-11 | 2026-06-12 | 215 | 17d |
| 217 |  | Aprovação | 1d | 2026-06-15 | 2026-06-15 | 216 | 17d |
| 218 | 1.1.8.18 | **MC-F0009-0306-MB-T-00002** | 14d | 2026-06-02 | 2026-06-19 |  | 13d |
| 219 |  | Emissão inicial | 10d | 2026-06-02 | 2026-06-15 | 118 | 13d |
| 220 |  | Análise Tecnored | 1d | 2026-06-16 | 2026-06-16 | 219 | 13d |
| 221 |  | Atendimento de comentários | 2d | 2026-06-17 | 2026-06-18 | 220 | 13d |
| 222 |  | Aprovação | 1d | 2026-06-19 | 2026-06-19 | 221 | 13d |
| 223 | 1.1.9 | **Estrutura metálica** | 19d | 2026-06-11 | 2026-07-07 |  | 1d |
| 224 | 1.1.9.1 | **CP-F0009-0306-MB-S-00001** | 12d | 2026-06-05 | 2026-06-22 |  | 12d |
| 225 |  | Emissão inicial | 8d | 2026-06-05 | 2026-06-16 | 20, 10 | 12d |
| 226 |  | Análise Tecnored | 1d | 2026-06-17 | 2026-06-17 | 225 | 12d |
| 227 |  | Atendimento de comentários | 2d | 2026-06-18 | 2026-06-19 | 226 | 12d |
| 228 |  | Aprovação | 1d | 2026-06-22 | 2026-06-22 | 227 | 12d |
| 229 | 1.1.9.2 | **ML-F0009-0306-MB-S-00001** | 9d | 2026-06-11 | 2026-06-23 |  | 1d |
| 230 |  | Emissão inicial | 5d | 2026-06-11 | 2026-06-17 | 245FS-3d | 1d |
| 231 |  | Análise Tecnored | 1d | 2026-06-18 | 2026-06-18 | 230 | 1d |
| 232 |  | Atendimento de comentários | 2d | 2026-06-19 | 2026-06-22 | 231 | 1d |
| 233 |  | Aprovação | 1d | 2026-06-23 | 2026-06-23 | 232 | 1d |
| 234 | 1.1.9.3 | **PQ-F0009-0306-MB-S-00001** | 7d | 2026-06-29 | 2026-07-07 |  | 1d |
| 235 |  | Emissão inicial | 3d | 2026-06-29 | 2026-07-01 | 240 | 1d |
| 236 |  | Análise Tecnored | 1d | 2026-07-02 | 2026-07-02 | 235 | 1d |
| 237 |  | Atendimento de comentários | 2d | 2026-07-03 | 2026-07-06 | 236 | 1d |
| 238 |  | Aprovação | 1d | 2026-07-07 | 2026-07-07 | 237 | 1d |
| 239 | 1.1.9.4 | **LM-F0009-0306-MB-S-00001** | 7d | 2026-06-24 | 2026-07-02 |  | 1d |
| 240 |  | Emissão inicial | 3d | 2026-06-24 | 2026-06-26 | 233 | 1d |
| 241 |  | Análise Tecnored | 1d | 2026-06-29 | 2026-06-29 | 240 | 4d |
| 242 |  | Atendimento de comentários | 2d | 2026-06-30 | 2026-07-01 | 241 | 4d |
| 243 |  | Aprovação | 1d | 2026-07-02 | 2026-07-02 | 242 | 4d |
| 244 | 1.1.9.5 | **MC-F0009-0306-MB-S-00001** | 7d | 2026-06-11 | 2026-06-19 |  | 1d |
| 245 |  | Emissão inicial | 3d | 2026-06-11 | 2026-06-15 | 114 | 1d |
| 246 |  | Análise Tecnored | 1d | 2026-06-16 | 2026-06-16 | 245 | 13d |
| 247 |  | Atendimento de comentários | 2d | 2026-06-17 | 2026-06-18 | 246 | 13d |
| 248 |  | Aprovação | 1d | 2026-06-19 | 2026-06-19 | 247 | 13d |
| 249 | 1.1.9.6 | **AG-F0009-0306-MB-S-00001** | 9d | 2026-06-23 | 2026-07-03 |  | 3d |
| 250 |  | Emissão inicial | 5d | 2026-06-23 | 2026-06-29 | 232 | 3d |
| 251 |  | Análise Tecnored | 1d | 2026-06-30 | 2026-06-30 | 250 | 3d |
| 252 |  | Atendimento de comentários | 2d | 2026-07-01 | 2026-07-02 | 251 | 3d |
| 253 |  | Aprovação | 1d | 2026-07-03 | 2026-07-03 | 252 | 3d |
| 254 | 1.1.9.7 | **AG-F0009-0306-MB-S-00002** | 9d | 2026-06-23 | 2026-07-03 |  | 3d |
| 255 |  | Emissão inicial | 5d | 2026-06-23 | 2026-06-29 | 232 | 3d |
| 256 |  | Análise Tecnored | 1d | 2026-06-30 | 2026-06-30 | 255 | 3d |
| 257 |  | Atendimento de comentários | 2d | 2026-07-01 | 2026-07-02 | 256 | 3d |
| 258 |  | Aprovação | 1d | 2026-07-03 | 2026-07-03 | 257 | 3d |
| 259 | 1.1.9.8 | **AG-F0009-0306-MB-S-00003** | 9d | 2026-06-23 | 2026-07-03 |  | 3d |
| 260 |  | Emissão inicial | 5d | 2026-06-23 | 2026-06-29 | 232 | 3d |
| 261 |  | Análise Tecnored | 1d | 2026-06-30 | 2026-06-30 | 260 | 3d |
| 262 |  | Atendimento de comentários | 2d | 2026-07-01 | 2026-07-02 | 261 | 3d |
| 263 |  | Aprovação | 1d | 2026-07-03 | 2026-07-03 | 262 | 3d |
| 264 | 1.1.9.9 | **AG-F0009-0306-MB-S-00004** | 9d | 2026-06-23 | 2026-07-03 |  | 3d |
| 265 |  | Emissão inicial | 5d | 2026-06-23 | 2026-06-29 | 232 | 3d |
| 266 |  | Análise Tecnored | 1d | 2026-06-30 | 2026-06-30 | 265 | 3d |
| 267 |  | Atendimento de comentários | 2d | 2026-07-01 | 2026-07-02 | 266 | 3d |
| 268 |  | Aprovação | 1d | 2026-07-03 | 2026-07-03 | 267 | 3d |
| 269 | 1.1.9.10 | **AG-F0009-0306-MB-S-00005** | 9d | 2026-06-23 | 2026-07-03 |  | 3d |
| 270 |  | Emissão inicial | 5d | 2026-06-23 | 2026-06-29 | 232 | 3d |
| 271 |  | Análise Tecnored | 1d | 2026-06-30 | 2026-06-30 | 270 | 3d |
| 272 |  | Atendimento de comentários | 2d | 2026-07-01 | 2026-07-02 | 271 | 3d |
| 273 |  | Aprovação | 1d | 2026-07-03 | 2026-07-03 | 272 | 3d |
| 274 | 1.1.9.11 | **PL-F0009-0306-MB-S-00001** | 9d | 2026-06-23 | 2026-07-03 |  | 3d |
| 275 |  | Emissão inicial | 5d | 2026-06-23 | 2026-06-29 | 232 | 3d |
| 276 |  | Análise Tecnored | 1d | 2026-06-30 | 2026-06-30 | 275 | 3d |
| 277 |  | Atendimento de comentários | 2d | 2026-07-01 | 2026-07-02 | 276 | 3d |
| 278 |  | Aprovação | 1d | 2026-07-03 | 2026-07-03 | 277 | 3d |
| 279 | 1.1.10 | **Elétrica** | 29d | 2026-05-28 | 2026-07-07 |  | 1d |
| 280 | 1.1.10.1 | **CP-F0009-0306-MB-E-00001** | 27d | 2026-05-05 | 2026-06-10 |  | 20d |

| ID | WBS | Task | Duration | Start | Finish | Predecessors | Total float |
| --- | --- | --- | --- | --- | --- | --- | --- |
| 281 |  | Emissão inicial | 7d | 2026-05-05 | 2026-05-13 | 20 | 36d |
| 282 |  | Análise Tecnored | 1d | 2026-06-05 | 2026-06-05 | 281, 7 | 20d |
| 283 |  | Atendimento de comentários | 2d | 2026-06-08 | 2026-06-09 | 282 | 20d |
| 284 |  | Aprovação | 1d | 2026-06-10 | 2026-06-10 | 283 | 20d |
| 285 | 1.1.10.2 | **ML-F0009-0306-MB-E-00001** | 9d | 2026-06-12 | 2026-06-24 |  | 1d |
| 286 |  | Emissão inicial | 5d | 2026-06-12 | 2026-06-18 | 341FS-10d | 1d |
| 287 |  | Análise Tecnored | 1d | 2026-06-19 | 2026-06-19 | 286 | 10d |
| 288 |  | Atendimento de comentários | 2d | 2026-06-22 | 2026-06-23 | 287 | 10d |
| 289 |  | Aprovação | 1d | 2026-06-24 | 2026-06-24 | 288 | 10d |
| 290 | 1.1.10.3 | **RL-F0009-0306-MB-E-00001** | 7d | 2026-06-02 | 2026-06-10 |  | 1d |
| 291 |  | Emissão inicial | 3d | 2026-06-02 | 2026-06-04 | 301 | 1d |
| 292 |  | Análise Tecnored | 1d | 2026-06-05 | 2026-06-05 | 291 | 20d |
| 293 |  | Atendimento de comentários | 2d | 2026-06-08 | 2026-06-09 | 292 | 20d |
| 294 |  | Aprovação | 1d | 2026-06-10 | 2026-06-10 | 293 | 20d |
| 295 | 1.1.10.4 | **LE-F0009-0306-MB-E-00001** | 7d | 2026-06-24 | 2026-07-02 |  | 4d |
| 296 |  | Emissão inicial | 3d | 2026-06-24 | 2026-06-26 | 321, 326 | 4d |
| 297 |  | Análise Tecnored | 1d | 2026-06-29 | 2026-06-29 | 296 | 4d |
| 298 |  | Atendimento de comentários | 2d | 2026-06-30 | 2026-07-01 | 297 | 4d |
| 299 |  | Aprovação | 1d | 2026-07-02 | 2026-07-02 | 298 | 4d |
| 300 | 1.1.10.5 | **LR-F0009-0306-MB-E-00001** | 7d | 2026-05-28 | 2026-06-05 |  | 1d |
| 301 |  | Emissão inicial | 3d | 2026-05-28 | 2026-06-01 | 73 | 1d |
| 302 |  | Análise Tecnored | 1d | 2026-06-02 | 2026-06-02 | 301 | 23d |
| 303 |  | Atendimento de comentários | 2d | 2026-06-03 | 2026-06-04 | 302 | 23d |
| 304 |  | Aprovação | 1d | 2026-06-05 | 2026-06-05 | 303 | 23d |
| 305 | 1.1.10.6 | **LM-F0009-0306-MB-E-00001** | 5d | 2026-06-26 | 2026-07-02 |  | 1d |
| 306 |  | Emissão inicial | 1d | 2026-06-26 | 2026-06-26 | 332 | 1d |
| 307 |  | Análise Tecnored | 1d | 2026-06-29 | 2026-06-29 | 306 | 4d |
| 308 |  | Atendimento de comentários | 2d | 2026-06-30 | 2026-07-01 | 307 | 4d |
| 309 |  | Aprovação | 1d | 2026-07-02 | 2026-07-02 | 308 | 4d |
| 310 | 1.1.10.7 | **PQ-F0009-0306-MB-E-00001** | 7d | 2026-06-29 | 2026-07-07 |  | 1d |
| 311 |  | Emissão inicial | 3d | 2026-06-29 | 2026-07-01 | 306 | 1d |
| 312 |  | Análise Tecnored | 1d | 2026-07-02 | 2026-07-02 | 311 | 1d |
| 313 |  | Atendimento de comentários | 2d | 2026-07-03 | 2026-07-06 | 312 | 1d |
| 314 |  | Aprovação | 1d | 2026-07-07 | 2026-07-07 | 313 | 1d |
| 315 | 1.1.10.8 | **MD-F0009-0306-MB-E-00001** | 6d | 2026-06-29 | 2026-07-06 |  | 2d |
| 316 |  | Emissão inicial | 2d | 2026-06-29 | 2026-06-30 | 306 | 2d |
| 317 |  | Análise Tecnored | 1d | 2026-07-01 | 2026-07-01 | 316 | 2d |
| 318 |  | Atendimento de comentários | 2d | 2026-07-02 | 2026-07-03 | 317 | 2d |
| 319 |  | Aprovação | 1d | 2026-07-06 | 2026-07-06 | 318 | 2d |
| 320 | 1.1.10.9 | **MC-F0009-0306-MB-E-00001** | 8d | 2026-06-17 | 2026-06-26 |  | 5d |
| 321 |  | Emissão inicial | 4d | 2026-06-17 | 2026-06-22 | 386 | 5d |
| 322 |  | Análise Tecnored | 1d | 2026-06-23 | 2026-06-23 | 321 | 8d |
| 323 |  | Atendimento de comentários | 2d | 2026-06-24 | 2026-06-25 | 322 | 8d |
| 324 |  | Aprovação | 1d | 2026-06-26 | 2026-06-26 | 323 | 8d |
| 325 | 1.1.10.10 | **MC-F0009-0306-MB-E-00002** | 9d | 2026-06-17 | 2026-06-29 |  | 1d |
| 326 |  | Emissão inicial | 5d | 2026-06-17 | 2026-06-23 | 386 | 1d |
| 327 |  | Análise Tecnored | 1d | 2026-06-24 | 2026-06-24 | 326 | 7d |
| 328 |  | Atendimento de comentários | 2d | 2026-06-25 | 2026-06-26 | 327 | 7d |
| 329 |  | Aprovação | 1d | 2026-06-29 | 2026-06-29 | 328 | 7d |
| 330 | 1.1.10.11 | **AG-F0009-0306-MB-E-00001** | 8d | 2026-06-19 | 2026-06-30 |  | 1d |
| 331 |  | Emissão inicial | 4d | 2026-06-19 | 2026-06-24 | 286 | 1d |
| 332 |  | Análise Tecnored | 1d | 2026-06-25 | 2026-06-25 | 331 | 1d |
| 333 |  | Atendimento de comentários | 2d | 2026-06-26 | 2026-06-29 | 332 | 6d |
| 334 |  | Aprovação | 1d | 2026-06-30 | 2026-06-30 | 333 | 6d |
| 335 | 1.1.10.12 | **DU-F0009-0306-MB-E-00001** | 7d | 2026-06-05 | 2026-06-15 |  | 1d |
| 336 |  | Emissão inicial | 3d | 2026-06-05 | 2026-06-09 | 291 | 1d |
| 337 |  | Análise Tecnored | 1d | 2026-06-10 | 2026-06-10 | 336 | 17d |
| 338 |  | Atendimento de comentários | 2d | 2026-06-11 | 2026-06-12 | 337 | 17d |
| 339 |  | Aprovação | 1d | 2026-06-15 | 2026-06-15 | 338 | 17d |
| 340 | 1.1.10.13 | **DU-F0009-0306-MB-E-00002** | 6d | 2026-06-24 | 2026-07-01 |  | 1d |
| 341 |  | Emissão inicial | 2d | 2026-06-24 | 2026-06-25 | 326 | 1d |
| 342 |  | Análise Tecnored | 1d | 2026-06-26 | 2026-06-26 | 341 | 5d |
| 343 |  | Atendimento de comentários | 2d | 2026-06-29 | 2026-06-30 | 342 | 5d |
| 344 |  | Aprovação | 1d | 2026-07-01 | 2026-07-01 | 343 | 5d |
| 345 | 1.1.10.14 | **DU-F0009-0306-MB-E-00003** | 9d | 2026-06-24 | 2026-07-06 |  | 2d |
| 346 |  | Emissão inicial | 5d | 2026-06-24 | 2026-06-30 | 326 | 2d |
| 347 |  | Análise Tecnored | 1d | 2026-07-01 | 2026-07-01 | 346 | 2d |
| 348 |  | Atendimento de comentários | 2d | 2026-07-02 | 2026-07-03 | 347 | 2d |
| 349 |  | Aprovação | 1d | 2026-07-06 | 2026-07-06 | 348 | 2d |
| 350 | 1.1.10.15 | **DU-F0009-0306-MB-E-00004** | 17d | 2026-06-05 | 2026-06-29 |  | 7d |

| ID | WBS | Task | Duration | Start | Finish | Predecessors | Total float |
| --- | --- | --- | --- | --- | --- | --- | --- |
| 351 |  | Emissão inicial | 5d | 2026-06-05 | 2026-06-11 | 291 | 19d |
| 352 |  | Análise Tecnored | 1d | 2026-06-24 | 2026-06-24 | 326 | 7d |
| 353 |  | Atendimento de comentários | 2d | 2026-06-25 | 2026-06-26 | 352 | 7d |
| 354 |  | Aprovação | 1d | 2026-06-29 | 2026-06-29 | 353 | 7d |
| 355 | 1.1.10.16 | **AG-F0009-0306-MB-E-00002** | 8d | 2026-06-19 | 2026-06-30 |  | 6d |
| 356 |  | Emissão inicial | 4d | 2026-06-19 | 2026-06-24 | 286 | 6d |
| 357 |  | Análise Tecnored | 1d | 2026-06-25 | 2026-06-25 | 356 | 6d |
| 358 |  | Atendimento de comentários | 2d | 2026-06-26 | 2026-06-29 | 357 | 6d |
| 359 |  | Aprovação | 1d | 2026-06-30 | 2026-06-30 | 358 | 6d |
| 360 | 1.1.10.17 | **AG-F0009-0306-MB-E-00003** | 8d | 2026-06-19 | 2026-06-30 |  | 6d |
| 361 |  | Emissão inicial | 4d | 2026-06-19 | 2026-06-24 | 286 | 6d |
| 362 |  | Análise Tecnored | 1d | 2026-06-25 | 2026-06-25 | 361 | 6d |
| 363 |  | Atendimento de comentários | 2d | 2026-06-26 | 2026-06-29 | 362 | 6d |
| 364 |  | Aprovação | 1d | 2026-06-30 | 2026-06-30 | 363 | 6d |
| 365 | 1.1.10.18 | **FD-F0009-0306-MB-E-00001** | 9d | 2026-06-10 | 2026-06-22 |  | 12d |
| 366 |  | Emissão inicial | 5d | 2026-06-10 | 2026-06-16 | 336 | 12d |
| 367 |  | Análise Tecnored | 1d | 2026-06-17 | 2026-06-17 | 366 | 12d |
| 368 |  | Atendimento de comentários | 2d | 2026-06-18 | 2026-06-19 | 367 | 12d |
| 369 |  | Aprovação | 1d | 2026-06-22 | 2026-06-22 | 368 | 12d |
| 370 | 1.1.10.19 | **FD-F0009-0306-MB-E-00002** | 9d | 2026-06-10 | 2026-06-22 |  | 12d |
| 371 |  | Emissão inicial | 5d | 2026-06-10 | 2026-06-16 | 336 | 12d |
| 372 |  | Análise Tecnored | 1d | 2026-06-17 | 2026-06-17 | 371 | 12d |
| 373 |  | Atendimento de comentários | 2d | 2026-06-18 | 2026-06-19 | 372 | 12d |
| 374 |  | Aprovação | 1d | 2026-06-22 | 2026-06-22 | 373 | 12d |
| 375 | 1.1.10.20 | **FD-F0009-0306-MB-E-00003** | 9d | 2026-06-10 | 2026-06-22 |  | 12d |
| 376 |  | Emissão inicial | 5d | 2026-06-10 | 2026-06-16 | 336 | 12d |
| 377 |  | Análise Tecnored | 1d | 2026-06-17 | 2026-06-17 | 376 | 12d |
| 378 |  | Atendimento de comentários | 2d | 2026-06-18 | 2026-06-19 | 377 | 12d |
| 379 |  | Aprovação | 1d | 2026-06-22 | 2026-06-22 | 378 | 12d |
| 380 | 1.1.10.21 | **FD-F0009-0306-MB-E-00004** | 9d | 2026-06-10 | 2026-06-22 |  | 12d |
| 381 |  | Emissão inicial | 5d | 2026-06-10 | 2026-06-16 | 336 | 12d |
| 382 |  | Análise Tecnored | 1d | 2026-06-17 | 2026-06-17 | 381 | 12d |
| 383 |  | Atendimento de comentários | 2d | 2026-06-18 | 2026-06-19 | 382 | 12d |
| 384 |  | Aprovação | 1d | 2026-06-22 | 2026-06-22 | 383 | 12d |
| 385 | 1.1.10.22 | **FD-F0009-0306-MB-E-00005** | 9d | 2026-06-10 | 2026-06-22 |  | 1d |
| 386 |  | Emissão inicial | 5d | 2026-06-10 | 2026-06-16 | 336 | 1d |
| 387 |  | Análise Tecnored | 1d | 2026-06-17 | 2026-06-17 | 386 | 12d |
| 388 |  | Atendimento de comentários | 2d | 2026-06-18 | 2026-06-19 | 387 | 12d |
| 389 |  | Aprovação | 1d | 2026-06-22 | 2026-06-22 | 388 | 12d |
| 390 | 1.1.11 | **Automação e instrumentação** | 27d | 2026-06-02 | 2026-07-08 |  | 0d |
| 391 | 1.1.11.1 | **CP-F0009-0306-MB-J-00001** | 27d | 2026-05-05 | 2026-06-10 |  | 20d |
| 392 |  | Emissão inicial | 7d | 2026-05-05 | 2026-05-13 | 20 | 36d |
| 393 |  | Análise Tecnored | 1d | 2026-06-05 | 2026-06-05 | 392, 8 | 20d |
| 394 |  | Atendimento de comentários | 2d | 2026-06-08 | 2026-06-09 | 393 | 20d |
| 395 |  | Aprovação | 1d | 2026-06-10 | 2026-06-10 | 394 | 20d |
| 396 | 1.1.11.2 | **LI-F0009-0306-MB-J-00001** | 7d | 2026-06-05 | 2026-06-15 |  | 0d |
| 397 |  | Emissão inicial | 3d | 2026-06-05 | 2026-06-09 | 427 | 0d |
| 398 |  | Análise Tecnored | 1d | 2026-06-10 | 2026-06-10 | 397 | 17d |
| 399 |  | Atendimento de comentários | 2d | 2026-06-11 | 2026-06-12 | 398 | 17d |
| 400 |  | Aprovação | 1d | 2026-06-15 | 2026-06-15 | 399 | 17d |
| 401 | 1.1.11.3 | **LE-F0009-0306-MB-J-00001** | 6d | 2026-06-26 | 2026-07-03 |  | 3d |
| 402 |  | Emissão inicial | 2d | 2026-06-26 | 2026-06-29 | 477 | 3d |
| 403 |  | Análise Tecnored | 1d | 2026-06-30 | 2026-06-30 | 402 | 3d |
| 404 |  | Atendimento de comentários | 2d | 2026-07-01 | 2026-07-02 | 403 | 3d |
| 405 |  | Aprovação | 1d | 2026-07-03 | 2026-07-03 | 404 | 3d |
| 406 | 1.1.11.4 | **LZ-F0009-0306-MB-J-00001** | 6d | 2026-06-22 | 2026-06-29 |  | 0d |
| 407 |  | Emissão inicial | 2d | 2026-06-22 | 2026-06-23 | 457FS-5d | 0d |
| 408 |  | Análise Tecnored | 1d | 2026-06-24 | 2026-06-24 | 407 | 7d |
| 409 |  | Atendimento de comentários | 2d | 2026-06-25 | 2026-06-26 | 408 | 7d |
| 410 |  | Aprovação | 1d | 2026-06-29 | 2026-06-29 | 409 | 7d |
| 411 | 1.1.11.5 | **LE-F0009-0306-MB-J-00002** | 7d | 2026-06-22 | 2026-06-30 |  | 6d |
| 412 |  | Emissão inicial | 3d | 2026-06-22 | 2026-06-24 | 477FS-4d | 6d |
| 413 |  | Análise Tecnored | 1d | 2026-06-25 | 2026-06-25 | 412 | 6d |
| 414 |  | Atendimento de comentários | 2d | 2026-06-26 | 2026-06-29 | 413 | 6d |
| 415 |  | Aprovação | 1d | 2026-06-30 | 2026-06-30 | 414 | 6d |
| 416 | 1.1.11.6 | **PQ-F0009-0306-MB-J-00001** | 5d | 2026-06-23 | 2026-06-29 |  | 7d |
| 417 |  | Emissão inicial | 1d | 2026-06-23 | 2026-06-23 | 472FS-5d | 7d |
| 418 |  | Análise Tecnored | 1d | 2026-06-24 | 2026-06-24 | 417 | 7d |
| 419 |  | Atendimento de comentários | 2d | 2026-06-25 | 2026-06-26 | 418 | 7d |
| 420 |  | Aprovação | 1d | 2026-06-29 | 2026-06-29 | 419 | 7d |

| ID | WBS | Task | Duration | Start | Finish | Predecessors | Total float |
| --- | --- | --- | --- | --- | --- | --- | --- |
| 421 | 1.1.11.7 | **FG-F0009-0306-MB-J-00001** | 9d | 2026-06-02 | 2026-06-12 |  | 18d |
| 422 |  | Emissão inicial | 5d | 2026-06-02 | 2026-06-08 | 57FS-4d | 18d |
| 423 |  | Análise Tecnored | 1d | 2026-06-09 | 2026-06-09 | 422 | 18d |
| 424 |  | Atendimento de comentários | 2d | 2026-06-10 | 2026-06-11 | 423 | 18d |
| 425 |  | Aprovação | 1d | 2026-06-12 | 2026-06-12 | 424 | 18d |
| 426 | 1.1.11.8 | **FG-F0009-0306-MB-J-00002** | 7d | 2026-06-02 | 2026-06-10 |  | 0d |
| 427 |  | Emissão inicial | 3d | 2026-06-02 | 2026-06-04 | 57FS-4d | 0d |
| 428 |  | Análise Tecnored | 1d | 2026-06-05 | 2026-06-05 | 427 | 20d |
| 429 |  | Atendimento de comentários | 2d | 2026-06-08 | 2026-06-09 | 428 | 20d |
| 430 |  | Aprovação | 1d | 2026-06-10 | 2026-06-10 | 429 | 20d |
| 431 | 1.1.11.9 | **FG-F0009-0306-MB-J-00003** | 9d | 2026-06-02 | 2026-06-12 |  | 18d |
| 432 |  | Emissão inicial | 5d | 2026-06-02 | 2026-06-08 | 57FS-4d | 18d |
| 433 |  | Análise Tecnored | 1d | 2026-06-09 | 2026-06-09 | 432 | 18d |
| 434 |  | Atendimento de comentários | 2d | 2026-06-10 | 2026-06-11 | 433 | 18d |
| 435 |  | Aprovação | 1d | 2026-06-12 | 2026-06-12 | 434 | 18d |
| 436 | 1.1.11.10 | **AG-F0009-0306-MB-J-00001** | 14d | 2026-06-10 | 2026-06-29 |  | 7d |
| 437 |  | Emissão inicial | 10d | 2026-06-10 | 2026-06-23 | 397 | 7d |
| 438 |  | Análise Tecnored | 1d | 2026-06-24 | 2026-06-24 | 437 | 7d |
| 439 |  | Atendimento de comentários | 2d | 2026-06-25 | 2026-06-26 | 438 | 7d |
| 440 |  | Aprovação | 1d | 2026-06-29 | 2026-06-29 | 439 | 7d |
| 441 | 1.1.11.11 | **AG-F0009-0306-MB-J-00002** | 14d | 2026-06-10 | 2026-06-29 |  | 7d |
| 442 |  | Emissão inicial | 10d | 2026-06-10 | 2026-06-23 | 397 | 7d |
| 443 |  | Análise Tecnored | 1d | 2026-06-24 | 2026-06-24 | 442 | 7d |
| 444 |  | Atendimento de comentários | 2d | 2026-06-25 | 2026-06-26 | 443 | 7d |
| 445 |  | Aprovação | 1d | 2026-06-29 | 2026-06-29 | 444 | 7d |
| 446 | 1.1.11.12 | **AG-F0009-0306-MB-J-00003** | 14d | 2026-06-10 | 2026-06-29 |  | 0d |
| 447 |  | Emissão inicial | 10d | 2026-06-10 | 2026-06-23 | 397 | 0d |
| 448 |  | Análise Tecnored | 1d | 2026-06-24 | 2026-06-24 | 447 | 7d |
| 449 |  | Atendimento de comentários | 2d | 2026-06-25 | 2026-06-26 | 448 | 7d |
| 450 |  | Aprovação | 1d | 2026-06-29 | 2026-06-29 | 449 | 7d |
| 451 | 1.1.11.13 | **AG-F0009-0306-MB-J-00004** | 14d | 2026-06-10 | 2026-06-29 |  | 7d |
| 452 |  | Emissão inicial | 10d | 2026-06-10 | 2026-06-23 | 397 | 7d |
| 453 |  | Análise Tecnored | 1d | 2026-06-24 | 2026-06-24 | 452 | 7d |
| 454 |  | Atendimento de comentários | 2d | 2026-06-25 | 2026-06-26 | 453 | 7d |
| 455 |  | Aprovação | 1d | 2026-06-29 | 2026-06-29 | 454 | 7d |
| 456 | 1.1.11.14 | **DI-F0009-0306-MB-J-00001** | 7d | 2026-06-24 | 2026-07-02 |  | 0d |
| 457 |  | Emissão inicial | 3d | 2026-06-24 | 2026-06-26 | 447 | 0d |
| 458 |  | Análise Tecnored | 1d | 2026-06-29 | 2026-06-29 | 457 | 4d |
| 459 |  | Atendimento de comentários | 2d | 2026-06-30 | 2026-07-01 | 458 | 4d |
| 460 |  | Aprovação | 1d | 2026-07-02 | 2026-07-02 | 459 | 4d |
| 461 | 1.1.11.15 | **LI-F0009-0306-MB-J-00002** | 7d | 2026-06-26 | 2026-07-06 |  | 2d |
| 462 |  | Emissão inicial | 3d | 2026-06-26 | 2026-06-30 | 477 | 2d |
| 463 |  | Análise Tecnored | 1d | 2026-07-01 | 2026-07-01 | 462 | 2d |
| 464 |  | Atendimento de comentários | 2d | 2026-07-02 | 2026-07-03 | 463 | 2d |
| 465 |  | Aprovação | 1d | 2026-07-06 | 2026-07-06 | 464 | 2d |
| 466 | 1.1.11.16 | **LI-F0009-0306-MB-J-00003** | 6d | 2026-06-26 | 2026-07-03 |  | 0d |
| 467 |  | Emissão inicial | 2d | 2026-06-26 | 2026-06-29 | 477 | 0d |
| 468 |  | Análise Tecnored | 1d | 2026-06-30 | 2026-06-30 | 467 | 3d |
| 469 |  | Atendimento de comentários | 2d | 2026-07-01 | 2026-07-02 | 468 | 3d |
| 470 |  | Aprovação | 1d | 2026-07-03 | 2026-07-03 | 469 | 3d |
| 471 | 1.1.11.17 | **LM-F0009-0306-MB-J-00001** | 6d | 2026-06-26 | 2026-07-03 |  | 3d |
| 472 |  | Emissão inicial | 2d | 2026-06-26 | 2026-06-29 | 562FS-5d | 3d |
| 473 |  | Análise Tecnored | 1d | 2026-06-30 | 2026-06-30 | 472 | 3d |
| 474 |  | Atendimento de comentários | 2d | 2026-07-01 | 2026-07-02 | 473 | 3d |
| 475 |  | Aprovação | 1d | 2026-07-03 | 2026-07-03 | 474 | 3d |
| 476 | 1.1.11.18 | **ET-F0009-0306-MB-J-00001** | 6d | 2026-06-24 | 2026-07-01 |  | 0d |
| 477 |  | Emissão inicial | 2d | 2026-06-24 | 2026-06-25 | 407 | 0d |
| 478 |  | Análise Tecnored | 1d | 2026-06-26 | 2026-06-26 | 477 | 5d |
| 479 |  | Atendimento de comentários | 2d | 2026-06-29 | 2026-06-30 | 478 | 5d |
| 480 |  | Aprovação | 1d | 2026-07-01 | 2026-07-01 | 479 | 5d |
| 481 | 1.1.11.19 | **FD-F0009-0306-MB-J-00001** | 11d | 2026-06-24 | 2026-07-08 |  | 0d |
| 482 |  | Emissão inicial | 7d | 2026-06-24 | 2026-07-02 | 407 | 0d |
| 483 |  | Análise Tecnored | 1d | 2026-07-03 | 2026-07-03 | 482 | 0d |
| 484 |  | Atendimento de comentários | 2d | 2026-07-06 | 2026-07-07 | 483 | 0d |
| 485 |  | Aprovação | 1d | 2026-07-08 | 2026-07-08 | 484 | 0d |
| 486 | 1.1.11.20 | **FD-F0009-0306-MB-J-00002** | 11d | 2026-06-24 | 2026-07-08 |  | 0d |
| 487 |  | Emissão inicial | 7d | 2026-06-24 | 2026-07-02 | 407 | 0d |
| 488 |  | Análise Tecnored | 1d | 2026-07-03 | 2026-07-03 | 487 | 0d |
| 489 |  | Atendimento de comentários | 2d | 2026-07-06 | 2026-07-07 | 488 | 0d |
| 490 |  | Aprovação | 1d | 2026-07-08 | 2026-07-08 | 489 | 0d |

| ID | WBS | Task | Duration | Start | Finish | Predecessors | Total float |
| --- | --- | --- | --- | --- | --- | --- | --- |
| 491 | 1.1.11.21 | **FD-F0009-0306-MB-J-00003** | 11d | 2026-06-24 | 2026-07-08 |  | 0d |
| 492 |  | Emissão inicial | 7d | 2026-06-24 | 2026-07-02 | 407 | 0d |
| 493 |  | Análise Tecnored | 1d | 2026-07-03 | 2026-07-03 | 492 | 0d |
| 494 |  | Atendimento de comentários | 2d | 2026-07-06 | 2026-07-07 | 493 | 0d |
| 495 |  | Aprovação | 1d | 2026-07-08 | 2026-07-08 | 494 | 0d |
| 496 | 1.1.11.22 | **FD-F0009-0306-MB-J-00004** | 11d | 2026-06-24 | 2026-07-08 |  | 0d |
| 497 |  | Emissão inicial | 7d | 2026-06-24 | 2026-07-02 | 407 | 0d |
| 498 |  | Análise Tecnored | 1d | 2026-07-03 | 2026-07-03 | 497 | 0d |
| 499 |  | Atendimento de comentários | 2d | 2026-07-06 | 2026-07-07 | 498 | 0d |
| 500 |  | Aprovação | 1d | 2026-07-08 | 2026-07-08 | 499 | 0d |
| 501 | 1.1.11.23 | **FD-F0009-0306-MB-J-00005** | 11d | 2026-06-24 | 2026-07-08 |  | 0d |
| 502 |  | Emissão inicial | 7d | 2026-06-24 | 2026-07-02 | 407 | 0d |
| 503 |  | Análise Tecnored | 1d | 2026-07-03 | 2026-07-03 | 502 | 0d |
| 504 |  | Atendimento de comentários | 2d | 2026-07-06 | 2026-07-07 | 503 | 0d |
| 505 |  | Aprovação | 1d | 2026-07-08 | 2026-07-08 | 504 | 0d |
| 506 | 1.1.11.24 | **FD-F0009-0306-MB-J-00006** | 11d | 2026-06-24 | 2026-07-08 |  | 0d |
| 507 |  | Emissão inicial | 7d | 2026-06-24 | 2026-07-02 | 407 | 0d |
| 508 |  | Análise Tecnored | 1d | 2026-07-03 | 2026-07-03 | 507 | 0d |
| 509 |  | Atendimento de comentários | 2d | 2026-07-06 | 2026-07-07 | 508 | 0d |
| 510 |  | Aprovação | 1d | 2026-07-08 | 2026-07-08 | 509 | 0d |
| 511 | 1.1.11.25 | **FD-F0009-0306-MB-J-00007** | 11d | 2026-06-24 | 2026-07-08 |  | 0d |
| 512 |  | Emissão inicial | 7d | 2026-06-24 | 2026-07-02 | 407 | 0d |
| 513 |  | Análise Tecnored | 1d | 2026-07-03 | 2026-07-03 | 512 | 0d |
| 514 |  | Atendimento de comentários | 2d | 2026-07-06 | 2026-07-07 | 513 | 0d |
| 515 |  | Aprovação | 1d | 2026-07-08 | 2026-07-08 | 514 | 0d |
| 516 | 1.1.11.26 | **FD-F0009-0306-MB-J-00008** | 11d | 2026-06-24 | 2026-07-08 |  | 0d |
| 517 |  | Emissão inicial | 7d | 2026-06-24 | 2026-07-02 | 407 | 0d |
| 518 |  | Análise Tecnored | 1d | 2026-07-03 | 2026-07-03 | 517 | 0d |
| 519 |  | Atendimento de comentários | 2d | 2026-07-06 | 2026-07-07 | 518 | 0d |
| 520 |  | Aprovação | 1d | 2026-07-08 | 2026-07-08 | 519 | 0d |
| 521 | 1.1.11.27 | **FD-F0009-0306-MB-J-00009** | 11d | 2026-06-24 | 2026-07-08 |  | 0d |
| 522 |  | Emissão inicial | 7d | 2026-06-24 | 2026-07-02 | 407 | 0d |
| 523 |  | Análise Tecnored | 1d | 2026-07-03 | 2026-07-03 | 522 | 0d |
| 524 |  | Atendimento de comentários | 2d | 2026-07-06 | 2026-07-07 | 523 | 0d |
| 525 |  | Aprovação | 1d | 2026-07-08 | 2026-07-08 | 524 | 0d |
| 526 | 1.1.11.28 | **FD-F0009-0306-MB-J-00010** | 11d | 2026-06-24 | 2026-07-08 |  | 0d |
| 527 |  | Emissão inicial | 7d | 2026-06-24 | 2026-07-02 | 407 | 0d |
| 528 |  | Análise Tecnored | 1d | 2026-07-03 | 2026-07-03 | 527 | 0d |
| 529 |  | Atendimento de comentários | 2d | 2026-07-06 | 2026-07-07 | 528 | 0d |
| 530 |  | Aprovação | 1d | 2026-07-08 | 2026-07-08 | 529 | 0d |
| 531 | 1.1.11.29 | **FD-F0009-0306-MB-J-00011** | 11d | 2026-06-24 | 2026-07-08 |  | 0d |
| 532 |  | Emissão inicial | 7d | 2026-06-24 | 2026-07-02 | 407 | 0d |
| 533 |  | Análise Tecnored | 1d | 2026-07-03 | 2026-07-03 | 532 | 0d |
| 534 |  | Atendimento de comentários | 2d | 2026-07-06 | 2026-07-07 | 533 | 0d |
| 535 |  | Aprovação | 1d | 2026-07-08 | 2026-07-08 | 534 | 0d |
| 536 | 1.1.11.30 | **FD-F0009-0306-MB-J-00012** | 11d | 2026-06-24 | 2026-07-08 |  | 0d |
| 537 |  | Emissão inicial | 7d | 2026-06-24 | 2026-07-02 | 407 | 0d |
| 538 |  | Análise Tecnored | 1d | 2026-07-03 | 2026-07-03 | 537 | 0d |
| 539 |  | Atendimento de comentários | 2d | 2026-07-06 | 2026-07-07 | 538 | 0d |
| 540 |  | Aprovação | 1d | 2026-07-08 | 2026-07-08 | 539 | 0d |
| 541 | 1.1.11.31 | **FD-F0009-0306-MB-J-00013** | 11d | 2026-06-24 | 2026-07-08 |  | 0d |
| 542 |  | Emissão inicial | 7d | 2026-06-24 | 2026-07-02 | 407 | 0d |
| 543 |  | Análise Tecnored | 1d | 2026-07-03 | 2026-07-03 | 542 | 0d |
| 544 |  | Atendimento de comentários | 2d | 2026-07-06 | 2026-07-07 | 543 | 0d |
| 545 |  | Aprovação | 1d | 2026-07-08 | 2026-07-08 | 544 | 0d |
| 546 | 1.1.11.32 | **FD-F0009-0306-MB-J-00014** | 11d | 2026-06-24 | 2026-07-08 |  | 0d |
| 547 |  | Emissão inicial | 7d | 2026-06-24 | 2026-07-02 | 407 | 0d |
| 548 |  | Análise Tecnored | 1d | 2026-07-03 | 2026-07-03 | 547 | 0d |
| 549 |  | Atendimento de comentários | 2d | 2026-07-06 | 2026-07-07 | 548 | 0d |
| 550 |  | Aprovação | 1d | 2026-07-08 | 2026-07-08 | 549 | 0d |
| 551 | 1.1.11.33 | **FD-F0009-0306-MB-J-00015** | 11d | 2026-06-24 | 2026-07-08 |  | 0d |
| 552 |  | Emissão inicial | 7d | 2026-06-24 | 2026-07-02 | 407 | 0d |
| 553 |  | Análise Tecnored | 1d | 2026-07-03 | 2026-07-03 | 552 | 0d |
| 554 |  | Atendimento de comentários | 2d | 2026-07-06 | 2026-07-07 | 553 | 0d |
| 555 |  | Aprovação | 1d | 2026-07-08 | 2026-07-08 | 554 | 0d |
| 556 | 1.1.11.34 | **FD-F0009-0306-MB-J-00016** | 11d | 2026-06-24 | 2026-07-08 |  | 0d |
| 557 |  | Emissão inicial | 7d | 2026-06-24 | 2026-07-02 | 407 | 0d |
| 558 |  | Análise Tecnored | 1d | 2026-07-03 | 2026-07-03 | 557 | 0d |
| 559 |  | Atendimento de comentários | 2d | 2026-07-06 | 2026-07-07 | 558 | 0d |
| 560 |  | Aprovação | 1d | 2026-07-08 | 2026-07-08 | 559 | 0d |

| ID | WBS | Task | Duration | Start | Finish | Predecessors | Total float |
| --- | --- | --- | --- | --- | --- | --- | --- |
| 561 | 1.1.11.35 | **DT-F0009-0306-MB-J-00001** | 7d | 2026-06-30 | 2026-07-08 |  | 0d |
| 562 |  | Emissão inicial | 3d | 2026-06-30 | 2026-07-02 | 467 | 0d |
| 563 |  | Análise Tecnored | 1d | 2026-07-03 | 2026-07-03 | 562 | 0d |
| 564 |  | Atendimento de comentários | 2d | 2026-07-06 | 2026-07-07 | 563 | 0d |
| 565 |  | Aprovação | 1d | 2026-07-08 | 2026-07-08 | 564 | 0d |
| 566 | 1.1.12 | **Civil** | 13d | 2026-06-16 | 2026-07-02 |  | 4d |
| 567 | 1.1.12.1 | **MC-F0009-0306-MB-C-00001** | 12d | 2026-06-16 | 2026-07-01 |  | 4d |
| 568 |  | Emissão inicial | 8d | 2026-06-16 | 2026-06-25 | 245 | 4d |
| 569 |  | Análise Tecnored | 1d | 2026-06-26 | 2026-06-26 | 568 | 5d |
| 570 |  | Atendimento de comentários | 2d | 2026-06-29 | 2026-06-30 | 569 | 5d |
| 571 |  | Aprovação | 1d | 2026-07-01 | 2026-07-01 | 570 | 5d |
| 572 | 1.1.12.2 | **PQ-F0009-0306-MB-C-00001** | 5d | 2026-06-26 | 2026-07-02 |  | 4d |
| 573 |  | Emissão inicial | 1d | 2026-06-26 | 2026-06-26 | 568 | 4d |
| 574 |  | Análise Tecnored | 1d | 2026-06-29 | 2026-06-29 | 573 | 4d |
| 575 |  | Atendimento de comentários | 2d | 2026-06-30 | 2026-07-01 | 574 | 4d |
| 576 |  | Aprovação | 1d | 2026-07-02 | 2026-07-02 | 575 | 4d |

## Version 2 (data date 2026-07-01, saved 2026-07-01, file CR-F0009-0306-MB-F-00001 01072026_C2.mpp)

Note of the change: Primeira versao dashboard

Last finish 2026-07-08 → 2026-07-16 (+8d). Complete tasks 16 → 99.

Added:

| ID | Task | Duration | Start | Finish | Predecessors | Constraint |
| --- | --- | --- | --- | --- | --- | --- |
| 117 | **MC-F0009-0306-MB-M-00002** | 8d | 2026-06-12 A | 2026-06-23 |  |  |
| 118 | Emissão inicial | 2d | 2026-06-12 A | 2026-06-15 A | 124 | finish no earlier than 2026-06-16 |
| 119 | Análise Tecnored | 1d | 2026-06-17 A | 2026-06-17 A | 118 | finish no earlier than 2026-06-17 |
| 120 | Atendimento de comentários | 2d | 2026-06-18 A | 2026-06-19 A | 119 | finish no earlier than 2026-06-19 |
| 121 | Aprovação | 1d | 2026-06-23 | 2026-06-23 | 120 | finish no earlier than 2026-06-23 |
| 133 | Emissão inicial | 3d | 2026-06-17 A | 2026-06-19 A | 113, 118 | finish no earlier than 2026-06-19 |
| 134 | Análise Tecnored | 1d | 2026-06-22 A | 2026-06-22 | 133 | finish no earlier than 2026-06-22 |
| 135 | Atendimento de comentários | 2d | 2026-06-23 | 2026-06-24 | 134 | finish no earlier than 2026-06-24 |
| 136 | Aprovação | 1d | 2026-06-25 | 2026-06-25 | 135 | finish no earlier than 2026-06-25 |
| 137 | **FD-F0009-0306-MB-M-00003** | 7d | 2026-06-17 A | 2026-06-25 |  |  |
| 416 | **LL-F0009-0306-MB-J-00001** | 8d | 2026-06-26 A | 2026-07-07 |  |  |
| 422 | Emissão inicial | 4d | 2026-06-29 | 2026-07-02 | 472FS-5d |  |
| 423 | Análise Tecnored | 1d | 2026-07-03 | 2026-07-03 | 422 |  |
| 424 | Atendimento de comentários | 2d | 2026-07-06 | 2026-07-07 | 423 |  |
| 425 | Aprovação | 1d | 2026-07-08 | 2026-07-08 | 424 |  |
| 572 | Emissão inicial | 7d | 2026-06-18 A | 2026-06-26 A | 497SS |  |
| 573 | Análise Tecnored | 1d | 2026-06-29 | 2026-06-29 | 572 | finish no earlier than 2026-06-26 |
| 574 | Atendimento de comentários | 1d | 2026-06-30 | 2026-06-30 | 573 | start no earlier than 2026-06-29 |
| 575 | Aprovação | 1d | 2026-07-01 | 2026-07-01 | 574 | finish no earlier than 2026-06-30 |
| 576 | **FD-F0009-0306-MB-J-00017** | 10d | 2026-06-19 A | 2026-07-02 |  |  |
| 577 | Emissão inicial | 7d | 2026-06-19 A | 2026-06-29 A | 497SS |  |
| 578 | Análise Tecnored | 1d | 2026-06-30 | 2026-06-30 | 577 | finish no earlier than 2026-06-26 |
| 579 | Atendimento de comentários | 1d | 2026-07-01 | 2026-07-01 | 578 | start no earlier than 2026-06-29 |
| 580 | Aprovação | 1d | 2026-07-02 | 2026-07-02 | 579 | finish no earlier than 2026-06-30 |
| 581 | **FD-F0009-0306-MB-J-00018** | 10d | 2026-06-19 A | 2026-07-02 |  |  |
| 582 | Emissão inicial | 7d | 2026-06-19 A | 2026-06-29 A | 497SS |  |
| 583 | Análise Tecnored | 1d | 2026-06-30 | 2026-06-30 | 582 | finish no earlier than 2026-06-26 |
| 584 | Atendimento de comentários | 1d | 2026-07-01 | 2026-07-01 | 583 | start no earlier than 2026-06-29 |
| 585 | Aprovação | 1d | 2026-07-02 | 2026-07-02 | 584 | finish no earlier than 2026-06-30 |
| 586 | **FD-F0009-0306-MB-J-00019** | 10d | 2026-06-19 A | 2026-07-02 |  |  |
| 587 | Emissão inicial | 7d | 2026-06-19 A | 2026-06-29 A | 497SS |  |
| 588 | Análise Tecnored | 1d | 2026-06-30 | 2026-06-30 | 587 | finish no earlier than 2026-06-26 |
| 589 | Atendimento de comentários | 1d | 2026-07-01 | 2026-07-01 | 588 | start no earlier than 2026-06-29 |
| 590 | Aprovação | 1d | 2026-07-02 | 2026-07-02 | 589 | finish no earlier than 2026-06-30 |
| 591 | **FD-F0009-0306-MB-J-00020** | 10d | 2026-06-19 A | 2026-07-02 |  |  |
| 592 | Emissão inicial | 7d | 2026-06-19 A | 2026-06-29 A | 497SS |  |
| 593 | Análise Tecnored | 1d | 2026-06-30 | 2026-06-30 | 592 | finish no earlier than 2026-06-26 |
| 594 | Atendimento de comentários | 1d | 2026-07-01 | 2026-07-01 | 593 | start no earlier than 2026-06-29 |
| 595 | Aprovação | 1d | 2026-07-02 | 2026-07-02 | 594 | finish no earlier than 2026-06-30 |
| 596 | **FD-F0009-0306-MB-J-00021** | 10d | 2026-06-19 A | 2026-07-02 |  |  |
| 597 | Emissão inicial | 7d | 2026-06-19 A | 2026-06-29 A | 497SS |  |
| 598 | Análise Tecnored | 1d | 2026-06-30 | 2026-06-30 | 597 | finish no earlier than 2026-06-26 |
| 599 | Atendimento de comentários | 1d | 2026-07-01 | 2026-07-01 | 598 | start no earlier than 2026-06-29 |
| 600 | Aprovação | 1d | 2026-07-02 | 2026-07-02 | 599 | finish no earlier than 2026-06-30 |
| 601 | **FD-F0009-0306-MB-J-00022** | 10d | 2026-06-19 A | 2026-07-02 |  |  |
| 602 | Emissão inicial | 7d | 2026-06-19 A | 2026-06-29 A | 497SS |  |
| 603 | Análise Tecnored | 1d | 2026-06-30 | 2026-06-30 | 602 | finish no earlier than 2026-06-26 |
| 604 | Atendimento de comentários | 1d | 2026-07-01 | 2026-07-01 | 603 | start no earlier than 2026-06-29 |
| 605 | Aprovação | 1d | 2026-07-02 | 2026-07-02 | 604 | finish no earlier than 2026-06-30 |
| 606 | **FD-F0009-0306-MB-J-00023** | 10d | 2026-06-19 A | 2026-07-02 |  |  |
| 611 | **LB-F0009-0306-MB-J-00001** | 8.2d | 2026-06-30 A | 2026-07-10 |  |  |
| 612 | Emissão inicial | 2d | 2026-06-30 A | 2026-07-06 | 472 | finish no earlier than 2026-07-01 |
| 613 | Análise Tecnored | 1d | 2026-07-06 | 2026-07-07 | 612 |  |
| 614 | Atendimento de comentários | 2d | 2026-07-07 | 2026-07-09 | 613 |  |
| 615 | Aprovação | 1d | 2026-07-09 | 2026-07-10 | 614 |  |
| 616 | **RE-F0009-0306-MB-J-00001** | 8d | 2026-06-16 A | 2026-06-25 |  |  |
| 617 | Emissão inicial | 4d | 2026-06-16 A | 2026-06-19 A |  | finish no earlier than 2026-06-19 |
| 618 | Análise Tecnored | 1d | 2026-06-22 A | 2026-06-22 A | 617 |  |
| 619 | Atendimento de comentários | 2d | 2026-06-23 A | 2026-06-24 | 618 |  |
| 620 | Aprovação | 1d | 2026-06-25 | 2026-06-25 | 619 |  |

Changed:

| ID | Task | Start | Finish | Duration | Complete | Total float | Predecessors | Other |
| --- | --- | --- | --- | --- | --- | --- | --- | --- |
| 1 | **F0009 - Programa Marabá** |  | 2026-07-08 → 2026-07-13 (+5d) | 53d → 54d | 3% → 55% | 0d → 3d |  | baseline start none → 2026-04-27; baseline finish none → 2026-07-08 |
| 2 | **Área 0306 - Sopradores** |  | 2026-07-08 → 2026-07-13 (+5d) | 53d → 54d | 3% → 55% | 0d → 3d |  | baseline start none → 2026-04-27; baseline finish none → 2026-07-08 |
| 3 | KOM - Início de projeto |  |  | 0d → 1d |  |  |  | constraint start no earlier than 2026-04-27 → none; baseline start none → 2026-04-27; baseline finish none → 2026-04-27 |
| 4 | **Marcos** |  | 2026-06-05 → 2026-06-30 (+25d) | 13d → 29d | 0% → 78% |  |  | baseline start none → 2026-05-19; baseline finish none → 2026-06-05 |
| 5 | Critério de Projeto de Processo | 2026-06-05 → 2026-06-30 A (+25d) | 2026-06-05 → 2026-06-30 (+25d) | 0d → 1d | 0% → 70% |  |  | baseline start none → 2026-06-05; baseline finish none → 2026-06-05 |
| 6 | Critério de Projeto de Mecânica |  |  | 0d → 1d |  |  |  | baseline start none → 2026-05-19; baseline finish none → 2026-05-19 |
| 7 | Critério de Projeto de Elétrica | 2026-06-05 → 2026-06-15 A (+10d) | 2026-06-05 → 2026-06-15 A (+10d) | 0d → 1d | 0% → 100% |  |  | baseline start none → 2026-06-05; baseline finish none → 2026-06-05 |
| 8 | Critério de Projeto de Automação | 2026-06-05 → 2026-06-09 A (+4d) | 2026-06-05 → 2026-06-09 A (+4d) | 0d → 1d | 0% → 100% |  |  | was named Critério de Projeto de automação; baseline start none → 2026-06-05; baseline finish none → 2026-06-05 |
| 9 | Critério de Projeto de Tubulação |  |  | 0d → 1d |  |  |  | baseline start none → 2026-05-22; baseline finish none → 2026-05-22 |
| 10 | Critério de Projeto de Estrutura metálica | 2026-06-05 → 2026-06-30 (+25d) | 2026-06-05 → 2026-06-30 (+25d) | 0d → 1d |  |  |  | baseline start none → 2026-06-05; baseline finish none → 2026-06-05 |
| 11 | **Pendências** |  |  | 0d → 1d |  |  |  | baseline start none → 2026-04-29; baseline finish none → 2026-04-29 |
| 12 | Recebimento de dados de entrada |  |  | 0d → 1d |  |  |  | constraint none → finish no earlier than 2026-04-29; baseline start none → 2026-04-29; baseline finish none → 2026-04-29 |
| 13 | **Planejamento** |  | 2026-06-01 → 2026-06-02 A (+1d) | 25.4d → 27d | 86% → 100% | 27.6d → none |  | baseline start none → 2026-04-27; baseline finish none → 2026-06-01 |
| 14 | **LD-F0009-0306-MB-F-00001** |  | 2026-06-01 → 2026-06-02 A (+1d) | 25.4d → 27d | 86% → 100% | 27.6d → none |  | baseline start none → 2026-04-27; baseline finish none → 2026-06-01 |
| 15 | Emissão inicial |  |  |  |  |  |  | baseline start none → 2026-04-27; baseline finish none → 2026-04-29 |
| 16 | Análise Tecnored |  |  |  |  |  |  | baseline start none → 2026-04-30; baseline finish none → 2026-04-30 |
| 17 | Atendimento de comentários |  |  | 2d → 2.6d |  |  |  | constraint none → finish no earlier than 2026-05-12; baseline start none → 2026-05-01; baseline finish none → 2026-05-12 |
| 18 | Aprovação | 2026-05-29 → 2026-06-01 A (+3d) | 2026-06-01 → 2026-06-02 A (+1d) | 1d → 2d | 0% → 100% | 27.6d → none |  | constraint none → finish no earlier than 2026-06-01; baseline start none → 2026-05-29; baseline finish none → 2026-06-01 |
| 19 | **CR-F0009-0306-MB-F-00001** |  | 2026-05-29 → 2026-06-01 A (+3d) | 21.4d → 23d | 86% → 100% | 28.6d → none |  | baseline start none → 2026-04-30; baseline finish none → 2026-05-29 |
| 20 | Emissão inicial |  |  |  |  |  |  | baseline start none → 2026-04-30; baseline finish none → 2026-05-04 |
| 21 | Análise Tecnored |  |  |  |  |  |  | baseline start none → 2026-05-05; baseline finish none → 2026-05-05 |
| 22 | Atendimento de comentários |  |  | 2d → 2.6d |  |  |  | constraint none → finish no earlier than 2026-05-15; baseline start none → 2026-05-06; baseline finish none → 2026-05-15 |
| 23 | Aprovação | 2026-05-28 → 2026-05-29 A (+1d) | 2026-05-29 → 2026-06-01 A (+3d) | 1d → 2d | 0% → 100% | 28.6d → none |  | constraint none → finish no earlier than 2026-05-29; baseline start none → 2026-05-28; baseline finish none → 2026-05-29 |
| 24 | **Coordenação** |  | 2026-07-07 → 2026-07-03 (-4d) | 52d → 48d | 11% → 41% | 1d → 9d |  | baseline start none → 2026-04-27; baseline finish none → 2026-07-07 |
| 25 | **RM-F0009-0306-MB-G-00001** | 2026-06-01 → 2026-06-24 A (+23d) | 2026-06-09 → 2026-07-01 (+22d) | 7d → 6d | 0% → 38% | 1d → 11d |  | baseline start none → 2026-06-01; baseline finish none → 2026-06-09 |
| 26 | Emissão inicial | 2026-06-01 → 2026-06-24 A (+23d) | 2026-06-03 → 2026-06-26 (+23d) |  | 0% → 75% | 1d → 0.75d |  | constraint none → finish no earlier than 2026-06-15; baseline start none → 2026-06-01; baseline finish none → 2026-06-03 |
| 27 | Análise Tecnored | 2026-06-04 → 2026-06-29 (+25d) | 2026-06-04 → 2026-06-29 (+25d) |  |  | 21d → 0.75d |  | baseline start none → 2026-06-04; baseline finish none → 2026-06-04 |
| 28 | Atendimento de comentários | 2026-06-05 → 2026-06-30 (+25d) | 2026-06-08 → 2026-06-30 (+22d) | 2d → 1d |  | 21d → 11d |  | baseline start none → 2026-06-05; baseline finish none → 2026-06-08 |
| 29 | Aprovação | 2026-06-09 → 2026-07-01 (+22d) | 2026-06-09 → 2026-07-01 (+22d) |  |  | 21d → 11d |  | baseline start none → 2026-06-09; baseline finish none → 2026-06-09 |
| 30 | **RM-F0009-0306-MB-G-00002** | 2026-06-18 → 2026-07-06 (+18d) | 2026-06-26 → 2026-07-10 (+14d) | 7d → 5d |  | 1d → 4d |  | baseline start none → 2026-06-18; baseline finish none → 2026-06-26 |
| 31 | Emissão inicial | 2026-06-18 → 2026-07-06 (+18d) | 2026-06-22 → 2026-07-07 (+15d) | 3d → 2d |  | 1d → 4d | 26FS+10d → 26FS+5d | baseline start none → 2026-06-18; baseline finish none → 2026-06-22 |
| 32 | Análise Tecnored | 2026-06-23 → 2026-07-08 (+15d) | 2026-06-23 → 2026-07-08 (+15d) |  |  | 8d → 4d |  | baseline start none → 2026-06-23; baseline finish none → 2026-06-23 |
| 33 | Atendimento de comentários | 2026-06-24 → 2026-07-09 (+15d) | 2026-06-25 → 2026-07-09 (+14d) | 2d → 1d |  | 8d → 4d |  | baseline start none → 2026-06-24; baseline finish none → 2026-06-25 |
| 34 | Aprovação | 2026-06-26 → 2026-07-10 (+14d) | 2026-06-26 → 2026-07-10 (+14d) |  |  | 8d → 4d |  | baseline start none → 2026-06-26; baseline finish none → 2026-06-26 |
| 35 | **RL-F0009-0306-MB-G-00001** | 2026-06-30 A | 2026-07-07 → 2026-07-03 (-4d) | 6d → 4d | 0% → 19% | 1d → 9d |  | baseline start none → 2026-06-30; baseline finish none → 2026-07-07 |
| 36 | Emissão inicial | 2026-06-30 A | 2026-07-01 → 2026-06-30 (-1d) | 2d → 1d | 0% → 75% | 1d → 9d | 31FS+5d → 27 | constraint none → start no earlier than 2026-06-25; baseline start none → 2026-06-30; baseline finish none → 2026-07-01 |
| 37 | Análise Tecnored | 2026-07-02 → 2026-07-01 (-1d) | 2026-07-02 → 2026-07-01 (-1d) |  |  | 1d → 9d |  | baseline start none → 2026-07-02; baseline finish none → 2026-07-02 |
| 38 | Atendimento de comentários | 2026-07-03 → 2026-07-02 (-1d) | 2026-07-06 → 2026-07-02 (-4d) | 2d → 1d |  | 1d → 9d |  | baseline start none → 2026-07-03; baseline finish none → 2026-07-06 |
| 39 | Aprovação | 2026-07-07 → 2026-07-03 (-4d) | 2026-07-07 → 2026-07-03 (-4d) |  |  | 1d → 9d |  | baseline start none → 2026-07-07; baseline finish none → 2026-07-07 |
| 40 | **LP-F0009-0306-MB-G-00001** |  |  | 47d → 45d | 43% → 57% | 6d → 12d |  | baseline start none → 2026-04-27; baseline finish none → 2026-06-30 |
| 41 | Emissão inicial |  |  |  |  |  |  | baseline start none → 2026-04-27; baseline finish none → 2026-04-29 |
| 42 | Análise Tecnored | 2026-06-11 → 2026-06-18 A (+7d) | 2026-06-11 → 2026-06-18 A (+7d) |  | 0% → 100% | 6d → none | 41FS+30d → 41FS+25d | constraint none → start no earlier than 2026-06-18; baseline start none → 2026-06-11; baseline finish none → 2026-06-11 |
| 43 | Atendimento de comentários |  |  |  |  | 6d → 12d | 42FS+10d → 42FS+5d | baseline start none → 2026-06-26; baseline finish none → 2026-06-29 |
| 44 | Aprovação |  |  |  |  | 6d → 12d |  | baseline start none → 2026-06-30; baseline finish none → 2026-06-30 |
| 45 | **Processo** |  | 2026-06-11 A | 5d → 4d | 80% → 100% | 19d → none |  | baseline start none → 2026-06-05; baseline finish none → 2026-06-11 |
| 46 | **CP-F0009-0306-MB-P-00001** |  | 2026-06-10 → 2026-07-06 (+26d) | 27d → 43d |  | 20d → 8d |  |  |
| 48 | Análise Tecnored | 2026-06-05 → 2026-07-01 (+26d) | 2026-06-05 → 2026-07-01 (+26d) |  |  | 20d → 8d |  |  |
| 49 | Atendimento de comentários | 2026-06-08 → 2026-07-02 (+24d) | 2026-06-09 → 2026-07-03 (+24d) |  |  | 20d → 8d |  |  |
| 50 | Aprovação | 2026-06-10 → 2026-07-06 (+26d) | 2026-06-10 → 2026-07-06 (+26d) |  |  | 20d → 8d |  |  |
| 56 | **FG-F0009-0306-MB-P-00001** |  | 2026-06-11 A | 5d → 4d | 80% → 100% | 19d → none |  | baseline start none → 2026-06-05; baseline finish none → 2026-06-11 |
| 57 | Emissão inicial |  |  |  |  |  |  | baseline start none → 2026-06-05; baseline finish none → 2026-06-05 |
| 58 | Análise Tecnored |  |  |  |  |  |  | baseline start none → 2026-06-08; baseline finish none → 2026-06-08 |
| 59 | Atendimento de comentários |  |  |  |  |  |  | baseline start none → 2026-06-09; baseline finish none → 2026-06-10 |
| 60 | Aprovação | 2026-06-11 A | 2026-06-11 A |  | 0% → 100% | 19d → none |  | baseline start none → 2026-06-11; baseline finish none → 2026-06-11 |
| 61 | **Mecânica** |  | 2026-06-30 → 2026-07-09 (+9d) | 26d → 31d | 7% → 54% | 6d → 5d |  | baseline start none → 2026-05-26; baseline finish none → 2026-06-30 |
| 62 | **CP-F0009-0306-MB-M-00001** |  | 2026-05-22 → 2026-05-25 (+3d) | 14d → 15d |  | 0d → 36d |  |  |
| 64 | Análise Tecnored | 2026-05-19 → 2026-05-20 (+1d) | 2026-05-19 → 2026-05-20 (+1d) |  |  | 33d → 36d |  |  |
| 65 | Atendimento de comentários | 2026-05-20 → 2026-05-21 (+1d) | 2026-05-21 → 2026-05-22 (+1d) |  |  | 33d → 36d |  |  |
| 66 | Aprovação | 2026-05-22 → 2026-05-25 (+3d) | 2026-05-22 → 2026-05-25 (+3d) |  |  | 33d → 36d |  |  |
| 67 | **MD-F0009-0306-MB-M-00001** | 2026-06-02 → 2026-06-18 (+16d) | 2026-06-10 → 2026-06-26 (+16d) |  |  | -13d → 14d |  |  |
| 68 | Emissão inicial | 2026-06-02 → 2026-06-18 (+16d) | 2026-06-04 → 2026-06-22 (+18d) |  |  | -13d → 14d |  |  |
| 69 | Análise Tecnored | 2026-06-05 → 2026-06-23 (+18d) | 2026-06-05 → 2026-06-23 (+18d) |  |  | 20d → 14d |  |  |
| 70 | Atendimento de comentários | 2026-06-08 → 2026-06-24 (+16d) | 2026-06-09 → 2026-06-25 (+16d) |  |  | 20d → 14d |  |  |
| 71 | Aprovação | 2026-06-10 → 2026-06-26 (+16d) | 2026-06-10 → 2026-06-26 (+16d) |  |  | 20d → 14d |  |  |
| 72 | **LE-F0009-0306-MB-M-00001** | 2026-05-26 A → 2026-06-11 A (+16d) | 2026-06-02 → 2026-06-18 A (+16d) |  | 33% → 100% | 26d → none |  | baseline start none → 2026-05-26; baseline finish none → 2026-06-02 |
| 73 | Emissão inicial | 2026-05-26 A → 2026-06-11 A (+16d) | 2026-05-27 A → 2026-06-12 A (+16d) |  |  |  |  | baseline start none → 2026-05-26; baseline finish none → 2026-05-27 |
| 74 | Análise Tecnored | 2026-05-28 → 2026-06-15 A (+18d) | 2026-05-28 → 2026-06-15 A (+18d) |  | 0% → 100% | -10d → none |  | baseline start none → 2026-05-28; baseline finish none → 2026-05-28 |
| 75 | Atendimento de comentários | 2026-05-29 → 2026-06-16 A (+18d) | 2026-06-01 → 2026-06-17 A (+16d) |  | 0% → 100% | -10d → none |  | baseline start none → 2026-05-29; baseline finish none → 2026-06-01 |
| 76 | Aprovação | 2026-06-02 → 2026-06-18 A (+16d) | 2026-06-02 → 2026-06-18 A (+16d) |  | 0% → 100% | 26d → none |  | baseline start none → 2026-06-02; baseline finish none → 2026-06-02 |
| 77 | **PQ-F0009-0306-MB-M-00001** | 2026-06-02 → 2026-06-11 A (+9d) | 2026-06-10 → 2026-06-29 (+19d) | 7d → 13d | 0% → 71% | 20d → 13d |  | baseline start none → 2026-06-02; baseline finish none → 2026-06-10 |

| ID | Task | Start | Finish | Duration | Complete | Total float | Predecessors | Other |
| --- | --- | --- | --- | --- | --- | --- | --- | --- |
| 78 | Emissão inicial | 2026-06-02 → 2026-06-11 A (+9d) | 2026-06-04 → 2026-06-15 A (+11d) |  | 0% → 100% | 20d → none |  | constraint none → finish no earlier than 2026-06-12; baseline start none → 2026-06-02; baseline finish none → 2026-06-04 |
| 79 | Análise Tecnored | 2026-06-05 → 2026-06-24 A (+19d) | 2026-06-05 → 2026-06-24 A (+19d) |  | 0% → 100% | 20d → none |  | constraint none → start no earlier than 2026-06-24; baseline start none → 2026-06-05; baseline finish none → 2026-06-05 |
| 80 | Atendimento de comentários | 2026-06-08 → 2026-06-25 A (+17d) | 2026-06-09 → 2026-06-26 (+17d) |  | 0% → 50% | 20d → 13d |  | constraint none → start no earlier than 2026-06-25; baseline start none → 2026-06-08; baseline finish none → 2026-06-09 |
| 81 | Aprovação | 2026-06-10 → 2026-06-29 (+19d) | 2026-06-10 → 2026-06-29 (+19d) |  |  | 20d → 13d |  | constraint none → start no earlier than 2026-06-29; baseline start none → 2026-06-10; baseline finish none → 2026-06-10 |
| 82 | **AG-F0009-0306-MB-L-00001** | 2026-06-18 → 2026-07-01 (+13d) | 2026-06-30 → 2026-07-09 (+9d) | 9d → 7d |  | 6d → 5d |  | baseline start none → 2026-06-18; baseline finish none → 2026-06-30 |
| 83 | Emissão inicial | 2026-06-18 → 2026-07-01 (+13d) | 2026-06-24 → 2026-07-06 (+12d) | 5d → 4d |  | 6d → 5d |  | constraint none → finish no earlier than 2026-06-25; baseline start none → 2026-06-18; baseline finish none → 2026-06-24 |
| 84 | Análise Tecnored | 2026-06-25 → 2026-07-07 (+12d) | 2026-06-25 → 2026-07-07 (+12d) |  |  | 6d → 5d |  | constraint none → finish no earlier than 2026-06-26; baseline start none → 2026-06-25; baseline finish none → 2026-06-25 |
| 85 | Atendimento de comentários | 2026-06-26 → 2026-07-08 (+12d) | 2026-06-29 → 2026-07-08 (+9d) | 2d → 1d |  | 6d → 5d |  | constraint none → finish no earlier than 2026-06-29; baseline start none → 2026-06-26; baseline finish none → 2026-06-29 |
| 86 | Aprovação | 2026-06-30 → 2026-07-09 (+9d) | 2026-06-30 → 2026-07-09 (+9d) |  |  | 6d → 5d |  | constraint none → finish no earlier than 2026-06-30; baseline start none → 2026-06-30; baseline finish none → 2026-06-30 |
| 87 | **AG-F0009-0306-MB-L-00002** | 2026-06-18 → 2026-07-01 (+13d) | 2026-06-30 → 2026-07-09 (+9d) | 9d → 7d |  | 6d → 5d |  | baseline start none → 2026-06-18; baseline finish none → 2026-06-30 |
| 88 | Emissão inicial | 2026-06-18 → 2026-07-01 (+13d) | 2026-06-24 → 2026-07-06 (+12d) | 5d → 4d |  | 6d → 5d |  | constraint none → finish no earlier than 2026-06-25; baseline start none → 2026-06-18; baseline finish none → 2026-06-24 |
| 89 | Análise Tecnored | 2026-06-25 → 2026-07-07 (+12d) | 2026-06-25 → 2026-07-07 (+12d) |  |  | 6d → 5d |  | constraint none → finish no earlier than 2026-06-26; baseline start none → 2026-06-25; baseline finish none → 2026-06-25 |
| 90 | Atendimento de comentários | 2026-06-26 → 2026-07-08 (+12d) | 2026-06-29 → 2026-07-08 (+9d) | 2d → 1d |  | 6d → 5d |  | constraint none → finish no earlier than 2026-06-29; baseline start none → 2026-06-26; baseline finish none → 2026-06-29 |
| 91 | Aprovação | 2026-06-30 → 2026-07-09 (+9d) | 2026-06-30 → 2026-07-09 (+9d) |  |  | 6d → 5d |  | constraint none → finish no earlier than 2026-06-30; baseline start none → 2026-06-30; baseline finish none → 2026-06-30 |
| 92 | **AG-F0009-0306-MB-L-00003** | 2026-06-18 → 2026-07-01 (+13d) | 2026-06-30 → 2026-07-09 (+9d) | 9d → 7d |  | 6d → 5d |  | baseline start none → 2026-06-18; baseline finish none → 2026-06-30 |
| 93 | Emissão inicial | 2026-06-18 → 2026-07-01 (+13d) | 2026-06-24 → 2026-07-06 (+12d) | 5d → 4d |  | 6d → 5d |  | constraint none → finish no earlier than 2026-06-25; baseline start none → 2026-06-18; baseline finish none → 2026-06-24 |
| 94 | Análise Tecnored | 2026-06-25 → 2026-07-07 (+12d) | 2026-06-25 → 2026-07-07 (+12d) |  |  | 6d → 5d |  | constraint none → finish no earlier than 2026-06-26; baseline start none → 2026-06-25; baseline finish none → 2026-06-25 |
| 95 | Atendimento de comentários | 2026-06-26 → 2026-07-08 (+12d) | 2026-06-29 → 2026-07-08 (+9d) | 2d → 1d |  | 6d → 5d |  | constraint none → finish no earlier than 2026-06-29; baseline start none → 2026-06-26; baseline finish none → 2026-06-29 |
| 96 | Aprovação | 2026-06-30 → 2026-07-09 (+9d) | 2026-06-30 → 2026-07-09 (+9d) |  |  | 6d → 5d |  | constraint none → finish no earlier than 2026-06-30; baseline start none → 2026-06-30; baseline finish none → 2026-06-30 |
| 97 | **AG-F0009-0306-MB-L-00004** | 2026-06-18 → 2026-07-01 (+13d) | 2026-06-30 → 2026-07-09 (+9d) | 9d → 7d |  | 6d → 5d |  | baseline start none → 2026-06-18; baseline finish none → 2026-06-30 |
| 98 | Emissão inicial | 2026-06-18 → 2026-07-01 (+13d) | 2026-06-24 → 2026-07-06 (+12d) | 5d → 4d |  | 6d → 5d |  | constraint none → finish no earlier than 2026-06-25; baseline start none → 2026-06-18; baseline finish none → 2026-06-24 |
| 99 | Análise Tecnored | 2026-06-25 → 2026-07-07 (+12d) | 2026-06-25 → 2026-07-07 (+12d) |  |  | 6d → 5d |  | constraint none → finish no earlier than 2026-06-26; baseline start none → 2026-06-25; baseline finish none → 2026-06-25 |
| 100 | Atendimento de comentários | 2026-06-26 → 2026-07-08 (+12d) | 2026-06-29 → 2026-07-08 (+9d) | 2d → 1d |  | 6d → 5d |  | constraint none → finish no earlier than 2026-06-29; baseline start none → 2026-06-26; baseline finish none → 2026-06-29 |
| 101 | Aprovação | 2026-06-30 → 2026-07-09 (+9d) | 2026-06-30 → 2026-07-09 (+9d) |  |  | 6d → 5d |  | constraint none → finish no earlier than 2026-06-30; baseline start none → 2026-06-30; baseline finish none → 2026-06-30 |
| 102 | **PL-F0009-0306-MB-M-00001** | 2026-06-03 A | 2026-06-18 A | 12d → 10d | 0% → 100% | 14d → none |  | baseline start none → 2026-06-03; baseline finish none → 2026-06-18 |
| 103 | Emissão inicial | 2026-06-03 A | 2026-06-12 A | 8d → 6d | 0% → 100% | 14d → none |  | constraint none → finish no earlier than 2026-06-12; baseline start none → 2026-06-03; baseline finish none → 2026-06-12 |
| 104 | Análise Tecnored | 2026-06-15 A | 2026-06-15 A |  | 0% → 100% | 14d → none |  | baseline start none → 2026-06-15; baseline finish none → 2026-06-15 |
| 105 | Atendimento de comentários | 2026-06-16 A | 2026-06-17 A |  | 0% → 100% | 14d → none |  | baseline start none → 2026-06-16; baseline finish none → 2026-06-17 |
| 106 | Aprovação | 2026-06-18 A | 2026-06-18 A |  | 0% → 100% | 14d → none |  | baseline start none → 2026-06-18; baseline finish none → 2026-06-18 |
| 107 | **PL-F0009-0306-MB-M-00002** |  | 2026-06-18 → 2026-06-22 (+4d) |  |  | 14d → none |  | baseline start none → 2026-06-03; baseline finish none → 2026-06-18 |
| 108 | Emissão inicial |  | 2026-06-12 → 2026-06-16 (+4d) |  |  | 14d → 18d |  | baseline start none → 2026-06-03; baseline finish none → 2026-06-12 |
| 109 | Análise Tecnored | 2026-06-15 → 2026-06-17 (+2d) | 2026-06-15 → 2026-06-17 (+2d) |  |  | 14d → 18d |  | baseline start none → 2026-06-15; baseline finish none → 2026-06-15 |
| 110 | Atendimento de comentários | 2026-06-16 → 2026-06-18 (+2d) | 2026-06-17 → 2026-06-19 (+2d) |  |  | 14d → 18d |  | baseline start none → 2026-06-16; baseline finish none → 2026-06-17 |
| 111 | Aprovação | 2026-06-18 → 2026-06-22 (+4d) | 2026-06-18 → 2026-06-22 (+4d) |  |  | 14d → 18d |  | baseline start none → 2026-06-18; baseline finish none → 2026-06-18 |
| 112 | **MC-F0009-0306-MB-M-00001** | 2026-06-03 → 2026-06-12 A (+9d) | 2026-06-15 → 2026-06-23 (+8d) | 9d → 8d | 0% → 83% | 1d → 17d |  | baseline start none → 2026-06-03; baseline finish none → 2026-06-15 |
| 113 | Emissão inicial | 2026-06-03 → 2026-06-12 A (+9d) | 2026-06-09 → 2026-06-15 A (+6d) | 5d → 2d | 0% → 100% | 1d → none |  | constraint none → finish no earlier than 2026-06-16; baseline start none → 2026-06-03; baseline finish none → 2026-06-09 |
| 114 | Análise Tecnored | 2026-06-10 → 2026-06-16 A (+6d) | 2026-06-10 → 2026-06-17 A (+7d) |  | 0% → 100% | 1d → none |  | constraint none → finish no earlier than 2026-06-17; baseline start none → 2026-06-10; baseline finish none → 2026-06-10 |
| 115 | Atendimento de comentários | 2026-06-11 → 2026-06-18 A (+7d) | 2026-06-12 → 2026-06-19 A (+7d) |  | 0% → 100% | 17d → none |  | constraint none → finish no earlier than 2026-06-19; baseline start none → 2026-06-11; baseline finish none → 2026-06-12 |
| 116 | Aprovação | 2026-06-15 → 2026-06-23 (+8d) | 2026-06-15 → 2026-06-23 (+8d) |  |  |  |  | constraint none → finish no earlier than 2026-06-23; baseline start none → 2026-06-15; baseline finish none → 2026-06-15 |
| 122 | **ML-F0009-0306-MB-M-00001** |  | 2026-06-05 → 2026-06-09 A (+4d) |  | 56% → 100% | 23d → none |  | baseline start none → 2026-05-26; baseline finish none → 2026-06-05 |
| 123 | Emissão inicial |  |  |  |  |  |  | baseline start none → 2026-05-26; baseline finish none → 2026-06-01 |
| 124 | Análise Tecnored | 2026-06-02 A | 2026-06-02 A |  | 0% → 100% | 1d → none |  | baseline start none → 2026-06-02; baseline finish none → 2026-06-02 |
| 125 | Atendimento de comentários | 2026-06-03 A | 2026-06-04 → 2026-06-08 A (+4d) |  | 0% → 100% | 7d → none |  | baseline start none → 2026-06-03; baseline finish none → 2026-06-04 |
| 126 | Aprovação | 2026-06-05 → 2026-06-09 A (+4d) | 2026-06-05 → 2026-06-09 A (+4d) |  | 0% → 100% | 23d → none |  | baseline start none → 2026-06-05; baseline finish none → 2026-06-05 |
| 127 | **FD-F0009-0306-MB-M-00001** | 2026-06-10 → 2026-06-17 A (+7d) | 2026-06-18 → 2026-06-25 (+7d) |  | 0% → 50% | 14d → 15d |  | baseline start none → 2026-06-10; baseline finish none → 2026-06-18 |
| 128 | Emissão inicial | 2026-06-10 → 2026-06-17 A (+7d) | 2026-06-12 → 2026-06-19 A (+7d) |  | 0% → 100% | 14d → none | 113 → 113, 118 | constraint none → finish no earlier than 2026-06-19; baseline start none → 2026-06-10; baseline finish none → 2026-06-12 |
| 129 | Análise Tecnored | 2026-06-15 → 2026-06-22 A (+7d) | 2026-06-15 → 2026-06-22 (+7d) |  | 0% → 50% | 14d → 15d |  | constraint none → finish no earlier than 2026-06-22; baseline start none → 2026-06-15; baseline finish none → 2026-06-15 |
| 130 | Atendimento de comentários | 2026-06-16 → 2026-06-23 (+7d) | 2026-06-17 → 2026-06-24 (+7d) |  |  | 14d → 15d |  | constraint none → finish no earlier than 2026-06-24; baseline start none → 2026-06-16; baseline finish none → 2026-06-17 |
| 131 | Aprovação | 2026-06-18 → 2026-06-25 (+7d) | 2026-06-18 → 2026-06-25 (+7d) |  |  | 14d → 15d |  | constraint none → finish no earlier than 2026-06-25; baseline start none → 2026-06-18; baseline finish none → 2026-06-18 |
| 132 | **FD-F0009-0306-MB-M-00002** | 2026-06-10 → 2026-06-17 A (+7d) | 2026-06-18 → 2026-06-25 (+7d) |  | 0% → 50% | 14d → 15d |  | baseline start none → 2026-06-10; baseline finish none → 2026-06-18 |
| 138 | Emissão inicial | 2026-06-10 → 2026-06-17 A (+7d) | 2026-06-12 → 2026-06-19 A (+7d) |  | 0% → 100% | 14d → none | 113 → 113, 118 | constraint none → finish no earlier than 2026-06-19; baseline start none → 2026-06-10; baseline finish none → 2026-06-12 |
| 139 | Análise Tecnored | 2026-06-15 → 2026-06-22 A (+7d) | 2026-06-15 → 2026-06-22 (+7d) |  | 0% → 50% | 14d → 15d |  | constraint none → finish no earlier than 2026-06-22; baseline start none → 2026-06-15; baseline finish none → 2026-06-15 |
| 140 | Atendimento de comentários | 2026-06-16 → 2026-06-23 (+7d) | 2026-06-17 → 2026-06-24 (+7d) |  |  | 14d → 15d |  | constraint none → finish no earlier than 2026-06-24; baseline start none → 2026-06-16; baseline finish none → 2026-06-17 |
| 141 | Aprovação | 2026-06-18 → 2026-06-25 (+7d) | 2026-06-18 → 2026-06-25 (+7d) |  |  | 14d → 15d |  | constraint none → finish no earlier than 2026-06-25; baseline start none → 2026-06-18; baseline finish none → 2026-06-18 |
| 142 | **Tubulação/Utilidades** | 2026-06-02 → 2026-06-08 A (+6d) | 2026-06-29 → 2026-07-10 (+11d) | 20d → 25d | 0% → 38% | 7d → 4d |  | baseline start none → 2026-06-02; baseline finish none → 2026-06-29 |
| 143 | **CP-F0009-0306-MB-T-00001** |  | 2026-05-27 → 2026-05-28 (+1d) | 17d → 18d |  | 30d → 33d |  |  |
| 145 | Análise Tecnored | 2026-05-22 → 2026-05-25 (+3d) | 2026-05-22 → 2026-05-25 (+3d) |  |  | 30d → 33d |  |  |
| 146 | Atendimento de comentários | 2026-05-25 → 2026-05-26 (+1d) | 2026-05-26 → 2026-05-27 (+1d) |  |  | 30d → 33d |  |  |
| 147 | Aprovação | 2026-05-27 → 2026-05-28 (+1d) | 2026-05-27 → 2026-05-28 (+1d) |  |  | 30d → 33d |  |  |
| 148 | **MD-F0009-0306-MB-U-00001** | 2026-06-16 → 2026-07-02 (+16d) | 2026-06-24 → 2026-07-10 (+16d) |  |  | 7d → 4d |  | baseline start none → 2026-06-16; baseline finish none → 2026-06-24 |
| 149 | Emissão inicial | 2026-06-16 → 2026-07-02 (+16d) | 2026-06-18 → 2026-07-06 (+18d) |  |  | 7d → 4d |  | baseline start none → 2026-06-16; baseline finish none → 2026-06-18 |
| 150 | Análise Tecnored | 2026-06-19 → 2026-07-07 (+18d) | 2026-06-19 → 2026-07-07 (+18d) |  |  | 10d → 4d |  | baseline start none → 2026-06-19; baseline finish none → 2026-06-19 |
| 151 | Atendimento de comentários | 2026-06-22 → 2026-07-08 (+16d) | 2026-06-23 → 2026-07-09 (+16d) |  |  | 10d → 4d |  | baseline start none → 2026-06-22; baseline finish none → 2026-06-23 |
| 152 | Aprovação | 2026-06-24 → 2026-07-10 (+16d) | 2026-06-24 → 2026-07-10 (+16d) |  |  | 10d → 4d |  | baseline start none → 2026-06-24; baseline finish none → 2026-06-24 |
| 153 | **ML-F0009-0306-MB-T-00001** | 2026-06-02 → 2026-06-15 A (+13d) | 2026-06-10 → 2026-06-25 (+15d) | 7d → 9d | 0% → 56% | 20d → 15d |  | baseline start none → 2026-06-02; baseline finish none → 2026-06-10 |
| 154 | Emissão inicial | 2026-06-02 → 2026-06-15 A (+13d) | 2026-06-04 → 2026-06-19 A (+15d) | 3d → 5d | 0% → 100% | 20d → none | 123 → none | constraint none → finish no earlier than 2026-06-19; baseline start none → 2026-06-02; baseline finish none → 2026-06-04 |
| 155 | Análise Tecnored | 2026-06-05 → 2026-06-22 (+17d) | 2026-06-05 → 2026-06-22 (+17d) |  |  | 20d → 15d |  | baseline start none → 2026-06-05; baseline finish none → 2026-06-05 |
| 156 | Atendimento de comentários | 2026-06-08 → 2026-06-23 (+15d) | 2026-06-09 → 2026-06-24 (+15d) |  |  | 20d → 15d |  | baseline start none → 2026-06-08; baseline finish none → 2026-06-09 |
| 157 | Aprovação | 2026-06-10 → 2026-06-25 (+15d) | 2026-06-10 → 2026-06-25 (+15d) |  |  | 20d → 15d |  | baseline start none → 2026-06-10; baseline finish none → 2026-06-10 |
| 158 | **ET-F0009-0306-MB-T-00001** | 2026-06-10 → 2026-07-07 (+27d) | 2026-06-18 → 2026-07-15 (+27d) |  |  | 14d → 1d |  | baseline start none → 2026-06-10; baseline finish none → 2026-06-18 |

| ID | Task | Start | Finish | Duration | Complete | Total float | Predecessors | Other |
| --- | --- | --- | --- | --- | --- | --- | --- | --- |
| 159 | Emissão inicial | 2026-06-10 → 2026-07-07 (+27d) | 2026-06-12 → 2026-07-09 (+27d) |  |  | 14d → 1d |  | baseline start none → 2026-06-10; baseline finish none → 2026-06-12 |
| 160 | Análise Tecnored | 2026-06-15 → 2026-07-10 (+25d) | 2026-06-15 → 2026-07-10 (+25d) |  |  | 14d → 1d |  | baseline start none → 2026-06-15; baseline finish none → 2026-06-15 |
| 161 | Atendimento de comentários | 2026-06-16 → 2026-07-13 (+27d) | 2026-06-17 → 2026-07-14 (+27d) |  |  | 14d → 1d |  | baseline start none → 2026-06-16; baseline finish none → 2026-06-17 |
| 162 | Aprovação | 2026-06-18 → 2026-07-15 (+27d) | 2026-06-18 → 2026-07-15 (+27d) |  |  | 14d → 1d |  | baseline start none → 2026-06-18; baseline finish none → 2026-06-18 |
| 163 | **FD-F0009-0306-MB-T-00001** | 2026-06-05 → 2026-07-02 (+27d) | 2026-06-15 → 2026-07-10 (+25d) |  |  | 14d → 4d |  | baseline start none → 2026-06-05; baseline finish none → 2026-06-15 |
| 164 | Emissão inicial | 2026-06-05 → 2026-07-02 (+27d) | 2026-06-09 → 2026-07-06 (+27d) |  |  | 14d → 4d | 179 → 179, 57FS+3d | constraint none → start no earlier than 2026-06-25; baseline start none → 2026-06-05; baseline finish none → 2026-06-09 |
| 165 | Análise Tecnored | 2026-06-10 → 2026-07-07 (+27d) | 2026-06-10 → 2026-07-07 (+27d) |  |  | 17d → 4d |  | constraint none → start no earlier than 2026-06-18; baseline start none → 2026-06-10; baseline finish none → 2026-06-10 |
| 166 | Atendimento de comentários | 2026-06-11 → 2026-07-08 (+27d) | 2026-06-12 → 2026-07-09 (+27d) |  |  | 17d → 4d |  | constraint none → start no earlier than 2026-06-19; baseline start none → 2026-06-11; baseline finish none → 2026-06-12 |
| 167 | Aprovação | 2026-06-15 → 2026-07-10 (+25d) | 2026-06-15 → 2026-07-10 (+25d) |  |  | 17d → 4d |  | constraint none → start no earlier than 2026-06-23; baseline start none → 2026-06-15; baseline finish none → 2026-06-15 |
| 168 | **FD-F0009-0306-MB-T-00002** | 2026-06-05 → 2026-07-02 (+27d) | 2026-06-15 → 2026-07-10 (+25d) |  |  | 17d → 4d |  | baseline start none → 2026-06-05; baseline finish none → 2026-06-15 |
| 169 | Emissão inicial | 2026-06-05 → 2026-07-02 (+27d) | 2026-06-09 → 2026-07-06 (+27d) |  |  | 17d → 4d |  | baseline start none → 2026-06-05; baseline finish none → 2026-06-09 |
| 170 | Análise Tecnored | 2026-06-10 → 2026-07-07 (+27d) | 2026-06-10 → 2026-07-07 (+27d) |  |  | 17d → 4d |  | baseline start none → 2026-06-10; baseline finish none → 2026-06-10 |
| 171 | Atendimento de comentários | 2026-06-11 → 2026-07-08 (+27d) | 2026-06-12 → 2026-07-09 (+27d) |  |  | 17d → 4d |  | baseline start none → 2026-06-11; baseline finish none → 2026-06-12 |
| 172 | Aprovação | 2026-06-15 → 2026-07-10 (+25d) | 2026-06-15 → 2026-07-10 (+25d) |  |  | 17d → 4d |  | baseline start none → 2026-06-15; baseline finish none → 2026-06-15 |
| 173 | **PQ-F0009-0306-MB-T-00001** | 2026-06-19 → 2026-06-22 A (+3d) | 2026-06-29 → 2026-07-01 (+2d) | 7d → 8d | 0% → 33% | 7d → 11d |  | baseline start none → 2026-06-19; baseline finish none → 2026-06-29 |
| 174 | Emissão inicial | 2026-06-19 → 2026-06-22 A (+3d) | 2026-06-23 → 2026-06-25 A (+2d) | 3d → 2d | 0% → 100% | 7d → none | 149 → 180 | constraint none → finish no earlier than 2026-06-25; baseline start none → 2026-06-19; baseline finish none → 2026-06-23 |
| 175 | Análise Tecnored | 2026-06-24 → 2026-06-26 (+2d) | 2026-06-24 → 2026-06-26 (+2d) |  |  | 7d → 11d |  | constraint none → start no earlier than 2026-06-19; baseline start none → 2026-06-24; baseline finish none → 2026-06-24 |
| 176 | Atendimento de comentários | 2026-06-25 → 2026-06-29 (+4d) | 2026-06-26 → 2026-06-30 (+4d) |  |  | 7d → 11d |  | constraint none → start no earlier than 2026-06-22; baseline start none → 2026-06-25; baseline finish none → 2026-06-26 |
| 177 | Aprovação | 2026-06-29 → 2026-07-01 (+2d) | 2026-06-29 → 2026-07-01 (+2d) |  |  | 7d → 11d |  | constraint none → start no earlier than 2026-06-24; baseline start none → 2026-06-29; baseline finish none → 2026-06-29 |
| 178 | **MC-F0009-0306-MB-T-00001** | 2026-06-02 → 2026-06-29 A (+27d) | 2026-06-10 → 2026-07-07 (+27d) |  | 0% → 43% | 14d → 7d |  | baseline start none → 2026-06-02; baseline finish none → 2026-06-10 |
| 179 | Emissão inicial | 2026-06-02 → 2026-06-29 A (+27d) | 2026-06-04 → 2026-07-01 A (+27d) |  | 0% → 100% | 14d → none | 123 → 123, 185 | constraint none → start no earlier than 2026-06-29; baseline start none → 2026-06-02; baseline finish none → 2026-06-04 |
| 180 | Análise Tecnored | 2026-06-05 → 2026-07-02 (+27d) | 2026-06-05 → 2026-07-02 (+27d) |  |  | 20d → 7d |  | constraint none → start no earlier than 2026-06-15; baseline start none → 2026-06-05; baseline finish none → 2026-06-05 |
| 181 | Atendimento de comentários | 2026-06-08 → 2026-07-03 (+25d) | 2026-06-09 → 2026-07-06 (+27d) |  |  | 20d → 7d |  | constraint none → start no earlier than 2026-06-16; baseline start none → 2026-06-08; baseline finish none → 2026-06-09 |
| 182 | Aprovação | 2026-06-10 → 2026-07-07 (+27d) | 2026-06-10 → 2026-07-07 (+27d) |  |  | 20d → 7d |  | constraint none → start no earlier than 2026-06-18; baseline start none → 2026-06-10; baseline finish none → 2026-06-10 |
| 183 | **FG-F0009-0306-MB-T-00001** | 2026-06-08 A | 2026-06-25 → 2026-06-12 (-13d) | 14d → 5d | 0% → 60% | 9d → 24d |  | baseline start none → 2026-06-08; baseline finish none → 2026-06-25 |
| 184 | Emissão inicial | 2026-06-08 A | 2026-06-19 → 2026-06-08 A (-11d) | 10d → 1d | 0% → 100% | 9d → none | 57 → 57FS+3d | constraint none → finish no earlier than 2026-06-08; baseline start none → 2026-06-08; baseline finish none → 2026-06-19 |
| 185 | Análise Tecnored | 2026-06-22 → 2026-06-09 A (-13d) | 2026-06-22 → 2026-06-09 A (-13d) |  | 0% → 100% | 9d → none |  | constraint none → start no earlier than 2026-06-09; baseline start none → 2026-06-22; baseline finish none → 2026-06-22 |
| 186 | Atendimento de comentários | 2026-06-23 → 2026-06-10 A (-13d) | 2026-06-24 → 2026-06-11 (-13d) |  | 0% → 50% | 9d → 24d |  | constraint none → start no earlier than 2026-06-10; baseline start none → 2026-06-23; baseline finish none → 2026-06-24 |
| 187 | Aprovação | 2026-06-25 → 2026-06-12 (-13d) | 2026-06-25 → 2026-06-12 (-13d) |  |  | 9d → 24d |  | constraint none → start no earlier than 2026-06-12; baseline start none → 2026-06-25; baseline finish none → 2026-06-25 |
| 188 | **FG-F0009-0306-MB-T-00002** |  |  |  |  | 9d → 15d |  | baseline start none → 2026-06-08; baseline finish none → 2026-06-25 |
| 189 | Emissão inicial |  |  |  |  | 9d → 15d |  | baseline start none → 2026-06-08; baseline finish none → 2026-06-19 |
| 190 | Análise Tecnored |  |  |  |  | 9d → 15d |  | baseline start none → 2026-06-22; baseline finish none → 2026-06-22 |
| 191 | Atendimento de comentários |  |  |  |  | 9d → 15d |  | baseline start none → 2026-06-23; baseline finish none → 2026-06-24 |
| 192 | Aprovação |  |  |  |  | 9d → 15d |  | baseline start none → 2026-06-25; baseline finish none → 2026-06-25 |
| 193 | **AG-F0009-0306-MB-T-00001** | 2026-06-05 → 2026-06-23 A (+18d) | 2026-06-15 → 2026-07-01 (+16d) |  | 0% → 50% | 7d → 11d |  | baseline start none → 2026-06-05; baseline finish none → 2026-06-15 |
| 194 | Emissão inicial | 2026-06-05 → 2026-06-23 A (+18d) | 2026-06-09 → 2026-06-25 A (+16d) |  | 0% → 100% | 7d → none | 125 → 155 | baseline start none → 2026-06-05; baseline finish none → 2026-06-09 |
| 195 | Análise Tecnored | 2026-06-10 → 2026-06-26 A (+16d) | 2026-06-10 → 2026-06-26 (+16d) |  | 0% → 50% | 7d → 11d |  | baseline start none → 2026-06-10; baseline finish none → 2026-06-10 |
| 196 | Atendimento de comentários | 2026-06-11 → 2026-06-29 (+18d) | 2026-06-12 → 2026-06-30 (+18d) |  |  | 7d → 11d |  | baseline start none → 2026-06-11; baseline finish none → 2026-06-12 |
| 197 | Aprovação | 2026-06-15 → 2026-07-01 (+16d) | 2026-06-15 → 2026-07-01 (+16d) |  |  | 7d → 11d |  | baseline start none → 2026-06-15; baseline finish none → 2026-06-15 |
| 198 | **AG-F0009-0306-MB-T-00002** | 2026-06-05 → 2026-06-23 A (+18d) | 2026-06-15 → 2026-07-01 (+16d) |  | 0% → 50% | 17d → 11d |  | baseline start none → 2026-06-05; baseline finish none → 2026-06-15 |
| 199 | Emissão inicial | 2026-06-05 → 2026-06-23 A (+18d) | 2026-06-09 → 2026-06-25 A (+16d) |  | 0% → 100% | 17d → none | 125 → 155 | baseline start none → 2026-06-05; baseline finish none → 2026-06-09 |
| 200 | Análise Tecnored | 2026-06-10 → 2026-06-26 A (+16d) | 2026-06-10 → 2026-06-26 (+16d) |  | 0% → 50% | 17d → 11d |  | baseline start none → 2026-06-10; baseline finish none → 2026-06-10 |
| 201 | Atendimento de comentários | 2026-06-11 → 2026-06-29 (+18d) | 2026-06-12 → 2026-06-30 (+18d) |  |  | 17d → 11d |  | baseline start none → 2026-06-11; baseline finish none → 2026-06-12 |
| 202 | Aprovação | 2026-06-15 → 2026-07-01 (+16d) | 2026-06-15 → 2026-07-01 (+16d) |  |  | 17d → 11d |  | baseline start none → 2026-06-15; baseline finish none → 2026-06-15 |
| 203 | **AG-F0009-0306-MB-T-00003** | 2026-06-05 → 2026-06-23 A (+18d) | 2026-06-15 → 2026-07-01 (+16d) |  | 0% → 50% | 17d → 11d |  | baseline start none → 2026-06-05; baseline finish none → 2026-06-15 |
| 204 | Emissão inicial | 2026-06-05 → 2026-06-23 A (+18d) | 2026-06-09 → 2026-06-25 A (+16d) |  | 0% → 100% | 17d → none | 125 → 155 | baseline start none → 2026-06-05; baseline finish none → 2026-06-09 |
| 205 | Análise Tecnored | 2026-06-10 → 2026-06-26 A (+16d) | 2026-06-10 → 2026-06-26 (+16d) |  | 0% → 50% | 17d → 11d |  | baseline start none → 2026-06-10; baseline finish none → 2026-06-10 |
| 206 | Atendimento de comentários | 2026-06-11 → 2026-06-29 (+18d) | 2026-06-12 → 2026-06-30 (+18d) |  |  | 17d → 11d |  | baseline start none → 2026-06-11; baseline finish none → 2026-06-12 |
| 207 | Aprovação | 2026-06-15 → 2026-07-01 (+16d) | 2026-06-15 → 2026-07-01 (+16d) |  |  | 17d → 11d |  | baseline start none → 2026-06-15; baseline finish none → 2026-06-15 |
| 208 | **AG-F0009-0306-MB-T-00004** | 2026-06-05 → 2026-06-09 (+4d) | 2026-06-15 → 2026-06-17 (+2d) |  |  | 17d → 21d |  | baseline start none → 2026-06-05; baseline finish none → 2026-06-15 |
| 209 | Emissão inicial | 2026-06-05 → 2026-06-09 (+4d) | 2026-06-09 → 2026-06-11 (+2d) |  |  | 17d → 21d |  | baseline start none → 2026-06-05; baseline finish none → 2026-06-09 |
| 210 | Análise Tecnored | 2026-06-10 → 2026-06-12 (+2d) | 2026-06-10 → 2026-06-12 (+2d) |  |  | 17d → 21d |  | baseline start none → 2026-06-10; baseline finish none → 2026-06-10 |
| 211 | Atendimento de comentários | 2026-06-11 → 2026-06-15 (+4d) | 2026-06-12 → 2026-06-16 (+4d) |  |  | 17d → 21d |  | baseline start none → 2026-06-11; baseline finish none → 2026-06-12 |
| 212 | Aprovação | 2026-06-15 → 2026-06-17 (+2d) | 2026-06-15 → 2026-06-17 (+2d) |  |  | 17d → 21d |  | baseline start none → 2026-06-15; baseline finish none → 2026-06-15 |
| 213 | **AG-F0009-0306-MB-T-00005** | 2026-06-05 → 2026-06-09 (+4d) | 2026-06-15 → 2026-06-17 (+2d) |  |  | 17d → 21d |  | baseline start none → 2026-06-05; baseline finish none → 2026-06-15 |
| 214 | Emissão inicial | 2026-06-05 → 2026-06-09 (+4d) | 2026-06-09 → 2026-06-11 (+2d) |  |  | 17d → 21d |  | baseline start none → 2026-06-05; baseline finish none → 2026-06-09 |
| 215 | Análise Tecnored | 2026-06-10 → 2026-06-12 (+2d) | 2026-06-10 → 2026-06-12 (+2d) |  |  | 17d → 21d |  | baseline start none → 2026-06-10; baseline finish none → 2026-06-10 |
| 216 | Atendimento de comentários | 2026-06-11 → 2026-06-15 (+4d) | 2026-06-12 → 2026-06-16 (+4d) |  |  | 17d → 21d |  | baseline start none → 2026-06-11; baseline finish none → 2026-06-12 |
| 217 | Aprovação | 2026-06-15 → 2026-06-17 (+2d) | 2026-06-15 → 2026-06-17 (+2d) |  |  | 17d → 21d |  | baseline start none → 2026-06-15; baseline finish none → 2026-06-15 |
| 218 | **AG-F0009-0306-MB-T-00006** | 2026-06-05 → 2026-06-09 (+4d) | 2026-06-15 → 2026-06-17 (+2d) |  |  | 17d → 21d |  | baseline start none → 2026-06-05; baseline finish none → 2026-06-15 |
| 219 | Emissão inicial | 2026-06-05 → 2026-06-09 (+4d) | 2026-06-09 → 2026-06-11 (+2d) |  |  | 17d → 21d |  | baseline start none → 2026-06-05; baseline finish none → 2026-06-09 |
| 220 | Análise Tecnored | 2026-06-10 → 2026-06-12 (+2d) | 2026-06-10 → 2026-06-12 (+2d) |  |  | 17d → 21d |  | baseline start none → 2026-06-10; baseline finish none → 2026-06-10 |
| 221 | Atendimento de comentários | 2026-06-11 → 2026-06-15 (+4d) | 2026-06-12 → 2026-06-16 (+4d) |  |  | 17d → 21d |  | baseline start none → 2026-06-11; baseline finish none → 2026-06-12 |
| 222 | Aprovação | 2026-06-15 → 2026-06-17 (+2d) | 2026-06-15 → 2026-06-17 (+2d) |  |  | 17d → 21d |  | baseline start none → 2026-06-15; baseline finish none → 2026-06-15 |
| 223 | **LK-F0009-0306-MB-T-00001** | 2026-06-05 → 2026-06-29 (+24d) | 2026-06-15 → 2026-07-07 (+22d) |  |  | 17d → 7d |  | baseline start none → 2026-06-05; baseline finish none → 2026-06-15 |
| 224 | Emissão inicial | 2026-06-05 → 2026-06-29 (+24d) | 2026-06-09 → 2026-07-01 (+22d) |  |  | 17d → 7d | 125 → 179SS | constraint none → finish no earlier than 2026-07-01; baseline start none → 2026-06-05; baseline finish none → 2026-06-09 |
| 225 | Análise Tecnored | 2026-06-10 → 2026-07-02 (+22d) | 2026-06-10 → 2026-07-02 (+22d) |  |  | 17d → 7d |  | constraint none → start no earlier than 2026-06-29; baseline start none → 2026-06-10; baseline finish none → 2026-06-10 |
| 226 | Atendimento de comentários | 2026-06-11 → 2026-07-03 (+22d) | 2026-06-12 → 2026-07-06 (+24d) |  |  | 17d → 7d |  | constraint none → start no earlier than 2026-06-30; baseline start none → 2026-06-11; baseline finish none → 2026-06-12 |
| 227 | Aprovação | 2026-06-15 → 2026-07-07 (+22d) | 2026-06-15 → 2026-07-07 (+22d) |  |  | 17d → 7d |  | constraint none → start no earlier than 2026-07-02; baseline start none → 2026-06-15; baseline finish none → 2026-06-15 |
| 228 | **MC-F0009-0306-MB-T-00002** |  | 2026-06-19 → 2026-06-23 (+4d) |  |  | 13d → 17d |  | baseline start none → 2026-06-02; baseline finish none → 2026-06-19 |

| ID | Task | Start | Finish | Duration | Complete | Total float | Predecessors | Other |
| --- | --- | --- | --- | --- | --- | --- | --- | --- |
| 229 | Emissão inicial |  | 2026-06-15 → 2026-06-17 (+2d) |  |  | 13d → 17d |  | baseline start none → 2026-06-02; baseline finish none → 2026-06-15 |
| 230 | Análise Tecnored | 2026-06-16 → 2026-06-18 (+2d) | 2026-06-16 → 2026-06-18 (+2d) |  |  | 13d → 17d |  | baseline start none → 2026-06-16; baseline finish none → 2026-06-16 |
| 231 | Atendimento de comentários | 2026-06-17 → 2026-06-19 (+2d) | 2026-06-18 → 2026-06-22 (+4d) |  |  | 13d → 17d |  | baseline start none → 2026-06-17; baseline finish none → 2026-06-18 |
| 232 | Aprovação | 2026-06-19 → 2026-06-23 (+4d) | 2026-06-19 → 2026-06-23 (+4d) |  |  | 13d → 17d |  | baseline start none → 2026-06-19; baseline finish none → 2026-06-19 |
| 233 | **Estrutura metálica** | 2026-06-11 → 2026-06-16 A (+5d) | 2026-07-07 → 2026-07-09 (+2d) | 19d → 18d | 0% → 23% | 1d → 5d |  | baseline start none → 2026-06-11; baseline finish none → 2026-07-07 |
| 234 | **CP-F0009-0306-MB-S-00001** | 2026-06-05 → 2026-07-01 (+26d) | 2026-06-22 → 2026-07-16 (+24d) |  |  | 12d → 0d |  |  |
| 235 | Emissão inicial | 2026-06-05 → 2026-07-01 (+26d) | 2026-06-16 → 2026-07-10 (+24d) |  |  | 12d → 0d |  |  |
| 236 | Análise Tecnored | 2026-06-17 → 2026-07-13 (+26d) | 2026-06-17 → 2026-07-13 (+26d) |  |  | 12d → 0d |  |  |
| 237 | Atendimento de comentários | 2026-06-18 → 2026-07-14 (+26d) | 2026-06-19 → 2026-07-15 (+26d) |  |  | 12d → 0d |  |  |
| 238 | Aprovação | 2026-06-22 → 2026-07-16 (+24d) | 2026-06-22 → 2026-07-16 (+24d) |  |  | 12d → 0d |  |  |
| 239 | **ML-F0009-0306-MB-S-00001** | 2026-06-11 → 2026-06-26 A (+15d) | 2026-06-23 → 2026-07-03 (+10d) | 9d → 6d | 0% → 50% | 1d → 9d |  | baseline start none → 2026-06-11; baseline finish none → 2026-06-23 |
| 240 | Emissão inicial | 2026-06-11 → 2026-06-26 A (+15d) | 2026-06-17 → 2026-06-30 A (+13d) | 5d → 3d | 0% → 100% | 1d → none |  | constraint none → start no earlier than 2026-06-19; baseline start none → 2026-06-11; baseline finish none → 2026-06-17 |
| 241 | Análise Tecnored | 2026-06-18 → 2026-07-01 (+13d) | 2026-06-18 → 2026-07-01 (+13d) |  |  | 1d → 1.45d |  | baseline start none → 2026-06-18; baseline finish none → 2026-06-18 |
| 242 | Atendimento de comentários | 2026-06-19 → 2026-07-02 (+13d) | 2026-06-22 → 2026-07-02 (+10d) | 2d → 1d |  | 1d → 9d |  | baseline start none → 2026-06-19; baseline finish none → 2026-06-22 |
| 243 | Aprovação | 2026-06-23 → 2026-07-03 (+10d) | 2026-06-23 → 2026-07-03 (+10d) |  |  | 1d → 9d |  | baseline start none → 2026-06-23; baseline finish none → 2026-06-23 |
| 244 | **PQ-F0009-0306-MB-S-00001** | 2026-06-29 → 2026-06-26 A (-3d) | 2026-07-07 → 2026-07-03 (-4d) | 7d → 6d | 0% → 50% | 1d → 9d |  | baseline start none → 2026-06-29; baseline finish none → 2026-07-07 |
| 245 | Emissão inicial | 2026-06-29 → 2026-06-26 A (-3d) | 2026-07-01 → 2026-06-30 A (-1d) |  | 0% → 100% | 1d → none |  | constraint none → finish no earlier than 2026-06-30; baseline start none → 2026-06-29; baseline finish none → 2026-07-01 |
| 246 | Análise Tecnored | 2026-07-02 → 2026-07-01 (-1d) | 2026-07-02 → 2026-07-01 (-1d) |  |  | 1d → 9d |  | baseline start none → 2026-07-02; baseline finish none → 2026-07-02 |
| 247 | Atendimento de comentários | 2026-07-03 → 2026-07-02 (-1d) | 2026-07-06 → 2026-07-02 (-4d) | 2d → 1d |  | 1d → 9d |  | baseline start none → 2026-07-03; baseline finish none → 2026-07-06 |
| 248 | Aprovação | 2026-07-07 → 2026-07-03 (-4d) | 2026-07-07 → 2026-07-03 (-4d) |  |  | 1d → 9d |  | baseline start none → 2026-07-07; baseline finish none → 2026-07-07 |
| 249 | **LM-F0009-0306-MB-S-00001** | 2026-06-24 → 2026-07-01 (+7d) | 2026-07-02 → 2026-07-08 (+6d) | 7d → 6d |  | 1d → 6d |  | baseline start none → 2026-06-24; baseline finish none → 2026-07-02 |
| 250 | Emissão inicial | 2026-06-24 → 2026-07-01 (+7d) | 2026-06-26 → 2026-07-03 (+7d) |  |  | 1d → 6d | 243 → 240 | baseline start none → 2026-06-24; baseline finish none → 2026-06-26 |
| 251 | Análise Tecnored | 2026-06-29 → 2026-07-06 (+7d) | 2026-06-29 → 2026-07-06 (+7d) |  |  | 4d → 6d |  | baseline start none → 2026-06-29; baseline finish none → 2026-06-29 |
| 252 | Atendimento de comentários | 2026-06-30 → 2026-07-07 (+7d) | 2026-07-01 → 2026-07-07 (+6d) | 2d → 1d |  | 4d → 6d |  | baseline start none → 2026-06-30; baseline finish none → 2026-07-01 |
| 253 | Aprovação | 2026-07-02 → 2026-07-08 (+6d) | 2026-07-02 → 2026-07-08 (+6d) |  |  | 4d → 6d |  | baseline start none → 2026-07-02; baseline finish none → 2026-07-02 |
| 254 | **MC-F0009-0306-MB-S-00001** | 2026-06-11 → 2026-06-18 A (+7d) | 2026-06-19 → 2026-06-24 (+5d) | 7d → 5d | 0% → 40% | 1d → 16d |  | baseline start none → 2026-06-11; baseline finish none → 2026-06-19 |
| 255 | Emissão inicial | 2026-06-11 → 2026-06-18 A (+7d) | 2026-06-15 → 2026-06-19 A (+4d) | 3d → 2d | 0% → 100% | 1d → none | 114 → 114, 119 | constraint none → start no earlier than 2026-06-16; baseline start none → 2026-06-11; baseline finish none → 2026-06-15 |
| 256 | Análise Tecnored | 2026-06-16 → 2026-06-22 (+6d) | 2026-06-16 → 2026-06-22 (+6d) |  |  | 13d → 16d |  | baseline start none → 2026-06-16; baseline finish none → 2026-06-16 |
| 257 | Atendimento de comentários | 2026-06-17 → 2026-06-23 (+6d) | 2026-06-18 → 2026-06-23 (+5d) | 2d → 1d |  | 13d → 16d |  | baseline start none → 2026-06-17; baseline finish none → 2026-06-18 |
| 258 | Aprovação | 2026-06-19 → 2026-06-24 (+5d) | 2026-06-19 → 2026-06-24 (+5d) |  |  | 13d → 16d |  | baseline start none → 2026-06-19; baseline finish none → 2026-06-19 |
| 259 | **AG-F0009-0306-MB-S-00001** | 2026-06-23 → 2026-07-01 (+8d) | 2026-07-03 → 2026-07-09 (+6d) | 9d → 7d |  | 3d → 5d |  | baseline start none → 2026-06-23; baseline finish none → 2026-07-03 |
| 260 | Emissão inicial | 2026-06-23 → 2026-07-01 (+8d) | 2026-06-29 → 2026-07-06 (+7d) | 5d → 4d |  | 3d → 5d | 242 → 240 | baseline start none → 2026-06-23; baseline finish none → 2026-06-29 |
| 261 | Análise Tecnored | 2026-06-30 → 2026-07-07 (+7d) | 2026-06-30 → 2026-07-07 (+7d) |  |  | 3d → 5d |  | baseline start none → 2026-06-30; baseline finish none → 2026-06-30 |
| 262 | Atendimento de comentários | 2026-07-01 → 2026-07-08 (+7d) | 2026-07-02 → 2026-07-08 (+6d) | 2d → 1d |  | 3d → 5d |  | baseline start none → 2026-07-01; baseline finish none → 2026-07-02 |
| 263 | Aprovação | 2026-07-03 → 2026-07-09 (+6d) | 2026-07-03 → 2026-07-09 (+6d) |  |  | 3d → 5d |  | baseline start none → 2026-07-03; baseline finish none → 2026-07-03 |
| 264 | **AG-F0009-0306-MB-S-00002** | 2026-06-23 → 2026-07-01 (+8d) | 2026-07-03 → 2026-07-09 (+6d) | 9d → 7d |  | 3d → 5d |  | baseline start none → 2026-06-23; baseline finish none → 2026-07-03 |
| 265 | Emissão inicial | 2026-06-23 → 2026-07-01 (+8d) | 2026-06-29 → 2026-07-06 (+7d) | 5d → 4d |  | 3d → 5d | 242 → 240 | baseline start none → 2026-06-23; baseline finish none → 2026-06-29 |
| 266 | Análise Tecnored | 2026-06-30 → 2026-07-07 (+7d) | 2026-06-30 → 2026-07-07 (+7d) |  |  | 3d → 5d |  | baseline start none → 2026-06-30; baseline finish none → 2026-06-30 |
| 267 | Atendimento de comentários | 2026-07-01 → 2026-07-08 (+7d) | 2026-07-02 → 2026-07-08 (+6d) | 2d → 1d |  | 3d → 5d |  | baseline start none → 2026-07-01; baseline finish none → 2026-07-02 |
| 268 | Aprovação | 2026-07-03 → 2026-07-09 (+6d) | 2026-07-03 → 2026-07-09 (+6d) |  |  | 3d → 5d |  | baseline start none → 2026-07-03; baseline finish none → 2026-07-03 |
| 269 | **AG-F0009-0306-MB-S-00003** | 2026-06-23 → 2026-07-01 (+8d) | 2026-07-03 → 2026-07-09 (+6d) | 9d → 7d |  | 3d → 5d |  | baseline start none → 2026-06-23; baseline finish none → 2026-07-03 |
| 270 | Emissão inicial | 2026-06-23 → 2026-07-01 (+8d) | 2026-06-29 → 2026-07-06 (+7d) | 5d → 4d |  | 3d → 5d | 242 → 240 | baseline start none → 2026-06-23; baseline finish none → 2026-06-29 |
| 271 | Análise Tecnored | 2026-06-30 → 2026-07-07 (+7d) | 2026-06-30 → 2026-07-07 (+7d) |  |  | 3d → 5d |  | baseline start none → 2026-06-30; baseline finish none → 2026-06-30 |
| 272 | Atendimento de comentários | 2026-07-01 → 2026-07-08 (+7d) | 2026-07-02 → 2026-07-08 (+6d) | 2d → 1d |  | 3d → 5d |  | baseline start none → 2026-07-01; baseline finish none → 2026-07-02 |
| 273 | Aprovação | 2026-07-03 → 2026-07-09 (+6d) | 2026-07-03 → 2026-07-09 (+6d) |  |  | 3d → 5d |  | baseline start none → 2026-07-03; baseline finish none → 2026-07-03 |
| 274 | **AG-F0009-0306-MB-S-00004** | 2026-06-23 → 2026-07-01 (+8d) | 2026-07-03 → 2026-07-09 (+6d) | 9d → 7d |  | 3d → 5d |  | baseline start none → 2026-06-23; baseline finish none → 2026-07-03 |
| 275 | Emissão inicial | 2026-06-23 → 2026-07-01 (+8d) | 2026-06-29 → 2026-07-06 (+7d) | 5d → 4d |  | 3d → 5d | 242 → 240 | baseline start none → 2026-06-23; baseline finish none → 2026-06-29 |
| 276 | Análise Tecnored | 2026-06-30 → 2026-07-07 (+7d) | 2026-06-30 → 2026-07-07 (+7d) |  |  | 3d → 5d |  | baseline start none → 2026-06-30; baseline finish none → 2026-06-30 |
| 277 | Atendimento de comentários | 2026-07-01 → 2026-07-08 (+7d) | 2026-07-02 → 2026-07-08 (+6d) | 2d → 1d |  | 3d → 5d |  | baseline start none → 2026-07-01; baseline finish none → 2026-07-02 |
| 278 | Aprovação | 2026-07-03 → 2026-07-09 (+6d) | 2026-07-03 → 2026-07-09 (+6d) |  |  | 3d → 5d |  | baseline start none → 2026-07-03; baseline finish none → 2026-07-03 |
| 279 | **AG-F0009-0306-MB-S-00005** | 2026-06-23 → 2026-07-01 (+8d) | 2026-07-03 → 2026-07-09 (+6d) | 9d → 7d |  | 3d → 5d |  | baseline start none → 2026-06-23; baseline finish none → 2026-07-03 |
| 280 | Emissão inicial | 2026-06-23 → 2026-07-01 (+8d) | 2026-06-29 → 2026-07-06 (+7d) | 5d → 4d |  | 3d → 5d | 242 → 240 | baseline start none → 2026-06-23; baseline finish none → 2026-06-29 |
| 281 | Análise Tecnored | 2026-06-30 → 2026-07-07 (+7d) | 2026-06-30 → 2026-07-07 (+7d) |  |  | 3d → 5d |  | baseline start none → 2026-06-30; baseline finish none → 2026-06-30 |
| 282 | Atendimento de comentários | 2026-07-01 → 2026-07-08 (+7d) | 2026-07-02 → 2026-07-08 (+6d) | 2d → 1d |  | 3d → 5d |  | baseline start none → 2026-07-01; baseline finish none → 2026-07-02 |
| 283 | Aprovação | 2026-07-03 → 2026-07-09 (+6d) | 2026-07-03 → 2026-07-09 (+6d) |  |  | 3d → 5d |  | baseline start none → 2026-07-03; baseline finish none → 2026-07-03 |
| 284 | **PL-F0009-0306-MB-S-00001** | 2026-06-23 → 2026-06-16 A (-7d) | 2026-07-03 → 2026-06-24 (-9d) | 9d → 7d | 0% → 57% | 3d → 16d |  | baseline start none → 2026-06-23; baseline finish none → 2026-07-03 |
| 285 | Emissão inicial | 2026-06-23 → 2026-06-16 A (-7d) | 2026-06-29 → 2026-06-19 A (-10d) | 5d → 4d | 0% → 100% | 3d → none | 242 → 255FF | constraint none → start no earlier than 2026-06-16; baseline start none → 2026-06-23; baseline finish none → 2026-06-29 |
| 286 | Análise Tecnored | 2026-06-30 → 2026-06-22 (-8d) | 2026-06-30 → 2026-06-22 (-8d) |  |  | 3d → 16d |  | baseline start none → 2026-06-30; baseline finish none → 2026-06-30 |
| 287 | Atendimento de comentários | 2026-07-01 → 2026-06-23 (-8d) | 2026-07-02 → 2026-06-23 (-9d) | 2d → 1d |  | 3d → 16d |  | baseline start none → 2026-07-01; baseline finish none → 2026-07-02 |
| 288 | Aprovação | 2026-07-03 → 2026-06-24 (-9d) | 2026-07-03 → 2026-06-24 (-9d) |  |  | 3d → 16d |  | baseline start none → 2026-07-03; baseline finish none → 2026-07-03 |
| 289 | **Elétrica** | 2026-05-28 A | 2026-07-07 → 2026-07-13 (+6d) | 29d → 31d | 0% → 42% | 1d → 3d |  | baseline start none → 2026-05-28; baseline finish none → 2026-07-07 |
| 290 | **CP-F0009-0306-MB-E-00001** |  | 2026-06-10 → 2026-06-19 (+9d) | 27d → 32d |  | 20d → 19d |  |  |
| 292 | Análise Tecnored | 2026-06-05 → 2026-06-16 (+11d) | 2026-06-05 → 2026-06-16 (+11d) |  |  | 20d → 19d |  |  |
| 293 | Atendimento de comentários | 2026-06-08 → 2026-06-17 (+9d) | 2026-06-09 → 2026-06-18 (+9d) |  |  | 20d → 19d |  |  |
| 294 | Aprovação | 2026-06-10 → 2026-06-19 (+9d) | 2026-06-10 → 2026-06-19 (+9d) |  |  | 20d → 19d |  |  |
| 295 | **ML-F0009-0306-MB-E-00001** | 2026-06-12 → 2026-07-03 A (+21d) | 2026-06-24 → 2026-07-10 (+16d) | 9d → 6d | 0% → 8% | 1d → 4d |  | baseline start none → 2026-06-12; baseline finish none → 2026-06-24 |
| 296 | Emissão inicial | 2026-06-12 → 2026-07-03 A (+21d) | 2026-06-18 → 2026-07-07 (+19d) | 5d → 3d | 0% → 15% | 1d → 4d | 361FS-10d → 125, 241 | constraint none → finish no earlier than 2026-06-24; baseline start none → 2026-06-12; baseline finish none → 2026-06-18 |
| 297 | Análise Tecnored | 2026-06-19 → 2026-07-08 (+19d) | 2026-06-19 → 2026-07-08 (+19d) |  |  | 10d → 4d |  | baseline start none → 2026-06-19; baseline finish none → 2026-06-19 |
| 298 | Atendimento de comentários | 2026-06-22 → 2026-07-09 (+17d) | 2026-06-23 → 2026-07-09 (+16d) | 2d → 1d |  | 10d → 4d |  | baseline start none → 2026-06-22; baseline finish none → 2026-06-23 |
| 299 | Aprovação | 2026-06-24 → 2026-07-10 (+16d) | 2026-06-24 → 2026-07-10 (+16d) |  |  | 10d → 4d |  | baseline start none → 2026-06-24; baseline finish none → 2026-06-24 |

| ID | Task | Start | Finish | Duration | Complete | Total float | Predecessors | Other |
| --- | --- | --- | --- | --- | --- | --- | --- | --- |
| 300 | **RL-F0009-0306-MB-E-00001** | 2026-06-02 A | 2026-06-10 → 2026-06-11 (+1d) | 7d → 5.75d | 0% → 86% | 1d → 25.25d |  | baseline start none → 2026-06-02; baseline finish none → 2026-06-10 |
| 301 | Emissão inicial | 2026-06-02 A | 2026-06-04 → 2026-06-08 A (+4d) |  | 0% → 100% | 1d → none | 311 → 311FS-1d | baseline start none → 2026-06-02; baseline finish none → 2026-06-04 |
| 302 | Análise Tecnored | 2026-06-05 → 2026-06-09 A (+4d) | 2026-06-05 → 2026-06-10 A (+5d) | 1d → 2d | 0% → 100% | 20d → none |  | baseline start none → 2026-06-05; baseline finish none → 2026-06-05 |
| 303 | Atendimento de comentários | 2026-06-08 → 2026-06-10 A (+2d) | 2026-06-09 → 2026-06-11 A (+2d) | 2d → 1d | 0% → 100% | 20d → none |  | baseline start none → 2026-06-08; baseline finish none → 2026-06-09 |
| 304 | Aprovação |  | 2026-06-10 → 2026-06-11 (+1d) |  |  | 20d → 25.25d | 303 → 303FF | baseline start none → 2026-06-10; baseline finish none → 2026-06-10 |
| 305 | **LE-F0009-0306-MB-E-00001** | 2026-06-24 → 2026-07-06 (+12d) | 2026-07-02 → 2026-07-10 (+8d) | 7d → 5d |  |  |  | baseline start none → 2026-06-24; baseline finish none → 2026-07-02 |
| 306 | Emissão inicial | 2026-06-24 → 2026-07-06 (+12d) | 2026-06-26 → 2026-07-08 (+12d) |  |  |  |  | constraint none → finish no earlier than 2026-06-29; baseline start none → 2026-06-24; baseline finish none → 2026-06-26 |
| 307 | Análise Tecnored | 2026-06-29 → 2026-07-09 (+10d) | 2026-06-29 → 2026-07-09 (+10d) |  |  |  |  | baseline start none → 2026-06-29; baseline finish none → 2026-06-29 |
| 308 | Atendimento de comentários | 2026-06-30 → 2026-07-10 (+10d) | 2026-07-01 → 2026-07-10 (+9d) | 2d → 1d |  |  |  | baseline start none → 2026-06-30; baseline finish none → 2026-07-01 |
| 309 | Aprovação | 2026-07-02 → 2026-07-10 (+8d) | 2026-07-02 → 2026-07-10 (+8d) |  |  |  | 308 → 308FF | baseline start none → 2026-07-02; baseline finish none → 2026-07-02 |
| 310 | **LR-F0009-0306-MB-E-00001** | 2026-05-28 A | 2026-06-05 → 2026-06-03 (-2d) | 7d → 5d | 0% → 75% | 1d → 29d |  | baseline start none → 2026-05-28; baseline finish none → 2026-06-05 |
| 311 | Emissão inicial | 2026-05-28 A | 2026-06-01 A |  | 0% → 100% | 1d → none |  | baseline start none → 2026-05-28; baseline finish none → 2026-06-01 |
| 312 | Análise Tecnored | 2026-06-02 A | 2026-06-02 A |  | 0% → 100% | 23d → none |  | baseline start none → 2026-06-02; baseline finish none → 2026-06-02 |
| 313 | Atendimento de comentários | 2026-06-03 A | 2026-06-04 → 2026-06-03 (-1d) | 2d → 1d | 0% → 50% | 23d → 29d |  | baseline start none → 2026-06-03; baseline finish none → 2026-06-04 |
| 314 | Aprovação | 2026-06-05 → 2026-06-03 (-2d) | 2026-06-05 → 2026-06-03 (-2d) |  |  | 23d → 29d | 313 → 313FF | baseline start none → 2026-06-05; baseline finish none → 2026-06-05 |
| 315 | **LM-F0009-0306-MB-E-00001** | 2026-06-26 → 2026-07-06 (+10d) | 2026-07-02 → 2026-07-08 (+6d) | 5d → 3d |  | 1d → 3d |  | baseline start none → 2026-06-26; baseline finish none → 2026-07-02 |
| 316 | Emissão inicial | 2026-06-26 → 2026-07-06 (+10d) | 2026-06-26 → 2026-07-06 (+10d) |  |  | 1d → 3d |  | baseline start none → 2026-06-26; baseline finish none → 2026-06-26 |
| 317 | Análise Tecnored | 2026-06-29 → 2026-07-07 (+8d) | 2026-06-29 → 2026-07-07 (+8d) |  |  | 4d → 6d |  | baseline start none → 2026-06-29; baseline finish none → 2026-06-29 |
| 318 | Atendimento de comentários | 2026-06-30 → 2026-07-08 (+8d) | 2026-07-01 → 2026-07-08 (+7d) | 2d → 1d |  | 4d → 6d |  | baseline start none → 2026-06-30; baseline finish none → 2026-07-01 |
| 319 | Aprovação | 2026-07-02 → 2026-07-08 (+6d) | 2026-07-02 → 2026-07-08 (+6d) |  |  | 4d → 6d | 318 → 318FF | baseline start none → 2026-07-02; baseline finish none → 2026-07-02 |
| 320 | **PQ-F0009-0306-MB-E-00001** | 2026-06-29 → 2026-07-07 (+8d) | 2026-07-07 → 2026-07-13 (+6d) | 7d → 5d |  | 1d → 3d |  | baseline start none → 2026-06-29; baseline finish none → 2026-07-07 |
| 321 | Emissão inicial | 2026-06-29 → 2026-07-07 (+8d) | 2026-07-01 → 2026-07-09 (+8d) |  |  | 1d → 3d |  | baseline start none → 2026-06-29; baseline finish none → 2026-07-01 |
| 322 | Análise Tecnored | 2026-07-02 → 2026-07-10 (+8d) | 2026-07-02 → 2026-07-10 (+8d) |  |  | 1d → 3d |  | baseline start none → 2026-07-02; baseline finish none → 2026-07-02 |
| 323 | Atendimento de comentários | 2026-07-03 → 2026-07-13 (+10d) | 2026-07-06 → 2026-07-13 (+7d) | 2d → 1d |  | 1d → 3d |  | baseline start none → 2026-07-03; baseline finish none → 2026-07-06 |
| 324 | Aprovação | 2026-07-07 → 2026-07-13 (+6d) | 2026-07-07 → 2026-07-13 (+6d) |  |  | 1d → 3d | 323 → 323FF | baseline start none → 2026-07-07; baseline finish none → 2026-07-07 |
| 325 | **MD-F0009-0306-MB-E-00001** | 2026-06-29 → 2026-07-07 (+8d) | 2026-07-06 → 2026-07-14 (+8d) |  |  |  |  |  |
| 326 | Emissão inicial | 2026-06-29 → 2026-07-07 (+8d) | 2026-06-30 → 2026-07-08 (+8d) |  |  |  |  |  |
| 327 | Análise Tecnored | 2026-07-01 → 2026-07-09 (+8d) | 2026-07-01 → 2026-07-09 (+8d) |  |  |  |  |  |
| 328 | Atendimento de comentários | 2026-07-02 → 2026-07-10 (+8d) | 2026-07-03 → 2026-07-13 (+10d) |  |  |  |  |  |
| 329 | Aprovação | 2026-07-06 → 2026-07-14 (+8d) | 2026-07-06 → 2026-07-14 (+8d) |  |  |  |  |  |
| 330 | **MC-F0009-0306-MB-E-00001** | 2026-06-17 → 2026-07-01 A (+14d) | 2026-06-26 → 2026-07-07 (+11d) | 8d → 5d | 0% → 35% | 5d → 7d |  | baseline start none → 2026-06-17; baseline finish none → 2026-06-26 |
| 331 | Emissão inicial | 2026-06-17 → 2026-07-01 A (+14d) | 2026-06-22 → 2026-07-03 (+11d) | 4d → 3d | 0% → 70% | 5d → 7d | 396 → none | constraint none → start no earlier than 2026-07-01; baseline start none → 2026-06-17; baseline finish none → 2026-06-22 |
| 332 | Análise Tecnored | 2026-06-23 → 2026-07-06 (+13d) | 2026-06-23 → 2026-07-06 (+13d) |  |  | 8d → 7d |  | baseline start none → 2026-06-23; baseline finish none → 2026-06-23 |
| 333 | Atendimento de comentários | 2026-06-24 → 2026-07-07 (+13d) | 2026-06-25 → 2026-07-07 (+12d) | 2d → 1d |  | 8d → 7d |  | baseline start none → 2026-06-24; baseline finish none → 2026-06-25 |
| 334 | Aprovação | 2026-06-26 → 2026-07-07 (+11d) | 2026-06-26 → 2026-07-07 (+11d) |  |  | 8d → 7d | 333 → 333FF | baseline start none → 2026-06-26; baseline finish none → 2026-06-26 |
| 335 | **MC-F0009-0306-MB-E-00002** | 2026-06-17 → 2026-07-01 A (+14d) | 2026-06-29 → 2026-07-07 (+8d) | 9d → 5d | 0% → 35% | 1d → 7d |  | baseline start none → 2026-06-17; baseline finish none → 2026-06-29 |
| 336 | Emissão inicial | 2026-06-17 → 2026-07-01 A (+14d) | 2026-06-23 → 2026-07-03 (+10d) | 5d → 3d | 0% → 70% | 1d → 7d | 396 → none | constraint none → start no earlier than 2026-07-01; baseline start none → 2026-06-17; baseline finish none → 2026-06-23 |
| 337 | Análise Tecnored | 2026-06-24 → 2026-07-06 (+12d) | 2026-06-24 → 2026-07-06 (+12d) |  |  |  |  | baseline start none → 2026-06-24; baseline finish none → 2026-06-24 |
| 338 | Atendimento de comentários | 2026-06-25 → 2026-07-07 (+12d) | 2026-06-26 → 2026-07-07 (+11d) | 2d → 1d |  |  |  | baseline start none → 2026-06-25; baseline finish none → 2026-06-26 |
| 339 | Aprovação | 2026-06-29 → 2026-07-07 (+8d) | 2026-06-29 → 2026-07-07 (+8d) |  |  |  | 338 → 338FF | baseline start none → 2026-06-29; baseline finish none → 2026-06-29 |
| 340 | **AG-F0009-0306-MB-E-00001** | 2026-06-19 → 2026-06-29 A (+10d) | 2026-06-30 → 2026-07-06 (+6d) | 8d → 6d | 0% → 40% | 1d → 8d |  | baseline start none → 2026-06-19; baseline finish none → 2026-06-30 |
| 341 | Emissão inicial | 2026-06-19 → 2026-06-29 A (+10d) | 2026-06-24 → 2026-07-02 (+8d) |  | 0% → 70% | 1d → 3d | 296 → none | constraint none → start no earlier than 2026-06-29; baseline start none → 2026-06-19; baseline finish none → 2026-06-24 |
| 342 | Análise Tecnored | 2026-06-25 → 2026-07-03 (+8d) | 2026-06-25 → 2026-07-03 (+8d) |  |  | 1d → 3d |  | baseline start none → 2026-06-25; baseline finish none → 2026-06-25 |
| 343 | Atendimento de comentários | 2026-06-26 → 2026-07-06 (+10d) | 2026-06-29 → 2026-07-06 (+7d) | 2d → 1d |  | 6d → 8d |  | baseline start none → 2026-06-26; baseline finish none → 2026-06-29 |
| 344 | Aprovação | 2026-06-30 → 2026-07-06 (+6d) | 2026-06-30 → 2026-07-06 (+6d) |  |  | 6d → 8d | 343 → 343FF | baseline start none → 2026-06-30; baseline finish none → 2026-06-30 |
| 345 | **AG-F0009-0306-MB-E-00002** | 2026-06-19 → 2026-06-29 A (+10d) | 2026-06-30 → 2026-07-06 (+6d) | 8d → 6d | 0% → 40% | 6d → 8d |  | baseline start none → 2026-06-19; baseline finish none → 2026-06-30 |
| 346 | Emissão inicial | 2026-06-19 → 2026-06-29 A (+10d) | 2026-06-24 → 2026-07-02 (+8d) |  | 0% → 70% | 6d → 8d | 296 → 356FS-2d | constraint none → start no earlier than 2026-06-19; baseline start none → 2026-06-19; baseline finish none → 2026-06-24 |
| 347 | Análise Tecnored | 2026-06-25 → 2026-07-03 (+8d) | 2026-06-25 → 2026-07-03 (+8d) |  |  | 6d → 8d |  | baseline start none → 2026-06-25; baseline finish none → 2026-06-25 |
| 348 | Atendimento de comentários | 2026-06-26 → 2026-07-06 (+10d) | 2026-06-29 → 2026-07-06 (+7d) | 2d → 1d |  | 6d → 8d |  | baseline start none → 2026-06-26; baseline finish none → 2026-06-29 |
| 349 | Aprovação | 2026-06-30 → 2026-07-06 (+6d) | 2026-06-30 → 2026-07-06 (+6d) |  |  | 6d → 8d | 348 → 348FF | baseline start none → 2026-06-30; baseline finish none → 2026-06-30 |
| 350 | **AG-F0009-0306-MB-E-00003** | 2026-06-19 → 2026-06-29 A (+10d) | 2026-06-30 → 2026-07-06 (+6d) | 8d → 6d | 0% → 40% | 6d → 8d |  | baseline start none → 2026-06-19; baseline finish none → 2026-06-30 |
| 351 | Emissão inicial | 2026-06-19 → 2026-06-29 A (+10d) | 2026-06-24 → 2026-07-02 (+8d) |  | 0% → 70% | 6d → 8d | 296 → 356FS-2d | constraint none → start no earlier than 2026-06-19; baseline start none → 2026-06-19; baseline finish none → 2026-06-24 |
| 352 | Análise Tecnored | 2026-06-25 → 2026-07-03 (+8d) | 2026-06-25 → 2026-07-03 (+8d) |  |  | 6d → 8d |  | baseline start none → 2026-06-25; baseline finish none → 2026-06-25 |
| 353 | Atendimento de comentários | 2026-06-26 → 2026-07-06 (+10d) | 2026-06-29 → 2026-07-06 (+7d) | 2d → 1d |  | 6d → 8d |  | baseline start none → 2026-06-26; baseline finish none → 2026-06-29 |
| 354 | Aprovação | 2026-06-30 → 2026-07-06 (+6d) | 2026-06-30 → 2026-07-06 (+6d) |  |  | 6d → 8d | 353 → 353FF | baseline start none → 2026-06-30; baseline finish none → 2026-06-30 |
| 355 | **DU-F0009-0306-MB-E-00001** | 2026-06-05 → 2026-06-23 A (+18d) | 2026-06-15 → 2026-06-30 (+15d) | 7d → 6d | 0% → 58% | 1d → 12d |  | baseline start none → 2026-06-05; baseline finish none → 2026-06-15 |
| 356 | Emissão inicial | 2026-06-05 → 2026-06-23 A (+18d) | 2026-06-09 → 2026-06-25 A (+16d) |  | 0% → 100% | 1d → none |  | constraint none → start no earlier than 2026-06-17; baseline start none → 2026-06-05; baseline finish none → 2026-06-09 |
| 357 | Análise Tecnored | 2026-06-10 → 2026-06-26 A (+16d) | 2026-06-10 → 2026-06-26 (+16d) |  | 0% → 50% | 17d → 12d |  | baseline start none → 2026-06-10; baseline finish none → 2026-06-10 |
| 358 | Atendimento de comentários | 2026-06-11 → 2026-06-29 (+18d) | 2026-06-12 → 2026-06-29 (+17d) | 2d → 1d |  | 17d → 12d |  | baseline start none → 2026-06-11; baseline finish none → 2026-06-12 |
| 359 | Aprovação | 2026-06-15 → 2026-06-30 (+15d) | 2026-06-15 → 2026-06-30 (+15d) |  |  | 17d → 12d |  | baseline start none → 2026-06-15; baseline finish none → 2026-06-15 |
| 360 | **DU-F0009-0306-MB-E-00002** | 2026-06-24 → 2026-06-17 (-7d) |  | 6d → 11d |  | 1d → 11d |  | baseline start none → 2026-06-24; baseline finish none → 2026-07-01 |
| 361 | Emissão inicial | 2026-06-24 → 2026-06-17 (-7d) | 2026-06-25 → 2026-06-19 (-6d) | 2d → 3d |  | 1d → 16d | 336 → 301 | constraint none → finish no earlier than 2026-06-19; baseline start none → 2026-06-24; baseline finish none → 2026-06-25 |
| 362 | Análise Tecnored | 2026-06-26 → 2026-06-29 (+3d) | 2026-06-26 → 2026-06-29 (+3d) |  |  | 5d → 11d |  | constraint none → start no earlier than 2026-06-29; baseline start none → 2026-06-26; baseline finish none → 2026-06-26 |
| 363 | Atendimento de comentários | 2026-06-29 → 2026-06-30 (+1d) |  | 2d → 1d |  | 5d → 11d |  | constraint none → start no earlier than 2026-06-30; baseline start none → 2026-06-29; baseline finish none → 2026-06-30 |
| 364 | Aprovação |  |  |  |  | 5d → 11d |  | constraint none → start no earlier than 2026-07-01; baseline start none → 2026-07-01; baseline finish none → 2026-07-01 |
| 365 | **DU-F0009-0306-MB-E-00003** | 2026-06-24 → 2026-06-17 (-7d) | 2026-07-06 → 2026-07-01 (-5d) | 9d → 11d |  | 2d → 11d |  | baseline start none → 2026-06-24; baseline finish none → 2026-07-06 |
| 366 | Emissão inicial | 2026-06-24 → 2026-06-17 (-7d) | 2026-06-30 → 2026-06-19 (-11d) | 5d → 3d |  | 2d → 16d | 336 → 301 | constraint none → finish no earlier than 2026-06-19; baseline start none → 2026-06-24; baseline finish none → 2026-06-30 |
| 367 | Análise Tecnored | 2026-07-01 → 2026-06-29 (-2d) | 2026-07-01 → 2026-06-29 (-2d) |  |  | 2d → 11d |  | constraint none → start no earlier than 2026-06-29; baseline start none → 2026-07-01; baseline finish none → 2026-07-01 |
| 368 | Atendimento de comentários | 2026-07-02 → 2026-06-30 (-2d) | 2026-07-03 → 2026-06-30 (-3d) | 2d → 1d |  | 2d → 11d |  | constraint none → start no earlier than 2026-06-30; baseline start none → 2026-07-02; baseline finish none → 2026-07-03 |
| 369 | Aprovação | 2026-07-06 → 2026-07-01 (-5d) | 2026-07-06 → 2026-07-01 (-5d) |  |  | 2d → 11d |  | constraint none → start no earlier than 2026-07-01; baseline start none → 2026-07-06; baseline finish none → 2026-07-06 |

| ID | Task | Start | Finish | Duration | Complete | Total float | Predecessors | Other |
| --- | --- | --- | --- | --- | --- | --- | --- | --- |
| 370 | **DU-F0009-0306-MB-E-00004** | 2026-06-05 → 2026-06-17 (+12d) | 2026-06-29 → 2026-07-01 (+2d) | 17d → 11d |  | 7d → 11d |  | baseline start none → 2026-06-05; baseline finish none → 2026-06-29 |
| 371 | Emissão inicial | 2026-06-05 → 2026-06-17 (+12d) | 2026-06-11 → 2026-06-19 (+8d) | 5d → 3d |  | 19d → 16d |  | constraint none → finish no earlier than 2026-06-19; baseline start none → 2026-06-05; baseline finish none → 2026-06-11 |
| 372 | Análise Tecnored | 2026-06-24 → 2026-06-29 (+5d) | 2026-06-24 → 2026-06-29 (+5d) |  |  | 7d → 11d | 336 → 371 | constraint none → start no earlier than 2026-06-29; baseline start none → 2026-06-24; baseline finish none → 2026-06-24 |
| 373 | Atendimento de comentários | 2026-06-25 → 2026-06-30 (+5d) | 2026-06-26 → 2026-06-30 (+4d) | 2d → 1d |  | 7d → 11d |  | constraint none → start no earlier than 2026-06-30; baseline start none → 2026-06-25; baseline finish none → 2026-06-26 |
| 374 | Aprovação | 2026-06-29 → 2026-07-01 (+2d) | 2026-06-29 → 2026-07-01 (+2d) |  |  | 7d → 11d |  | constraint none → start no earlier than 2026-07-01; baseline start none → 2026-06-29; baseline finish none → 2026-06-29 |
| 375 | **FD-F0009-0306-MB-E-00001** | 2026-06-10 → 2026-06-22 A (+12d) | 2026-06-22 → 2026-06-29 (+7d) | 9d → 6d | 0% → 64% | 12d → 13d |  | baseline start none → 2026-06-10; baseline finish none → 2026-06-22 |
| 376 | Emissão inicial | 2026-06-10 → 2026-06-22 A (+12d) | 2026-06-16 → 2026-06-25 A (+9d) | 5d → 4d | 0% → 100% | 12d → none | 356 → 356FS-2d | constraint none → start no earlier than 2026-06-22; baseline start none → 2026-06-10; baseline finish none → 2026-06-16 |
| 377 | Análise Tecnored | 2026-06-17 → 2026-06-26 A (+9d) | 2026-06-17 → 2026-06-26 (+9d) |  | 0% → 50% | 12d → 13d |  | baseline start none → 2026-06-17; baseline finish none → 2026-06-17 |
| 378 | Atendimento de comentários | 2026-06-18 → 2026-06-29 (+11d) | 2026-06-19 → 2026-06-29 (+10d) | 2d → 1d |  | 12d → 13d |  | baseline start none → 2026-06-18; baseline finish none → 2026-06-19 |
| 379 | Aprovação | 2026-06-22 → 2026-06-29 (+7d) | 2026-06-22 → 2026-06-29 (+7d) |  |  | 12d → 13d | 378 → 378FF | baseline start none → 2026-06-22; baseline finish none → 2026-06-22 |
| 380 | **FD-F0009-0306-MB-E-00002** | 2026-06-10 → 2026-06-24 (+14d) | 2026-06-22 → 2026-07-01 (+9d) | 9d → 6d |  | 12d → 11d |  | baseline start none → 2026-06-10; baseline finish none → 2026-06-22 |
| 381 | Emissão inicial | 2026-06-10 → 2026-06-24 (+14d) | 2026-06-16 → 2026-06-29 (+13d) | 5d → 4d |  | 12d → 11d | 356 → 356FS-2d | constraint none → start no earlier than 2026-06-23; baseline start none → 2026-06-10; baseline finish none → 2026-06-16 |
| 382 | Análise Tecnored | 2026-06-17 → 2026-06-30 (+13d) | 2026-06-17 → 2026-06-30 (+13d) |  |  | 12d → 11d |  | baseline start none → 2026-06-17; baseline finish none → 2026-06-17 |
| 383 | Atendimento de comentários | 2026-06-18 → 2026-07-01 (+13d) | 2026-06-19 → 2026-07-01 (+12d) | 2d → 1d |  | 12d → 11d |  | baseline start none → 2026-06-18; baseline finish none → 2026-06-19 |
| 384 | Aprovação | 2026-06-22 → 2026-07-01 (+9d) | 2026-06-22 → 2026-07-01 (+9d) |  |  | 12d → 11d | 383 → 383FF | baseline start none → 2026-06-22; baseline finish none → 2026-06-22 |
| 385 | **FD-F0009-0306-MB-E-00003** | 2026-06-10 → 2026-06-24 (+14d) | 2026-06-22 → 2026-07-01 (+9d) | 9d → 6d |  | 12d → 11d |  | baseline start none → 2026-06-10; baseline finish none → 2026-06-22 |
| 386 | Emissão inicial | 2026-06-10 → 2026-06-24 (+14d) | 2026-06-16 → 2026-06-29 (+13d) | 5d → 4d |  | 12d → 11d | 356 → 356FS-2d | constraint none → start no earlier than 2026-06-23; baseline start none → 2026-06-10; baseline finish none → 2026-06-16 |
| 387 | Análise Tecnored | 2026-06-17 → 2026-06-30 (+13d) | 2026-06-17 → 2026-06-30 (+13d) |  |  | 12d → 11d |  | constraint none → start no earlier than 2026-06-29; baseline start none → 2026-06-17; baseline finish none → 2026-06-17 |
| 388 | Atendimento de comentários | 2026-06-18 → 2026-07-01 (+13d) | 2026-06-19 → 2026-07-01 (+12d) | 2d → 1d |  | 12d → 11d |  | constraint none → start no earlier than 2026-06-30; baseline start none → 2026-06-18; baseline finish none → 2026-06-19 |
| 389 | Aprovação | 2026-06-22 → 2026-07-01 (+9d) | 2026-06-22 → 2026-07-01 (+9d) |  |  | 12d → 11d | 388 → 388FF | constraint none → start no earlier than 2026-06-30; baseline start none → 2026-06-22; baseline finish none → 2026-06-22 |
| 390 | **FD-F0009-0306-MB-E-00004** | 2026-06-10 → 2026-06-24 (+14d) | 2026-06-22 → 2026-07-02 (+10d) | 9d → 7d |  | 12d → 10d |  | baseline start none → 2026-06-10; baseline finish none → 2026-06-22 |
| 391 | Emissão inicial | 2026-06-10 → 2026-06-24 (+14d) | 2026-06-16 → 2026-06-29 (+13d) | 5d → 4d |  | 12d → 10d | 356 → 356FS-2d | constraint none → start no earlier than 2026-06-23; baseline start none → 2026-06-10; baseline finish none → 2026-06-16 |
| 392 | Análise Tecnored | 2026-06-17 → 2026-06-30 (+13d) | 2026-06-17 → 2026-06-30 (+13d) |  |  | 12d → 10d |  | constraint none → start no earlier than 2026-06-29; baseline start none → 2026-06-17; baseline finish none → 2026-06-17 |
| 393 | Atendimento de comentários | 2026-06-18 → 2026-07-01 (+13d) | 2026-06-19 → 2026-07-01 (+12d) | 2d → 1d |  | 12d → 10d |  | constraint none → start no earlier than 2026-06-30; baseline start none → 2026-06-18; baseline finish none → 2026-06-19 |
| 394 | Aprovação | 2026-06-22 → 2026-07-02 (+10d) | 2026-06-22 → 2026-07-02 (+10d) |  |  | 12d → 10d |  | baseline start none → 2026-06-22; baseline finish none → 2026-06-22 |
| 395 | **FD-F0009-0306-MB-E-00005** | 2026-06-10 → 2026-06-24 (+14d) | 2026-06-22 → 2026-07-02 (+10d) | 9d → 7d |  | 1d → 10d |  | baseline start none → 2026-06-10; baseline finish none → 2026-06-22 |
| 396 | Emissão inicial | 2026-06-10 → 2026-06-24 (+14d) | 2026-06-16 → 2026-06-29 (+13d) | 5d → 4d |  | 1d → 10d | 356 → 356FS-2d | constraint none → finish no earlier than 2026-06-25; baseline start none → 2026-06-10; baseline finish none → 2026-06-16 |
| 397 | Análise Tecnored | 2026-06-17 → 2026-06-30 (+13d) | 2026-06-17 → 2026-06-30 (+13d) |  |  | 12d → 10d |  | constraint none → start no earlier than 2026-06-29; baseline start none → 2026-06-17; baseline finish none → 2026-06-17 |
| 398 | Atendimento de comentários | 2026-06-18 → 2026-07-01 (+13d) | 2026-06-19 → 2026-07-01 (+12d) | 2d → 1d |  | 12d → 10d |  | constraint none → start no earlier than 2026-06-30; baseline start none → 2026-06-18; baseline finish none → 2026-06-19 |
| 399 | Aprovação | 2026-06-22 → 2026-07-02 (+10d) | 2026-06-22 → 2026-07-02 (+10d) |  |  | 12d → 10d |  | baseline start none → 2026-06-22; baseline finish none → 2026-06-22 |
| 400 | **Automação e instrumentação** | 2026-06-02 → 2026-06-15 A (+13d) | 2026-07-08 → 2026-07-10 (+2d) | 27d → 19.2d | 0% → 64% | 0d → 4.8d |  | baseline start none → 2026-06-02; baseline finish none → 2026-07-08 |
| 401 | **CP-F0009-0306-MB-J-00001** |  | 2026-06-10 → 2026-06-15 (+5d) | 27d → 28d |  | 20d → 23d |  |  |
| 403 | Análise Tecnored | 2026-06-05 → 2026-06-10 (+5d) | 2026-06-05 → 2026-06-10 (+5d) |  |  | 20d → 23d |  |  |
| 404 | Atendimento de comentários | 2026-06-08 → 2026-06-11 (+3d) | 2026-06-09 → 2026-06-12 (+3d) |  |  | 20d → 23d |  |  |
| 405 | Aprovação | 2026-06-10 → 2026-06-15 (+5d) | 2026-06-10 → 2026-06-15 (+5d) |  |  | 20d → 23d |  |  |
| 406 | **LI-F0009-0306-MB-J-00001** | 2026-06-05 → 2026-06-16 A (+11d) | 2026-06-15 → 2026-06-25 (+10d) | 7d → 8d | 0% → 75% | 0d → 15d |  | baseline start none → 2026-06-05; baseline finish none → 2026-06-15 |
| 407 | Emissão inicial | 2026-06-05 → 2026-06-16 A (+11d) | 2026-06-09 → 2026-06-19 A (+10d) | 3d → 4d | 0% → 100% | 0d → none |  | constraint none → finish no earlier than 2026-06-19; baseline start none → 2026-06-05; baseline finish none → 2026-06-09 |
| 408 | Análise Tecnored | 2026-06-10 → 2026-06-22 A (+12d) | 2026-06-10 → 2026-06-22 A (+12d) |  | 0% → 100% | 17d → none |  | baseline start none → 2026-06-10; baseline finish none → 2026-06-10 |
| 409 | Atendimento de comentários | 2026-06-11 → 2026-06-23 A (+12d) | 2026-06-12 → 2026-06-24 (+12d) |  | 0% → 50% | 17d → 15d |  | baseline start none → 2026-06-11; baseline finish none → 2026-06-12 |
| 410 | Aprovação | 2026-06-15 → 2026-06-25 (+10d) | 2026-06-15 → 2026-06-25 (+10d) |  |  | 17d → 15d |  | constraint none → finish no earlier than 2026-06-23; baseline start none → 2026-06-15; baseline finish none → 2026-06-15 |
| 411 | **LE-F0009-0306-MB-J-00001** | 2026-06-26 → 2026-06-15 A (-11d) | 2026-07-03 → 2026-06-24 (-9d) | 6d → 8d | 0% → 56% | 3d → 16d |  | baseline start none → 2026-06-26; baseline finish none → 2026-07-03 |
| 412 | Emissão inicial | 2026-06-26 → 2026-06-15 A (-11d) | 2026-06-29 → 2026-06-18 A (-11d) | 2d → 4d | 0% → 100% | 3d → none | 492 → none | constraint none → finish no earlier than 2026-06-18; baseline start none → 2026-06-26; baseline finish none → 2026-06-29 |
| 413 | Análise Tecnored | 2026-06-30 → 2026-06-19 A (-11d) | 2026-06-30 → 2026-06-19 (-11d) |  | 0% → 50% | 3d → 16d |  | baseline start none → 2026-06-30; baseline finish none → 2026-06-30 |
| 414 | Atendimento de comentários | 2026-07-01 → 2026-06-22 (-9d) | 2026-07-02 → 2026-06-23 (-9d) |  |  | 3d → 16d |  | baseline start none → 2026-07-01; baseline finish none → 2026-07-02 |
| 415 | Aprovação | 2026-07-03 → 2026-06-24 (-9d) | 2026-07-03 → 2026-06-24 (-9d) |  |  | 3d → 16d |  | baseline start none → 2026-07-03; baseline finish none → 2026-07-03 |
| 417 | Emissão inicial | 2026-06-22 → 2026-06-26 A (+4d) | 2026-06-23 → 2026-07-01 A (+8d) | 2d → 4d | 0% → 100% | 0d → none |  | baseline start none → 2026-06-22; baseline finish none → 2026-06-23 |
| 418 | Análise Tecnored | 2026-06-24 → 2026-07-02 (+8d) | 2026-06-24 → 2026-07-02 (+8d) |  |  |  |  | baseline start none → 2026-06-24; baseline finish none → 2026-06-24 |
| 419 | Atendimento de comentários | 2026-06-25 → 2026-07-03 (+8d) | 2026-06-26 → 2026-07-06 (+10d) |  |  |  |  | baseline start none → 2026-06-25; baseline finish none → 2026-06-26 |
| 420 | Aprovação | 2026-06-29 → 2026-07-07 (+8d) | 2026-06-29 → 2026-07-07 (+8d) |  |  |  |  | baseline start none → 2026-06-29; baseline finish none → 2026-06-29 |
| 421 | **LZ-F0009-0306-MB-J-00001** | 2026-06-22 → 2026-06-29 (+7d) | 2026-06-29 → 2026-07-08 (+9d) | 6d → 8d |  | 0d → 1.5d |  | baseline start none → 2026-06-22; baseline finish none → 2026-06-29 |
| 426 | **LE-F0009-0306-MB-J-00002** | 2026-06-22 → 2026-06-26 (+4d) | 2026-06-30 → 2026-07-06 (+6d) |  |  | 6d → 8d |  | baseline start none → 2026-06-22; baseline finish none → 2026-06-30 |
| 427 | Emissão inicial | 2026-06-22 → 2026-06-26 (+4d) | 2026-06-24 → 2026-07-01 (+7d) | 3d → 4d |  | 6d → 8d | 492FS-4d → 417SS | baseline start none → 2026-06-22; baseline finish none → 2026-06-24 |
| 428 | Análise Tecnored | 2026-06-25 → 2026-07-02 (+7d) | 2026-06-25 → 2026-07-02 (+7d) |  |  | 6d → 8d |  | baseline start none → 2026-06-25; baseline finish none → 2026-06-25 |
| 429 | Atendimento de comentários | 2026-06-26 → 2026-07-03 (+7d) | 2026-06-29 → 2026-07-03 (+4d) | 2d → 1d |  | 6d → 8d |  | baseline start none → 2026-06-26; baseline finish none → 2026-06-29 |
| 430 | Aprovação | 2026-06-30 → 2026-07-06 (+6d) | 2026-06-30 → 2026-07-06 (+6d) |  |  | 6d → 8d |  | baseline start none → 2026-06-30; baseline finish none → 2026-06-30 |
| 431 | **PQ-F0009-0306-MB-J-00001** | 2026-06-23 → 2026-06-26 A (+3d) | 2026-06-29 → 2026-07-08 (+9d) | 5d → 9d | 0% → 17% | 7d → 6d |  | baseline start none → 2026-06-23; baseline finish none → 2026-06-29 |
| 432 | Emissão inicial | 2026-06-23 → 2026-06-26 A (+3d) | 2026-06-23 → 2026-07-03 (+10d) | 1d → 6d | 0% → 25% | 7d → 6d |  | baseline start none → 2026-06-23; baseline finish none → 2026-06-23 |
| 433 | Análise Tecnored | 2026-06-24 → 2026-07-06 (+12d) | 2026-06-24 → 2026-07-06 (+12d) |  |  | 7d → 6d |  | baseline start none → 2026-06-24; baseline finish none → 2026-06-24 |
| 434 | Atendimento de comentários | 2026-06-25 → 2026-07-07 (+12d) | 2026-06-26 → 2026-07-07 (+11d) | 2d → 1d |  | 7d → 6d |  | baseline start none → 2026-06-25; baseline finish none → 2026-06-26 |
| 435 | Aprovação | 2026-06-29 → 2026-07-08 (+9d) | 2026-06-29 → 2026-07-08 (+9d) |  |  | 7d → 6d |  | baseline start none → 2026-06-29; baseline finish none → 2026-06-29 |
| 436 | **FG-F0009-0306-MB-J-00001** | 2026-06-02 → 2026-06-16 A (+14d) | 2026-06-12 → 2026-06-26 (+14d) |  | 0% → 80% | 18d → 14d |  | baseline start none → 2026-06-02; baseline finish none → 2026-06-12 |
| 437 | Emissão inicial | 2026-06-02 → 2026-06-16 A (+14d) | 2026-06-08 → 2026-06-23 A (+15d) | 5d → 6d | 0% → 100% | 18d → none |  | constraint none → finish no earlier than 2026-06-12; baseline start none → 2026-06-02; baseline finish none → 2026-06-08 |
| 438 | Análise Tecnored | 2026-06-09 → 2026-06-24 A (+15d) | 2026-06-09 → 2026-06-24 A (+15d) |  | 0% → 100% | 18d → none |  | baseline start none → 2026-06-09; baseline finish none → 2026-06-09 |
| 439 | Atendimento de comentários | 2026-06-10 → 2026-06-25 A (+15d) | 2026-06-11 → 2026-06-26 (+15d) |  | 0% → 50% | 18d → 14d |  | baseline start none → 2026-06-10; baseline finish none → 2026-06-11 |
| 440 | Aprovação | 2026-06-12 → 2026-06-26 (+14d) | 2026-06-12 → 2026-06-26 (+14d) |  |  | 18d → 14d | 439 → 439FF | baseline start none → 2026-06-12; baseline finish none → 2026-06-12 |
| 441 | **FG-F0009-0306-MB-J-00002** | 2026-06-02 → 2026-06-19 A (+17d) | 2026-06-10 → 2026-07-02 (+22d) | 7d → 10d | 0% → 60% | 0d → 10d |  | baseline start none → 2026-06-02; baseline finish none → 2026-06-10 |
| 442 | Emissão inicial | 2026-06-02 → 2026-06-19 A (+17d) | 2026-06-04 → 2026-06-26 A (+22d) | 3d → 6d | 0% → 100% | 0d → none |  | baseline start none → 2026-06-02; baseline finish none → 2026-06-04 |
| 443 | Análise Tecnored | 2026-06-05 → 2026-06-29 (+24d) | 2026-06-05 → 2026-06-29 (+24d) |  |  | 20d → 10d |  | baseline start none → 2026-06-05; baseline finish none → 2026-06-05 |
| 444 | Atendimento de comentários | 2026-06-08 → 2026-06-30 (+22d) | 2026-06-09 → 2026-07-01 (+22d) |  |  | 20d → 10d |  | baseline start none → 2026-06-08; baseline finish none → 2026-06-09 |
| 445 | Aprovação | 2026-06-10 → 2026-07-02 (+22d) | 2026-06-10 → 2026-07-02 (+22d) |  |  | 20d → 10d |  | baseline start none → 2026-06-10; baseline finish none → 2026-06-10 |

| ID | Task | Start | Finish | Duration | Complete | Total float | Predecessors | Other |
| --- | --- | --- | --- | --- | --- | --- | --- | --- |
| 446 | **FG-F0009-0306-MB-J-00003** | 2026-06-02 → 2026-06-19 A (+17d) | 2026-06-12 → 2026-07-02 (+20d) | 9d → 10d | 0% → 60% | 18d → 10d |  | baseline start none → 2026-06-02; baseline finish none → 2026-06-12 |
| 447 | Emissão inicial | 2026-06-02 → 2026-06-19 A (+17d) | 2026-06-08 → 2026-06-26 A (+18d) | 5d → 6d | 0% → 100% | 18d → none |  | constraint none → finish no earlier than 2026-06-12; baseline start none → 2026-06-02; baseline finish none → 2026-06-08 |
| 448 | Análise Tecnored | 2026-06-09 → 2026-06-29 (+20d) | 2026-06-09 → 2026-06-29 (+20d) |  |  | 18d → 10d |  | baseline start none → 2026-06-09; baseline finish none → 2026-06-09 |
| 449 | Atendimento de comentários | 2026-06-10 → 2026-06-30 (+20d) | 2026-06-11 → 2026-07-01 (+20d) |  |  | 18d → 10d |  | baseline start none → 2026-06-10; baseline finish none → 2026-06-11 |
| 450 | Aprovação | 2026-06-12 → 2026-07-02 (+20d) | 2026-06-12 → 2026-07-02 (+20d) |  |  | 18d → 10d |  | baseline start none → 2026-06-12; baseline finish none → 2026-06-12 |
| 451 | **AG-F0009-0306-MB-J-00001** | 2026-06-10 → 2026-06-23 A (+13d) | 2026-06-29 → 2026-07-02 (+3d) | 14d → 8d | 0% → 50% | 7d → 10d |  | baseline start none → 2026-06-10; baseline finish none → 2026-06-29 |
| 452 | Emissão inicial | 2026-06-10 → 2026-06-23 A (+13d) | 2026-06-23 → 2026-06-26 A (+3d) | 10d → 4d | 0% → 100% | 7d → none |  | constraint none → finish no earlier than 2026-06-23; baseline start none → 2026-06-10; baseline finish none → 2026-06-23 |
| 453 | Análise Tecnored | 2026-06-24 → 2026-06-29 (+5d) | 2026-06-24 → 2026-06-29 (+5d) |  |  | 7d → 10d |  | baseline start none → 2026-06-24; baseline finish none → 2026-06-24 |
| 454 | Atendimento de comentários | 2026-06-25 → 2026-06-30 (+5d) | 2026-06-26 → 2026-07-01 (+5d) |  |  | 7d → 10d |  | baseline start none → 2026-06-25; baseline finish none → 2026-06-26 |
| 455 | Aprovação | 2026-06-29 → 2026-07-02 (+3d) | 2026-06-29 → 2026-07-02 (+3d) |  |  | 7d → 10d |  | baseline start none → 2026-06-29; baseline finish none → 2026-06-29 |
| 456 | **AG-F0009-0306-MB-J-00002** | 2026-06-10 → 2026-06-26 A (+16d) | 2026-06-29 → 2026-07-07 (+8d) | 14d → 8d | 0% → 50% |  |  | baseline start none → 2026-06-10; baseline finish none → 2026-06-29 |
| 457 | Emissão inicial | 2026-06-10 → 2026-06-26 A (+16d) | 2026-06-23 → 2026-07-01 A (+8d) | 10d → 4d | 0% → 100% | 7d → none |  | constraint none → finish no earlier than 2026-06-26; baseline start none → 2026-06-10; baseline finish none → 2026-06-23 |
| 458 | Análise Tecnored | 2026-06-24 → 2026-07-02 (+8d) | 2026-06-24 → 2026-07-02 (+8d) |  |  |  |  | baseline start none → 2026-06-24; baseline finish none → 2026-06-24 |
| 459 | Atendimento de comentários | 2026-06-25 → 2026-07-03 (+8d) | 2026-06-26 → 2026-07-06 (+10d) |  |  |  |  | baseline start none → 2026-06-25; baseline finish none → 2026-06-26 |
| 460 | Aprovação | 2026-06-29 → 2026-07-07 (+8d) | 2026-06-29 → 2026-07-07 (+8d) |  |  |  |  | baseline start none → 2026-06-29; baseline finish none → 2026-06-29 |
| 461 | **AG-F0009-0306-MB-J-00003** | 2026-06-10 → 2026-06-26 A (+16d) | 2026-06-29 → 2026-07-07 (+8d) | 14d → 8d | 0% → 50% | 0d → 7d |  | baseline start none → 2026-06-10; baseline finish none → 2026-06-29 |
| 462 | Emissão inicial | 2026-06-10 → 2026-06-26 A (+16d) | 2026-06-23 → 2026-07-01 A (+8d) | 10d → 4d | 0% → 100% | 0d → none |  | constraint none → finish no earlier than 2026-06-26; baseline start none → 2026-06-10; baseline finish none → 2026-06-23 |
| 463 | Análise Tecnored | 2026-06-24 → 2026-07-02 (+8d) | 2026-06-24 → 2026-07-02 (+8d) |  |  |  |  | baseline start none → 2026-06-24; baseline finish none → 2026-06-24 |
| 464 | Atendimento de comentários | 2026-06-25 → 2026-07-03 (+8d) | 2026-06-26 → 2026-07-06 (+10d) |  |  |  |  | baseline start none → 2026-06-25; baseline finish none → 2026-06-26 |
| 465 | Aprovação | 2026-06-29 → 2026-07-07 (+8d) | 2026-06-29 → 2026-07-07 (+8d) |  |  |  |  | baseline start none → 2026-06-29; baseline finish none → 2026-06-29 |
| 466 | **AG-F0009-0306-MB-J-00004** | 2026-06-10 → 2026-06-22 (+12d) |  | 14d → 6d |  | 7d → 13d |  | baseline start none → 2026-06-10; baseline finish none → 2026-06-29 |
| 467 | Emissão inicial | 2026-06-10 → 2026-06-22 (+12d) |  | 10d → 2d |  | 7d → 13d |  | baseline start none → 2026-06-10; baseline finish none → 2026-06-23 |
| 468 | Análise Tecnored |  |  |  |  | 7d → 13d |  | baseline start none → 2026-06-24; baseline finish none → 2026-06-24 |
| 469 | Atendimento de comentários |  |  |  |  | 7d → 13d |  | baseline start none → 2026-06-25; baseline finish none → 2026-06-26 |
| 470 | Aprovação |  |  |  |  | 7d → 13d |  | baseline start none → 2026-06-29; baseline finish none → 2026-06-29 |
| 471 | **DI-F0009-0306-MB-J-00001** | 2026-06-24 → 2026-06-30 A (+6d) | 2026-07-02 → 2026-07-09 (+7d) | 7d → 8d | 0% → 38% | 0d → 5d |  | baseline start none → 2026-06-24; baseline finish none → 2026-07-02 |
| 472 | Emissão inicial | 2026-06-24 → 2026-06-30 A (+6d) | 2026-06-26 → 2026-07-03 (+7d) | 3d → 4d | 0% → 75% | 0d → -3.5d | 462 → none | constraint none → start no earlier than 2026-06-17; baseline start none → 2026-06-24; baseline finish none → 2026-06-26 |
| 473 | Análise Tecnored | 2026-06-29 → 2026-07-06 (+7d) | 2026-06-29 → 2026-07-06 (+7d) |  |  | 4d → 5d |  | baseline start none → 2026-06-29; baseline finish none → 2026-06-29 |
| 474 | Atendimento de comentários | 2026-06-30 → 2026-07-07 (+7d) | 2026-07-01 → 2026-07-08 (+7d) |  |  | 4d → 5d |  | baseline start none → 2026-06-30; baseline finish none → 2026-07-01 |
| 475 | Aprovação | 2026-07-02 → 2026-07-09 (+7d) | 2026-07-02 → 2026-07-09 (+7d) |  |  | 4d → 5d |  | baseline start none → 2026-07-02; baseline finish none → 2026-07-02 |
| 476 | **LI-F0009-0306-MB-J-00002** | 2026-06-26 → 2026-06-16 (-10d) | 2026-07-06 → 2026-06-25 (-11d) | 7d → 8d |  | 2d → 15d |  | baseline start none → 2026-06-26; baseline finish none → 2026-07-06 |
| 477 | Emissão inicial | 2026-06-26 → 2026-06-16 (-10d) | 2026-06-30 → 2026-06-19 (-11d) | 3d → 4d |  | 2d → 15d | 492 → none | constraint none → finish no earlier than 2026-06-19; baseline start none → 2026-06-26; baseline finish none → 2026-06-30 |
| 478 | Análise Tecnored | 2026-07-01 → 2026-06-22 (-9d) | 2026-07-01 → 2026-06-22 (-9d) |  |  | 2d → 15d |  | constraint none → finish no earlier than 2026-06-22; baseline start none → 2026-07-01; baseline finish none → 2026-07-01 |
| 479 | Atendimento de comentários | 2026-07-02 → 2026-06-23 (-9d) | 2026-07-03 → 2026-06-24 (-9d) |  |  | 2d → 15d |  | constraint none → finish no earlier than 2026-06-24; baseline start none → 2026-07-02; baseline finish none → 2026-07-03 |
| 480 | Aprovação | 2026-07-06 → 2026-06-25 (-11d) | 2026-07-06 → 2026-06-25 (-11d) |  |  | 2d → 15d |  | constraint none → finish no earlier than 2026-06-25; baseline start none → 2026-07-06; baseline finish none → 2026-07-06 |
| 481 | **LI-F0009-0306-MB-J-00003** | 2026-06-26 → 2026-06-16 (-10d) | 2026-07-03 → 2026-06-25 (-8d) | 6d → 8d |  | 0d → 15d |  | baseline start none → 2026-06-26; baseline finish none → 2026-07-03 |
| 482 | Emissão inicial | 2026-06-26 → 2026-06-16 (-10d) | 2026-06-29 → 2026-06-19 (-10d) | 2d → 4d |  | 0d → 15d | 492 → none | constraint none → finish no earlier than 2026-06-19; baseline start none → 2026-06-26; baseline finish none → 2026-06-29 |
| 483 | Análise Tecnored | 2026-06-30 → 2026-06-22 (-8d) | 2026-06-30 → 2026-06-22 (-8d) |  |  | 3d → 15d |  | constraint none → finish no earlier than 2026-06-22; baseline start none → 2026-06-30; baseline finish none → 2026-06-30 |
| 484 | Atendimento de comentários | 2026-07-01 → 2026-06-23 (-8d) | 2026-07-02 → 2026-06-24 (-8d) |  |  | 3d → 15d |  | constraint none → finish no earlier than 2026-06-24; baseline start none → 2026-07-01; baseline finish none → 2026-07-02 |
| 485 | Aprovação | 2026-07-03 → 2026-06-25 (-8d) | 2026-07-03 → 2026-06-25 (-8d) |  |  | 3d → 15d |  | constraint none → finish no earlier than 2026-06-25; baseline start none → 2026-07-03; baseline finish none → 2026-07-03 |
| 486 | **LM-F0009-0306-MB-J-00001** | 2026-06-26 → 2026-06-30 (+4d) | 2026-07-03 → 2026-07-08 (+5d) | 6d → 7d |  | 3d → 0.5d |  | baseline start none → 2026-06-26; baseline finish none → 2026-07-03 |
| 487 | Emissão inicial | 2026-06-26 → 2026-06-30 (+4d) | 2026-06-29 → 2026-07-03 (+4d) | 2d → 4d |  | 3d → 0.5d | 622FS-5d → 417SS, 422SS | constraint none → start no earlier than 2026-06-30; baseline start none → 2026-06-26; baseline finish none → 2026-06-29 |
| 488 | Análise Tecnored | 2026-06-30 → 2026-07-06 (+6d) | 2026-06-30 → 2026-07-06 (+6d) |  |  | 3d → 6d |  | baseline start none → 2026-06-30; baseline finish none → 2026-06-30 |
| 489 | Atendimento de comentários | 2026-07-01 → 2026-07-07 (+6d) | 2026-07-02 → 2026-07-07 (+5d) | 2d → 1d |  | 3d → 6d |  | baseline start none → 2026-07-01; baseline finish none → 2026-07-02 |
| 490 | Aprovação | 2026-07-03 → 2026-07-08 (+5d) | 2026-07-03 → 2026-07-08 (+5d) |  |  | 3d → 6d |  | baseline start none → 2026-07-03; baseline finish none → 2026-07-03 |
| 491 | **ET-F0009-0306-MB-J-00001** | 2026-06-24 → 2026-06-16 A (-8d) | 2026-07-01 → 2026-06-24 (-7d) | 6d → 7d | 0% → 57% | 0d → 16d |  | baseline start none → 2026-06-24; baseline finish none → 2026-07-01 |
| 492 | Emissão inicial | 2026-06-24 → 2026-06-16 A (-8d) | 2026-06-25 → 2026-06-19 A (-6d) | 2d → 4d | 0% → 100% | 0d → none | 417 → 417SS, 422SS | baseline start none → 2026-06-24; baseline finish none → 2026-06-25 |
| 493 | Análise Tecnored | 2026-06-26 → 2026-06-22 (-4d) | 2026-06-26 → 2026-06-22 (-4d) |  |  | 5d → 16d |  | baseline start none → 2026-06-26; baseline finish none → 2026-06-26 |
| 494 | Atendimento de comentários | 2026-06-29 → 2026-06-23 (-6d) | 2026-06-30 → 2026-06-23 (-7d) | 2d → 1d |  | 5d → 16d |  | baseline start none → 2026-06-29; baseline finish none → 2026-06-30 |
| 495 | Aprovação | 2026-07-01 → 2026-06-24 (-7d) | 2026-07-01 → 2026-06-24 (-7d) |  |  | 5d → 16d |  | baseline start none → 2026-07-01; baseline finish none → 2026-07-01 |
| 496 | **FD-F0009-0306-MB-J-00001** | 2026-06-24 → 2026-06-18 A (-6d) | 2026-07-08 → 2026-07-01 (-7d) | 11d → 10d | 0% → 70% | 0d → 11d |  | baseline start none → 2026-06-24; baseline finish none → 2026-07-08 |
| 497 | Emissão inicial | 2026-06-24 → 2026-06-18 A (-6d) | 2026-07-02 → 2026-06-26 A (-6d) |  | 0% → 100% | 0d → none | 417 → none | constraint none → start no earlier than 2026-06-17; baseline start none → 2026-06-24; baseline finish none → 2026-07-02 |
| 498 | Análise Tecnored | 2026-07-03 → 2026-06-29 (-4d) | 2026-07-03 → 2026-06-29 (-4d) |  |  | 0d → 11d |  | baseline start none → 2026-07-03; baseline finish none → 2026-07-03 |
| 499 | Atendimento de comentários | 2026-07-06 → 2026-06-30 (-6d) | 2026-07-07 → 2026-06-30 (-7d) | 2d → 1d |  | 0d → 11d |  | baseline start none → 2026-07-06; baseline finish none → 2026-07-07 |
| 500 | Aprovação | 2026-07-08 → 2026-07-01 (-7d) | 2026-07-08 → 2026-07-01 (-7d) |  |  | 0d → 11d |  | baseline start none → 2026-07-08; baseline finish none → 2026-07-08 |
| 501 | **FD-F0009-0306-MB-J-00002** | 2026-06-24 → 2026-06-18 A (-6d) | 2026-07-08 → 2026-07-01 (-7d) | 11d → 10d | 0% → 75% | 0d → 11d |  | baseline start none → 2026-06-24; baseline finish none → 2026-07-08 |
| 502 | Emissão inicial | 2026-06-24 → 2026-06-18 A (-6d) | 2026-07-02 → 2026-06-26 A (-6d) |  | 0% → 100% | 0d → none | 417 → 497SS | baseline start none → 2026-06-24; baseline finish none → 2026-07-02 |
| 503 | Análise Tecnored | 2026-07-03 → 2026-06-29 A (-4d) | 2026-07-03 → 2026-06-29 (-4d) |  | 0% → 50% | 0d → 11d |  | baseline start none → 2026-07-03; baseline finish none → 2026-07-03 |
| 504 | Atendimento de comentários | 2026-07-06 → 2026-06-30 (-6d) | 2026-07-07 → 2026-06-30 (-7d) | 2d → 1d |  | 0d → 11d |  | baseline start none → 2026-07-06; baseline finish none → 2026-07-07 |
| 505 | Aprovação | 2026-07-08 → 2026-07-01 (-7d) | 2026-07-08 → 2026-07-01 (-7d) |  |  | 0d → 11d |  | baseline start none → 2026-07-08; baseline finish none → 2026-07-08 |
| 506 | **FD-F0009-0306-MB-J-00003** | 2026-06-24 → 2026-06-18 A (-6d) | 2026-07-08 → 2026-07-01 (-7d) | 11d → 10d | 0% → 70% | 0d → 11d |  | baseline start none → 2026-06-24; baseline finish none → 2026-07-08 |
| 507 | Emissão inicial | 2026-06-24 → 2026-06-18 A (-6d) | 2026-07-02 → 2026-06-26 A (-6d) |  | 0% → 100% | 0d → none | 417 → 497SS | baseline start none → 2026-06-24; baseline finish none → 2026-07-02 |
| 508 | Análise Tecnored | 2026-07-03 → 2026-06-29 (-4d) | 2026-07-03 → 2026-06-29 (-4d) |  |  | 0d → 11d |  | baseline start none → 2026-07-03; baseline finish none → 2026-07-03 |
| 509 | Atendimento de comentários | 2026-07-06 → 2026-06-30 (-6d) | 2026-07-07 → 2026-06-30 (-7d) | 2d → 1d |  | 0d → 11d |  | baseline start none → 2026-07-06; baseline finish none → 2026-07-07 |
| 510 | Aprovação | 2026-07-08 → 2026-07-01 (-7d) | 2026-07-08 → 2026-07-01 (-7d) |  |  | 0d → 11d |  | baseline start none → 2026-07-08; baseline finish none → 2026-07-08 |
| 511 | **FD-F0009-0306-MB-J-00004** | 2026-06-24 → 2026-06-18 A (-6d) | 2026-07-08 → 2026-07-01 (-7d) | 11d → 10d | 0% → 70% | 0d → 11d |  | baseline start none → 2026-06-24; baseline finish none → 2026-07-08 |
| 512 | Emissão inicial | 2026-06-24 → 2026-06-18 A (-6d) | 2026-07-02 → 2026-06-26 A (-6d) |  | 0% → 100% | 0d → none | 417 → 497SS | baseline start none → 2026-06-24; baseline finish none → 2026-07-02 |
| 513 | Análise Tecnored | 2026-07-03 → 2026-06-29 (-4d) | 2026-07-03 → 2026-06-29 (-4d) |  |  | 0d → 11d |  | baseline start none → 2026-07-03; baseline finish none → 2026-07-03 |
| 514 | Atendimento de comentários | 2026-07-06 → 2026-06-30 (-6d) | 2026-07-07 → 2026-06-30 (-7d) | 2d → 1d |  | 0d → 11d |  | baseline start none → 2026-07-06; baseline finish none → 2026-07-07 |
| 515 | Aprovação | 2026-07-08 → 2026-07-01 (-7d) | 2026-07-08 → 2026-07-01 (-7d) |  |  | 0d → 11d |  | baseline start none → 2026-07-08; baseline finish none → 2026-07-08 |

| ID | Task | Start | Finish | Duration | Complete | Total float | Predecessors | Other |
| --- | --- | --- | --- | --- | --- | --- | --- | --- |
| 516 | **FD-F0009-0306-MB-J-00005** | 2026-06-24 → 2026-06-18 A (-6d) | 2026-07-08 → 2026-07-01 (-7d) | 11d → 10d | 0% → 75% | 0d → 11d |  | baseline start none → 2026-06-24; baseline finish none → 2026-07-08 |
| 517 | Emissão inicial | 2026-06-24 → 2026-06-18 A (-6d) | 2026-07-02 → 2026-06-26 A (-6d) |  | 0% → 100% | 0d → none | 417 → 497SS | baseline start none → 2026-06-24; baseline finish none → 2026-07-02 |
| 518 | Análise Tecnored | 2026-07-03 → 2026-06-29 A (-4d) | 2026-07-03 → 2026-06-29 (-4d) |  | 0% → 50% | 0d → 11d |  | baseline start none → 2026-07-03; baseline finish none → 2026-07-03 |
| 519 | Atendimento de comentários | 2026-07-06 → 2026-06-30 (-6d) | 2026-07-07 → 2026-06-30 (-7d) | 2d → 1d |  | 0d → 11d |  | baseline start none → 2026-07-06; baseline finish none → 2026-07-07 |
| 520 | Aprovação | 2026-07-08 → 2026-07-01 (-7d) | 2026-07-08 → 2026-07-01 (-7d) |  |  | 0d → 11d |  | baseline start none → 2026-07-08; baseline finish none → 2026-07-08 |
| 521 | **FD-F0009-0306-MB-J-00006** | 2026-06-24 → 2026-06-18 A (-6d) | 2026-07-08 → 2026-07-01 (-7d) | 11d → 10d | 0% → 75% | 0d → 11d |  | baseline start none → 2026-06-24; baseline finish none → 2026-07-08 |
| 522 | Emissão inicial | 2026-06-24 → 2026-06-18 A (-6d) | 2026-07-02 → 2026-06-26 A (-6d) |  | 0% → 100% | 0d → none | 417 → 497SS | baseline start none → 2026-06-24; baseline finish none → 2026-07-02 |
| 523 | Análise Tecnored | 2026-07-03 → 2026-06-29 A (-4d) | 2026-07-03 → 2026-06-29 (-4d) |  | 0% → 50% | 0d → 11d |  | baseline start none → 2026-07-03; baseline finish none → 2026-07-03 |
| 524 | Atendimento de comentários | 2026-07-06 → 2026-06-30 (-6d) | 2026-07-07 → 2026-06-30 (-7d) | 2d → 1d |  | 0d → 11d |  | baseline start none → 2026-07-06; baseline finish none → 2026-07-07 |
| 525 | Aprovação | 2026-07-08 → 2026-07-01 (-7d) | 2026-07-08 → 2026-07-01 (-7d) |  |  | 0d → 11d |  | baseline start none → 2026-07-08; baseline finish none → 2026-07-08 |
| 526 | **FD-F0009-0306-MB-J-00007** | 2026-06-24 → 2026-06-18 A (-6d) | 2026-07-08 → 2026-07-01 (-7d) | 11d → 10d | 0% → 75% | 0d → 11d |  | baseline start none → 2026-06-24; baseline finish none → 2026-07-08 |
| 527 | Emissão inicial | 2026-06-24 → 2026-06-18 A (-6d) | 2026-07-02 → 2026-06-26 A (-6d) |  | 0% → 100% | 0d → none | 417 → 497SS | baseline start none → 2026-06-24; baseline finish none → 2026-07-02 |
| 528 | Análise Tecnored | 2026-07-03 → 2026-06-29 A (-4d) | 2026-07-03 → 2026-06-29 (-4d) |  | 0% → 50% | 0d → 11d |  | baseline start none → 2026-07-03; baseline finish none → 2026-07-03 |
| 529 | Atendimento de comentários | 2026-07-06 → 2026-06-30 (-6d) | 2026-07-07 → 2026-06-30 (-7d) | 2d → 1d |  | 0d → 11d |  | baseline start none → 2026-07-06; baseline finish none → 2026-07-07 |
| 530 | Aprovação | 2026-07-08 → 2026-07-01 (-7d) | 2026-07-08 → 2026-07-01 (-7d) |  |  | 0d → 11d |  | baseline start none → 2026-07-08; baseline finish none → 2026-07-08 |
| 531 | **FD-F0009-0306-MB-J-00008** | 2026-06-24 → 2026-06-18 A (-6d) | 2026-07-08 → 2026-07-01 (-7d) | 11d → 10d | 0% → 75% | 0d → 11d |  | baseline start none → 2026-06-24; baseline finish none → 2026-07-08 |
| 532 | Emissão inicial | 2026-06-24 → 2026-06-18 A (-6d) | 2026-07-02 → 2026-06-26 A (-6d) |  | 0% → 100% | 0d → none | 417 → 497SS | baseline start none → 2026-06-24; baseline finish none → 2026-07-02 |
| 533 | Análise Tecnored | 2026-07-03 → 2026-06-29 A (-4d) | 2026-07-03 → 2026-06-29 (-4d) |  | 0% → 50% | 0d → 11d |  | baseline start none → 2026-07-03; baseline finish none → 2026-07-03 |
| 534 | Atendimento de comentários | 2026-07-06 → 2026-06-30 (-6d) | 2026-07-07 → 2026-06-30 (-7d) | 2d → 1d |  | 0d → 11d |  | baseline start none → 2026-07-06; baseline finish none → 2026-07-07 |
| 535 | Aprovação | 2026-07-08 → 2026-07-01 (-7d) | 2026-07-08 → 2026-07-01 (-7d) |  |  | 0d → 11d |  | baseline start none → 2026-07-08; baseline finish none → 2026-07-08 |
| 536 | **FD-F0009-0306-MB-J-00009** | 2026-06-24 → 2026-06-18 A (-6d) | 2026-07-08 → 2026-07-01 (-7d) | 11d → 10d | 0% → 70% | 0d → 11d |  | baseline start none → 2026-06-24; baseline finish none → 2026-07-08 |
| 537 | Emissão inicial | 2026-06-24 → 2026-06-18 A (-6d) | 2026-07-02 → 2026-06-26 A (-6d) |  | 0% → 100% | 0d → none | 417 → 497SS | baseline start none → 2026-06-24; baseline finish none → 2026-07-02 |
| 538 | Análise Tecnored | 2026-07-03 → 2026-06-29 (-4d) | 2026-07-03 → 2026-06-29 (-4d) |  |  | 0d → 11d |  | baseline start none → 2026-07-03; baseline finish none → 2026-07-03 |
| 539 | Atendimento de comentários | 2026-07-06 → 2026-06-30 (-6d) | 2026-07-07 → 2026-06-30 (-7d) | 2d → 1d |  | 0d → 11d |  | baseline start none → 2026-07-06; baseline finish none → 2026-07-07 |
| 540 | Aprovação | 2026-07-08 → 2026-07-01 (-7d) | 2026-07-08 → 2026-07-01 (-7d) |  |  | 0d → 11d |  | baseline start none → 2026-07-08; baseline finish none → 2026-07-08 |
| 541 | **FD-F0009-0306-MB-J-00010** | 2026-06-24 → 2026-06-18 A (-6d) | 2026-07-08 → 2026-07-01 (-7d) | 11d → 10d | 0% → 70% | 0d → 11d |  | baseline start none → 2026-06-24; baseline finish none → 2026-07-08 |
| 542 | Emissão inicial | 2026-06-24 → 2026-06-18 A (-6d) | 2026-07-02 → 2026-06-26 A (-6d) |  | 0% → 100% | 0d → none | 417 → 497SS | baseline start none → 2026-06-24; baseline finish none → 2026-07-02 |
| 543 | Análise Tecnored | 2026-07-03 → 2026-06-29 (-4d) | 2026-07-03 → 2026-06-29 (-4d) |  |  | 0d → 11d |  | baseline start none → 2026-07-03; baseline finish none → 2026-07-03 |
| 544 | Atendimento de comentários | 2026-07-06 → 2026-06-30 (-6d) | 2026-07-07 → 2026-06-30 (-7d) | 2d → 1d |  | 0d → 11d |  | baseline start none → 2026-07-06; baseline finish none → 2026-07-07 |
| 545 | Aprovação | 2026-07-08 → 2026-07-01 (-7d) | 2026-07-08 → 2026-07-01 (-7d) |  |  | 0d → 11d |  | baseline start none → 2026-07-08; baseline finish none → 2026-07-08 |
| 546 | **FD-F0009-0306-MB-J-00011** | 2026-06-24 → 2026-06-18 A (-6d) | 2026-07-08 → 2026-07-01 (-7d) | 11d → 10d | 0% → 70% | 0d → 11d |  | baseline start none → 2026-06-24; baseline finish none → 2026-07-08 |
| 547 | Emissão inicial | 2026-06-24 → 2026-06-18 A (-6d) | 2026-07-02 → 2026-06-26 A (-6d) |  | 0% → 100% | 0d → none | 417 → 497SS | baseline start none → 2026-06-24; baseline finish none → 2026-07-02 |
| 548 | Análise Tecnored | 2026-07-03 → 2026-06-29 (-4d) | 2026-07-03 → 2026-06-29 (-4d) |  |  | 0d → 11d |  | baseline start none → 2026-07-03; baseline finish none → 2026-07-03 |
| 549 | Atendimento de comentários | 2026-07-06 → 2026-06-30 (-6d) | 2026-07-07 → 2026-06-30 (-7d) | 2d → 1d |  | 0d → 11d |  | baseline start none → 2026-07-06; baseline finish none → 2026-07-07 |
| 550 | Aprovação | 2026-07-08 → 2026-07-01 (-7d) | 2026-07-08 → 2026-07-01 (-7d) |  |  | 0d → 11d |  | baseline start none → 2026-07-08; baseline finish none → 2026-07-08 |
| 551 | **FD-F0009-0306-MB-J-00012** | 2026-06-24 → 2026-06-18 A (-6d) | 2026-07-08 → 2026-07-01 (-7d) | 11d → 10d | 0% → 70% | 0d → 11d |  | baseline start none → 2026-06-24; baseline finish none → 2026-07-08 |
| 552 | Emissão inicial | 2026-06-24 → 2026-06-18 A (-6d) | 2026-07-02 → 2026-06-26 A (-6d) |  | 0% → 100% | 0d → none | 417 → 497SS | baseline start none → 2026-06-24; baseline finish none → 2026-07-02 |
| 553 | Análise Tecnored | 2026-07-03 → 2026-06-29 (-4d) | 2026-07-03 → 2026-06-29 (-4d) |  |  | 0d → 11d |  | baseline start none → 2026-07-03; baseline finish none → 2026-07-03 |
| 554 | Atendimento de comentários | 2026-07-06 → 2026-06-30 (-6d) | 2026-07-07 → 2026-06-30 (-7d) | 2d → 1d |  | 0d → 11d |  | baseline start none → 2026-07-06; baseline finish none → 2026-07-07 |
| 555 | Aprovação | 2026-07-08 → 2026-07-01 (-7d) | 2026-07-08 → 2026-07-01 (-7d) |  |  | 0d → 11d |  | baseline start none → 2026-07-08; baseline finish none → 2026-07-08 |
| 556 | **FD-F0009-0306-MB-J-00013** | 2026-06-24 → 2026-06-18 A (-6d) | 2026-07-08 → 2026-07-01 (-7d) | 11d → 10d | 0% → 75% | 0d → 11d |  | baseline start none → 2026-06-24; baseline finish none → 2026-07-08 |
| 557 | Emissão inicial | 2026-06-24 → 2026-06-18 A (-6d) | 2026-07-02 → 2026-06-26 A (-6d) |  | 0% → 100% | 0d → none | 417 → 497SS | baseline start none → 2026-06-24; baseline finish none → 2026-07-02 |
| 558 | Análise Tecnored | 2026-07-03 → 2026-06-29 A (-4d) | 2026-07-03 → 2026-06-29 (-4d) |  | 0% → 50% | 0d → 11d |  | baseline start none → 2026-07-03; baseline finish none → 2026-07-03 |
| 559 | Atendimento de comentários | 2026-07-06 → 2026-06-30 (-6d) | 2026-07-07 → 2026-06-30 (-7d) | 2d → 1d |  | 0d → 11d |  | baseline start none → 2026-07-06; baseline finish none → 2026-07-07 |
| 560 | Aprovação | 2026-07-08 → 2026-07-01 (-7d) | 2026-07-08 → 2026-07-01 (-7d) |  |  | 0d → 11d |  | baseline start none → 2026-07-08; baseline finish none → 2026-07-08 |
| 561 | **FD-F0009-0306-MB-J-00014** | 2026-06-24 → 2026-06-18 A (-6d) | 2026-07-08 → 2026-07-01 (-7d) | 11d → 10d | 0% → 70% | 0d → 11d |  | baseline start none → 2026-06-24; baseline finish none → 2026-07-08 |
| 562 | Emissão inicial | 2026-06-24 → 2026-06-18 A (-6d) | 2026-07-02 → 2026-06-26 A (-6d) |  | 0% → 100% | 0d → none | 417 → 497SS | baseline start none → 2026-06-24; baseline finish none → 2026-07-02 |
| 563 | Análise Tecnored | 2026-07-03 → 2026-06-29 (-4d) | 2026-07-03 → 2026-06-29 (-4d) |  |  | 0d → 11d |  | baseline start none → 2026-07-03; baseline finish none → 2026-07-03 |
| 564 | Atendimento de comentários | 2026-07-06 → 2026-06-30 (-6d) | 2026-07-07 → 2026-06-30 (-7d) | 2d → 1d |  | 0d → 11d |  | baseline start none → 2026-07-06; baseline finish none → 2026-07-07 |
| 565 | Aprovação | 2026-07-08 → 2026-07-01 (-7d) | 2026-07-08 → 2026-07-01 (-7d) |  |  | 0d → 11d |  | baseline start none → 2026-07-08; baseline finish none → 2026-07-08 |
| 566 | **FD-F0009-0306-MB-J-00015** | 2026-06-24 → 2026-06-18 A (-6d) | 2026-07-08 → 2026-07-01 (-7d) | 11d → 10d | 0% → 75% | 0d → 11d |  | baseline start none → 2026-06-24; baseline finish none → 2026-07-08 |
| 567 | Emissão inicial | 2026-06-24 → 2026-06-18 A (-6d) | 2026-07-02 → 2026-06-26 A (-6d) |  | 0% → 100% | 0d → none | 417 → 497SS | baseline start none → 2026-06-24; baseline finish none → 2026-07-02 |
| 568 | Análise Tecnored | 2026-07-03 → 2026-06-29 A (-4d) | 2026-07-03 → 2026-06-29 (-4d) |  | 0% → 50% | 0d → 11d |  | constraint none → finish no earlier than 2026-06-26; baseline start none → 2026-07-03; baseline finish none → 2026-07-03 |
| 569 | Atendimento de comentários | 2026-07-06 → 2026-06-30 (-6d) | 2026-07-07 → 2026-06-30 (-7d) | 2d → 1d |  | 0d → 11d |  | constraint none → start no earlier than 2026-06-29; baseline start none → 2026-07-06; baseline finish none → 2026-07-07 |
| 570 | Aprovação | 2026-07-08 → 2026-07-01 (-7d) | 2026-07-08 → 2026-07-01 (-7d) |  |  | 0d → 11d |  | constraint none → start no earlier than 2026-06-30; baseline start none → 2026-07-08; baseline finish none → 2026-07-08 |
| 571 | **FD-F0009-0306-MB-J-00016** | 2026-06-24 → 2026-06-18 A (-6d) | 2026-07-08 → 2026-07-01 (-7d) | 11d → 10d | 0% → 70% | 0d → 11d |  | baseline start none → 2026-06-24; baseline finish none → 2026-07-08 |
| 607 | Emissão inicial | 2026-06-24 → 2026-06-19 A (-5d) | 2026-07-02 → 2026-06-29 A (-3d) |  | 0% → 100% | 0d → none | 417 → 497SS | baseline start none → 2026-06-24; baseline finish none → 2026-07-02 |
| 608 | Análise Tecnored | 2026-07-03 → 2026-06-30 (-3d) | 2026-07-03 → 2026-06-30 (-3d) |  |  | 0d → 10d |  | constraint none → finish no earlier than 2026-06-26; baseline start none → 2026-07-03; baseline finish none → 2026-07-03 |
| 609 | Atendimento de comentários | 2026-07-06 → 2026-07-01 (-5d) | 2026-07-07 → 2026-07-01 (-6d) | 2d → 1d |  | 0d → 10d |  | constraint none → start no earlier than 2026-06-29; baseline start none → 2026-07-06; baseline finish none → 2026-07-07 |
| 610 | Aprovação | 2026-07-08 → 2026-07-02 (-6d) | 2026-07-08 → 2026-07-02 (-6d) |  |  | 0d → 10d |  | constraint none → finish no earlier than 2026-06-30; baseline start none → 2026-07-08; baseline finish none → 2026-07-08 |
| 621 | **DT-F0009-0306-MB-J-00001** | 2026-06-30 → 2026-06-19 A (-11d) | 2026-07-08 → 2026-06-30 (-8d) | 7d → 8d | 0% → 45% | 0d → 12d |  | baseline start none → 2026-06-30; baseline finish none → 2026-07-08 |
| 622 | Emissão inicial | 2026-06-30 → 2026-06-19 A (-11d) | 2026-07-02 → 2026-06-24 (-8d) | 3d → 4d | 0% → 90% | 0d → 12d | 482 → none | constraint none → start no earlier than 2026-06-19; baseline start none → 2026-06-30; baseline finish none → 2026-07-02 |
| 623 | Análise Tecnored | 2026-07-03 → 2026-06-25 (-8d) | 2026-07-03 → 2026-06-25 (-8d) |  |  | 0d → 12d |  | baseline start none → 2026-07-03; baseline finish none → 2026-07-03 |
| 624 | Atendimento de comentários | 2026-07-06 → 2026-06-26 (-10d) | 2026-07-07 → 2026-06-29 (-8d) |  |  | 0d → 12d |  | baseline start none → 2026-07-06; baseline finish none → 2026-07-07 |
| 625 | Aprovação | 2026-07-08 → 2026-06-30 (-8d) | 2026-07-08 → 2026-06-30 (-8d) |  |  | 0d → 12d |  | baseline start none → 2026-07-08; baseline finish none → 2026-07-08 |
| 626 | **Civil** | 2026-06-16 → 2026-06-29 (+13d) | 2026-07-02 → 2026-07-09 (+7d) | 13d → 9d |  | 4d → 5d |  | baseline start none → 2026-06-16; baseline finish none → 2026-07-02 |
| 627 | **MC-F0009-0306-MB-C-00001** | 2026-06-16 → 2026-06-29 (+13d) | 2026-07-01 → 2026-07-08 (+7d) | 12d → 8d |  | 4d → 5d |  | baseline start none → 2026-06-16; baseline finish none → 2026-07-01 |
| 628 | Emissão inicial | 2026-06-16 → 2026-06-29 (+13d) | 2026-06-25 → 2026-07-03 (+8d) | 8d → 5d |  | 4d → 5d | 255 → 255FS-2d | constraint none → start no earlier than 2026-06-29; baseline start none → 2026-06-16; baseline finish none → 2026-06-25 |
| 629 | Análise Tecnored | 2026-06-26 → 2026-07-06 (+10d) | 2026-06-26 → 2026-07-06 (+10d) |  |  | 5d → 6d |  | baseline start none → 2026-06-26; baseline finish none → 2026-06-26 |
| 630 | Atendimento de comentários | 2026-06-29 → 2026-07-07 (+8d) | 2026-06-30 → 2026-07-07 (+7d) | 2d → 1d |  | 5d → 6d |  | baseline start none → 2026-06-29; baseline finish none → 2026-06-30 |

| ID | Task | Start | Finish | Duration | Total float | Other |
| --- | --- | --- | --- | --- | --- | --- |
| 631 | Aprovação | 2026-07-01 → 2026-07-08 (+7d) | 2026-07-01 → 2026-07-08 (+7d) |  | 5d → 6d | baseline start none → 2026-07-01; baseline finish none → 2026-07-01 |
| 632 | **PQ-F0009-0306-MB-C-00001** | 2026-06-26 → 2026-07-06 (+10d) | 2026-07-02 → 2026-07-09 (+7d) | 5d → 4d | 4d → 5d | baseline start none → 2026-06-26; baseline finish none → 2026-07-02 |
| 633 | Emissão inicial | 2026-06-26 → 2026-07-06 (+10d) | 2026-06-26 → 2026-07-06 (+10d) |  | 4d → 5d | baseline start none → 2026-06-26; baseline finish none → 2026-06-26 |
| 634 | Análise Tecnored | 2026-06-29 → 2026-07-07 (+8d) | 2026-06-29 → 2026-07-07 (+8d) |  | 4d → 5d | baseline start none → 2026-06-29; baseline finish none → 2026-06-29 |
| 635 | Atendimento de comentários | 2026-06-30 → 2026-07-08 (+8d) | 2026-07-01 → 2026-07-08 (+7d) | 2d → 1d | 4d → 5d | baseline start none → 2026-06-30; baseline finish none → 2026-07-01 |
| 636 | Aprovação | 2026-07-02 → 2026-07-09 (+7d) | 2026-07-02 → 2026-07-09 (+7d) |  | 4d → 5d | baseline start none → 2026-07-02; baseline finish none → 2026-07-02 |

## Version 3 (data date 2026-07-06, saved 2026-07-06, file CR-F0009-0306-MB-F-00001 03072026_C2.mpp)

Note of the change: Primeira versao dashboard

Last finish 2026-07-16 → 2026-07-29 (+13d). Complete tasks 99 → 114.

Added:

| ID | Task | Duration | Start | Finish | Predecessors | Constraint |
| --- | --- | --- | --- | --- | --- | --- |
| 31 | Emissão inicial | 2d | 2026-07-06 | 2026-07-07 | 26FS+5d |  |
| 32 | Análise Tecnored | 1d | 2026-07-08 | 2026-07-08 | 31 |  |
| 33 | Atendimento de comentários | 1d | 2026-07-13 | 2026-07-13 | 32 |  |
| 34 | Aprovação | 1d | 2026-07-14 | 2026-07-14 | 33 |  |
| 35 | **RM-F0009-0306-MB-G-00003** | 5d | 2026-07-06 | 2026-07-14 |  |  |
| 360 | **AG-F0009-0306-MB-E-00004** | 6d | 2026-06-29 A | 2026-07-06 |  |  |
| 361 | Emissão inicial | 4d | 2026-06-29 A | 2026-07-02 | 366FS-2d | start no earlier than 2026-06-19 |
| 362 | Análise Tecnored | 1d | 2026-07-03 | 2026-07-03 | 361 |  |
| 363 | Atendimento de comentários | 1d | 2026-07-06 | 2026-07-06 | 362 |  |
| 364 | Aprovação | 1d | 2026-07-06 | 2026-07-06 | 363FF |  |

Changed:

| ID | Task | Start | Finish | Duration | Complete | Total float | Other |
| --- | --- | --- | --- | --- | --- | --- | --- |
| 1 | **F0009 - Programa Marabá** |  | 2026-07-13 → 2026-07-15 (+2d) |  | 55% → 62% | 3d → 2d |  |
| 2 | **Área 0306 - Sopradores** |  | 2026-07-13 → 2026-07-15 (+2d) |  | 55% → 62% | 3d → 2d |  |
| 4 | **Marcos** |  | 2026-06-30 → 2026-07-13 (+13d) | 29d → 36d |  |  |  |
| 10 | Critério de Projeto de Estrutura metálica | 2026-06-30 → 2026-07-13 (+13d) | 2026-06-30 → 2026-07-13 (+13d) |  |  |  |  |
| 30 | **RM-F0009-0306-MB-G-00002** |  | 2026-07-10 → 2026-07-14 (+4d) |  |  | 4d → 3d |  |
| 38 | Atendimento de comentários | 2026-07-09 → 2026-07-13 (+4d) | 2026-07-09 → 2026-07-13 (+4d) |  |  | 4d → 3d |  |
| 39 | Aprovação | 2026-07-10 → 2026-07-14 (+4d) | 2026-07-10 → 2026-07-14 (+4d) |  |  | 4d → 3d |  |
| 66 | **Mecânica** |  | 2026-07-09 → 2026-07-08 (-1d) | 31d → 30d | 54% → 72% |  |  |
| 87 | **AG-F0009-0306-MB-L-00001** | 2026-07-01 → 2026-06-30 A (-1d) | 2026-07-09 → 2026-07-08 (-1d) |  | 0% → 57% |  |  |
| 88 | Emissão inicial | 2026-07-01 → 2026-06-30 A (-1d) | 2026-07-06 → 2026-07-03 A (-3d) |  | 0% → 100% | 5d → none |  |
| 89 | Análise Tecnored | 2026-07-07 → 2026-07-06 (-1d) | 2026-07-07 → 2026-07-06 (-1d) |  |  |  |  |
| 90 | Atendimento de comentários | 2026-07-08 → 2026-07-07 (-1d) | 2026-07-08 → 2026-07-07 (-1d) |  |  |  |  |
| 91 | Aprovação | 2026-07-09 → 2026-07-08 (-1d) | 2026-07-09 → 2026-07-08 (-1d) |  |  |  |  |
| 92 | **AG-F0009-0306-MB-L-00002** | 2026-07-01 → 2026-06-30 A (-1d) | 2026-07-09 → 2026-07-08 (-1d) |  | 0% → 57% |  |  |
| 93 | Emissão inicial | 2026-07-01 → 2026-06-30 A (-1d) | 2026-07-06 → 2026-07-03 A (-3d) |  | 0% → 100% | 5d → none |  |
| 94 | Análise Tecnored | 2026-07-07 → 2026-07-06 (-1d) | 2026-07-07 → 2026-07-06 (-1d) |  |  |  |  |
| 95 | Atendimento de comentários | 2026-07-08 → 2026-07-07 (-1d) | 2026-07-08 → 2026-07-07 (-1d) |  |  |  |  |
| 96 | Aprovação | 2026-07-09 → 2026-07-08 (-1d) | 2026-07-09 → 2026-07-08 (-1d) |  |  |  |  |
| 97 | **AG-F0009-0306-MB-L-00003** | 2026-07-01 → 2026-06-30 A (-1d) | 2026-07-09 → 2026-07-08 (-1d) |  | 0% → 57% |  |  |
| 98 | Emissão inicial | 2026-07-01 → 2026-06-30 A (-1d) | 2026-07-06 → 2026-07-03 A (-3d) |  | 0% → 100% | 5d → none |  |
| 99 | Análise Tecnored | 2026-07-07 → 2026-07-06 (-1d) | 2026-07-07 → 2026-07-06 (-1d) |  |  |  |  |
| 100 | Atendimento de comentários | 2026-07-08 → 2026-07-07 (-1d) | 2026-07-08 → 2026-07-07 (-1d) |  |  |  |  |
| 101 | Aprovação | 2026-07-09 → 2026-07-08 (-1d) | 2026-07-09 → 2026-07-08 (-1d) |  |  |  |  |
| 102 | **AG-F0009-0306-MB-L-00004** | 2026-07-01 → 2026-06-30 A (-1d) | 2026-07-09 → 2026-07-08 (-1d) |  | 0% → 57% |  |  |
| 103 | Emissão inicial | 2026-07-01 → 2026-06-30 A (-1d) | 2026-07-06 → 2026-07-03 A (-3d) |  | 0% → 100% | 5d → none |  |
| 104 | Análise Tecnored | 2026-07-07 → 2026-07-06 (-1d) | 2026-07-07 → 2026-07-06 (-1d) |  |  |  |  |
| 105 | Atendimento de comentários | 2026-07-08 → 2026-07-07 (-1d) | 2026-07-08 → 2026-07-07 (-1d) |  |  |  |  |
| 106 | Aprovação | 2026-07-09 → 2026-07-08 (-1d) | 2026-07-09 → 2026-07-08 (-1d) |  |  |  |  |
| 123 | Emissão inicial |  |  |  |  |  | baseline start 2026-06-03 → 2026-06-12; baseline finish 2026-06-09 → 2026-06-15 |
| 124 | Análise Tecnored |  |  |  |  |  | baseline start 2026-06-10 → 2026-06-17; baseline finish 2026-06-10 → 2026-06-17 |
| 125 | Atendimento de comentários |  |  |  |  |  | baseline start 2026-06-11 → 2026-06-18; baseline finish 2026-06-12 → 2026-06-19 |
| 126 | Aprovação |  |  |  |  | 17d → 16d | baseline start 2026-06-15 → 2026-06-23; baseline finish 2026-06-15 → 2026-06-23 |
| 143 | Emissão inicial |  |  |  |  |  | baseline start 2026-06-10 → 2026-06-17; baseline finish 2026-06-12 → 2026-06-19 |
| 144 | Análise Tecnored |  |  |  |  | 15d → 14d | baseline start 2026-06-15 → 2026-06-22; baseline finish 2026-06-15 → 2026-06-22 |
| 145 | Atendimento de comentários |  |  |  |  | 15d → 14d | baseline start 2026-06-16 → 2026-06-23; baseline finish 2026-06-17 → 2026-06-24 |
| 146 | Aprovação |  |  |  |  | 15d → 14d | baseline start 2026-06-18 → 2026-06-25; baseline finish 2026-06-18 → 2026-06-25 |
| 147 | **Tubulação/Utilidades** |  | 2026-07-10 → 2026-07-07 (-3d) | 25d → 22d | 38% → 48% | 4d → 6d |  |
| 153 | **MD-F0009-0306-MB-U-00001** |  | 2026-07-10 → 2026-07-14 (+4d) |  |  | 4d → 3d |  |
| 156 | Atendimento de comentários |  | 2026-07-09 → 2026-07-13 (+4d) |  |  | 4d → 3d |  |
| 157 | Aprovação | 2026-07-10 → 2026-07-14 (+4d) | 2026-07-10 → 2026-07-14 (+4d) |  |  | 4d → 3d |  |
| 163 | **ET-F0009-0306-MB-T-00001** |  | 2026-07-15 → 2026-07-17 (+2d) |  |  | 1d → 0d |  |
| 164 | Emissão inicial |  | 2026-07-09 → 2026-07-13 (+4d) |  |  | 1d → 0d |  |
| 165 | Análise Tecnored | 2026-07-10 → 2026-07-14 (+4d) | 2026-07-10 → 2026-07-14 (+4d) |  |  | 1d → 0d |  |
| 166 | Atendimento de comentários | 2026-07-13 → 2026-07-15 (+2d) | 2026-07-14 → 2026-07-16 (+2d) |  |  | 1d → 0d |  |
| 167 | Aprovação | 2026-07-15 → 2026-07-17 (+2d) | 2026-07-15 → 2026-07-17 (+2d) |  |  | 1d → 0d |  |
| 168 | **FD-F0009-0306-MB-T-00001** |  | 2026-07-10 → 2026-07-14 (+4d) |  |  | 4d → 0d |  |
| 171 | Atendimento de comentários |  | 2026-07-09 → 2026-07-13 (+4d) |  |  | 4d → 3d |  |
| 172 | Aprovação | 2026-07-10 → 2026-07-14 (+4d) | 2026-07-10 → 2026-07-14 (+4d) |  |  | 4d → 3d |  |
| 173 | **FD-F0009-0306-MB-T-00002** |  | 2026-07-10 → 2026-07-14 (+4d) |  |  | 4d → 3d |  |
| 176 | Atendimento de comentários |  | 2026-07-09 → 2026-07-13 (+4d) |  |  | 4d → 3d |  |
| 177 | Aprovação | 2026-07-10 → 2026-07-14 (+4d) | 2026-07-10 → 2026-07-14 (+4d) |  |  | 4d → 3d |  |
| 178 | **PQ-F0009-0306-MB-T-00001** |  | 2026-07-01 → 2026-06-29 (-2d) | 8d → 6d |  | 11d → 12d |  |
| 179 | Emissão inicial |  | 2026-06-25 A → 2026-06-23 A (-2d) |  |  |  |  |
| 180 | Análise Tecnored | 2026-06-26 → 2026-06-24 (-2d) | 2026-06-26 → 2026-06-24 (-2d) |  |  | 11d → 12d |  |
| 181 | Atendimento de comentários | 2026-06-29 → 2026-06-25 (-4d) | 2026-06-30 → 2026-06-26 (-4d) |  |  | 11d → 12d |  |
| 182 | Aprovação | 2026-07-01 → 2026-06-29 (-2d) | 2026-07-01 → 2026-06-29 (-2d) |  |  | 11d → 12d |  |
| 228 | **LK-F0009-0306-MB-T-00001** | 2026-06-29 A |  |  | 0% → 43% | 7d → 6d |  |
| 229 | Emissão inicial | 2026-06-29 A | 2026-07-01 A |  | 0% → 100% | 7d → none |  |
| 238 | **Estrutura metálica** |  | 2026-07-09 → 2026-07-08 (-1d) | 18d → 17d | 23% → 50% |  |  |
| 239 | **CP-F0009-0306-MB-S-00001** | 2026-07-01 → 2026-07-14 (+13d) | 2026-07-16 → 2026-07-29 (+13d) |  |  | 0d → -8d |  |
| 240 | Emissão inicial | 2026-07-01 → 2026-07-14 (+13d) | 2026-07-10 → 2026-07-23 (+13d) |  |  | 0d → -8d |  |
| 241 | Análise Tecnored | 2026-07-13 → 2026-07-24 (+11d) | 2026-07-13 → 2026-07-24 (+11d) |  |  | 0d → -8d |  |
| 242 | Atendimento de comentários | 2026-07-14 → 2026-07-27 (+13d) | 2026-07-15 → 2026-07-28 (+13d) |  |  | 0d → -8d |  |
| 243 | Aprovação | 2026-07-16 → 2026-07-29 (+13d) | 2026-07-16 → 2026-07-29 (+13d) |  |  | 0d → -8d |  |
| 244 | **ML-F0009-0306-MB-S-00001** | 2026-06-26 A → 2026-06-25 A (-1d) | 2026-07-03 → 2026-07-02 (-1d) |  |  |  |  |
| 245 | Emissão inicial | 2026-06-26 A → 2026-06-25 A (-1d) | 2026-06-30 A → 2026-06-29 A (-1d) |  |  |  |  |
| 246 | Análise Tecnored | 2026-07-01 → 2026-06-30 (-1d) | 2026-07-01 → 2026-06-30 (-1d) |  |  | 1.45d → 5d |  |
| 247 | Atendimento de comentários | 2026-07-02 → 2026-07-01 (-1d) | 2026-07-02 → 2026-07-01 (-1d) |  |  |  |  |
| 248 | Aprovação | 2026-07-03 → 2026-07-02 (-1d) | 2026-07-03 → 2026-07-02 (-1d) |  |  |  |  |
| 249 | **PQ-F0009-0306-MB-S-00001** | 2026-06-26 A → 2026-07-01 A (+5d) | 2026-07-03 → 2026-07-08 (+5d) |  |  | 9d → 5d |  |

| ID | Task | Start | Finish | Duration | Complete | Total float | Predecessors | Other |
| --- | --- | --- | --- | --- | --- | --- | --- | --- |
| 250 | Emissão inicial | 2026-06-26 A → 2026-07-01 A (+5d) | 2026-06-30 A → 2026-07-03 A (+3d) |  |  |  |  |  |
| 251 | Análise Tecnored | 2026-07-01 → 2026-07-06 (+5d) | 2026-07-01 → 2026-07-06 (+5d) |  |  | 9d → 5d |  |  |
| 252 | Atendimento de comentários | 2026-07-02 → 2026-07-07 (+5d) | 2026-07-02 → 2026-07-07 (+5d) |  |  | 9d → 5d |  |  |
| 253 | Aprovação | 2026-07-03 → 2026-07-08 (+5d) | 2026-07-03 → 2026-07-08 (+5d) |  |  | 9d → 5d |  |  |
| 254 | **LM-F0009-0306-MB-S-00001** | 2026-07-01 → 2026-06-30 (-1d) | 2026-07-08 → 2026-07-07 (-1d) |  |  |  |  |  |
| 255 | Emissão inicial | 2026-07-01 → 2026-06-30 (-1d) | 2026-07-03 → 2026-07-02 (-1d) |  |  |  |  |  |
| 256 | Análise Tecnored | 2026-07-06 → 2026-07-03 (-3d) | 2026-07-06 → 2026-07-03 (-3d) |  |  |  |  |  |
| 257 | Atendimento de comentários | 2026-07-07 → 2026-07-06 (-1d) | 2026-07-07 → 2026-07-06 (-1d) |  |  |  |  |  |
| 258 | Aprovação | 2026-07-08 → 2026-07-07 (-1d) | 2026-07-08 → 2026-07-07 (-1d) |  |  |  |  |  |
| 264 | **AG-F0009-0306-MB-S-00001** | 2026-07-01 → 2026-06-30 A (-1d) | 2026-07-09 → 2026-07-07 (-2d) | 7d → 6d | 0% → 50% | 5d → 6d |  |  |
| 265 | Emissão inicial | 2026-07-01 → 2026-06-30 A (-1d) | 2026-07-06 → 2026-07-02 A (-4d) | 4d → 3d | 0% → 100% | 5d → none |  |  |
| 266 | Análise Tecnored | 2026-07-07 → 2026-07-03 (-4d) | 2026-07-07 → 2026-07-03 (-4d) |  |  | 5d → 6d |  |  |
| 267 | Atendimento de comentários | 2026-07-08 → 2026-07-06 (-2d) | 2026-07-08 → 2026-07-06 (-2d) |  |  | 5d → 6d |  |  |
| 268 | Aprovação | 2026-07-09 → 2026-07-07 (-2d) | 2026-07-09 → 2026-07-07 (-2d) |  |  | 5d → 6d |  |  |
| 269 | **AG-F0009-0306-MB-S-00002** | 2026-07-01 → 2026-06-30 A (-1d) | 2026-07-09 → 2026-07-07 (-2d) | 7d → 6d | 0% → 50% | 5d → 6d |  |  |
| 270 | Emissão inicial | 2026-07-01 → 2026-06-30 A (-1d) | 2026-07-06 → 2026-07-02 A (-4d) | 4d → 3d | 0% → 100% | 5d → none |  |  |
| 271 | Análise Tecnored | 2026-07-07 → 2026-07-03 (-4d) | 2026-07-07 → 2026-07-03 (-4d) |  |  | 5d → 6d |  |  |
| 272 | Atendimento de comentários | 2026-07-08 → 2026-07-06 (-2d) | 2026-07-08 → 2026-07-06 (-2d) |  |  | 5d → 6d |  |  |
| 273 | Aprovação | 2026-07-09 → 2026-07-07 (-2d) | 2026-07-09 → 2026-07-07 (-2d) |  |  | 5d → 6d |  |  |
| 274 | **AG-F0009-0306-MB-S-00003** | 2026-07-01 → 2026-06-30 A (-1d) | 2026-07-09 → 2026-07-07 (-2d) | 7d → 6d | 0% → 50% | 5d → 6d |  |  |
| 275 | Emissão inicial | 2026-07-01 → 2026-06-30 A (-1d) | 2026-07-06 → 2026-07-02 A (-4d) | 4d → 3d | 0% → 100% | 5d → none |  |  |
| 276 | Análise Tecnored | 2026-07-07 → 2026-07-03 (-4d) | 2026-07-07 → 2026-07-03 (-4d) |  |  | 5d → 6d |  |  |
| 277 | Atendimento de comentários | 2026-07-08 → 2026-07-06 (-2d) | 2026-07-08 → 2026-07-06 (-2d) |  |  | 5d → 6d |  |  |
| 278 | Aprovação | 2026-07-09 → 2026-07-07 (-2d) | 2026-07-09 → 2026-07-07 (-2d) |  |  | 5d → 6d |  |  |
| 279 | **AG-F0009-0306-MB-S-00004** | 2026-07-01 → 2026-06-30 A (-1d) | 2026-07-09 → 2026-07-07 (-2d) | 7d → 6d | 0% → 50% | 5d → 6d |  |  |
| 280 | Emissão inicial | 2026-07-01 → 2026-06-30 A (-1d) | 2026-07-06 → 2026-07-02 A (-4d) | 4d → 3d | 0% → 100% | 5d → none |  |  |
| 281 | Análise Tecnored | 2026-07-07 → 2026-07-03 (-4d) | 2026-07-07 → 2026-07-03 (-4d) |  |  | 5d → 6d |  |  |
| 282 | Atendimento de comentários | 2026-07-08 → 2026-07-06 (-2d) | 2026-07-08 → 2026-07-06 (-2d) |  |  | 5d → 6d |  |  |
| 283 | Aprovação | 2026-07-09 → 2026-07-07 (-2d) | 2026-07-09 → 2026-07-07 (-2d) |  |  | 5d → 6d |  |  |
| 284 | **AG-F0009-0306-MB-S-00005** | 2026-07-01 → 2026-06-30 (-1d) | 2026-07-09 → 2026-07-08 (-1d) |  |  |  |  |  |
| 285 | Emissão inicial | 2026-07-01 → 2026-06-30 (-1d) | 2026-07-06 → 2026-07-03 (-3d) |  |  |  |  |  |
| 286 | Análise Tecnored | 2026-07-07 → 2026-07-06 (-1d) | 2026-07-07 → 2026-07-06 (-1d) |  |  |  |  |  |
| 287 | Atendimento de comentários | 2026-07-08 → 2026-07-07 (-1d) | 2026-07-08 → 2026-07-07 (-1d) |  |  |  |  |  |
| 288 | Aprovação | 2026-07-09 → 2026-07-08 (-1d) | 2026-07-09 → 2026-07-08 (-1d) |  |  |  |  |  |
| 294 | **Elétrica** |  | 2026-07-13 → 2026-07-15 (+2d) |  | 42% → 47% | 3d → 2d |  |  |
| 300 | **ML-F0009-0306-MB-E-00001** | 2026-07-03 A → 2026-07-06 (+3d) | 2026-07-10 → 2026-07-15 (+5d) |  | 8% → 0% | 4d → 2d |  |  |
| 301 | Emissão inicial | 2026-07-03 A → 2026-07-06 (+3d) | 2026-07-07 → 2026-07-08 (+1d) |  | 15% → 0% | 4d → 2d |  | constraint finish no earlier than 2026-06-24 → start no earlier than 2026-07-06 |
| 302 | Análise Tecnored | 2026-07-08 → 2026-07-13 (+5d) | 2026-07-08 → 2026-07-13 (+5d) |  |  | 4d → 2d |  |  |
| 303 | Atendimento de comentários | 2026-07-09 → 2026-07-14 (+5d) | 2026-07-09 → 2026-07-14 (+5d) |  |  | 4d → 2d |  |  |
| 304 | Aprovação | 2026-07-10 → 2026-07-15 (+5d) | 2026-07-10 → 2026-07-15 (+5d) |  |  | 4d → 2d |  |  |
| 310 | **LE-F0009-0306-MB-E-00001** |  | 2026-07-10 → 2026-07-14 (+4d) |  |  | 4d → 3d |  |  |
| 312 | Análise Tecnored | 2026-07-09 → 2026-07-13 (+4d) | 2026-07-09 → 2026-07-13 (+4d) |  |  | 4d → 3d |  |  |
| 313 | Atendimento de comentários | 2026-07-10 → 2026-07-14 (+4d) | 2026-07-10 → 2026-07-14 (+4d) |  |  | 4d → 3d |  |  |
| 314 | Aprovação | 2026-07-10 → 2026-07-14 (+4d) | 2026-07-10 → 2026-07-14 (+4d) |  |  | 4d → 3d |  |  |
| 320 | **LM-F0009-0306-MB-E-00001** | 2026-07-06 → 2026-07-07 (+1d) | 2026-07-08 → 2026-07-14 (+6d) | 3d → 4d |  |  |  |  |
| 321 | Emissão inicial | 2026-07-06 → 2026-07-07 (+1d) | 2026-07-06 → 2026-07-08 (+2d) | 1d → 2d |  |  |  | constraint none → start no earlier than 2026-07-07 |
| 322 | Análise Tecnored | 2026-07-07 → 2026-07-13 (+6d) | 2026-07-07 → 2026-07-13 (+6d) |  |  | 6d → 3d |  |  |
| 323 | Atendimento de comentários | 2026-07-08 → 2026-07-14 (+6d) | 2026-07-08 → 2026-07-14 (+6d) |  |  | 6d → 3d |  |  |
| 324 | Aprovação | 2026-07-08 → 2026-07-14 (+6d) | 2026-07-08 → 2026-07-14 (+6d) |  |  | 6d → 3d |  |  |
| 325 | **PQ-F0009-0306-MB-E-00001** | 2026-07-07 → 2026-07-06 (-1d) | 2026-07-13 → 2026-07-14 (+1d) |  |  |  |  |  |
| 326 | Emissão inicial | 2026-07-07 → 2026-07-06 (-1d) | 2026-07-09 → 2026-07-08 (-1d) |  |  |  | 321 → 321FF |  |
| 327 | Análise Tecnored | 2026-07-10 → 2026-07-13 (+3d) | 2026-07-10 → 2026-07-13 (+3d) |  |  |  |  |  |
| 328 | Atendimento de comentários | 2026-07-13 → 2026-07-14 (+1d) | 2026-07-13 → 2026-07-14 (+1d) |  |  |  |  |  |
| 329 | Aprovação | 2026-07-13 → 2026-07-14 (+1d) | 2026-07-13 → 2026-07-14 (+1d) |  |  |  |  |  |
| 330 | **MD-F0009-0306-MB-E-00001** | 2026-07-07 → 2026-07-13 (+6d) | 2026-07-14 → 2026-07-20 (+6d) |  |  | 2d → -1d |  |  |
| 331 | Emissão inicial | 2026-07-07 → 2026-07-13 (+6d) | 2026-07-08 → 2026-07-14 (+6d) |  |  | 2d → -1d |  |  |
| 332 | Análise Tecnored | 2026-07-09 → 2026-07-15 (+6d) | 2026-07-09 → 2026-07-15 (+6d) |  |  | 2d → -1d |  |  |
| 333 | Atendimento de comentários | 2026-07-10 → 2026-07-16 (+6d) | 2026-07-13 → 2026-07-17 (+4d) |  |  | 2d → -1d |  |  |
| 334 | Aprovação | 2026-07-14 → 2026-07-20 (+6d) | 2026-07-14 → 2026-07-20 (+6d) |  |  | 2d → -1d |  |  |
| 335 | **MC-F0009-0306-MB-E-00001** |  |  |  | 35% → 50% | 7d → 6d |  |  |
| 336 | Emissão inicial |  | 2026-07-03 A |  | 70% → 100% | 7d → none |  |  |
| 340 | **MC-F0009-0306-MB-E-00002** |  |  |  | 35% → 50% | 7d → 6d |  |  |
| 341 | Emissão inicial |  | 2026-07-03 A |  | 70% → 100% | 7d → none |  |  |
| 345 | **AG-F0009-0306-MB-E-00001** |  |  |  | 40% → 51% | 8d → 7d |  |  |
| 346 | Emissão inicial |  |  |  | 70% → 90% | 3d → 4d |  |  |
| 350 | **AG-F0009-0306-MB-E-00002** |  |  |  | 40% → 51% | 8d → 7d |  |  |
| 351 | Emissão inicial |  |  |  | 70% → 90% | 8d → 7d |  |  |
| 355 | **AG-F0009-0306-MB-E-00003** |  |  |  | 40% → 51% | 8d → 7d |  |  |
| 356 | Emissão inicial |  |  |  | 70% → 90% | 8d → 7d |  |  |
| 410 | **Automação e instrumentação** |  | 2026-07-10 → 2026-07-14 (+4d) |  | 64% → 67% | 4.8d → 3.8d |  |  |

| ID | Task | Start | Finish | Duration | Complete | Total float | Other |
| --- | --- | --- | --- | --- | --- | --- | --- |
| 427 | Emissão inicial |  |  |  |  |  | baseline start 2026-06-22 → 2026-06-26; baseline finish 2026-06-23 → 2026-07-01 |
| 428 | Análise Tecnored |  |  |  |  | 7d → 6d | baseline start 2026-06-24 → 2026-07-02; baseline finish 2026-06-24 → 2026-07-02 |
| 429 | Atendimento de comentários |  |  |  |  | 7d → 6d | baseline start 2026-06-25 → 2026-07-03; baseline finish 2026-06-26 → 2026-07-06 |
| 430 | Aprovação |  |  |  |  | 7d → 6d | baseline start 2026-06-29 → 2026-07-07; baseline finish 2026-06-29 → 2026-07-07 |
| 441 | **PQ-F0009-0306-MB-J-00001** |  |  |  | 17% → 67% | 6d → 5d |  |
| 442 | Emissão inicial |  | 2026-07-03 A |  | 25% → 100% | 6d → none |  |
| 481 | **DI-F0009-0306-MB-J-00001** |  | 2026-07-09 → 2026-07-13 (+4d) |  | 38% → 50% | 5d → 4d |  |
| 482 | Emissão inicial |  | 2026-07-03 A |  | 75% → 100% | -3.5d → none |  |
| 485 | Aprovação | 2026-07-09 → 2026-07-13 (+4d) | 2026-07-09 → 2026-07-13 (+4d) |  |  | 5d → 4d |  |
| 496 | **LM-F0009-0306-MB-J-00001** | 2026-06-30 A |  |  | 0% → 57% | 0.5d → 5d |  |
| 497 | Emissão inicial | 2026-06-30 A | 2026-07-03 A |  | 0% → 100% | 0.5d → none |  |
| 551 | **FD-F0009-0306-MB-J-00010** | 2026-06-18 A → 2026-06-22 A (+4d) | 2026-07-01 → 2026-07-03 (+2d) |  |  | 11d → 8d |  |
| 552 | Emissão inicial | 2026-06-18 A → 2026-06-22 A (+4d) | 2026-06-26 A → 2026-06-30 A (+4d) |  |  |  |  |
| 553 | Análise Tecnored | 2026-06-29 → 2026-07-01 (+2d) | 2026-06-29 → 2026-07-01 (+2d) |  |  | 11d → 8d |  |
| 554 | Atendimento de comentários | 2026-06-30 → 2026-07-02 (+2d) | 2026-06-30 → 2026-07-02 (+2d) |  |  | 11d → 8d |  |
| 555 | Aprovação | 2026-07-01 → 2026-07-03 (+2d) | 2026-07-01 → 2026-07-03 (+2d) |  |  | 11d → 8d |  |
| 561 | **FD-F0009-0306-MB-J-00012** | 2026-06-18 A → 2026-06-22 A (+4d) | 2026-07-01 → 2026-07-03 (+2d) |  |  | 11d → 8d |  |
| 562 | Emissão inicial | 2026-06-18 A → 2026-06-22 A (+4d) | 2026-06-26 A → 2026-06-30 A (+4d) |  |  |  |  |
| 563 | Análise Tecnored | 2026-06-29 → 2026-07-01 (+2d) | 2026-06-29 → 2026-07-01 (+2d) |  |  | 11d → 8d |  |
| 564 | Atendimento de comentários | 2026-06-30 → 2026-07-02 (+2d) | 2026-06-30 → 2026-07-02 (+2d) |  |  | 11d → 8d |  |
| 565 | Aprovação | 2026-07-01 → 2026-07-03 (+2d) | 2026-07-01 → 2026-07-03 (+2d) |  |  | 11d → 8d |  |
| 566 | **FD-F0009-0306-MB-J-00013** | 2026-06-18 A → 2026-06-22 A (+4d) | 2026-07-01 → 2026-07-03 (+2d) | 10d → 9.5d |  | 11d → 8.5d |  |
| 567 | Emissão inicial | 2026-06-18 A → 2026-06-22 A (+4d) | 2026-06-26 A → 2026-06-30 A (+4d) |  |  |  |  |
| 568 | Análise Tecnored |  | 2026-06-29 → 2026-07-01 (+2d) |  |  | 11d → 8.5d |  |
| 569 | Atendimento de comentários | 2026-06-30 → 2026-07-01 (+1d) | 2026-06-30 → 2026-07-02 (+2d) |  |  | 11d → 8.5d |  |
| 570 | Aprovação | 2026-07-01 → 2026-07-02 (+1d) | 2026-07-01 → 2026-07-03 (+2d) |  |  | 11d → 8.5d |  |
| 587 | Emissão inicial |  |  |  |  |  | baseline start 2026-06-24 → 2026-06-19; baseline finish 2026-07-02 → 2026-06-29 |
| 588 | Análise Tecnored |  |  |  |  | 10d → 9d | baseline start 2026-07-03 → 2026-06-30; baseline finish 2026-07-03 → 2026-06-30 |
| 589 | Atendimento de comentários |  |  |  |  | 10d → 9d | baseline start 2026-07-06 → 2026-07-01; baseline finish 2026-07-07 → 2026-07-01 |
| 590 | Aprovação |  |  |  |  | 10d → 9d | baseline start 2026-07-08 → 2026-07-02; baseline finish 2026-07-08 → 2026-07-02 |
| 591 | **FD-F0009-0306-MB-J-00018** | 2026-06-19 A → 2026-06-22 A (+3d) | 2026-07-02 → 2026-07-03 (+1d) |  |  | 10d → 8d |  |
| 592 | Emissão inicial | 2026-06-19 A → 2026-06-22 A (+3d) | 2026-06-29 A → 2026-06-30 A (+1d) |  |  |  | baseline start 2026-06-24 → 2026-06-22; baseline finish 2026-07-02 → 2026-06-30 |
| 593 | Análise Tecnored | 2026-06-30 → 2026-07-01 (+1d) | 2026-06-30 → 2026-07-01 (+1d) |  |  | 10d → 8d | baseline start 2026-07-03 → 2026-07-01; baseline finish 2026-07-03 → 2026-07-01 |
| 594 | Atendimento de comentários | 2026-07-01 → 2026-07-02 (+1d) | 2026-07-01 → 2026-07-02 (+1d) |  |  | 10d → 8d | baseline start 2026-07-06 → 2026-07-02; baseline finish 2026-07-07 → 2026-07-02 |
| 595 | Aprovação | 2026-07-02 → 2026-07-03 (+1d) | 2026-07-02 → 2026-07-03 (+1d) |  |  | 10d → 8d | baseline start 2026-07-08 → 2026-07-03; baseline finish 2026-07-08 → 2026-07-03 |
| 596 | **FD-F0009-0306-MB-J-00019** | 2026-06-19 A → 2026-06-22 A (+3d) | 2026-07-02 → 2026-07-03 (+1d) |  |  | 10d → 8d |  |
| 597 | Emissão inicial | 2026-06-19 A → 2026-06-22 A (+3d) | 2026-06-29 A → 2026-06-30 A (+1d) |  |  |  | baseline start 2026-06-24 → 2026-06-22; baseline finish 2026-07-02 → 2026-06-30 |
| 598 | Análise Tecnored | 2026-06-30 → 2026-07-01 (+1d) | 2026-06-30 → 2026-07-01 (+1d) |  |  | 10d → 8d | baseline start 2026-07-03 → 2026-07-01; baseline finish 2026-07-03 → 2026-07-01 |
| 599 | Atendimento de comentários | 2026-07-01 → 2026-07-02 (+1d) | 2026-07-01 → 2026-07-02 (+1d) |  |  | 10d → 8d | baseline start 2026-07-06 → 2026-07-02; baseline finish 2026-07-07 → 2026-07-02 |
| 600 | Aprovação | 2026-07-02 → 2026-07-03 (+1d) | 2026-07-02 → 2026-07-03 (+1d) |  |  | 10d → 8d | baseline start 2026-07-08 → 2026-07-03; baseline finish 2026-07-08 → 2026-07-03 |
| 602 | Emissão inicial |  |  |  |  |  | baseline start 2026-06-24 → 2026-06-19; baseline finish 2026-07-02 → 2026-06-29 |
| 603 | Análise Tecnored |  |  |  |  | 10d → 9d | baseline start 2026-07-03 → 2026-06-30; baseline finish 2026-07-03 → 2026-06-30 |
| 604 | Atendimento de comentários |  |  |  |  | 10d → 9d | baseline start 2026-07-06 → 2026-07-01; baseline finish 2026-07-07 → 2026-07-01 |
| 605 | Aprovação |  |  |  |  | 10d → 9d | baseline start 2026-07-08 → 2026-07-02; baseline finish 2026-07-08 → 2026-07-02 |
| 607 | Emissão inicial |  |  |  |  |  | baseline start 2026-06-24 → 2026-06-19; baseline finish 2026-07-02 → 2026-06-29 |
| 608 | Análise Tecnored |  |  |  |  | 10d → 9d | baseline start 2026-07-03 → 2026-06-30; baseline finish 2026-07-03 → 2026-06-30 |
| 609 | Atendimento de comentários |  |  |  |  | 10d → 9d | baseline start 2026-07-06 → 2026-07-01; baseline finish 2026-07-07 → 2026-07-01 |
| 610 | Aprovação |  |  |  |  | 10d → 9d | baseline start 2026-07-08 → 2026-07-02; baseline finish 2026-07-08 → 2026-07-02 |
| 612 | Emissão inicial |  |  |  |  |  | baseline start 2026-06-24 → 2026-06-19; baseline finish 2026-07-02 → 2026-06-29 |
| 613 | Análise Tecnored |  |  |  |  | 10d → 9d | baseline start 2026-07-03 → 2026-06-30; baseline finish 2026-07-03 → 2026-06-30 |
| 614 | Atendimento de comentários |  |  |  |  | 10d → 9d | baseline start 2026-07-06 → 2026-07-01; baseline finish 2026-07-07 → 2026-07-01 |
| 615 | Aprovação |  |  |  |  | 10d → 9d | baseline start 2026-07-08 → 2026-07-02; baseline finish 2026-07-08 → 2026-07-02 |
| 617 | Emissão inicial |  |  |  |  |  | baseline start 2026-06-24 → 2026-06-19; baseline finish 2026-07-02 → 2026-06-29 |
| 618 | Análise Tecnored |  |  |  |  | 10d → 9d | baseline start 2026-07-03 → 2026-06-30; baseline finish 2026-07-03 → 2026-06-30 |
| 619 | Atendimento de comentários |  |  |  |  | 10d → 9d | baseline start 2026-07-06 → 2026-07-01; baseline finish 2026-07-07 → 2026-07-01 |
| 620 | Aprovação |  |  |  |  | 10d → 9d | baseline start 2026-07-08 → 2026-07-02; baseline finish 2026-07-08 → 2026-07-02 |
| 621 | **LB-F0009-0306-MB-J-00001** |  | 2026-07-10 → 2026-07-14 (+4d) |  |  | 4.8d → 3.8d |  |
| 622 | Emissão inicial |  |  |  |  | 4.8d → 3.8d | baseline finish 2026-07-02 → 2026-07-06 |
| 623 | Análise Tecnored |  |  |  |  | 4.8d → 3.8d | baseline start 2026-07-03 → 2026-07-06; baseline finish 2026-07-03 → 2026-07-07 |
| 624 | Atendimento de comentários |  | 2026-07-09 → 2026-07-13 (+4d) |  |  | 4.8d → 3.8d | baseline start 2026-07-06 → 2026-07-07; baseline finish 2026-07-07 → 2026-07-13 |
| 625 | Aprovação | 2026-07-09 → 2026-07-13 (+4d) | 2026-07-10 → 2026-07-14 (+4d) |  |  | 4.8d → 3.8d | baseline start 2026-07-08 → 2026-07-13; baseline finish 2026-07-08 → 2026-07-14 |
| 627 | Emissão inicial |  |  |  |  |  | baseline start 2026-06-30 → 2026-06-16; baseline finish 2026-07-02 → 2026-06-19 |
| 628 | Análise Tecnored |  |  |  |  |  | baseline start 2026-07-03 → 2026-06-22; baseline finish 2026-07-03 → 2026-06-22 |
| 629 | Atendimento de comentários |  |  |  |  | 15d → 14d | baseline start 2026-07-06 → 2026-06-23; baseline finish 2026-07-07 → 2026-06-24 |
| 630 | Aprovação |  |  |  |  | 15d → 14d | baseline start 2026-07-08 → 2026-06-25; baseline finish 2026-07-08 → 2026-06-25 |
| 631 | **DT-F0009-0306-MB-J-00001** | 2026-06-19 A → 2026-06-29 A (+10d) | 2026-06-30 → 2026-07-08 (+8d) |  | 45% → 50% | 12d → 5d |  |
| 632 | Emissão inicial | 2026-06-19 A → 2026-06-29 A (+10d) | 2026-06-24 → 2026-07-02 A (+8d) |  | 90% → 100% | 12d → none |  |
| 633 | Análise Tecnored | 2026-06-25 → 2026-07-03 (+8d) | 2026-06-25 → 2026-07-03 (+8d) |  |  | 12d → 5d |  |
| 634 | Atendimento de comentários | 2026-06-26 → 2026-07-06 (+10d) | 2026-06-29 → 2026-07-07 (+8d) |  |  | 12d → 5d |  |
| 635 | Aprovação | 2026-06-30 → 2026-07-08 (+8d) | 2026-06-30 → 2026-07-08 (+8d) |  |  | 12d → 5d |  |

| ID | Task | Start | Finish | Duration | Complete | Total float | Predecessors | Other |
| --- | --- | --- | --- | --- | --- | --- | --- | --- |
| 636 | **Civil** | 2026-06-29 → 2026-07-02 A (+3d) | 2026-07-09 → 2026-07-15 (+6d) | 9d → 8d | 0% → 10% | 5d → 2d |  |  |
| 637 | **MC-F0009-0306-MB-C-00001** | 2026-06-29 → 2026-07-02 A (+3d) | 2026-07-08 → 2026-07-15 (+7d) |  | 0% → 16% | 5d → 2d |  |  |
| 638 | Emissão inicial | 2026-06-29 → 2026-07-02 A (+3d) | 2026-07-03 → 2026-07-08 (+5d) |  | 0% → 25% | 5d → 2d |  | constraint start no earlier than 2026-06-29 → start no earlier than 2026-07-02 |
| 639 | Análise Tecnored | 2026-07-06 → 2026-07-13 (+7d) | 2026-07-06 → 2026-07-13 (+7d) |  |  | 6d → 2d |  |  |
| 640 | Atendimento de comentários | 2026-07-07 → 2026-07-14 (+7d) | 2026-07-07 → 2026-07-14 (+7d) |  |  | 6d → 2d |  |  |
| 641 | Aprovação | 2026-07-08 → 2026-07-15 (+7d) | 2026-07-08 → 2026-07-15 (+7d) |  |  | 6d → 2d |  |  |
| 642 | **PQ-F0009-0306-MB-C-00001** | 2026-07-06 → 2026-07-08 (+2d) | 2026-07-09 → 2026-07-15 (+6d) |  |  | 5d → 2d |  |  |
| 643 | Emissão inicial | 2026-07-06 → 2026-07-08 (+2d) | 2026-07-06 → 2026-07-08 (+2d) |  |  | 5d → 2d | 638 → 638FF |  |
| 644 | Análise Tecnored | 2026-07-07 → 2026-07-13 (+6d) | 2026-07-07 → 2026-07-13 (+6d) |  |  | 5d → 2d |  |  |
| 645 | Atendimento de comentários | 2026-07-08 → 2026-07-14 (+6d) | 2026-07-08 → 2026-07-14 (+6d) |  |  | 5d → 2d |  |  |
| 646 | Aprovação | 2026-07-09 → 2026-07-15 (+6d) | 2026-07-09 → 2026-07-15 (+6d) |  |  | 5d → 2d |  |  |

## Version 4 (data date 2026-07-06, saved 2026-07-06, file CR-F0009-0306-MB-F-00001 06072026_C2.mpp)

Note of the change: Primeira versao dashboard

Last finish stays 2026-07-29. Complete tasks 114 → 112.

Changed:

| ID | Task | Finish | Complete | Total float |
| --- | --- | --- | --- | --- |
| 441 | **PQ-F0009-0306-MB-J-00001** |  | 67% → 66% | 5d → 3d |
| 442 | Emissão inicial | 2026-07-03 A → 2026-07-03 | 100% → 99% | none → 3d |
| 497 | Emissão inicial | 2026-07-03 A → 2026-07-03 | 100% → 99% | none → 3d |

## Version 5 (data date 2026-07-07, saved 2026-07-07, file CR-F0009-0306-MB-F-00001 08072026_C2.mpp)

Note of the change: Adiciona data do comparativo

Last finish stays 2026-07-29. Complete tasks 112 → 111.

Changed:

| ID | Task | Start | Finish | Duration | Complete | Total float | Other |
| --- | --- | --- | --- | --- | --- | --- | --- |
| 1 | **F0009 - Programa Marabá** |  |  |  | 62% → 59% |  |  |
| 2 | **Área 0306 - Sopradores** |  |  |  | 62% → 59% |  |  |
| 24 | **Coordenação** | 2026-04-27 A → 2026-04-28 (+1d) | 2026-07-03 → 2026-06-30 (-3d) | 48d → 44d | 41% → 0% | 6d → 9d |  |
| 25 | **RM-F0009-0306-MB-G-00001** | 2026-06-24 A → 2026-06-11 (-13d) | 2026-07-01 → 2026-06-18 (-13d) |  | 38% → 0% | 8d → 10d |  |
| 26 | Emissão inicial | 2026-06-24 A → 2026-06-11 (-13d) | 2026-06-26 → 2026-06-15 (-11d) |  | 75% → 0% | 0.75d → 10d |  |
| 27 | Análise Tecnored | 2026-06-29 → 2026-06-16 (-13d) | 2026-06-29 → 2026-06-16 (-13d) |  |  | 0.75d → 15d |  |
| 28 | Atendimento de comentários | 2026-06-30 → 2026-06-17 (-13d) | 2026-06-30 → 2026-06-17 (-13d) |  |  | 8d → 17d |  |
| 29 | Aprovação | 2026-07-01 → 2026-06-18 (-13d) | 2026-07-01 → 2026-06-18 (-13d) |  |  | 8d → 17d |  |
| 30 | **RM-F0009-0306-MB-G-00002** | 2026-07-06 → 2026-06-23 (-13d) | 2026-07-14 → 2026-06-29 (-15d) |  |  | 1d → 10d |  |
| 31 | Emissão inicial | 2026-07-06 → 2026-06-23 (-13d) | 2026-07-07 → 2026-06-24 (-13d) |  |  | 1d → 10d |  |
| 32 | Análise Tecnored | 2026-07-08 → 2026-06-25 (-13d) | 2026-07-08 → 2026-06-25 (-13d) |  |  | 1d → 10d |  |
| 33 | Atendimento de comentários | 2026-07-13 → 2026-06-26 (-17d) | 2026-07-13 → 2026-06-26 (-17d) |  |  | 1d → 10d |  |
| 34 | Aprovação | 2026-07-14 → 2026-06-29 (-15d) | 2026-07-14 → 2026-06-29 (-15d) |  |  | 1d → 10d |  |
| 35 | **RM-F0009-0306-MB-G-00003** | 2026-07-06 → 2026-06-23 (-13d) | 2026-07-14 → 2026-06-29 (-15d) |  |  | 1d → 10d |  |
| 36 | Emissão inicial | 2026-07-06 → 2026-06-23 (-13d) | 2026-07-07 → 2026-06-24 (-13d) |  |  | 1d → 10d |  |
| 37 | Análise Tecnored | 2026-07-08 → 2026-06-25 (-13d) | 2026-07-08 → 2026-06-25 (-13d) |  |  | 1d → 10d |  |
| 38 | Atendimento de comentários | 2026-07-13 → 2026-06-26 (-17d) | 2026-07-13 → 2026-06-26 (-17d) |  |  | 1d → 10d |  |
| 39 | Aprovação | 2026-07-14 → 2026-06-29 (-15d) | 2026-07-14 → 2026-06-29 (-15d) |  |  | 1d → 10d |  |
| 40 | **RL-F0009-0306-MB-G-00001** | 2026-06-30 A → 2026-06-25 (-5d) | 2026-07-03 → 2026-06-30 (-3d) |  | 19% → 0% | 6d → 9d |  |
| 41 | Emissão inicial | 2026-06-30 A → 2026-06-25 (-5d) | 2026-06-30 → 2026-06-25 (-5d) |  | 75% → 0% | 6d → 9d |  |
| 42 | Análise Tecnored | 2026-07-01 → 2026-06-26 (-5d) | 2026-07-01 → 2026-06-26 (-5d) |  |  | 6d → 9d |  |
| 43 | Atendimento de comentários | 2026-07-02 → 2026-06-29 (-3d) | 2026-07-02 → 2026-06-29 (-3d) |  |  | 6d → 9d |  |
| 44 | Aprovação | 2026-07-03 → 2026-06-30 (-3d) | 2026-07-03 → 2026-06-30 (-3d) |  |  | 6d → 9d |  |
| 45 | **LP-F0009-0306-MB-G-00001** | 2026-04-27 A → 2026-04-28 (+1d) |  | 45d → 44d | 57% → 0% |  |  |
| 46 | Emissão inicial | 2026-04-27 A → 2026-04-28 (+1d) | 2026-04-29 A → 2026-04-30 (+1d) |  | 100% → 0% | none → 16d |  |
| 47 | Análise Tecnored | 2026-06-18 A → 2026-06-18 | 2026-06-18 A → 2026-06-18 |  | 100% → 0% | none → 9d |  |
| 66 | **Mecânica** | 2026-05-26 A → 2026-05-18 A (-8d) | 2026-07-08 → 2026-07-15 (+7d) | 30d → 39d | 72% → 62% | 3d → 0d |  |
| 72 | **MD-F0009-0306-MB-M-00001** | 2026-06-18 → 2026-06-22 (+4d) | 2026-06-26 → 2026-06-30 (+4d) |  |  | 11d → 9d |  |
| 73 | Emissão inicial | 2026-06-18 → 2026-06-22 (+4d) | 2026-06-22 → 2026-06-24 (+2d) |  |  | 11d → 9d |  |
| 74 | Análise Tecnored | 2026-06-23 → 2026-06-25 (+2d) | 2026-06-23 → 2026-06-25 (+2d) |  |  | 11d → 9d |  |
| 75 | Atendimento de comentários | 2026-06-24 → 2026-06-26 (+2d) | 2026-06-25 → 2026-06-29 (+4d) |  |  | 11d → 9d |  |
| 76 | Aprovação | 2026-06-26 → 2026-06-30 (+4d) | 2026-06-26 → 2026-06-30 (+4d) |  |  | 11d → 9d |  |
| 77 | **LE-F0009-0306-MB-M-00001** |  | 2026-06-18 A → 2026-06-22 A (+4d) | 6d → 8d |  |  |  |
| 79 | Análise Tecnored | 2026-06-15 A → 2026-06-12 A (-3d) | 2026-06-15 A → 2026-06-17 A (+2d) | 1d → 4d |  |  | constraint none → finish no earlier than 2026-06-17 |
| 80 | Atendimento de comentários | 2026-06-16 A → 2026-06-18 A (+2d) | 2026-06-17 A → 2026-06-19 A (+2d) |  |  |  |  |
| 81 | Aprovação | 2026-06-18 A → 2026-06-19 A (+1d) | 2026-06-18 A → 2026-06-22 A (+4d) | 1d → 2d |  |  | constraint none → finish no earlier than 2026-06-22 |
| 82 | **PQ-F0009-0306-MB-M-00001** | 2026-06-11 A → 2026-06-09 A (-2d) | 2026-06-29 → 2026-06-17 (-12d) | 13d → 7d | 71% → 50% | 10d → 18d |  |
| 83 | Emissão inicial | 2026-06-11 A → 2026-06-09 A (-2d) | 2026-06-15 A → 2026-06-12 A (-3d) |  |  |  |  |
| 84 | Análise Tecnored | 2026-06-24 A → 2026-06-15 (-9d) | 2026-06-24 A → 2026-06-15 (-9d) |  | 100% → 0% | none → 18d | constraint start no earlier than 2026-06-24 → start no earlier than 2026-06-15 |
| 85 | Atendimento de comentários | 2026-06-25 A → 2026-06-16 (-9d) | 2026-06-26 → 2026-06-16 (-10d) | 2d → 1d | 50% → 0% | 10d → 18d | constraint start no earlier than 2026-06-25 → finish no earlier than 2026-06-16 |
| 86 | Aprovação | 2026-06-29 → 2026-06-17 (-12d) | 2026-06-29 → 2026-06-17 (-12d) |  |  | 10d → 18d | constraint start no earlier than 2026-06-29 → finish no earlier than 2026-06-17 |
| 87 | **AG-F0009-0306-MB-L-00001** |  | 2026-07-08 → 2026-07-15 (+7d) | 7d → 10d | 57% → 40% | 3d → 0d |  |
| 89 | Análise Tecnored |  | 2026-07-06 → 2026-07-13 (+7d) | 1d → 4d |  | 3d → 0d |  |
| 90 | Atendimento de comentários | 2026-07-07 → 2026-07-14 (+7d) | 2026-07-07 → 2026-07-14 (+7d) |  |  | 3d → 0d |  |
| 91 | Aprovação | 2026-07-08 → 2026-07-15 (+7d) | 2026-07-08 → 2026-07-15 (+7d) |  |  | 3d → 0d |  |
| 92 | **AG-F0009-0306-MB-L-00002** |  | 2026-07-08 → 2026-07-15 (+7d) | 7d → 10d | 57% → 40% | 3d → 0d |  |
| 94 | Análise Tecnored |  | 2026-07-06 → 2026-07-13 (+7d) | 1d → 4d |  | 3d → 0d | constraint finish no earlier than 2026-06-26 → finish no earlier than 2026-07-13 |
| 95 | Atendimento de comentários | 2026-07-07 → 2026-07-14 (+7d) | 2026-07-07 → 2026-07-14 (+7d) |  |  | 3d → 0d | constraint finish no earlier than 2026-06-29 → start no earlier than 2026-07-14 |
| 96 | Aprovação | 2026-07-08 → 2026-07-15 (+7d) | 2026-07-08 → 2026-07-15 (+7d) |  |  | 3d → 0d | constraint finish no earlier than 2026-06-30 → start no earlier than 2026-07-15 |
| 97 | **AG-F0009-0306-MB-L-00003** |  | 2026-07-08 → 2026-07-15 (+7d) | 7d → 10d | 57% → 40% | 3d → 0d |  |
| 99 | Análise Tecnored |  | 2026-07-06 → 2026-07-13 (+7d) | 1d → 4d |  | 3d → 0d | constraint finish no earlier than 2026-06-26 → finish no earlier than 2026-07-13 |
| 100 | Atendimento de comentários | 2026-07-07 → 2026-07-14 (+7d) | 2026-07-07 → 2026-07-14 (+7d) |  |  | 3d → 0d | constraint finish no earlier than 2026-06-29 → start no earlier than 2026-07-14 |
| 101 | Aprovação | 2026-07-08 → 2026-07-15 (+7d) | 2026-07-08 → 2026-07-15 (+7d) |  |  | 3d → 0d | constraint finish no earlier than 2026-06-30 → start no earlier than 2026-07-15 |
| 102 | **AG-F0009-0306-MB-L-00004** |  | 2026-07-08 → 2026-07-15 (+7d) | 7d → 10d | 57% → 40% | 3d → 0d |  |
| 104 | Análise Tecnored |  | 2026-07-06 → 2026-07-13 (+7d) | 1d → 4d |  | 3d → 0d | constraint finish no earlier than 2026-06-26 → finish no earlier than 2026-07-13 |
| 105 | Atendimento de comentários | 2026-07-07 → 2026-07-14 (+7d) | 2026-07-07 → 2026-07-14 (+7d) |  |  | 3d → 0d | constraint finish no earlier than 2026-06-29 → start no earlier than 2026-07-14 |
| 106 | Aprovação | 2026-07-08 → 2026-07-15 (+7d) | 2026-07-08 → 2026-07-15 (+7d) |  |  | 3d → 0d | constraint finish no earlier than 2026-06-30 → start no earlier than 2026-07-15 |
| 117 | **MC-F0009-0306-MB-M-00001** |  | 2026-06-23 → 2026-07-08 (+15d) | 8d → 19d | 83% → 67% | 14d → 3d |  |
| 120 | Atendimento de comentários | 2026-06-18 A → 2026-07-06 A (+18d) | 2026-06-19 A → 2026-07-07 (+18d) |  | 100% → 50% | none → 3d |  |
| 121 | Aprovação | 2026-06-23 → 2026-07-08 (+15d) | 2026-06-23 → 2026-07-08 (+15d) |  |  | 14d → 3d |  |
| 122 | **MC-F0009-0306-MB-M-00002** |  | 2026-06-23 → 2026-07-08 (+15d) | 8d → 19d | 83% → 67% | 14d → 3d |  |
| 125 | Atendimento de comentários | 2026-06-18 A → 2026-07-06 A (+18d) | 2026-06-19 A → 2026-07-07 (+18d) |  | 100% → 50% | none → 3d |  |
| 126 | Aprovação | 2026-06-23 → 2026-07-08 (+15d) | 2026-06-23 → 2026-07-08 (+15d) |  |  | 14d → 3d |  |
| 127 | **ML-F0009-0306-MB-M-00001** | 2026-05-26 A → 2026-05-18 A (-8d) | 2026-06-09 A → 2026-05-28 A (-12d) |  |  |  |  |
| 128 | Emissão inicial | 2026-05-26 A → 2026-05-18 A (-8d) | 2026-06-01 A → 2026-05-22 A (-10d) |  |  |  |  |
| 129 | Análise Tecnored | 2026-06-02 A → 2026-05-25 A (-8d) | 2026-06-02 A → 2026-05-25 A (-8d) |  |  |  |  |
| 130 | Atendimento de comentários | 2026-06-03 A → 2026-05-26 A (-8d) | 2026-06-08 A → 2026-05-27 A (-12d) |  |  |  |  |
| 131 | Aprovação | 2026-06-09 A → 2026-05-28 A (-12d) | 2026-06-09 A → 2026-05-28 A (-12d) |  |  |  |  |
| 147 | **Tubulação/Utilidades** |  |  |  | 48% → 47% |  |  |
| 153 | **MD-F0009-0306-MB-U-00001** |  | 2026-07-14 → 2026-07-15 (+1d) |  |  | 1d → 0.5d |  |

| ID | Task | Start | Finish | Duration | Complete | Total float | Other |
| --- | --- | --- | --- | --- | --- | --- | --- |
| 154 | Emissão inicial |  | 2026-07-06 → 2026-07-07 (+1d) |  |  | 1d → 0.5d |  |
| 155 | Análise Tecnored |  | 2026-07-07 → 2026-07-08 (+1d) |  |  | 1d → 0.5d |  |
| 156 | Atendimento de comentários |  | 2026-07-13 → 2026-07-14 (+1d) |  |  | 1d → 0.5d |  |
| 157 | Aprovação |  | 2026-07-14 → 2026-07-15 (+1d) |  |  | 1d → 0.5d |  |
| 158 | **ML-F0009-0306-MB-T-00001** |  | 2026-06-25 → 2026-06-29 (+4d) | 9d → 11d | 56% → 64% | 12d → 10d |  |
| 159 | Emissão inicial |  | 2026-06-19 A → 2026-06-23 A (+4d) | 5d → 7d |  |  |  |
| 160 | Análise Tecnored | 2026-06-22 → 2026-06-24 (+2d) | 2026-06-22 → 2026-06-24 (+2d) |  |  | 12d → 1d |  |
| 161 | Atendimento de comentários | 2026-06-23 → 2026-06-25 (+2d) | 2026-06-24 → 2026-06-26 (+2d) |  |  | 12d → 10d |  |
| 162 | Aprovação | 2026-06-25 → 2026-06-29 (+4d) | 2026-06-25 → 2026-06-29 (+4d) |  |  | 12d → 10d |  |
| 178 | **PQ-F0009-0306-MB-T-00001** |  | 2026-06-29 → 2026-07-01 (+2d) | 6d → 8d |  | 10d → 8d |  |
| 179 | Emissão inicial |  | 2026-06-23 A → 2026-06-25 A (+2d) |  |  |  |  |
| 180 | Análise Tecnored | 2026-06-24 → 2026-06-26 (+2d) | 2026-06-24 → 2026-06-26 (+2d) |  |  | 10d → 8d |  |
| 181 | Atendimento de comentários | 2026-06-25 → 2026-06-29 (+4d) | 2026-06-26 → 2026-06-30 (+4d) |  |  | 10d → 8d |  |
| 182 | Aprovação | 2026-06-29 → 2026-07-01 (+2d) | 2026-06-29 → 2026-07-01 (+2d) |  |  | 10d → 8d |  |
| 188 | **FG-F0009-0306-MB-T-00001** |  | 2026-06-12 → 2026-06-19 (+7d) | 5d → 10d | 60% → 38% | 21d → 16d |  |
| 189 | Emissão inicial |  | 2026-06-08 A → 2026-06-12 A (+4d) | 1d → 3d |  |  | constraint finish no earlier than 2026-06-08 → finish no earlier than 2026-06-10 |
| 190 | Análise Tecnored | 2026-06-09 A → 2026-06-15 (+6d) | 2026-06-09 A → 2026-06-16 (+7d) | 1d → 2d | 100% → 0% | none → 16d |  |
| 191 | Atendimento de comentários | 2026-06-10 A → 2026-06-17 (+7d) | 2026-06-11 → 2026-06-18 (+7d) |  | 50% → 0% | 21d → 16d |  |
| 192 | Aprovação | 2026-06-12 → 2026-06-19 (+7d) | 2026-06-12 → 2026-06-19 (+7d) |  |  | 21d → 16d |  |
| 198 | **AG-F0009-0306-MB-T-00001** |  | 2026-07-01 → 2026-07-02 (+1d) | 7d → 7.5d | 50% → 56% | 8d → 7.5d |  |
| 199 | Emissão inicial |  | 2026-06-25 A → 2026-06-26 A (+1d) | 3d → 4d |  |  |  |
| 200 | Análise Tecnored |  | 2026-06-26 → 2026-06-29 (+3d) |  |  | 8d → 7.5d |  |
| 201 | Atendimento de comentários |  | 2026-06-30 → 2026-07-01 (+1d) |  |  | 8d → 7.5d |  |
| 202 | Aprovação |  | 2026-07-01 → 2026-07-02 (+1d) |  |  | 8d → 7.5d |  |
| 203 | **AG-F0009-0306-MB-T-00002** |  | 2026-07-01 → 2026-07-02 (+1d) | 7d → 7.5d | 50% → 44% | 8d → 7.5d |  |
| 204 | Emissão inicial |  | 2026-06-25 A → 2026-06-26 (+1d) | 3d → 4d | 100% → 75% | none → 0d |  |
| 205 | Análise Tecnored |  | 2026-06-26 → 2026-06-29 (+3d) |  |  | 8d → 7.5d |  |
| 206 | Atendimento de comentários |  | 2026-06-30 → 2026-07-01 (+1d) |  |  | 8d → 7.5d |  |
| 207 | Aprovação |  | 2026-07-01 → 2026-07-02 (+1d) |  |  | 8d → 7.5d |  |
| 208 | **AG-F0009-0306-MB-T-00003** |  | 2026-07-01 → 2026-07-02 (+1d) | 7d → 7.5d | 50% → 44% | 8d → 7.5d |  |
| 209 | Emissão inicial |  | 2026-06-25 A → 2026-06-26 (+1d) | 3d → 4d | 100% → 75% | none → 0d |  |
| 210 | Análise Tecnored |  | 2026-06-26 → 2026-06-29 (+3d) |  |  | 8d → 7.5d |  |
| 211 | Atendimento de comentários |  | 2026-06-30 → 2026-07-01 (+1d) |  |  | 8d → 7.5d |  |
| 212 | Aprovação |  | 2026-07-01 → 2026-07-02 (+1d) |  |  | 8d → 7.5d |  |
| 213 | **AG-F0009-0306-MB-T-00004** | 2026-06-09 → 2026-05-28 (-12d) | 2026-06-17 → 2026-06-09 (-8d) |  |  | 18d → 24d |  |
| 214 | Emissão inicial | 2026-06-09 → 2026-05-28 (-12d) | 2026-06-11 → 2026-06-01 (-10d) |  |  | 18d → 24d |  |
| 215 | Análise Tecnored | 2026-06-12 → 2026-06-02 (-10d) | 2026-06-12 → 2026-06-02 (-10d) |  |  | 18d → 24d |  |
| 216 | Atendimento de comentários | 2026-06-15 → 2026-06-03 (-12d) | 2026-06-16 → 2026-06-08 (-8d) |  |  | 18d → 24d |  |
| 217 | Aprovação | 2026-06-17 → 2026-06-09 (-8d) | 2026-06-17 → 2026-06-09 (-8d) |  |  | 18d → 24d |  |
| 218 | **AG-F0009-0306-MB-T-00005** | 2026-06-09 → 2026-05-28 (-12d) | 2026-06-17 → 2026-06-09 (-8d) |  |  | 18d → 24d |  |
| 219 | Emissão inicial | 2026-06-09 → 2026-05-28 (-12d) | 2026-06-11 → 2026-06-01 (-10d) |  |  | 18d → 24d |  |
| 220 | Análise Tecnored | 2026-06-12 → 2026-06-02 (-10d) | 2026-06-12 → 2026-06-02 (-10d) |  |  | 18d → 24d |  |
| 221 | Atendimento de comentários | 2026-06-15 → 2026-06-03 (-12d) | 2026-06-16 → 2026-06-08 (-8d) |  |  | 18d → 24d |  |
| 222 | Aprovação | 2026-06-17 → 2026-06-09 (-8d) | 2026-06-17 → 2026-06-09 (-8d) |  |  | 18d → 24d |  |
| 223 | **AG-F0009-0306-MB-T-00006** | 2026-06-09 → 2026-05-28 (-12d) | 2026-06-17 → 2026-06-09 (-8d) |  |  | 18d → 24d |  |
| 224 | Emissão inicial | 2026-06-09 → 2026-05-28 (-12d) | 2026-06-11 → 2026-06-01 (-10d) |  |  | 18d → 24d |  |
| 225 | Análise Tecnored | 2026-06-12 → 2026-06-02 (-10d) | 2026-06-12 → 2026-06-02 (-10d) |  |  | 18d → 24d |  |
| 226 | Atendimento de comentários | 2026-06-15 → 2026-06-03 (-12d) | 2026-06-16 → 2026-06-08 (-8d) |  |  | 18d → 24d |  |
| 227 | Aprovação | 2026-06-17 → 2026-06-09 (-8d) | 2026-06-17 → 2026-06-09 (-8d) |  |  | 18d → 24d |  |
| 233 | **MC-F0009-0306-MB-T-00002** | 2026-06-02 → 2026-05-25 (-8d) | 2026-06-23 → 2026-06-15 (-8d) |  |  | 14d → 20d |  |
| 234 | Emissão inicial | 2026-06-02 → 2026-05-25 (-8d) | 2026-06-17 → 2026-06-09 (-8d) |  |  | 14d → 20d |  |
| 235 | Análise Tecnored | 2026-06-18 → 2026-06-10 (-8d) | 2026-06-18 → 2026-06-10 (-8d) |  |  | 14d → 20d |  |
| 236 | Atendimento de comentários | 2026-06-19 → 2026-06-11 (-8d) | 2026-06-22 → 2026-06-12 (-10d) |  |  | 14d → 20d |  |
| 237 | Aprovação | 2026-06-23 → 2026-06-15 (-8d) | 2026-06-23 → 2026-06-15 (-8d) |  |  | 14d → 20d |  |
| 238 | **Estrutura metálica** |  | 2026-07-08 → 2026-07-07 (-1d) | 17d → 16d | 50% → 10% | 3d → 4d |  |
| 244 | **ML-F0009-0306-MB-S-00001** | 2026-06-25 A → 2026-06-19 (-6d) | 2026-07-02 → 2026-06-26 (-6d) |  | 50% → 0% |  |  |
| 245 | Emissão inicial | 2026-06-25 A → 2026-06-19 (-6d) | 2026-06-29 A → 2026-06-23 (-6d) |  | 100% → 0% | none → 7d |  |
| 246 | Análise Tecnored | 2026-06-30 → 2026-06-24 (-6d) | 2026-06-30 → 2026-06-24 (-6d) |  |  | 3d → 7d |  |
| 247 | Atendimento de comentários | 2026-07-01 → 2026-06-25 (-6d) | 2026-07-01 → 2026-06-25 (-6d) |  |  | 7d → 11d |  |
| 248 | Aprovação | 2026-07-02 → 2026-06-26 (-6d) | 2026-07-02 → 2026-06-26 (-6d) |  |  | 7d → 11d |  |
| 249 | **PQ-F0009-0306-MB-S-00001** | 2026-07-01 A → 2026-06-26 (-5d) | 2026-07-08 → 2026-07-03 (-5d) |  | 50% → 0% | 3d → 6d |  |
| 250 | Emissão inicial | 2026-07-01 A → 2026-06-26 (-5d) | 2026-07-03 A → 2026-06-30 (-3d) |  | 100% → 0% | none → 6d |  |
| 251 | Análise Tecnored | 2026-07-06 → 2026-07-01 (-5d) | 2026-07-06 → 2026-07-01 (-5d) |  |  | 3d → 6d |  |
| 252 | Atendimento de comentários | 2026-07-07 → 2026-07-02 (-5d) | 2026-07-07 → 2026-07-02 (-5d) |  |  | 3d → 6d |  |
| 253 | Aprovação | 2026-07-08 → 2026-07-03 (-5d) | 2026-07-08 → 2026-07-03 (-5d) |  |  | 3d → 6d |  |
| 254 | **LM-F0009-0306-MB-S-00001** | 2026-06-30 → 2026-06-24 (-6d) | 2026-07-07 → 2026-07-01 (-6d) |  |  | 4d → 5d |  |
| 255 | Emissão inicial | 2026-06-30 → 2026-06-24 (-6d) | 2026-07-02 → 2026-06-26 (-6d) |  |  | 4d → 5d |  |
| 256 | Análise Tecnored | 2026-07-03 → 2026-06-29 (-4d) | 2026-07-03 → 2026-06-29 (-4d) |  |  | 4d → 8d |  |
| 257 | Atendimento de comentários | 2026-07-06 → 2026-06-30 (-6d) | 2026-07-06 → 2026-06-30 (-6d) |  |  | 4d → 8d |  |
| 258 | Aprovação | 2026-07-07 → 2026-07-01 (-6d) | 2026-07-07 → 2026-07-01 (-6d) |  |  | 4d → 8d |  |

| ID | Task | Start | Finish | Duration | Complete | Total float | Predecessors | Other |
| --- | --- | --- | --- | --- | --- | --- | --- | --- |
| 269 | **AG-F0009-0306-MB-S-00002** | 2026-06-30 A → 2026-06-24 (-6d) | 2026-07-07 → 2026-07-01 (-6d) |  | 50% → 0% | 4d → 8d |  |  |
| 270 | Emissão inicial | 2026-06-30 A → 2026-06-24 (-6d) | 2026-07-02 A → 2026-06-26 (-6d) |  | 100% → 0% | none → 8d |  |  |
| 271 | Análise Tecnored | 2026-07-03 → 2026-06-29 (-4d) | 2026-07-03 → 2026-06-29 (-4d) |  |  | 4d → 8d |  |  |
| 272 | Atendimento de comentários | 2026-07-06 → 2026-06-30 (-6d) | 2026-07-06 → 2026-06-30 (-6d) |  |  | 4d → 8d |  |  |
| 273 | Aprovação | 2026-07-07 → 2026-07-01 (-6d) | 2026-07-07 → 2026-07-01 (-6d) |  |  | 4d → 8d |  |  |
| 274 | **AG-F0009-0306-MB-S-00003** | 2026-06-30 A → 2026-06-24 (-6d) | 2026-07-07 → 2026-07-01 (-6d) |  | 50% → 0% | 4d → 8d |  |  |
| 275 | Emissão inicial | 2026-06-30 A → 2026-06-24 (-6d) | 2026-07-02 A → 2026-06-26 (-6d) |  | 100% → 0% | none → 8d |  |  |
| 276 | Análise Tecnored | 2026-07-03 → 2026-06-29 (-4d) | 2026-07-03 → 2026-06-29 (-4d) |  |  | 4d → 8d |  |  |
| 277 | Atendimento de comentários | 2026-07-06 → 2026-06-30 (-6d) | 2026-07-06 → 2026-06-30 (-6d) |  |  | 4d → 8d |  |  |
| 278 | Aprovação | 2026-07-07 → 2026-07-01 (-6d) | 2026-07-07 → 2026-07-01 (-6d) |  |  | 4d → 8d |  |  |
| 279 | **AG-F0009-0306-MB-S-00004** | 2026-06-30 A → 2026-06-24 (-6d) | 2026-07-07 → 2026-07-01 (-6d) |  | 50% → 0% | 4d → 8d |  |  |
| 280 | Emissão inicial | 2026-06-30 A → 2026-06-24 (-6d) | 2026-07-02 A → 2026-06-26 (-6d) |  | 100% → 0% | none → 8d |  |  |
| 281 | Análise Tecnored | 2026-07-03 → 2026-06-29 (-4d) | 2026-07-03 → 2026-06-29 (-4d) |  |  | 4d → 8d |  |  |
| 282 | Atendimento de comentários | 2026-07-06 → 2026-06-30 (-6d) | 2026-07-06 → 2026-06-30 (-6d) |  |  | 4d → 8d |  |  |
| 283 | Aprovação | 2026-07-07 → 2026-07-01 (-6d) | 2026-07-07 → 2026-07-01 (-6d) |  |  | 4d → 8d |  |  |
| 284 | **AG-F0009-0306-MB-S-00005** | 2026-06-30 → 2026-06-24 (-6d) | 2026-07-08 → 2026-07-02 (-6d) |  |  | 3d → 7d |  |  |
| 285 | Emissão inicial | 2026-06-30 → 2026-06-24 (-6d) | 2026-07-03 → 2026-06-29 (-4d) |  |  | 3d → 7d |  |  |
| 286 | Análise Tecnored | 2026-07-06 → 2026-06-30 (-6d) | 2026-07-06 → 2026-06-30 (-6d) |  |  | 3d → 7d |  |  |
| 287 | Atendimento de comentários | 2026-07-07 → 2026-07-01 (-6d) | 2026-07-07 → 2026-07-01 (-6d) |  |  | 3d → 7d |  |  |
| 288 | Aprovação | 2026-07-08 → 2026-07-02 (-6d) | 2026-07-08 → 2026-07-02 (-6d) |  |  | 3d → 7d |  |  |
| 289 | **PL-F0009-0306-MB-S-00001** | 2026-06-16 A → 2026-06-16 |  |  | 57% → 0% |  |  |  |
| 290 | Emissão inicial | 2026-06-16 A → 2026-06-16 | 2026-06-19 A → 2026-06-19 |  | 100% → 0% | none → 13d |  |  |
| 294 | **Elétrica** |  |  |  | 47% → 46% |  |  |  |
| 305 | **RL-F0009-0306-MB-E-00001** |  | 2026-06-11 → 2026-07-07 (+26d) | 5.75d → 23.75d | 86% → 79% | 22.25d → 4.25d |  |  |
| 308 | Atendimento de comentários | 2026-06-10 A → 2026-07-06 A (+26d) | 2026-06-11 A → 2026-07-07 (+26d) |  | 100% → 50% | none → 4.25d |  |  |
| 309 | Aprovação | 2026-06-10 → 2026-07-06 (+26d) | 2026-06-11 → 2026-07-07 (+26d) |  |  | 22.25d → 4.25d |  |  |
| 410 | **Automação e instrumentação** | 2026-06-15 A → 2026-05-29 A (-17d) | 2026-07-14 → 2026-07-15 (+1d) | 19.2d → 30d | 67% → 65% | 1.8d → 0d |  |  |
| 416 | **LI-F0009-0306-MB-J-00001** |  | 2026-06-25 → 2026-07-02 (+7d) | 8d → 13d | 75% → 88% | 12d → 7d |  |  |
| 418 | Análise Tecnored | 2026-06-22 A → 2026-06-24 A (+2d) | 2026-06-22 A → 2026-07-01 A (+9d) | 1d → 6d |  |  |  | constraint none → start no earlier than 2026-06-24 |
| 419 | Atendimento de comentários | 2026-06-23 A → 2026-07-01 A (+8d) | 2026-06-24 → 2026-07-01 (+7d) | 2d → 1d |  | 12d → 7d | 418 → 418FF |  |
| 420 | Aprovação | 2026-06-25 → 2026-07-02 (+7d) | 2026-06-25 → 2026-07-02 (+7d) |  |  | 12d → 7d |  |  |
| 421 | **LE-F0009-0306-MB-J-00001** |  |  |  | 56% → 50% |  |  |  |
| 423 | Análise Tecnored | 2026-06-19 A → 2026-06-19 |  |  | 50% → 0% |  |  |  |
| 431 | **LZ-F0009-0306-MB-J-00001** | 2026-06-29 → 2026-06-30 (+1d) | 2026-07-08 → 2026-07-13 (+5d) |  |  | 3d → 2d |  |  |
| 432 | Emissão inicial | 2026-06-29 → 2026-06-30 (+1d) | 2026-07-02 → 2026-07-03 (+1d) |  |  | 3d → 2d |  |  |
| 433 | Análise Tecnored | 2026-07-03 → 2026-07-06 (+3d) | 2026-07-03 → 2026-07-06 (+3d) |  |  | 3d → 2d |  |  |
| 434 | Atendimento de comentários | 2026-07-06 → 2026-07-07 (+1d) | 2026-07-07 → 2026-07-08 (+1d) |  |  | 3d → 2d |  |  |
| 435 | Aprovação | 2026-07-08 → 2026-07-13 (+5d) | 2026-07-08 → 2026-07-13 (+5d) |  |  | 3d → 2d |  |  |
| 441 | **PQ-F0009-0306-MB-J-00001** |  | 2026-07-08 → 2026-07-14 (+6d) | 9d → 11d | 66% → 73% | 3d → 1d |  |  |
| 442 | Emissão inicial |  | 2026-07-03 → 2026-07-07 A (+4d) | 6d → 8d | 99% → 100% | 3d → none |  |  |
| 443 | Análise Tecnored | 2026-07-06 → 2026-07-08 (+2d) | 2026-07-06 → 2026-07-08 (+2d) |  |  | 3d → 1d |  |  |
| 444 | Atendimento de comentários | 2026-07-07 → 2026-07-13 (+6d) | 2026-07-07 → 2026-07-13 (+6d) |  |  | 3d → 1d |  |  |
| 445 | Aprovação | 2026-07-08 → 2026-07-14 (+6d) | 2026-07-08 → 2026-07-14 (+6d) |  |  | 3d → 1d |  |  |
| 446 | **FG-F0009-0306-MB-J-00001** |  | 2026-06-26 → 2026-07-01 (+5d) | 9d → 12d | 80% → 46% | 11d → 8d |  |  |
| 448 | Análise Tecnored | 2026-06-24 A → 2026-06-24 | 2026-06-24 A → 2026-06-29 (+5d) | 1d → 4d | 100% → 0% | none → 8d |  |  |
| 449 | Atendimento de comentários | 2026-06-25 A → 2026-06-30 (+5d) | 2026-06-26 → 2026-07-01 (+5d) |  | 50% → 0% | 11d → 8d |  |  |
| 450 | Aprovação | 2026-06-26 → 2026-07-01 (+5d) | 2026-06-26 → 2026-07-01 (+5d) |  |  | 11d → 8d |  |  |
| 451 | **FG-F0009-0306-MB-J-00002** | 2026-06-19 A → 2026-05-29 (-21d) | 2026-07-02 → 2026-06-15 (-17d) |  | 60% → 0% | 7d → 20d |  |  |
| 452 | Emissão inicial | 2026-06-19 A → 2026-05-29 (-21d) | 2026-06-26 A → 2026-06-09 (-17d) |  | 100% → 0% | none → 20d |  |  |
| 453 | Análise Tecnored | 2026-06-29 → 2026-06-10 (-19d) | 2026-06-29 → 2026-06-10 (-19d) |  |  | 7d → 20d |  |  |
| 454 | Atendimento de comentários | 2026-06-30 → 2026-06-11 (-19d) | 2026-07-01 → 2026-06-12 (-19d) |  |  | 7d → 20d |  |  |
| 455 | Aprovação | 2026-07-02 → 2026-06-15 (-17d) | 2026-07-02 → 2026-06-15 (-17d) |  |  | 7d → 20d |  |  |
| 456 | **FG-F0009-0306-MB-J-00003** | 2026-06-19 A → 2026-06-03 (-16d) | 2026-07-02 → 2026-06-18 (-14d) |  | 60% → 0% | 7d → 17d |  |  |
| 457 | Emissão inicial | 2026-06-19 A → 2026-06-03 (-16d) | 2026-06-26 A → 2026-06-12 (-14d) |  | 100% → 0% | none → 17d |  |  |
| 458 | Análise Tecnored | 2026-06-29 → 2026-06-15 (-14d) | 2026-06-29 → 2026-06-15 (-14d) |  |  | 7d → 17d |  |  |
| 459 | Atendimento de comentários | 2026-06-30 → 2026-06-16 (-14d) | 2026-07-01 → 2026-06-17 (-14d) |  |  | 7d → 17d |  |  |
| 460 | Aprovação | 2026-07-02 → 2026-06-18 (-14d) | 2026-07-02 → 2026-06-18 (-14d) |  |  | 7d → 17d |  |  |
| 461 | **AG-F0009-0306-MB-J-00001** |  | 2026-07-02 → 2026-07-07 (+5d) | 8d → 11d | 50% → 36% | 7d → 4d |  |  |
| 463 | Análise Tecnored |  | 2026-06-29 → 2026-07-02 (+3d) | 1d → 4d |  | 7d → 4d |  |  |
| 464 | Atendimento de comentários | 2026-06-30 → 2026-07-03 (+3d) | 2026-07-01 → 2026-07-06 (+5d) |  |  | 7d → 4d |  |  |
| 465 | Aprovação | 2026-07-02 → 2026-07-07 (+5d) | 2026-07-02 → 2026-07-07 (+5d) |  |  | 7d → 4d |  |  |
| 466 | **AG-F0009-0306-MB-J-00002** | 2026-06-26 A → 2026-06-23 (-3d) | 2026-07-07 → 2026-07-02 (-5d) |  | 50% → 0% | 4d → 7d |  |  |
| 467 | Emissão inicial | 2026-06-26 A → 2026-06-23 (-3d) | 2026-07-01 A → 2026-06-26 (-5d) |  | 100% → 0% | none → 7d |  |  |
| 468 | Análise Tecnored | 2026-07-02 → 2026-06-29 (-3d) | 2026-07-02 → 2026-06-29 (-3d) |  |  | 4d → 7d |  |  |
| 469 | Atendimento de comentários | 2026-07-03 → 2026-06-30 (-3d) | 2026-07-06 → 2026-07-01 (-5d) |  |  | 4d → 7d |  |  |
| 470 | Aprovação | 2026-07-07 → 2026-07-02 (-5d) | 2026-07-07 → 2026-07-02 (-5d) |  |  | 4d → 7d |  |  |
| 471 | **AG-F0009-0306-MB-J-00003** | 2026-06-26 A → 2026-06-23 (-3d) | 2026-07-07 → 2026-07-02 (-5d) |  | 50% → 0% | 4d → 7d |  |  |
| 472 | Emissão inicial | 2026-06-26 A → 2026-06-23 (-3d) | 2026-07-01 A → 2026-06-26 (-5d) |  | 100% → 0% | none → 7d |  |  |
| 473 | Análise Tecnored | 2026-07-02 → 2026-06-29 (-3d) | 2026-07-02 → 2026-06-29 (-3d) |  |  | 4d → 7d |  |  |
| 474 | Atendimento de comentários | 2026-07-03 → 2026-06-30 (-3d) | 2026-07-06 → 2026-07-01 (-5d) |  |  | 4d → 7d |  |  |

| ID | Task | Start | Finish | Duration | Complete | Total float | Other |
| --- | --- | --- | --- | --- | --- | --- | --- |
| 475 | Aprovação | 2026-07-07 → 2026-07-02 (-5d) | 2026-07-07 → 2026-07-02 (-5d) |  |  | 4d → 7d |  |
| 481 | **DI-F0009-0306-MB-J-00001** | 2026-06-30 A → 2026-07-01 A (+1d) | 2026-07-13 → 2026-07-14 (+1d) |  |  | 2d → 1d |  |
| 482 | Emissão inicial | 2026-06-30 A → 2026-07-01 A (+1d) | 2026-07-03 A → 2026-07-06 A (+3d) |  |  |  |  |
| 483 | Análise Tecnored | 2026-07-06 → 2026-07-07 (+1d) | 2026-07-06 → 2026-07-07 (+1d) |  |  | 2d → 1d |  |
| 484 | Atendimento de comentários | 2026-07-07 → 2026-07-08 (+1d) | 2026-07-08 → 2026-07-13 (+5d) |  |  | 2d → 1d |  |
| 485 | Aprovação | 2026-07-13 → 2026-07-14 (+1d) | 2026-07-13 → 2026-07-14 (+1d) |  |  | 2d → 1d |  |
| 496 | **LM-F0009-0306-MB-J-00001** |  | 2026-07-08 → 2026-07-14 (+6d) | 7d → 9d | 57% → 67% | 3d → 1d |  |
| 497 | Emissão inicial |  | 2026-07-03 → 2026-07-07 A (+4d) | 4d → 6d | 99% → 100% | 3d → none | constraint start no earlier than 2026-06-30 → finish no earlier than 2026-07-07 |
| 498 | Análise Tecnored | 2026-07-06 → 2026-07-08 (+2d) | 2026-07-06 → 2026-07-08 (+2d) |  |  | 3d → 1d |  |
| 499 | Atendimento de comentários | 2026-07-07 → 2026-07-13 (+6d) | 2026-07-07 → 2026-07-13 (+6d) |  |  | 3d → 1d |  |
| 500 | Aprovação | 2026-07-08 → 2026-07-14 (+6d) | 2026-07-08 → 2026-07-14 (+6d) |  |  | 3d → 1d |  |
| 501 | **ET-F0009-0306-MB-J-00001** | 2026-06-16 A → 2026-06-30 (+14d) | 2026-06-24 → 2026-07-08 (+14d) |  | 57% → 0% | 13d → 3d |  |
| 502 | Emissão inicial | 2026-06-16 A → 2026-06-30 (+14d) | 2026-06-19 A → 2026-07-03 (+14d) |  | 100% → 0% | none → 3d |  |
| 503 | Análise Tecnored | 2026-06-22 → 2026-07-06 (+14d) | 2026-06-22 → 2026-07-06 (+14d) |  |  | 13d → 3d |  |
| 504 | Atendimento de comentários | 2026-06-23 → 2026-07-07 (+14d) | 2026-06-23 → 2026-07-07 (+14d) |  |  | 13d → 3d |  |
| 505 | Aprovação | 2026-06-24 → 2026-07-08 (+14d) | 2026-06-24 → 2026-07-08 (+14d) |  |  | 13d → 3d |  |
| 506 | **FD-F0009-0306-MB-J-00001** |  | 2026-07-01 → 2026-07-08 (+7d) | 10d → 15d | 70% → 80% | 8d → 3d |  |
| 507 | Emissão inicial |  | 2026-06-26 A → 2026-06-30 A (+4d) | 7d → 9d |  |  |  |
| 508 | Análise Tecnored | 2026-06-29 → 2026-07-01 A (+2d) | 2026-06-29 → 2026-07-03 A (+4d) | 1d → 3d | 0% → 100% | 8d → none |  |
| 509 | Atendimento de comentários | 2026-06-30 → 2026-07-06 (+6d) | 2026-06-30 → 2026-07-07 (+7d) | 1d → 2d |  | 8d → 3d | constraint none → start no earlier than 2026-07-06 |
| 510 | Aprovação | 2026-07-01 → 2026-07-08 (+7d) | 2026-07-01 → 2026-07-08 (+7d) |  |  | 8d → 3d |  |
| 511 | **FD-F0009-0306-MB-J-00002** |  | 2026-07-01 → 2026-07-08 (+7d) | 10d → 15d | 75% → 80% | 8d → 3d |  |
| 512 | Emissão inicial |  | 2026-06-26 A → 2026-06-30 A (+4d) | 7d → 9d |  |  |  |
| 513 | Análise Tecnored | 2026-06-29 A → 2026-07-01 A (+2d) | 2026-06-29 → 2026-07-03 A (+4d) | 1d → 3d | 50% → 100% | 8d → none | constraint none → finish no earlier than 2026-07-03 |
| 514 | Atendimento de comentários | 2026-06-30 → 2026-07-06 (+6d) | 2026-06-30 → 2026-07-07 (+7d) | 1d → 2d |  | 8d → 3d | constraint none → finish no earlier than 2026-07-07 |
| 515 | Aprovação | 2026-07-01 → 2026-07-08 (+7d) | 2026-07-01 → 2026-07-08 (+7d) |  |  | 8d → 3d | constraint none → start no earlier than 2026-07-08 |
| 516 | **FD-F0009-0306-MB-J-00003** |  | 2026-07-01 → 2026-07-08 (+7d) | 10d → 15d | 70% → 80% | 8d → 3d |  |
| 517 | Emissão inicial |  | 2026-06-26 A → 2026-06-30 A (+4d) | 7d → 9d |  |  | constraint none → finish no earlier than 2026-06-30 |
| 518 | Análise Tecnored | 2026-06-29 → 2026-07-01 A (+2d) | 2026-06-29 → 2026-07-03 A (+4d) | 1d → 3d | 0% → 100% | 8d → none | constraint none → finish no earlier than 2026-07-03 |
| 519 | Atendimento de comentários | 2026-06-30 → 2026-07-06 (+6d) | 2026-06-30 → 2026-07-07 (+7d) | 1d → 2d |  | 8d → 3d | constraint none → finish no earlier than 2026-07-07 |
| 520 | Aprovação | 2026-07-01 → 2026-07-08 (+7d) | 2026-07-01 → 2026-07-08 (+7d) |  |  | 8d → 3d | constraint none → start no earlier than 2026-07-08 |
| 521 | **FD-F0009-0306-MB-J-00004** |  | 2026-07-01 → 2026-07-08 (+7d) | 10d → 15d | 70% → 80% | 8d → 3d |  |
| 522 | Emissão inicial |  | 2026-06-26 A → 2026-06-30 A (+4d) | 7d → 9d |  |  | constraint none → finish no earlier than 2026-06-30 |
| 523 | Análise Tecnored | 2026-06-29 → 2026-07-01 A (+2d) | 2026-06-29 → 2026-07-03 A (+4d) | 1d → 3d | 0% → 100% | 8d → none | constraint none → finish no earlier than 2026-07-03 |
| 524 | Atendimento de comentários | 2026-06-30 → 2026-07-06 (+6d) | 2026-06-30 → 2026-07-07 (+7d) | 1d → 2d |  | 8d → 3d | constraint none → finish no earlier than 2026-07-07 |
| 525 | Aprovação | 2026-07-01 → 2026-07-08 (+7d) | 2026-07-01 → 2026-07-08 (+7d) |  |  | 8d → 3d | constraint none → start no earlier than 2026-07-08 |
| 526 | **FD-F0009-0306-MB-J-00005** |  | 2026-07-01 → 2026-07-08 (+7d) | 10d → 15d | 75% → 80% | 8d → 3d |  |
| 527 | Emissão inicial |  | 2026-06-26 A → 2026-06-30 A (+4d) | 7d → 9d |  |  | constraint none → finish no earlier than 2026-06-30 |
| 528 | Análise Tecnored | 2026-06-29 A → 2026-07-01 A (+2d) | 2026-06-29 → 2026-07-03 A (+4d) | 1d → 3d | 50% → 100% | 8d → none | constraint none → finish no earlier than 2026-07-03 |
| 529 | Atendimento de comentários | 2026-06-30 → 2026-07-06 (+6d) | 2026-06-30 → 2026-07-07 (+7d) | 1d → 2d |  | 8d → 3d | constraint none → finish no earlier than 2026-07-07 |
| 530 | Aprovação | 2026-07-01 → 2026-07-08 (+7d) | 2026-07-01 → 2026-07-08 (+7d) |  |  | 8d → 3d | constraint none → start no earlier than 2026-07-08 |
| 531 | **FD-F0009-0306-MB-J-00006** |  | 2026-07-01 → 2026-07-08 (+7d) | 10d → 15d | 75% → 80% | 8d → 3d |  |
| 532 | Emissão inicial |  | 2026-06-26 A → 2026-06-30 A (+4d) | 7d → 9d |  |  | constraint none → finish no earlier than 2026-06-30 |
| 533 | Análise Tecnored | 2026-06-29 A → 2026-07-01 A (+2d) | 2026-06-29 → 2026-07-03 A (+4d) | 1d → 3d | 50% → 100% | 8d → none | constraint none → finish no earlier than 2026-07-03 |
| 534 | Atendimento de comentários | 2026-06-30 → 2026-07-06 (+6d) | 2026-06-30 → 2026-07-07 (+7d) | 1d → 2d |  | 8d → 3d | constraint none → finish no earlier than 2026-07-07 |
| 535 | Aprovação | 2026-07-01 → 2026-07-08 (+7d) | 2026-07-01 → 2026-07-08 (+7d) |  |  | 8d → 3d | constraint none → start no earlier than 2026-07-08 |
| 536 | **FD-F0009-0306-MB-J-00007** |  | 2026-07-01 → 2026-07-08 (+7d) | 10d → 15d | 75% → 80% | 8d → 3d |  |
| 537 | Emissão inicial |  | 2026-06-26 A → 2026-06-30 A (+4d) | 7d → 9d |  |  | constraint none → finish no earlier than 2026-06-30 |
| 538 | Análise Tecnored | 2026-06-29 A → 2026-07-01 A (+2d) | 2026-06-29 → 2026-07-03 A (+4d) | 1d → 3d | 50% → 100% | 8d → none | constraint none → finish no earlier than 2026-07-03 |
| 539 | Atendimento de comentários | 2026-06-30 → 2026-07-06 (+6d) | 2026-06-30 → 2026-07-07 (+7d) | 1d → 2d |  | 8d → 3d | constraint none → finish no earlier than 2026-07-07 |
| 540 | Aprovação | 2026-07-01 → 2026-07-08 (+7d) | 2026-07-01 → 2026-07-08 (+7d) |  |  | 8d → 3d | constraint none → start no earlier than 2026-07-08 |
| 541 | **FD-F0009-0306-MB-J-00008** |  | 2026-07-01 → 2026-07-08 (+7d) | 10d → 15d | 75% → 80% | 8d → 3d |  |
| 542 | Emissão inicial |  | 2026-06-26 A → 2026-06-30 A (+4d) | 7d → 9d |  |  | constraint none → finish no earlier than 2026-06-30 |
| 543 | Análise Tecnored | 2026-06-29 A → 2026-07-01 A (+2d) | 2026-06-29 → 2026-07-03 A (+4d) | 1d → 3d | 50% → 100% | 8d → none | constraint none → finish no earlier than 2026-07-03 |
| 544 | Atendimento de comentários | 2026-06-30 → 2026-07-06 (+6d) | 2026-06-30 → 2026-07-07 (+7d) | 1d → 2d |  | 8d → 3d | constraint none → finish no earlier than 2026-07-07 |
| 545 | Aprovação | 2026-07-01 → 2026-07-08 (+7d) | 2026-07-01 → 2026-07-08 (+7d) |  |  | 8d → 3d | constraint none → start no earlier than 2026-07-08 |
| 546 | **FD-F0009-0306-MB-J-00009** |  | 2026-07-01 → 2026-07-08 (+7d) | 10d → 15d | 70% → 80% | 8d → 3d |  |
| 547 | Emissão inicial |  | 2026-06-26 A → 2026-06-30 A (+4d) | 7d → 9d |  |  | constraint none → finish no earlier than 2026-06-30 |
| 548 | Análise Tecnored | 2026-06-29 → 2026-07-01 A (+2d) | 2026-06-29 → 2026-07-03 A (+4d) | 1d → 3d | 0% → 100% | 8d → none | constraint none → finish no earlier than 2026-07-03 |
| 549 | Atendimento de comentários | 2026-06-30 → 2026-07-06 (+6d) | 2026-06-30 → 2026-07-07 (+7d) | 1d → 2d |  | 8d → 3d | constraint none → finish no earlier than 2026-07-07 |
| 550 | Aprovação | 2026-07-01 → 2026-07-08 (+7d) | 2026-07-01 → 2026-07-08 (+7d) |  |  | 8d → 3d | constraint none → start no earlier than 2026-07-08 |
| 551 | **FD-F0009-0306-MB-J-00010** | 2026-06-22 A → 2026-06-18 A (-4d) | 2026-07-03 → 2026-07-08 (+5d) | 10d → 15d | 70% → 80% | 6d → 3d |  |
| 552 | Emissão inicial | 2026-06-22 A → 2026-06-18 A (-4d) |  | 7d → 9d |  |  | constraint none → finish no earlier than 2026-06-30 |
| 553 | Análise Tecnored | 2026-07-01 A | 2026-07-01 → 2026-07-03 A (+2d) | 1d → 3d | 0% → 100% | 6d → none | constraint none → finish no earlier than 2026-07-03 |
| 554 | Atendimento de comentários | 2026-07-02 → 2026-07-06 (+4d) | 2026-07-02 → 2026-07-07 (+5d) | 1d → 2d |  | 6d → 3d | constraint none → finish no earlier than 2026-07-07 |
| 555 | Aprovação | 2026-07-03 → 2026-07-08 (+5d) | 2026-07-03 → 2026-07-08 (+5d) |  |  | 6d → 3d | constraint none → start no earlier than 2026-07-08 |
| 556 | **FD-F0009-0306-MB-J-00011** |  | 2026-07-01 → 2026-07-08 (+7d) | 10d → 15d | 70% → 80% | 8d → 3d |  |
| 557 | Emissão inicial |  | 2026-06-26 A → 2026-06-30 A (+4d) | 7d → 9d |  |  | constraint none → finish no earlier than 2026-06-30 |
| 558 | Análise Tecnored | 2026-06-29 → 2026-07-01 A (+2d) | 2026-06-29 → 2026-07-03 A (+4d) | 1d → 3d | 0% → 100% | 8d → none | constraint none → finish no earlier than 2026-07-03 |
| 559 | Atendimento de comentários | 2026-06-30 → 2026-07-06 (+6d) | 2026-06-30 → 2026-07-07 (+7d) | 1d → 2d |  | 8d → 3d | constraint none → finish no earlier than 2026-07-07 |

| ID | Task | Start | Finish | Duration | Complete | Total float | Other |
| --- | --- | --- | --- | --- | --- | --- | --- |
| 560 | Aprovação | 2026-07-01 → 2026-07-08 (+7d) | 2026-07-01 → 2026-07-08 (+7d) |  |  | 8d → 3d | constraint none → start no earlier than 2026-07-08 |
| 561 | **FD-F0009-0306-MB-J-00012** | 2026-06-22 A → 2026-06-18 A (-4d) | 2026-07-03 → 2026-07-08 (+5d) | 10d → 15d | 70% → 80% | 6d → 3d |  |
| 562 | Emissão inicial | 2026-06-22 A → 2026-06-18 A (-4d) |  | 7d → 9d |  |  | constraint none → finish no earlier than 2026-06-30 |
| 563 | Análise Tecnored | 2026-07-01 A | 2026-07-01 → 2026-07-03 A (+2d) | 1d → 3d | 0% → 100% | 6d → none | constraint none → finish no earlier than 2026-07-03 |
| 564 | Atendimento de comentários | 2026-07-02 → 2026-07-06 (+4d) | 2026-07-02 → 2026-07-07 (+5d) | 1d → 2d |  | 6d → 3d | constraint none → finish no earlier than 2026-07-07 |
| 565 | Aprovação | 2026-07-03 → 2026-07-08 (+5d) | 2026-07-03 → 2026-07-08 (+5d) |  |  | 6d → 3d | constraint none → start no earlier than 2026-07-08 |
| 566 | **FD-F0009-0306-MB-J-00013** | 2026-06-22 A → 2026-06-18 A (-4d) | 2026-07-03 → 2026-07-08 (+5d) | 9.5d → 15d | 75% → 80% | 6.5d → 3d |  |
| 567 | Emissão inicial | 2026-06-22 A → 2026-06-18 A (-4d) |  | 7d → 9d |  |  | constraint none → finish no earlier than 2026-06-30 |
| 568 | Análise Tecnored | 2026-06-29 A → 2026-07-01 A (+2d) | 2026-07-01 → 2026-07-03 A (+2d) | 1d → 3d | 50% → 100% | 6.5d → none | constraint none → finish no earlier than 2026-07-03 |
| 569 | Atendimento de comentários | 2026-07-01 → 2026-07-06 (+5d) | 2026-07-02 → 2026-07-07 (+5d) | 1d → 2d |  | 6.5d → 3d | constraint none → finish no earlier than 2026-07-07 |
| 570 | Aprovação | 2026-07-02 → 2026-07-08 (+6d) | 2026-07-03 → 2026-07-08 (+5d) |  |  | 6.5d → 3d | constraint none → start no earlier than 2026-07-08 |
| 571 | **FD-F0009-0306-MB-J-00014** |  | 2026-07-01 → 2026-07-08 (+7d) | 10d → 15d | 70% → 80% | 8d → 3d |  |
| 572 | Emissão inicial |  | 2026-06-26 A → 2026-06-30 A (+4d) | 7d → 9d |  |  | constraint none → finish no earlier than 2026-06-30 |
| 573 | Análise Tecnored | 2026-06-29 → 2026-07-01 A (+2d) | 2026-06-29 → 2026-07-03 A (+4d) | 1d → 3d | 0% → 100% | 8d → none | constraint none → finish no earlier than 2026-07-03 |
| 574 | Atendimento de comentários | 2026-06-30 → 2026-07-06 (+6d) | 2026-06-30 → 2026-07-07 (+7d) | 1d → 2d |  | 8d → 3d | constraint none → finish no earlier than 2026-07-07 |
| 575 | Aprovação | 2026-07-01 → 2026-07-08 (+7d) | 2026-07-01 → 2026-07-08 (+7d) |  |  | 8d → 3d | constraint none → start no earlier than 2026-07-08 |
| 576 | **FD-F0009-0306-MB-J-00015** |  | 2026-07-01 → 2026-07-08 (+7d) | 10d → 15d | 75% → 80% | 8d → 3d |  |
| 577 | Emissão inicial |  | 2026-06-26 A → 2026-06-30 A (+4d) | 7d → 9d |  |  | constraint none → finish no earlier than 2026-06-30 |
| 578 | Análise Tecnored | 2026-06-29 A → 2026-07-01 A (+2d) | 2026-06-29 → 2026-07-03 A (+4d) | 1d → 3d | 50% → 100% | 8d → none | constraint finish no earlier than 2026-06-26 → finish no earlier than 2026-07-03 |
| 579 | Atendimento de comentários | 2026-06-30 → 2026-07-06 (+6d) | 2026-06-30 → 2026-07-07 (+7d) | 1d → 2d |  | 8d → 3d | constraint start no earlier than 2026-06-29 → finish no earlier than 2026-07-07 |
| 580 | Aprovação | 2026-07-01 → 2026-07-08 (+7d) | 2026-07-01 → 2026-07-08 (+7d) |  |  | 8d → 3d | constraint start no earlier than 2026-06-30 → start no earlier than 2026-07-08 |
| 581 | **FD-F0009-0306-MB-J-00016** |  | 2026-07-01 → 2026-07-08 (+7d) | 10d → 15d | 70% → 80% | 8d → 3d |  |
| 582 | Emissão inicial |  | 2026-06-26 A → 2026-06-30 A (+4d) | 7d → 9d |  |  | constraint none → finish no earlier than 2026-06-30 |
| 583 | Análise Tecnored | 2026-06-29 → 2026-07-01 A (+2d) | 2026-06-29 → 2026-07-03 A (+4d) | 1d → 3d | 0% → 100% | 8d → none | constraint finish no earlier than 2026-06-26 → finish no earlier than 2026-07-03 |
| 584 | Atendimento de comentários | 2026-06-30 → 2026-07-06 (+6d) | 2026-06-30 → 2026-07-07 (+7d) | 1d → 2d |  | 8d → 3d | constraint start no earlier than 2026-06-29 → finish no earlier than 2026-07-07 |
| 585 | Aprovação | 2026-07-01 → 2026-07-08 (+7d) | 2026-07-01 → 2026-07-08 (+7d) |  |  | 8d → 3d | constraint finish no earlier than 2026-06-30 → start no earlier than 2026-07-08 |
| 586 | **FD-F0009-0306-MB-J-00017** | 2026-06-19 A → 2026-06-18 A (-1d) | 2026-07-02 → 2026-07-08 (+6d) | 10d → 15d | 70% → 80% | 7d → 3d |  |
| 587 | Emissão inicial | 2026-06-19 A → 2026-06-18 A (-1d) | 2026-06-29 A → 2026-06-30 A (+1d) | 7d → 9d |  |  | constraint none → finish no earlier than 2026-06-30 |
| 588 | Análise Tecnored | 2026-06-30 → 2026-07-01 A (+1d) | 2026-06-30 → 2026-07-03 A (+3d) | 1d → 3d | 0% → 100% | 7d → none | constraint finish no earlier than 2026-06-26 → finish no earlier than 2026-07-03 |
| 589 | Atendimento de comentários | 2026-07-01 → 2026-07-06 (+5d) | 2026-07-01 → 2026-07-07 (+6d) | 1d → 2d |  | 7d → 3d | constraint start no earlier than 2026-06-29 → finish no earlier than 2026-07-07 |
| 590 | Aprovação | 2026-07-02 → 2026-07-08 (+6d) | 2026-07-02 → 2026-07-08 (+6d) |  |  | 7d → 3d | constraint finish no earlier than 2026-06-30 → start no earlier than 2026-07-08 |
| 591 | **FD-F0009-0306-MB-J-00018** | 2026-06-22 A → 2026-06-18 A (-4d) | 2026-07-03 → 2026-07-08 (+5d) | 10d → 15d | 70% → 80% | 6d → 3d |  |
| 592 | Emissão inicial | 2026-06-22 A → 2026-06-18 A (-4d) |  | 7d → 9d |  |  | constraint none → finish no earlier than 2026-06-30 |
| 593 | Análise Tecnored | 2026-07-01 A | 2026-07-01 → 2026-07-03 A (+2d) | 1d → 3d | 0% → 100% | 6d → none | constraint finish no earlier than 2026-06-26 → finish no earlier than 2026-07-03 |
| 594 | Atendimento de comentários | 2026-07-02 → 2026-07-06 (+4d) | 2026-07-02 → 2026-07-07 (+5d) | 1d → 2d |  | 6d → 3d | constraint start no earlier than 2026-06-29 → finish no earlier than 2026-07-07 |
| 595 | Aprovação | 2026-07-03 → 2026-07-08 (+5d) | 2026-07-03 → 2026-07-08 (+5d) |  |  | 6d → 3d | constraint finish no earlier than 2026-06-30 → start no earlier than 2026-07-08 |
| 596 | **FD-F0009-0306-MB-J-00019** | 2026-06-22 A → 2026-06-18 A (-4d) | 2026-07-03 → 2026-07-08 (+5d) | 10d → 15d | 70% → 80% | 6d → 3d |  |
| 597 | Emissão inicial | 2026-06-22 A → 2026-06-18 A (-4d) |  | 7d → 9d |  |  | constraint none → finish no earlier than 2026-06-30 |
| 598 | Análise Tecnored | 2026-07-01 A | 2026-07-01 → 2026-07-03 A (+2d) | 1d → 3d | 0% → 100% | 6d → none | constraint finish no earlier than 2026-06-26 → finish no earlier than 2026-07-03 |
| 599 | Atendimento de comentários | 2026-07-02 → 2026-07-06 (+4d) | 2026-07-02 → 2026-07-07 (+5d) | 1d → 2d |  | 6d → 3d | constraint start no earlier than 2026-06-29 → finish no earlier than 2026-07-07 |
| 600 | Aprovação | 2026-07-03 → 2026-07-08 (+5d) | 2026-07-03 → 2026-07-08 (+5d) |  |  | 6d → 3d | constraint finish no earlier than 2026-06-30 → start no earlier than 2026-07-08 |
| 601 | **FD-F0009-0306-MB-J-00020** | 2026-06-19 A → 2026-06-18 A (-1d) | 2026-07-02 → 2026-07-08 (+6d) | 10d → 15d | 70% → 80% | 7d → 3d |  |
| 602 | Emissão inicial | 2026-06-19 A → 2026-06-18 A (-1d) | 2026-06-29 A → 2026-06-30 A (+1d) | 7d → 9d |  |  | constraint none → finish no earlier than 2026-06-30 |
| 603 | Análise Tecnored | 2026-06-30 → 2026-07-01 A (+1d) | 2026-06-30 → 2026-07-03 A (+3d) | 1d → 3d | 0% → 100% | 7d → none | constraint finish no earlier than 2026-06-26 → finish no earlier than 2026-07-03 |
| 604 | Atendimento de comentários | 2026-07-01 → 2026-07-06 (+5d) | 2026-07-01 → 2026-07-07 (+6d) | 1d → 2d |  | 7d → 3d | constraint start no earlier than 2026-06-29 → finish no earlier than 2026-07-07 |
| 605 | Aprovação | 2026-07-02 → 2026-07-08 (+6d) | 2026-07-02 → 2026-07-08 (+6d) |  |  | 7d → 3d | constraint finish no earlier than 2026-06-30 → start no earlier than 2026-07-08 |
| 606 | **FD-F0009-0306-MB-J-00021** |  |  |  | 70% → 80% |  |  |
| 607 | Emissão inicial |  | 2026-06-29 A → 2026-06-26 A (-3d) | 7d → 6d |  |  |  |
| 608 | Análise Tecnored | 2026-06-30 → 2026-06-29 A (-1d) | 2026-06-30 A | 1d → 2d | 0% → 100% | 7d → none |  |
| 611 | **FD-F0009-0306-MB-J-00022** | 2026-06-19 A → 2026-06-18 (-1d) | 2026-07-02 → 2026-07-01 (-1d) |  | 70% → 0% | 7d → 8d |  |
| 612 | Emissão inicial | 2026-06-19 A → 2026-06-18 (-1d) | 2026-06-29 A → 2026-06-26 (-3d) |  | 100% → 0% | none → 8d |  |
| 613 | Análise Tecnored | 2026-06-30 → 2026-06-29 (-1d) | 2026-06-30 → 2026-06-29 (-1d) |  |  | 7d → 8d |  |
| 614 | Atendimento de comentários | 2026-07-01 → 2026-06-30 (-1d) | 2026-07-01 → 2026-06-30 (-1d) |  |  | 7d → 8d |  |
| 615 | Aprovação | 2026-07-02 → 2026-07-01 (-1d) | 2026-07-02 → 2026-07-01 (-1d) |  |  | 7d → 8d |  |
| 616 | **FD-F0009-0306-MB-J-00023** |  | 2026-07-02 → 2026-07-03 (+1d) | 10d → 11d | 70% → 73% | 7d → 6d |  |
| 617 | Emissão inicial |  | 2026-06-29 A → 2026-06-30 A (+1d) | 7d → 8d |  |  | constraint none → finish no earlier than 2026-06-30 |
| 618 | Análise Tecnored | 2026-06-30 → 2026-07-01 (+1d) | 2026-06-30 → 2026-07-01 (+1d) |  |  | 7d → 6d |  |
| 619 | Atendimento de comentários | 2026-07-01 → 2026-07-02 (+1d) | 2026-07-01 → 2026-07-02 (+1d) |  |  | 7d → 6d |  |
| 620 | Aprovação | 2026-07-02 → 2026-07-03 (+1d) | 2026-07-02 → 2026-07-03 (+1d) |  |  | 7d → 6d |  |
| 621 | **LB-F0009-0306-MB-J-00001** |  | 2026-07-14 → 2026-07-15 (+1d) | 8.2d → 9.2d |  | 1.8d → 0.8d |  |
| 622 | Emissão inicial |  | 2026-07-06 → 2026-07-07 (+1d) |  |  | 1.8d → 0.8d |  |
| 623 | Análise Tecnored | 2026-07-06 → 2026-07-07 (+1d) | 2026-07-07 → 2026-07-08 (+1d) |  |  | 1.8d → 0.8d |  |
| 624 | Atendimento de comentários | 2026-07-07 → 2026-07-08 (+1d) | 2026-07-13 → 2026-07-14 (+1d) |  |  | 1.8d → 0.8d |  |
| 625 | Aprovação | 2026-07-13 → 2026-07-14 (+1d) | 2026-07-14 → 2026-07-15 (+1d) |  |  | 1.8d → 0.8d |  |
| 626 | **RE-F0009-0306-MB-J-00001** |  | 2026-06-25 → 2026-07-02 (+7d) | 8d → 13d | 75% → 54% | 12d → 7d |  |
| 627 | Emissão inicial |  | 2026-06-19 A → 2026-06-24 A (+5d) | 4d → 7d |  |  | constraint finish no earlier than 2026-06-19 → finish no earlier than 2026-06-24 |
| 628 | Análise Tecnored | 2026-06-22 A → 2026-06-25 (+3d) | 2026-06-22 A → 2026-06-29 (+7d) | 1d → 3d | 100% → 0% | none → 7d |  |
| 629 | Atendimento de comentários | 2026-06-23 A → 2026-06-30 (+7d) | 2026-06-24 → 2026-07-01 (+7d) |  | 50% → 0% | 12d → 7d |  |
| 630 | Aprovação | 2026-06-25 → 2026-07-02 (+7d) | 2026-06-25 → 2026-07-02 (+7d) |  |  | 12d → 7d |  |
| 631 | **DT-F0009-0306-MB-J-00001** |  | 2026-07-08 → 2026-07-15 (+7d) | 8d → 11d | 50% → 36% | 3d → 0d |  |

| ID | Task | Start | Finish | Duration | Complete | Total float |
| --- | --- | --- | --- | --- | --- | --- |
| 632 | Emissão inicial |  | 2026-07-02 A → 2026-07-07 (+5d) | 4d → 7d | 100% → 57% | none → 0d |
| 633 | Análise Tecnored | 2026-07-03 → 2026-07-08 (+5d) | 2026-07-03 → 2026-07-08 (+5d) |  |  | 3d → 0d |
| 634 | Atendimento de comentários | 2026-07-06 → 2026-07-13 (+7d) | 2026-07-07 → 2026-07-14 (+7d) |  |  | 3d → 0d |
| 635 | Aprovação | 2026-07-08 → 2026-07-15 (+7d) | 2026-07-08 → 2026-07-15 (+7d) |  |  | 3d → 0d |

## Version 6 (data date 2026-07-07, saved 2026-07-08, file CR-F0009-0306-MB-F-00001 13072026_C2.mpp)

Note of the change: Atualizacao dados para apresentacao

Last finish stays 2026-07-29. Complete tasks 111 → 131.

Changed:

| ID | Task | Start | Finish | Duration | Complete | Total float | Other |
| --- | --- | --- | --- | --- | --- | --- | --- |
| 1 | **F0009 - Programa Marabá** |  | 2026-07-15 → 2026-07-16 (+1d) | 54d → 55d | 59% → 66% |  |  |
| 2 | **Área 0306 - Sopradores** |  | 2026-07-15 → 2026-07-16 (+1d) | 54d → 55d | 59% → 66% |  |  |
| 147 | **Tubulação/Utilidades** |  |  |  | 47% → 48% | 4d → 5d |  |
| 203 | **AG-F0009-0306-MB-T-00002** |  |  |  | 44% → 56% | 7.5d → 8.5d |  |
| 204 | Emissão inicial |  | 2026-06-26 A |  | 75% → 100% | 0d → none |  |
| 238 | **Estrutura metálica** | 2026-06-16 A → 2026-06-18 A (+2d) | 2026-07-07 → 2026-07-15 (+8d) | 16d → 18d | 10% → 44% | 4d → 1d |  |
| 249 | **PQ-F0009-0306-MB-S-00001** | 2026-06-26 → 2026-07-06 A (+10d) | 2026-07-03 → 2026-07-15 (+12d) |  | 0% → 50% | 6d → 1d |  |
| 250 | Emissão inicial | 2026-06-26 → 2026-07-06 A (+10d) | 2026-06-30 → 2026-07-08 A (+8d) |  | 0% → 100% | 6d → none | constraint finish no earlier than 2026-06-30 → start no earlier than 2026-07-06 |
| 251 | Análise Tecnored | 2026-07-01 → 2026-07-13 (+12d) | 2026-07-01 → 2026-07-13 (+12d) |  |  | 6d → 1d |  |
| 252 | Atendimento de comentários | 2026-07-02 → 2026-07-14 (+12d) | 2026-07-02 → 2026-07-14 (+12d) |  |  | 6d → 1d |  |
| 253 | Aprovação | 2026-07-03 → 2026-07-15 (+12d) | 2026-07-03 → 2026-07-15 (+12d) |  |  | 6d → 1d |  |
| 269 | **AG-F0009-0306-MB-S-00002** | 2026-06-24 → 2026-07-06 A (+12d) | 2026-07-01 → 2026-07-15 (+14d) |  | 0% → 50% | 8d → 1d |  |
| 270 | Emissão inicial | 2026-06-24 → 2026-07-06 A (+12d) | 2026-06-26 → 2026-07-08 A (+12d) |  | 0% → 100% | 8d → none | constraint none → start no earlier than 2026-07-06 |
| 271 | Análise Tecnored | 2026-06-29 → 2026-07-13 (+14d) | 2026-06-29 → 2026-07-13 (+14d) |  |  | 8d → 1d |  |
| 272 | Atendimento de comentários | 2026-06-30 → 2026-07-14 (+14d) | 2026-06-30 → 2026-07-14 (+14d) |  |  | 8d → 1d |  |
| 273 | Aprovação | 2026-07-01 → 2026-07-15 (+14d) | 2026-07-01 → 2026-07-15 (+14d) |  |  | 8d → 1d |  |
| 274 | **AG-F0009-0306-MB-S-00003** | 2026-06-24 → 2026-07-06 A (+12d) | 2026-07-01 → 2026-07-15 (+14d) |  | 0% → 50% | 8d → 1d |  |
| 275 | Emissão inicial | 2026-06-24 → 2026-07-06 A (+12d) | 2026-06-26 → 2026-07-08 A (+12d) |  | 0% → 100% | 8d → none | constraint none → start no earlier than 2026-07-06 |
| 276 | Análise Tecnored | 2026-06-29 → 2026-07-13 (+14d) | 2026-06-29 → 2026-07-13 (+14d) |  |  | 8d → 1d | constraint none → start no earlier than 2026-07-13 |
| 277 | Atendimento de comentários | 2026-06-30 → 2026-07-14 (+14d) | 2026-06-30 → 2026-07-14 (+14d) |  |  | 8d → 1d | constraint none → start no earlier than 2026-07-14 |
| 278 | Aprovação | 2026-07-01 → 2026-07-15 (+14d) | 2026-07-01 → 2026-07-15 (+14d) |  |  | 8d → 1d | constraint none → start no earlier than 2026-07-15 |
| 279 | **AG-F0009-0306-MB-S-00004** | 2026-06-24 → 2026-07-06 A (+12d) | 2026-07-01 → 2026-07-15 (+14d) |  | 0% → 50% | 8d → 1d |  |
| 280 | Emissão inicial | 2026-06-24 → 2026-07-06 A (+12d) | 2026-06-26 → 2026-07-08 A (+12d) |  | 0% → 100% | 8d → none | constraint none → start no earlier than 2026-07-06 |
| 281 | Análise Tecnored | 2026-06-29 → 2026-07-13 (+14d) | 2026-06-29 → 2026-07-13 (+14d) |  |  | 8d → 1d | constraint none → start no earlier than 2026-07-13 |
| 282 | Atendimento de comentários | 2026-06-30 → 2026-07-14 (+14d) | 2026-06-30 → 2026-07-14 (+14d) |  |  | 8d → 1d | constraint none → start no earlier than 2026-07-14 |
| 283 | Aprovação | 2026-07-01 → 2026-07-15 (+14d) | 2026-07-01 → 2026-07-15 (+14d) |  |  | 8d → 1d | constraint none → start no earlier than 2026-07-15 |
| 289 | **PL-F0009-0306-MB-S-00001** | 2026-06-16 → 2026-07-03 A (+17d) | 2026-06-24 → 2026-07-15 (+21d) |  | 0% → 57% | 13d → 1d |  |
| 290 | Emissão inicial | 2026-06-16 → 2026-07-03 A (+17d) | 2026-06-19 → 2026-07-08 A (+19d) |  | 0% → 100% | 13d → none | constraint start no earlier than 2026-06-16 → start no earlier than 2026-07-03 |
| 291 | Análise Tecnored | 2026-06-22 → 2026-07-13 (+21d) | 2026-06-22 → 2026-07-13 (+21d) |  |  | 13d → 1d |  |
| 292 | Atendimento de comentários | 2026-06-23 → 2026-07-14 (+21d) | 2026-06-23 → 2026-07-14 (+21d) |  |  | 13d → 1d |  |
| 293 | Aprovação | 2026-06-24 → 2026-07-15 (+21d) | 2026-06-24 → 2026-07-15 (+21d) |  |  | 13d → 1d |  |
| 294 | **Elétrica** |  |  |  | 46% → 58% | 0d → 1d |  |
| 320 | **LM-F0009-0306-MB-E-00001** | 2026-07-07 A |  |  | 0% → 40% | 1d → 2d |  |
| 321 | Emissão inicial | 2026-07-07 A | 2026-07-08 A |  | 0% → 100% | 1d → none |  |
| 325 | **PQ-F0009-0306-MB-E-00001** | 2026-07-06 A |  |  | 0% → 50% | 1d → 2d |  |
| 326 | Emissão inicial | 2026-07-06 A | 2026-07-08 A |  | 0% → 100% | 1d → none |  |
| 345 | **AG-F0009-0306-MB-E-00001** |  | 2026-07-06 → 2026-07-14 (+8d) | 6d → 10d | 51% → 73% | 5d → 2d |  |
| 346 | Emissão inicial |  | 2026-07-02 → 2026-07-08 A (+6d) | 4d → 8d | 90% → 100% | 2d → none | constraint start no earlier than 2026-06-29 → finish no earlier than 2026-07-08 |
| 347 | Análise Tecnored | 2026-07-03 → 2026-07-13 (+10d) | 2026-07-03 → 2026-07-13 (+10d) |  |  |  |  |
| 348 | Atendimento de comentários | 2026-07-06 → 2026-07-14 (+8d) | 2026-07-06 → 2026-07-14 (+8d) |  |  | 5d → 2d |  |
| 349 | Aprovação | 2026-07-06 → 2026-07-14 (+8d) | 2026-07-06 → 2026-07-14 (+8d) |  |  | 5d → 2d |  |
| 350 | **AG-F0009-0306-MB-E-00002** |  | 2026-07-06 → 2026-07-14 (+8d) | 6d → 10d | 51% → 73% | 5d → 2d |  |
| 351 | Emissão inicial |  | 2026-07-02 → 2026-07-08 A (+6d) | 4d → 8d | 90% → 100% | 5d → none | constraint start no earlier than 2026-06-19 → finish no earlier than 2026-07-08 |
| 352 | Análise Tecnored | 2026-07-03 → 2026-07-13 (+10d) | 2026-07-03 → 2026-07-13 (+10d) |  |  | 5d → 2d |  |
| 353 | Atendimento de comentários | 2026-07-06 → 2026-07-14 (+8d) | 2026-07-06 → 2026-07-14 (+8d) |  |  | 5d → 2d |  |
| 354 | Aprovação | 2026-07-06 → 2026-07-14 (+8d) | 2026-07-06 → 2026-07-14 (+8d) |  |  | 5d → 2d |  |
| 355 | **AG-F0009-0306-MB-E-00003** |  |  |  | 51% → 57% | 5d → 6d |  |
| 356 | Emissão inicial |  | 2026-07-02 A |  | 90% → 100% | 5d → none |  |
| 360 | **AG-F0009-0306-MB-E-00004** |  |  |  | 51% → 57% | 5d → 6d |  |
| 361 | Emissão inicial |  | 2026-07-02 A |  | 90% → 100% | 5d → none |  |
| 410 | **Automação e instrumentação** |  | 2026-07-15 → 2026-07-16 (+1d) | 30d → 31d | 65% → 72% |  |  |
| 451 | **FG-F0009-0306-MB-J-00002** | 2026-05-29 A |  |  | 0% → 60% | 20d → 21d |  |
| 452 | Emissão inicial | 2026-05-29 A | 2026-06-09 A |  | 0% → 100% | 20d → none |  |
| 456 | **FG-F0009-0306-MB-J-00003** | 2026-06-03 A |  |  | 0% → 60% | 17d → 18d |  |
| 457 | Emissão inicial | 2026-06-03 A | 2026-06-12 A |  | 0% → 100% | 17d → none |  |
| 466 | **AG-F0009-0306-MB-J-00002** | 2026-06-23 A |  |  | 0% → 50% | 7d → 8d |  |
| 467 | Emissão inicial | 2026-06-23 A | 2026-06-26 A |  | 0% → 100% | 7d → none |  |
| 471 | **AG-F0009-0306-MB-J-00003** | 2026-06-23 A |  |  | 0% → 50% | 7d → 8d |  |
| 472 | Emissão inicial | 2026-06-23 A | 2026-06-26 A |  | 0% → 100% | 7d → none |  |
| 611 | **FD-F0009-0306-MB-J-00022** | 2026-06-18 A |  |  | 0% → 70% | 8d → 9d |  |
| 612 | Emissão inicial | 2026-06-18 A | 2026-06-26 A |  | 0% → 100% | 8d → none |  |
| 621 | **LB-F0009-0306-MB-J-00001** |  | 2026-07-15 → 2026-07-16 (+1d) | 9.2d → 11d | 30% → 49% | 0.8d → 0d |  |
| 622 | Emissão inicial |  | 2026-07-07 → 2026-07-08 A (+1d) | 2d → 3.8d | 90% → 100% | 0.8d → none | constraint finish no earlier than 2026-07-01 → finish no earlier than 2026-07-08 |
| 623 | Análise Tecnored | 2026-07-07 → 2026-07-13 (+6d) | 2026-07-08 → 2026-07-13 (+5d) |  |  | 0.8d → 0d |  |
| 624 | Atendimento de comentários | 2026-07-08 → 2026-07-14 (+6d) | 2026-07-14 → 2026-07-15 (+1d) |  |  | 0.8d → 0d |  |
| 625 | Aprovação | 2026-07-14 → 2026-07-16 (+2d) | 2026-07-15 → 2026-07-16 (+1d) |  |  | 0.8d → 0d |  |
| 631 | **DT-F0009-0306-MB-J-00001** |  | 2026-07-15 → 2026-07-16 (+1d) | 11d → 12d | 36% → 67% |  |  |
| 632 | Emissão inicial |  | 2026-07-07 → 2026-07-08 A (+1d) | 7d → 8d | 57% → 100% | 0d → none | constraint start no earlier than 2026-06-19 → finish no earlier than 2026-07-08 |
| 633 | Análise Tecnored | 2026-07-08 → 2026-07-13 (+5d) | 2026-07-08 → 2026-07-13 (+5d) |  |  |  |  |
| 634 | Atendimento de comentários | 2026-07-13 → 2026-07-14 (+1d) | 2026-07-14 → 2026-07-15 (+1d) |  |  |  |  |

| ID | Task | Start | Finish | Duration | Complete | Total float | Other |
| --- | --- | --- | --- | --- | --- | --- | --- |
| 635 | Aprovação | 2026-07-15 → 2026-07-16 (+1d) | 2026-07-15 → 2026-07-16 (+1d) |  |  |  |  |
| 636 | **Civil** |  | 2026-07-15 → 2026-07-16 (+1d) | 8d → 9d | 10% → 50% |  |  |
| 637 | **MC-F0009-0306-MB-C-00001** |  | 2026-07-15 → 2026-07-16 (+1d) | 8d → 9d | 16% → 67% |  |  |
| 638 | Emissão inicial |  | 2026-07-08 → 2026-07-13 A (+5d) | 5d → 6d | 25% → 100% | 0d → none | constraint start no earlier than 2026-07-02 → finish no earlier than 2026-07-13 |
| 639 | Análise Tecnored | 2026-07-13 → 2026-07-14 (+1d) | 2026-07-13 → 2026-07-14 (+1d) |  |  |  |  |
| 640 | Atendimento de comentários | 2026-07-14 → 2026-07-15 (+1d) | 2026-07-14 → 2026-07-15 (+1d) |  |  |  |  |
| 641 | Aprovação | 2026-07-15 → 2026-07-16 (+1d) | 2026-07-15 → 2026-07-16 (+1d) |  |  |  |  |
| 642 | **PQ-F0009-0306-MB-C-00001** | 2026-07-08 → 2026-07-13 A (+5d) | 2026-07-15 → 2026-07-16 (+1d) |  | 0% → 13% |  |  |
| 643 | Emissão inicial | 2026-07-08 → 2026-07-13 A (+5d) | 2026-07-08 → 2026-07-13 (+5d) |  | 0% → 50% |  |  |
| 644 | Análise Tecnored | 2026-07-13 → 2026-07-14 (+1d) | 2026-07-13 → 2026-07-14 (+1d) |  |  |  |  |
| 645 | Atendimento de comentários | 2026-07-14 → 2026-07-15 (+1d) | 2026-07-14 → 2026-07-15 (+1d) |  |  |  |  |
| 646 | Aprovação | 2026-07-15 → 2026-07-16 (+1d) | 2026-07-15 → 2026-07-16 (+1d) |  |  |  |  |

## Version 7 (data date 2026-07-14, saved 2026-07-16, file CR-F0009-0306-MB-F-00001 14072026_C2.mpp)

Note of the change: Atualizacao dados para apresentacao

Last finish stays 2026-07-29. Complete tasks 131 → 136.

Changed:

| ID | Task | Start | Finish | Complete | Total float |
| --- | --- | --- | --- | --- | --- |
| 1 | **F0009 - Programa Marabá** |  |  | 66% → 67% |  |
| 2 | **Área 0306 - Sopradores** |  |  | 66% → 67% |  |
| 147 | **Tubulação/Utilidades** |  |  | 48% → 50% |  |
| 208 | **AG-F0009-0306-MB-T-00003** |  |  | 44% → 56% |  |
| 209 | Emissão inicial |  | 2026-06-26 A | 75% → 100% | 0d → none |
| 238 | **Estrutura metálica** |  |  | 44% → 47% |  |
| 259 | **MC-F0009-0306-MB-S-00001** |  |  | 40% → 70% |  |
| 261 | Análise Tecnored | 2026-06-22 A | 2026-06-22 A | 0% → 100% | 14d → none |
| 262 | Atendimento de comentários | 2026-06-23 A |  | 0% → 50% |  |
| 410 | **Automação e instrumentação** |  |  | 72% → 73% |  |
| 461 | **AG-F0009-0306-MB-J-00001** |  |  | 36% → 82% |  |
| 463 | Análise Tecnored | 2026-06-29 A | 2026-07-02 A | 0% → 100% | 5d → none |
| 464 | Atendimento de comentários | 2026-07-03 A |  | 0% → 50% |  |
| 626 | **RE-F0009-0306-MB-J-00001** |  |  | 54% → 85% |  |
| 628 | Análise Tecnored | 2026-06-25 A | 2026-06-29 A | 0% → 100% | 8d → none |
| 629 | Atendimento de comentários | 2026-06-30 A |  | 0% → 50% |  |
| 636 | **Civil** |  |  | 50% → 54% |  |
| 642 | **PQ-F0009-0306-MB-C-00001** |  |  | 13% → 25% |  |
| 643 | Emissão inicial |  | 2026-07-13 A | 50% → 100% | 0d → none |

## Version 8 (data date 2026-07-14, saved 2026-07-20, file CR-F0009-0306-MB-F-00001 14072026_C2.mpp)

Note of the change: Ajustes cronograma integrado e hachuras

Last finish stays 2026-07-29. Complete tasks 136 → 137.

Changed:

| ID | Task | Start | Finish | Complete | Total float |
| --- | --- | --- | --- | --- | --- |
| 1 | **F0009 - Programa Marabá** |  |  | 67% → 68% |  |
| 2 | **Área 0306 - Sopradores** |  |  | 67% → 68% |  |
| 238 | **Estrutura metálica** |  |  | 47% → 53% |  |
| 244 | **ML-F0009-0306-MB-S-00001** | 2026-06-19 A |  | 0% → 50% | 8d → 12d |
| 245 | Emissão inicial | 2026-06-19 A | 2026-06-23 A | 0% → 100% | 8d → none |
