# CR-F0009-0305-MB-F-00001

How a schedule from MS Project changed from version to version. A marks actual dates.

## Version 1 (data date 2026-05-29, saved 2026-06-02, file CR-F0009-0306-MB-F-00001 02062026.mpp)

Note of the change: Primeira versao dashboard

| ID | WBS | Task | Duration | Start | Finish | Predecessors | Complete | Total float | Constraint |
| --- | --- | --- | --- | --- | --- | --- | --- | --- | --- |
| 1 | 1 | **F0009 - Programa Marabá** | 51d | 2026-04-27 A | 2026-07-08 |  | 4% |  |  |
| 2 | 1.1 | **Área 0306 - Sopradores** | 52d | 2026-04-27 A | 2026-07-09 |  | 4% | 0d |  |
| 3 |  | KOM - Início de projeto | 0d | 2026-04-27 A | 2026-04-27 A |  | 100% |  | start no earlier than 2026-04-27 |
| 4 | 1.1.2 | **Marcos** | 12d | 2026-05-19 A | 2026-06-05 |  |  | 0d |  |
| 5 |  | Critério de Projeto de Processo | 0d | 2026-06-05 | 2026-06-05 |  |  |  |  |
| 6 |  | Critério de Projeto de Mecânica | 0d | 2026-05-19 A | 2026-05-19 A |  | 100% |  |  |
| 7 |  | Critério de Projeto de Elétrica | 0d | 2026-06-05 | 2026-06-05 |  |  |  |  |
| 8 |  | Critério de Projeto de Automação | 0d | 2026-06-05 A | 2026-06-05 |  | 75% |  |  |
| 9 |  | Critério de Projeto de Tubulação | 0d | 2026-05-22 A | 2026-05-22 A |  | 100% |  |  |
| 10 |  | Critério de Projeto de Estrutura metálica | 0d | 2026-06-05 | 2026-06-05 |  |  |  |  |
| 11 | 1.1.3 | **Pendências** | 0d | 2026-04-29 A | 2026-04-29 A |  | 100% |  |  |
| 12 |  | Recebimento de dados de entrada | 0d | 2026-04-29 A | 2026-04-29 A |  | 100% |  |  |
| 13 | 1.1.4 | **Planejamento** | 25.4d | 2026-04-27 A | 2026-06-01 |  | 86% | 26.6d |  |
| 14 | 1.1.4.1 | **LD-F0009-0306-MB-F-00001** | 25.4d | 2026-04-27 A | 2026-06-01 |  | 86% | 26.6d |  |
| 15 |  | Emissão inicial | 3d | 2026-04-27 A | 2026-04-29 A | 3 | 100% |  |  |
| 16 |  | Análise Tecnored | 1d | 2026-04-30 A | 2026-04-30 A | 15 | 100% |  |  |
| 17 |  | Atendimento de comentários | 2d | 2026-05-01 A | 2026-05-12 A | 16FS+7d | 100% |  |  |
| 18 |  | Aprovação | 1d | 2026-05-29 | 2026-06-01 | 17FS+13d |  | 26.6d |  |
| 19 | 1.1.4.2 | **CR-F0009-0306-MB-F-00001** | 21.4d | 2026-04-30 A | 2026-05-29 |  | 86% | 27.6d |  |
| 20 |  | Emissão inicial | 3d | 2026-04-30 A | 2026-05-04 A | 15 | 100% |  |  |
| 21 |  | Análise Tecnored | 1d | 2026-05-05 A | 2026-05-05 A | 20 | 100% |  |  |
| 22 |  | Atendimento de comentários | 2d | 2026-05-06 A | 2026-05-15 A | 21FS+7d | 100% |  |  |
| 23 |  | Aprovação | 1d | 2026-05-28 | 2026-05-29 | 22FS+9d |  | 27.6d |  |
| 24 | 1.1.5 | **Coordenação** | 52d | 2026-04-27 A | 2026-07-09 |  | 11% | 0d |  |
| 25 | 1.1.5.1 | **RM-F0009-0306-MB-G-00001** | 7d | 2026-06-01 | 2026-06-11 |  |  | 0d |  |
| 26 |  | Emissão inicial | 3d | 2026-06-01 | 2026-06-03 | 3FS+25d |  | 0d |  |
| 27 |  | Análise Tecnored | 1d | 2026-06-08 | 2026-06-08 | 26 |  | 20d |  |
| 28 |  | Atendimento de comentários | 2d | 2026-06-09 | 2026-06-10 | 27 |  | 20d |  |
| 29 |  | Aprovação | 1d | 2026-06-11 | 2026-06-11 | 28 |  | 20d |  |
| 30 | 1.1.5.2 | **RM-F0009-0306-MB-G-00002** | 7d | 2026-06-22 | 2026-06-30 |  |  | 0d |  |
| 31 |  | Emissão inicial | 3d | 2026-06-22 | 2026-06-24 | 26FS+10d |  | 0d |  |
| 32 |  | Análise Tecnored | 1d | 2026-06-25 | 2026-06-25 | 31 |  | 7d |  |
| 33 |  | Atendimento de comentários | 2d | 2026-06-26 | 2026-06-29 | 32 |  | 7d |  |
| 34 |  | Aprovação | 1d | 2026-06-30 | 2026-06-30 | 33 |  | 7d |  |
| 35 | 1.1.5.3 | **RL-F0009-0306-MB-G-00001** | 6d | 2026-07-02 | 2026-07-09 |  |  | 0d |  |
| 36 |  | Emissão inicial | 2d | 2026-07-02 | 2026-07-03 | 31FS+5d |  | 0d |  |
| 37 |  | Análise Tecnored | 1d | 2026-07-06 | 2026-07-06 | 36 |  | 0d |  |
| 38 |  | Atendimento de comentários | 2d | 2026-07-07 | 2026-07-08 | 37 |  | 0d |  |
| 39 |  | Aprovação | 1d | 2026-07-09 | 2026-07-09 | 38 |  | 0d |  |
| 40 | 1.1.5.4 | **LP-F0009-0306-MB-G-00001** | 47d | 2026-04-27 A | 2026-07-02 |  | 43% | 5d |  |
| 41 |  | Emissão inicial | 3d | 2026-04-27 A | 2026-04-29 A | 3 | 100% |  |  |
| 42 |  | Análise Tecnored | 1d | 2026-06-15 | 2026-06-15 | 41FS+30d |  | 5d |  |
| 43 |  | Atendimento de comentários | 2d | 2026-06-30 | 2026-07-01 | 42FS+10d |  | 5d |  |
| 44 |  | Aprovação | 1d | 2026-07-02 | 2026-07-02 | 43 |  | 5d |  |
| 45 | 1.1.6 | **Processo** | 4d | 2026-06-05 A | 2026-06-11 |  | 80% | 20d |  |
| 46 | 1.1.6.1 | **CP-F0009-0306-MB-P-00001** | 26d | 2026-05-05 | 2026-06-11 |  |  | 20d |  |
| 47 |  | Emissão inicial | 7d | 2026-05-05 | 2026-05-13 | 20 |  | 35d |  |
| 48 |  | Análise Tecnored | 1d | 2026-06-08 | 2026-06-08 | 47, 5 |  | 20d |  |
| 49 |  | Atendimento de comentários | 2d | 2026-06-09 | 2026-06-10 | 48 |  | 20d |  |
| 50 |  | Aprovação | 1d | 2026-06-11 | 2026-06-11 | 49 |  | 20d |  |
| 51 | 1.1.6.2 | **MD-F0009-0306-MB-P-00001** | 7d | 2026-06-22 | 2026-06-30 |  |  | 7d |  |
| 52 |  | Emissão inicial | 3d | 2026-06-22 | 2026-06-24 | 57FS+10d |  | 7d |  |
| 53 |  | Análise Tecnored | 1d | 2026-06-25 | 2026-06-25 | 52 |  | 7d |  |
| 54 |  | Atendimento de comentários | 2d | 2026-06-26 | 2026-06-29 | 53 |  | 7d |  |
| 55 |  | Aprovação | 1d | 2026-06-30 | 2026-06-30 | 54 |  | 7d |  |
| 56 | 1.1.6.3 | **FG-F0009-0306-MB-P-00001** | 4d | 2026-06-05 A | 2026-06-11 |  | 80% | 20d |  |
| 57 |  | Emissão inicial | 1d | 2026-06-05 A | 2026-06-05 A | 47, 5 | 100% |  |  |
| 58 |  | Análise Tecnored | 1d | 2026-06-08 A | 2026-06-08 A | 57 | 100% |  |  |
| 59 |  | Atendimento de comentários | 2d | 2026-06-09 A | 2026-06-10 A | 58 | 100% |  |  |
| 60 |  | Aprovação | 1d | 2026-06-11 | 2026-06-11 | 59 |  | 20d |  |
| 61 | 1.1.7 | **Mecânica** | 26d | 2026-05-26 A | 2026-07-02 |  | 7% | 5d |  |
| 62 | 1.1.7.1 | **CP-F0009-0306-MB-M-00001** | 14d | 2026-05-05 | 2026-05-22 |  |  | -1d |  |
| 63 |  | Emissão inicial | 7d | 2026-05-05 | 2026-05-13 | 20 |  | -1d |  |
| 64 |  | Análise Tecnored | 1d | 2026-05-19 | 2026-05-19 | 63, 6 |  | 32d |  |
| 65 |  | Atendimento de comentários | 2d | 2026-05-20 | 2026-05-21 | 64 |  | 32d |  |
| 66 |  | Aprovação | 1d | 2026-05-22 | 2026-05-22 | 65 |  | 32d |  |
| 67 | 1.1.7.2 | **MD-F0009-0306-MB-M-00001** | 7d | 2026-06-02 | 2026-06-12 |  |  | -14d |  |
| 68 |  | Emissão inicial | 3d | 2026-06-02 | 2026-06-08 | 63, 75, 6 |  | -14d |  |
| 69 |  | Análise Tecnored | 1d | 2026-06-09 | 2026-06-09 | 68 |  | 19d |  |
| 70 |  | Atendimento de comentários | 2d | 2026-06-10 | 2026-06-11 | 69 |  | 19d |  |

| ID | WBS | Task | Duration | Start | Finish | Predecessors | Complete | Total float |
| --- | --- | --- | --- | --- | --- | --- | --- | --- |
| 71 |  | Aprovação | 1d | 2026-06-12 | 2026-06-12 | 70 |  | 19d |
| 72 | 1.1.7.3 | **LE-F0009-0306-MB-M-00001** | 6d | 2026-05-26 A | 2026-06-02 |  | 33% | 25d |
| 73 |  | Emissão inicial | 2d | 2026-05-26 A | 2026-05-27 A | 63, 6FS+5d | 100% |  |
| 74 |  | Análise Tecnored | 1d | 2026-05-28 | 2026-05-28 | 73 |  | -11d |
| 75 |  | Atendimento de comentários | 2d | 2026-05-29 | 2026-06-01 | 74 |  | -11d |
| 76 |  | Aprovação | 1d | 2026-06-02 | 2026-06-02 | 75 |  | 25d |
| 77 | 1.1.7.4 | **PQ-F0009-0306-MB-M-00001** | 7d | 2026-06-02 | 2026-06-12 |  |  | 19d |
| 78 |  | Emissão inicial | 3d | 2026-06-02 | 2026-06-08 | 68FS+30d |  | 19d |
| 79 |  | Análise Tecnored | 1d | 2026-06-09 | 2026-06-09 | 78 |  | 19d |
| 80 |  | Atendimento de comentários | 2d | 2026-06-10 | 2026-06-11 | 79 |  | 19d |
| 81 |  | Aprovação | 1d | 2026-06-12 | 2026-06-12 | 80 |  | 19d |
| 82 | 1.1.7.5 | **AG-F0009-0306-MB-L-00001** | 9d | 2026-06-22 | 2026-07-02 |  |  | 5d |
| 83 |  | Emissão inicial | 5d | 2026-06-22 | 2026-06-26 | 230 |  | 5d |
| 84 |  | Análise Tecnored | 1d | 2026-06-29 | 2026-06-29 | 83 |  | 5d |
| 85 |  | Atendimento de comentários | 2d | 2026-06-30 | 2026-07-01 | 84 |  | 5d |
| 86 |  | Aprovação | 1d | 2026-07-02 | 2026-07-02 | 85 |  | 5d |
| 87 | 1.1.7.6 | **AG-F0009-0306-MB-L-00002** | 9d | 2026-06-22 | 2026-07-02 |  |  | 5d |
| 88 |  | Emissão inicial | 5d | 2026-06-22 | 2026-06-26 | 230 |  | 5d |
| 89 |  | Análise Tecnored | 1d | 2026-06-29 | 2026-06-29 | 88 |  | 5d |
| 90 |  | Atendimento de comentários | 2d | 2026-06-30 | 2026-07-01 | 89 |  | 5d |
| 91 |  | Aprovação | 1d | 2026-07-02 | 2026-07-02 | 90 |  | 5d |
| 92 | 1.1.7.7 | **AG-F0009-0306-MB-L-00003** | 9d | 2026-06-22 | 2026-07-02 |  |  | 5d |
| 93 |  | Emissão inicial | 5d | 2026-06-22 | 2026-06-26 | 230 |  | 5d |
| 94 |  | Análise Tecnored | 1d | 2026-06-29 | 2026-06-29 | 93 |  | 5d |
| 95 |  | Atendimento de comentários | 2d | 2026-06-30 | 2026-07-01 | 94 |  | 5d |
| 96 |  | Aprovação | 1d | 2026-07-02 | 2026-07-02 | 95 |  | 5d |
| 97 | 1.1.7.8 | **AG-F0009-0306-MB-L-00004** | 9d | 2026-06-22 | 2026-07-02 |  |  | 5d |
| 98 |  | Emissão inicial | 5d | 2026-06-22 | 2026-06-26 | 230 |  | 5d |
| 99 |  | Análise Tecnored | 1d | 2026-06-29 | 2026-06-29 | 98 |  | 5d |
| 100 |  | Atendimento de comentários | 2d | 2026-06-30 | 2026-07-01 | 99 |  | 5d |
| 101 |  | Aprovação | 1d | 2026-07-02 | 2026-07-02 | 100 |  | 5d |
| 102 | 1.1.7.9 | **PL-F0009-0306-MB-M-00001** | 12d | 2026-06-03 | 2026-06-22 |  |  | 13d |
| 103 |  | Emissão inicial | 8d | 2026-06-03 | 2026-06-16 | 119 |  | 13d |
| 104 |  | Análise Tecnored | 1d | 2026-06-17 | 2026-06-17 | 103 |  | 13d |
| 105 |  | Atendimento de comentários | 2d | 2026-06-18 | 2026-06-19 | 104 |  | 13d |
| 106 |  | Aprovação | 1d | 2026-06-22 | 2026-06-22 | 105 |  | 13d |
| 107 | 1.1.7.10 | **PL-F0009-0306-MB-M-00002** | 12d | 2026-06-03 | 2026-06-22 |  |  | 13d |
| 108 |  | Emissão inicial | 8d | 2026-06-03 | 2026-06-16 | 119 |  | 13d |
| 109 |  | Análise Tecnored | 1d | 2026-06-17 | 2026-06-17 | 108 |  | 13d |
| 110 |  | Atendimento de comentários | 2d | 2026-06-18 | 2026-06-19 | 109 |  | 13d |
| 111 |  | Aprovação | 1d | 2026-06-22 | 2026-06-22 | 110 |  | 13d |
| 112 | 1.1.7.11 | **MC-F0009-0306-MB-M-00001** | 9d | 2026-06-03 | 2026-06-17 |  |  | 0d |
| 113 |  | Emissão inicial | 5d | 2026-06-03 | 2026-06-11 | 119 |  | 0d |
| 114 |  | Análise Tecnored | 1d | 2026-06-12 | 2026-06-12 | 113 |  | 0d |
| 115 |  | Atendimento de comentários | 2d | 2026-06-15 | 2026-06-16 | 114 |  | 16d |
| 116 |  | Aprovação | 1d | 2026-06-17 | 2026-06-17 | 115 |  | 16d |
| 117 | 1.1.7.12 | **ML-F0009-0306-MB-M-00001** | 9d | 2026-05-26 A | 2026-06-09 |  | 56% | 22d |
| 118 |  | Emissão inicial | 5d | 2026-05-26 A | 2026-06-01 A | 63, 6FS+5d | 100% |  |
| 119 |  | Análise Tecnored | 1d | 2026-06-02 | 2026-06-02 | 118 |  | 0d |
| 120 |  | Atendimento de comentários | 2d | 2026-06-03 | 2026-06-08 | 119 |  | 5d |
| 121 |  | Aprovação | 1d | 2026-06-09 | 2026-06-09 | 120 |  | 22d |
| 122 | 1.1.7.13 | **FD-F0009-0306-MB-M-00001** | 7d | 2026-06-12 | 2026-06-22 |  |  | 13d |
| 123 |  | Emissão inicial | 3d | 2026-06-12 | 2026-06-16 | 113 |  | 13d |
| 124 |  | Análise Tecnored | 1d | 2026-06-17 | 2026-06-17 | 123 |  | 13d |
| 125 |  | Atendimento de comentários | 2d | 2026-06-18 | 2026-06-19 | 124 |  | 13d |
| 126 |  | Aprovação | 1d | 2026-06-22 | 2026-06-22 | 125 |  | 13d |
| 127 | 1.1.7.14 | **FD-F0009-0306-MB-M-00002** | 7d | 2026-06-12 | 2026-06-22 |  |  | 13d |
| 128 |  | Emissão inicial | 3d | 2026-06-12 | 2026-06-16 | 113 |  | 13d |
| 129 |  | Análise Tecnored | 1d | 2026-06-17 | 2026-06-17 | 128 |  | 13d |
| 130 |  | Atendimento de comentários | 2d | 2026-06-18 | 2026-06-19 | 129 |  | 13d |
| 131 |  | Aprovação | 1d | 2026-06-22 | 2026-06-22 | 130 |  | 13d |
| 132 | 1.1.8 | **Tubulação/Utilidades** | 18d | 2026-06-11 | 2026-07-06 |  |  | 3d |
| 133 | 1.1.8.1 | **CP-F0009-0306-MB-T-00001** | 17d | 2026-05-05 | 2026-05-27 |  |  | 29d |
| 134 |  | Emissão inicial | 7d | 2026-05-05 | 2026-05-13 | 20 |  | 35d |
| 135 |  | Análise Tecnored | 1d | 2026-05-22 | 2026-05-22 | 134, 9 |  | 29d |
| 136 |  | Atendimento de comentários | 2d | 2026-05-25 | 2026-05-26 | 135 |  | 29d |
| 137 |  | Aprovação | 1d | 2026-05-27 | 2026-05-27 | 136 |  | 29d |
| 138 | 1.1.8.2 | **MD-F0009-0306-MB-U-00001** | 7d | 2026-07-07 | 2026-07-15 |  |  | -4d |
| 139 |  | Emissão inicial | 3d | 2026-07-07 | 2026-07-09 | 183 |  | -4d |
| 140 |  | Análise Tecnored | 1d | 2026-07-10 | 2026-07-10 | 139 |  | -4d |

| ID | WBS | Task | Duration | Start | Finish | Predecessors | Total float |
| --- | --- | --- | --- | --- | --- | --- | --- |
| 141 |  | Atendimento de comentários | 2d | 2026-07-13 | 2026-07-14 | 140 | -4d |
| 142 |  | Aprovação | 1d | 2026-07-15 | 2026-07-15 | 141 | -4d |
| 143 | 1.1.8.3 | **ML-F0009-0306-MB-T-00001** | 7d | 2026-06-17 | 2026-06-25 |  | 3d |
| 144 |  | Emissão inicial | 3d | 2026-06-17 | 2026-06-19 | 118FS+9d | 3d |
| 145 |  | Análise Tecnored | 1d | 2026-06-22 | 2026-06-22 | 144 | 3d |
| 146 |  | Atendimento de comentários | 2d | 2026-06-23 | 2026-06-24 | 145 | 3d |
| 147 |  | Aprovação | 1d | 2026-06-25 | 2026-06-25 | 146 | 3d |
| 148 | 1.1.8.4 | **ET-F0009-0306-MB-T-00001** | 7d | 2026-06-25 | 2026-07-03 |  | 4d |
| 149 |  | Emissão inicial | 3d | 2026-06-25 | 2026-06-29 | 154 | 4d |
| 150 |  | Análise Tecnored | 1d | 2026-06-30 | 2026-06-30 | 149 | 4d |
| 151 |  | Atendimento de comentários | 2d | 2026-07-01 | 2026-07-02 | 150 | 4d |
| 152 |  | Aprovação | 1d | 2026-07-03 | 2026-07-03 | 151 | 4d |
| 153 | 1.1.8.5 | **FD-F0009-0306-MB-T-00001** | 7d | 2026-06-22 | 2026-06-30 |  | 7d |
| 154 |  | Emissão inicial | 3d | 2026-06-22 | 2026-06-24 | 169, 57FS+3d | 7d |
| 155 |  | Análise Tecnored | 1d | 2026-06-25 | 2026-06-25 | 154 | 7d |
| 156 |  | Atendimento de comentários | 2d | 2026-06-26 | 2026-06-29 | 155 | 7d |
| 157 |  | Aprovação | 1d | 2026-06-30 | 2026-06-30 | 156 | 7d |
| 158 | 1.1.8.6 | **FD-F0009-0306-MB-T-00002** | 7d | 2026-06-22 | 2026-06-30 |  | 7d |
| 159 |  | Emissão inicial | 3d | 2026-06-22 | 2026-06-24 | 169 | 7d |
| 160 |  | Análise Tecnored | 1d | 2026-06-25 | 2026-06-25 | 159 | 7d |
| 161 |  | Atendimento de comentários | 2d | 2026-06-26 | 2026-06-29 | 160 | 7d |
| 162 |  | Aprovação | 1d | 2026-06-30 | 2026-06-30 | 161 | 7d |
| 163 | 1.1.8.7 | **PQ-F0009-0306-MB-T-00001** | 7d | 2026-06-23 | 2026-07-01 |  | 6d |
| 164 |  | Emissão inicial | 3d | 2026-06-23 | 2026-06-25 | 170 | 6d |
| 165 |  | Análise Tecnored | 1d | 2026-06-26 | 2026-06-26 | 164 | 6d |
| 166 |  | Atendimento de comentários | 2d | 2026-06-29 | 2026-06-30 | 165 | 6d |
| 167 |  | Aprovação | 1d | 2026-07-01 | 2026-07-01 | 166 | 6d |
| 168 | 1.1.8.8 | **MC-F0009-0306-MB-T-00001** | 7d | 2026-06-17 | 2026-06-25 |  | 3d |
| 169 |  | Emissão inicial | 3d | 2026-06-17 | 2026-06-19 | 118, 175 | 3d |
| 170 |  | Análise Tecnored | 1d | 2026-06-22 | 2026-06-22 | 169 | 3d |
| 171 |  | Atendimento de comentários | 2d | 2026-06-23 | 2026-06-24 | 170 | 3d |
| 172 |  | Aprovação | 1d | 2026-06-25 | 2026-06-25 | 171 | 3d |
| 173 | 1.1.8.9 | **FG-F0009-0306-MB-T-00001** | 7d | 2026-06-11 | 2026-06-19 |  | 3d |
| 174 |  | Emissão inicial | 3d | 2026-06-11 | 2026-06-15 | 57FS+3d | 3d |
| 175 |  | Análise Tecnored | 1d | 2026-06-16 | 2026-06-16 | 174 | 3d |
| 176 |  | Atendimento de comentários | 2d | 2026-06-17 | 2026-06-18 | 175 | 14d |
| 177 |  | Aprovação | 1d | 2026-06-19 | 2026-06-19 | 176 | 14d |
| 178 | 1.1.8.10 | **FG-F0009-0306-MB-T-00002** | 14d | 2026-06-08 | 2026-06-25 |  | 10d |
| 179 |  | Emissão inicial | 10d | 2026-06-08 | 2026-06-19 | 57 | 10d |
| 180 |  | Análise Tecnored | 1d | 2026-06-22 | 2026-06-22 | 179 | 10d |
| 181 |  | Atendimento de comentários | 2d | 2026-06-23 | 2026-06-24 | 180 | 10d |
| 182 |  | Aprovação | 1d | 2026-06-25 | 2026-06-25 | 181 | 10d |
| 183 | 1.1.8.11 | **AG-F0009-0306-MB-T-00001** | 7d | 2026-06-26 | 2026-07-06 |  | 3d |
| 184 |  | Emissão inicial | 3d | 2026-06-26 | 2026-06-30 | 147 | 3d |
| 185 |  | Análise Tecnored | 1d | 2026-07-01 | 2026-07-01 | 184 | 3d |
| 186 |  | Atendimento de comentários | 2d | 2026-07-02 | 2026-07-03 | 185 | 3d |
| 187 |  | Aprovação | 1d | 2026-07-06 | 2026-07-06 | 186 | 3d |
| 188 | 1.1.8.12 | **AG-F0009-0306-MB-T-00002** | 7d | 2026-06-26 | 2026-07-06 |  | 3d |
| 189 |  | Emissão inicial | 3d | 2026-06-26 | 2026-06-30 | 147 | 3d |
| 190 |  | Análise Tecnored | 1d | 2026-07-01 | 2026-07-01 | 189 | 3d |
| 191 |  | Atendimento de comentários | 2d | 2026-07-02 | 2026-07-03 | 190 | 3d |
| 192 |  | Aprovação | 1d | 2026-07-06 | 2026-07-06 | 191 | 3d |
| 193 | 1.1.8.13 | **AG-F0009-0306-MB-T-00003** | 7d | 2026-06-26 | 2026-07-06 |  | 3d |
| 194 |  | Emissão inicial | 3d | 2026-06-26 | 2026-06-30 | 147 | 3d |
| 195 |  | Análise Tecnored | 1d | 2026-07-01 | 2026-07-01 | 194 | 3d |
| 196 |  | Atendimento de comentários | 2d | 2026-07-02 | 2026-07-03 | 195 | 3d |
| 197 |  | Aprovação | 1d | 2026-07-06 | 2026-07-06 | 196 | 3d |
| 198 | 1.1.8.14 | **AG-F0009-0306-MB-T-00004** | 7d | 2026-06-09 | 2026-06-17 |  | 16d |
| 199 |  | Emissão inicial | 3d | 2026-06-09 | 2026-06-11 | 120 | 16d |
| 200 |  | Análise Tecnored | 1d | 2026-06-12 | 2026-06-12 | 199 | 16d |
| 201 |  | Atendimento de comentários | 2d | 2026-06-15 | 2026-06-16 | 200 | 16d |
| 202 |  | Aprovação | 1d | 2026-06-17 | 2026-06-17 | 201 | 16d |
| 203 | 1.1.8.15 | **AG-F0009-0306-MB-T-00005** | 7d | 2026-06-09 | 2026-06-17 |  | 16d |
| 204 |  | Emissão inicial | 3d | 2026-06-09 | 2026-06-11 | 120 | 16d |
| 205 |  | Análise Tecnored | 1d | 2026-06-12 | 2026-06-12 | 204 | 16d |
| 206 |  | Atendimento de comentários | 2d | 2026-06-15 | 2026-06-16 | 205 | 16d |
| 207 |  | Aprovação | 1d | 2026-06-17 | 2026-06-17 | 206 | 16d |
| 208 | 1.1.8.16 | **AG-F0009-0306-MB-T-00006** | 7d | 2026-06-09 | 2026-06-17 |  | 16d |
| 209 |  | Emissão inicial | 3d | 2026-06-09 | 2026-06-11 | 120 | 16d |
| 210 |  | Análise Tecnored | 1d | 2026-06-12 | 2026-06-12 | 209 | 16d |

| ID | WBS | Task | Duration | Start | Finish | Predecessors | Complete | Total float |
| --- | --- | --- | --- | --- | --- | --- | --- | --- |
| 211 |  | Atendimento de comentários | 2d | 2026-06-15 | 2026-06-16 | 210 |  | 16d |
| 212 |  | Aprovação | 1d | 2026-06-17 | 2026-06-17 | 211 |  | 16d |
| 213 | 1.1.8.17 | **LK-F0009-0306-MB-T-00001** | 7d | 2026-06-26 | 2026-07-06 |  |  | 3d |
| 214 |  | Emissão inicial | 3d | 2026-06-26 | 2026-06-30 | 172 |  | 3d |
| 215 |  | Análise Tecnored | 1d | 2026-07-01 | 2026-07-01 | 214 |  | 3d |
| 216 |  | Atendimento de comentários | 2d | 2026-07-02 | 2026-07-03 | 215 |  | 3d |
| 217 |  | Aprovação | 1d | 2026-07-06 | 2026-07-06 | 216 |  | 3d |
| 218 | 1.1.8.18 | **MC-F0009-0306-MB-T-00002** | 14d | 2026-06-02 | 2026-06-23 |  |  | 12d |
| 219 |  | Emissão inicial | 10d | 2026-06-02 | 2026-06-17 | 118 |  | 12d |
| 220 |  | Análise Tecnored | 1d | 2026-06-18 | 2026-06-18 | 219 |  | 12d |
| 221 |  | Atendimento de comentários | 2d | 2026-06-19 | 2026-06-22 | 220 |  | 12d |
| 222 |  | Aprovação | 1d | 2026-06-23 | 2026-06-23 | 221 |  | 12d |
| 223 | 1.1.9 | **Estrutura metálica** | 19d | 2026-06-15 | 2026-07-09 |  |  | 0d |
| 224 | 1.1.9.1 | **CP-F0009-0306-MB-S-00001** | 12d | 2026-06-08 | 2026-06-23 |  |  | 12d |
| 225 |  | Emissão inicial | 8d | 2026-06-08 | 2026-06-17 | 20, 10 |  | 12d |
| 226 |  | Análise Tecnored | 1d | 2026-06-18 | 2026-06-18 | 225 |  | 12d |
| 227 |  | Atendimento de comentários | 2d | 2026-06-19 | 2026-06-22 | 226 |  | 12d |
| 228 |  | Aprovação | 1d | 2026-06-23 | 2026-06-23 | 227 |  | 12d |
| 229 | 1.1.9.2 | **ML-F0009-0306-MB-S-00001** | 9d | 2026-06-15 | 2026-06-25 |  |  | 0d |
| 230 |  | Emissão inicial | 5d | 2026-06-15 | 2026-06-19 | 245FS-3d |  | 0d |
| 231 |  | Análise Tecnored | 1d | 2026-06-22 | 2026-06-22 | 230 |  | 0d |
| 232 |  | Atendimento de comentários | 2d | 2026-06-23 | 2026-06-24 | 231 |  | 0d |
| 233 |  | Aprovação | 1d | 2026-06-25 | 2026-06-25 | 232 |  | 0d |
| 234 | 1.1.9.3 | **PQ-F0009-0306-MB-S-00001** | 7d | 2026-07-01 | 2026-07-09 |  |  | 0d |
| 235 |  | Emissão inicial | 3d | 2026-07-01 | 2026-07-03 | 240 |  | 0d |
| 236 |  | Análise Tecnored | 1d | 2026-07-06 | 2026-07-06 | 235 |  | 0d |
| 237 |  | Atendimento de comentários | 2d | 2026-07-07 | 2026-07-08 | 236 |  | 0d |
| 238 |  | Aprovação | 1d | 2026-07-09 | 2026-07-09 | 237 |  | 0d |
| 239 | 1.1.9.4 | **LM-F0009-0306-MB-S-00001** | 7d | 2026-06-26 | 2026-07-06 |  |  | 0d |
| 240 |  | Emissão inicial | 3d | 2026-06-26 | 2026-06-30 | 233 |  | 0d |
| 241 |  | Análise Tecnored | 1d | 2026-07-01 | 2026-07-01 | 240 |  | 3d |
| 242 |  | Atendimento de comentários | 2d | 2026-07-02 | 2026-07-03 | 241 |  | 3d |
| 243 |  | Aprovação | 1d | 2026-07-06 | 2026-07-06 | 242 |  | 3d |
| 244 | 1.1.9.5 | **MC-F0009-0306-MB-S-00001** | 7d | 2026-06-15 | 2026-06-23 |  |  | 0d |
| 245 |  | Emissão inicial | 3d | 2026-06-15 | 2026-06-17 | 114 |  | 0d |
| 246 |  | Análise Tecnored | 1d | 2026-06-18 | 2026-06-18 | 245 |  | 12d |
| 247 |  | Atendimento de comentários | 2d | 2026-06-19 | 2026-06-22 | 246 |  | 12d |
| 248 |  | Aprovação | 1d | 2026-06-23 | 2026-06-23 | 247 |  | 12d |
| 249 | 1.1.9.6 | **AG-F0009-0306-MB-S-00001** | 9d | 2026-06-25 | 2026-07-07 |  |  | 2d |
| 250 |  | Emissão inicial | 5d | 2026-06-25 | 2026-07-01 | 232 |  | 2d |
| 251 |  | Análise Tecnored | 1d | 2026-07-02 | 2026-07-02 | 250 |  | 2d |
| 252 |  | Atendimento de comentários | 2d | 2026-07-03 | 2026-07-06 | 251 |  | 2d |
| 253 |  | Aprovação | 1d | 2026-07-07 | 2026-07-07 | 252 |  | 2d |
| 254 | 1.1.9.7 | **AG-F0009-0306-MB-S-00002** | 9d | 2026-06-25 | 2026-07-07 |  |  | 2d |
| 255 |  | Emissão inicial | 5d | 2026-06-25 | 2026-07-01 | 232 |  | 2d |
| 256 |  | Análise Tecnored | 1d | 2026-07-02 | 2026-07-02 | 255 |  | 2d |
| 257 |  | Atendimento de comentários | 2d | 2026-07-03 | 2026-07-06 | 256 |  | 2d |
| 258 |  | Aprovação | 1d | 2026-07-07 | 2026-07-07 | 257 |  | 2d |
| 259 | 1.1.9.8 | **AG-F0009-0306-MB-S-00003** | 9d | 2026-06-25 | 2026-07-07 |  |  | 2d |
| 260 |  | Emissão inicial | 5d | 2026-06-25 | 2026-07-01 | 232 |  | 2d |
| 261 |  | Análise Tecnored | 1d | 2026-07-02 | 2026-07-02 | 260 |  | 2d |
| 262 |  | Atendimento de comentários | 2d | 2026-07-03 | 2026-07-06 | 261 |  | 2d |
| 263 |  | Aprovação | 1d | 2026-07-07 | 2026-07-07 | 262 |  | 2d |
| 264 | 1.1.9.9 | **AG-F0009-0306-MB-S-00004** | 9d | 2026-06-25 | 2026-07-07 |  |  | 2d |
| 265 |  | Emissão inicial | 5d | 2026-06-25 | 2026-07-01 | 232 |  | 2d |
| 266 |  | Análise Tecnored | 1d | 2026-07-02 | 2026-07-02 | 265 |  | 2d |
| 267 |  | Atendimento de comentários | 2d | 2026-07-03 | 2026-07-06 | 266 |  | 2d |
| 268 |  | Aprovação | 1d | 2026-07-07 | 2026-07-07 | 267 |  | 2d |
| 269 | 1.1.9.10 | **AG-F0009-0306-MB-S-00005** | 9d | 2026-06-25 | 2026-07-07 |  |  | 2d |
| 270 |  | Emissão inicial | 5d | 2026-06-25 | 2026-07-01 | 232 |  | 2d |
| 271 |  | Análise Tecnored | 1d | 2026-07-02 | 2026-07-02 | 270 |  | 2d |
| 272 |  | Atendimento de comentários | 2d | 2026-07-03 | 2026-07-06 | 271 |  | 2d |
| 273 |  | Aprovação | 1d | 2026-07-07 | 2026-07-07 | 272 |  | 2d |
| 274 | 1.1.9.11 | **PL-F0009-0306-MB-S-00001** | 9d | 2026-06-25 | 2026-07-07 |  |  | 2d |
| 275 |  | Emissão inicial | 5d | 2026-06-25 | 2026-07-01 | 232 |  | 2d |
| 276 |  | Análise Tecnored | 1d | 2026-07-02 | 2026-07-02 | 275 |  | 2d |
| 277 |  | Atendimento de comentários | 2d | 2026-07-03 | 2026-07-06 | 276 |  | 2d |
| 278 |  | Aprovação | 1d | 2026-07-07 | 2026-07-07 | 277 |  | 2d |
| 279 | 1.1.10 | **Elétrica** | 28d | 2026-05-28 A | 2026-07-08 |  | 2% | 1d |
| 280 | 1.1.10.1 | **CP-F0009-0306-MB-E-00001** | 26d | 2026-05-05 | 2026-06-11 |  |  | 20d |

| ID | WBS | Task | Duration | Start | Finish | Predecessors | Complete | Total float |
| --- | --- | --- | --- | --- | --- | --- | --- | --- |
| 281 |  | Emissão inicial | 7d | 2026-05-05 | 2026-05-13 | 20 |  | 35d |
| 282 |  | Análise Tecnored | 1d | 2026-06-08 | 2026-06-08 | 281, 7 |  | 20d |
| 283 |  | Atendimento de comentários | 2d | 2026-06-09 | 2026-06-10 | 282 |  | 20d |
| 284 |  | Aprovação | 1d | 2026-06-11 | 2026-06-11 | 283 |  | 20d |
| 285 | 1.1.10.2 | **ML-F0009-0306-MB-E-00001** | 9d | 2026-06-09 | 2026-06-19 |  |  | 5d |
| 286 |  | Emissão inicial | 5d | 2026-06-09 | 2026-06-15 | 120 |  | 5d |
| 287 |  | Análise Tecnored | 1d | 2026-06-16 | 2026-06-16 | 286 |  | 14d |
| 288 |  | Atendimento de comentários | 2d | 2026-06-17 | 2026-06-18 | 287 |  | 14d |
| 289 |  | Aprovação | 1d | 2026-06-19 | 2026-06-19 | 288 |  | 14d |
| 290 | 1.1.10.3 | **RL-F0009-0306-MB-E-00001** | 7d | 2026-06-02 | 2026-06-12 |  |  | 1d |
| 291 |  | Emissão inicial | 3d | 2026-06-02 | 2026-06-08 | 301 |  | 1d |
| 292 |  | Análise Tecnored | 1d | 2026-06-09 | 2026-06-09 | 291 |  | 19d |
| 293 |  | Atendimento de comentários | 2d | 2026-06-10 | 2026-06-11 | 292 |  | 19d |
| 294 |  | Aprovação | 1d | 2026-06-12 | 2026-06-12 | 293 |  | 19d |
| 295 | 1.1.10.4 | **LE-F0009-0306-MB-E-00001** | 7d | 2026-06-26 | 2026-07-06 |  |  | 3d |
| 296 |  | Emissão inicial | 3d | 2026-06-26 | 2026-06-30 | 321, 326 |  | 3d |
| 297 |  | Análise Tecnored | 1d | 2026-07-01 | 2026-07-01 | 296 |  | 3d |
| 298 |  | Atendimento de comentários | 2d | 2026-07-02 | 2026-07-03 | 297 |  | 3d |
| 299 |  | Aprovação | 1d | 2026-07-06 | 2026-07-06 | 298 |  | 3d |
| 300 | 1.1.10.5 | **LR-F0009-0306-MB-E-00001** | 7d | 2026-05-28 A | 2026-06-09 |  | 43% | 22d |
| 301 |  | Emissão inicial | 3d | 2026-05-28 A | 2026-06-01 A | 73 | 100% |  |
| 302 |  | Análise Tecnored | 1d | 2026-06-02 | 2026-06-02 | 301 |  | 22d |
| 303 |  | Atendimento de comentários | 2d | 2026-06-03 | 2026-06-08 | 302 |  | 22d |
| 304 |  | Aprovação | 1d | 2026-06-09 | 2026-06-09 | 303 |  | 22d |
| 305 | 1.1.10.6 | **LM-F0009-0306-MB-E-00001** | 5d | 2026-06-23 | 2026-06-29 |  |  | 5d |
| 306 |  | Emissão inicial | 1d | 2026-06-23 | 2026-06-23 | 332 |  | 5d |
| 307 |  | Análise Tecnored | 1d | 2026-06-24 | 2026-06-24 | 306 |  | 8d |
| 308 |  | Atendimento de comentários | 2d | 2026-06-25 | 2026-06-26 | 307 |  | 8d |
| 309 |  | Aprovação | 1d | 2026-06-29 | 2026-06-29 | 308 |  | 8d |
| 310 | 1.1.10.7 | **PQ-F0009-0306-MB-E-00001** | 7d | 2026-06-24 | 2026-07-02 |  |  | 5d |
| 311 |  | Emissão inicial | 3d | 2026-06-24 | 2026-06-26 | 306 |  | 5d |
| 312 |  | Análise Tecnored | 1d | 2026-06-29 | 2026-06-29 | 311 |  | 5d |
| 313 |  | Atendimento de comentários | 2d | 2026-06-30 | 2026-07-01 | 312 |  | 5d |
| 314 |  | Aprovação | 1d | 2026-07-02 | 2026-07-02 | 313 |  | 5d |
| 315 | 1.1.10.8 | **MD-F0009-0306-MB-E-00001** | 6d | 2026-06-24 | 2026-07-01 |  |  | 6d |
| 316 |  | Emissão inicial | 2d | 2026-06-24 | 2026-06-25 | 306 |  | 6d |
| 317 |  | Análise Tecnored | 1d | 2026-06-26 | 2026-06-26 | 316 |  | 6d |
| 318 |  | Atendimento de comentários | 2d | 2026-06-29 | 2026-06-30 | 317 |  | 6d |
| 319 |  | Aprovação | 1d | 2026-07-01 | 2026-07-01 | 318 |  | 6d |
| 320 | 1.1.10.9 | **MC-F0009-0306-MB-E-00001** | 9d | 2026-06-19 | 2026-07-01 |  |  | 3d |
| 321 |  | Emissão inicial | 5d | 2026-06-19 | 2026-06-25 | 386 |  | 3d |
| 322 |  | Análise Tecnored | 1d | 2026-06-26 | 2026-06-26 | 321 |  | 6d |
| 323 |  | Atendimento de comentários | 2d | 2026-06-29 | 2026-06-30 | 322 |  | 6d |
| 324 |  | Aprovação | 1d | 2026-07-01 | 2026-07-01 | 323 |  | 6d |
| 325 | 1.1.10.10 | **MC-F0009-0306-MB-E-00002** | 9d | 2026-06-19 | 2026-07-01 |  |  | 1d |
| 326 |  | Emissão inicial | 5d | 2026-06-19 | 2026-06-25 | 386 |  | 1d |
| 327 |  | Análise Tecnored | 1d | 2026-06-26 | 2026-06-26 | 326 |  | 6d |
| 328 |  | Atendimento de comentários | 2d | 2026-06-29 | 2026-06-30 | 327 |  | 6d |
| 329 |  | Aprovação | 1d | 2026-07-01 | 2026-07-01 | 328 |  | 6d |
| 330 | 1.1.10.11 | **AG-F0009-0306-MB-E-00001** | 8d | 2026-06-16 | 2026-06-25 |  |  | 5d |
| 331 |  | Emissão inicial | 4d | 2026-06-16 | 2026-06-19 | 286 |  | 5d |
| 332 |  | Análise Tecnored | 1d | 2026-06-22 | 2026-06-22 | 331 |  | 5d |
| 333 |  | Atendimento de comentários | 2d | 2026-06-23 | 2026-06-24 | 332 |  | 10d |
| 334 |  | Aprovação | 1d | 2026-06-25 | 2026-06-25 | 333 |  | 10d |
| 335 | 1.1.10.12 | **DU-F0009-0306-MB-E-00001** | 7d | 2026-06-09 | 2026-06-17 |  |  | 1d |
| 336 |  | Emissão inicial | 3d | 2026-06-09 | 2026-06-11 | 291 |  | 1d |
| 337 |  | Análise Tecnored | 1d | 2026-06-12 | 2026-06-12 | 336 |  | 16d |
| 338 |  | Atendimento de comentários | 2d | 2026-06-15 | 2026-06-16 | 337 |  | 16d |
| 339 |  | Aprovação | 1d | 2026-06-17 | 2026-06-17 | 338 |  | 16d |
| 340 | 1.1.10.13 | **DU-F0009-0306-MB-E-00002** | 6d | 2026-06-26 | 2026-07-03 |  |  | 4d |
| 341 |  | Emissão inicial | 2d | 2026-06-26 | 2026-06-29 | 326 |  | 4d |
| 342 |  | Análise Tecnored | 1d | 2026-06-30 | 2026-06-30 | 341 |  | 4d |
| 343 |  | Atendimento de comentários | 2d | 2026-07-01 | 2026-07-02 | 342 |  | 4d |
| 344 |  | Aprovação | 1d | 2026-07-03 | 2026-07-03 | 343 |  | 4d |
| 345 | 1.1.10.14 | **DU-F0009-0306-MB-E-00003** | 9d | 2026-06-26 | 2026-07-08 |  |  | 1d |
| 346 |  | Emissão inicial | 5d | 2026-06-26 | 2026-07-02 | 326 |  | 1d |
| 347 |  | Análise Tecnored | 1d | 2026-07-03 | 2026-07-03 | 346 |  | 1d |
| 348 |  | Atendimento de comentários | 2d | 2026-07-06 | 2026-07-07 | 347 |  | 1d |
| 349 |  | Aprovação | 1d | 2026-07-08 | 2026-07-08 | 348 |  | 1d |
| 350 | 1.1.10.15 | **DU-F0009-0306-MB-E-00004** | 17d | 2026-06-09 | 2026-07-01 |  |  | 6d |

| ID | WBS | Task | Duration | Start | Finish | Predecessors | Total float |
| --- | --- | --- | --- | --- | --- | --- | --- |
| 351 |  | Emissão inicial | 5d | 2026-06-09 | 2026-06-15 | 291 | 18d |
| 352 |  | Análise Tecnored | 1d | 2026-06-26 | 2026-06-26 | 326 | 6d |
| 353 |  | Atendimento de comentários | 2d | 2026-06-29 | 2026-06-30 | 352 | 6d |
| 354 |  | Aprovação | 1d | 2026-07-01 | 2026-07-01 | 353 | 6d |
| 355 | 1.1.10.16 | **AG-F0009-0306-MB-E-00002** | 8d | 2026-06-16 | 2026-06-25 |  | 10d |
| 356 |  | Emissão inicial | 4d | 2026-06-16 | 2026-06-19 | 286 | 10d |
| 357 |  | Análise Tecnored | 1d | 2026-06-22 | 2026-06-22 | 356 | 10d |
| 358 |  | Atendimento de comentários | 2d | 2026-06-23 | 2026-06-24 | 357 | 10d |
| 359 |  | Aprovação | 1d | 2026-06-25 | 2026-06-25 | 358 | 10d |
| 360 | 1.1.10.17 | **AG-F0009-0306-MB-E-00003** | 8d | 2026-06-16 | 2026-06-25 |  | 10d |
| 361 |  | Emissão inicial | 4d | 2026-06-16 | 2026-06-19 | 286 | 10d |
| 362 |  | Análise Tecnored | 1d | 2026-06-22 | 2026-06-22 | 361 | 10d |
| 363 |  | Atendimento de comentários | 2d | 2026-06-23 | 2026-06-24 | 362 | 10d |
| 364 |  | Aprovação | 1d | 2026-06-25 | 2026-06-25 | 363 | 10d |
| 365 | 1.1.10.18 | **FD-F0009-0306-MB-E-00001** | 9d | 2026-06-12 | 2026-06-24 |  | 11d |
| 366 |  | Emissão inicial | 5d | 2026-06-12 | 2026-06-18 | 336 | 11d |
| 367 |  | Análise Tecnored | 1d | 2026-06-19 | 2026-06-19 | 366 | 11d |
| 368 |  | Atendimento de comentários | 2d | 2026-06-22 | 2026-06-23 | 367 | 11d |
| 369 |  | Aprovação | 1d | 2026-06-24 | 2026-06-24 | 368 | 11d |
| 370 | 1.1.10.19 | **FD-F0009-0306-MB-E-00002** | 9d | 2026-06-12 | 2026-06-24 |  | 11d |
| 371 |  | Emissão inicial | 5d | 2026-06-12 | 2026-06-18 | 336 | 11d |
| 372 |  | Análise Tecnored | 1d | 2026-06-19 | 2026-06-19 | 371 | 11d |
| 373 |  | Atendimento de comentários | 2d | 2026-06-22 | 2026-06-23 | 372 | 11d |
| 374 |  | Aprovação | 1d | 2026-06-24 | 2026-06-24 | 373 | 11d |
| 375 | 1.1.10.20 | **FD-F0009-0306-MB-E-00003** | 9d | 2026-06-12 | 2026-06-24 |  | 11d |
| 376 |  | Emissão inicial | 5d | 2026-06-12 | 2026-06-18 | 336 | 11d |
| 377 |  | Análise Tecnored | 1d | 2026-06-19 | 2026-06-19 | 376 | 11d |
| 378 |  | Atendimento de comentários | 2d | 2026-06-22 | 2026-06-23 | 377 | 11d |
| 379 |  | Aprovação | 1d | 2026-06-24 | 2026-06-24 | 378 | 11d |
| 380 | 1.1.10.21 | **FD-F0009-0306-MB-E-00004** | 9d | 2026-06-12 | 2026-06-24 |  | 11d |
| 381 |  | Emissão inicial | 5d | 2026-06-12 | 2026-06-18 | 336 | 11d |
| 382 |  | Análise Tecnored | 1d | 2026-06-19 | 2026-06-19 | 381 | 11d |
| 383 |  | Atendimento de comentários | 2d | 2026-06-22 | 2026-06-23 | 382 | 11d |
| 384 |  | Aprovação | 1d | 2026-06-24 | 2026-06-24 | 383 | 11d |
| 385 | 1.1.10.22 | **FD-F0009-0306-MB-E-00005** | 9d | 2026-06-12 | 2026-06-24 |  | 1d |
| 386 |  | Emissão inicial | 5d | 2026-06-12 | 2026-06-18 | 336 | 1d |
| 387 |  | Análise Tecnored | 1d | 2026-06-19 | 2026-06-19 | 386 | 11d |
| 388 |  | Atendimento de comentários | 2d | 2026-06-22 | 2026-06-23 | 387 | 11d |
| 389 |  | Aprovação | 1d | 2026-06-24 | 2026-06-24 | 388 | 11d |
| 390 | 1.1.11 | **Automação e instrumentação** | 27d | 2026-05-29 | 2026-07-08 |  | 1d |
| 391 | 1.1.11.1 | **CP-F0009-0306-MB-J-00001** | 26d | 2026-05-05 | 2026-06-11 |  | 20d |
| 392 |  | Emissão inicial | 7d | 2026-05-05 | 2026-05-13 | 20 | 35d |
| 393 |  | Análise Tecnored | 1d | 2026-06-08 | 2026-06-08 | 392, 8 | 20d |
| 394 |  | Atendimento de comentários | 2d | 2026-06-09 | 2026-06-10 | 393 | 20d |
| 395 |  | Aprovação | 1d | 2026-06-11 | 2026-06-11 | 394 | 20d |
| 396 | 1.1.11.2 | **LI-F0009-0306-MB-J-00001** | 7d | 2026-06-03 | 2026-06-15 |  | 1d |
| 397 |  | Emissão inicial | 3d | 2026-06-03 | 2026-06-09 | 427 | 1d |
| 398 |  | Análise Tecnored | 1d | 2026-06-10 | 2026-06-10 | 397 | 18d |
| 399 |  | Atendimento de comentários | 2d | 2026-06-11 | 2026-06-12 | 398 | 18d |
| 400 |  | Aprovação | 1d | 2026-06-15 | 2026-06-15 | 399 | 18d |
| 401 | 1.1.11.3 | **LE-F0009-0306-MB-J-00001** | 6d | 2026-06-26 | 2026-07-03 |  | 4d |
| 402 |  | Emissão inicial | 2d | 2026-06-26 | 2026-06-29 | 477 | 4d |
| 403 |  | Análise Tecnored | 1d | 2026-06-30 | 2026-06-30 | 402 | 4d |
| 404 |  | Atendimento de comentários | 2d | 2026-07-01 | 2026-07-02 | 403 | 4d |
| 405 |  | Aprovação | 1d | 2026-07-03 | 2026-07-03 | 404 | 4d |
| 406 | 1.1.11.4 | **LZ-F0009-0306-MB-J-00001** | 6d | 2026-06-22 | 2026-06-29 |  | 1d |
| 407 |  | Emissão inicial | 2d | 2026-06-22 | 2026-06-23 | 457FS-5d | 1d |
| 408 |  | Análise Tecnored | 1d | 2026-06-24 | 2026-06-24 | 407 | 8d |
| 409 |  | Atendimento de comentários | 2d | 2026-06-25 | 2026-06-26 | 408 | 8d |
| 410 |  | Aprovação | 1d | 2026-06-29 | 2026-06-29 | 409 | 8d |
| 411 | 1.1.11.5 | **LE-F0009-0306-MB-J-00002** | 7d | 2026-06-22 | 2026-06-30 |  | 7d |
| 412 |  | Emissão inicial | 3d | 2026-06-22 | 2026-06-24 | 477FS-4d | 7d |
| 413 |  | Análise Tecnored | 1d | 2026-06-25 | 2026-06-25 | 412 | 7d |
| 414 |  | Atendimento de comentários | 2d | 2026-06-26 | 2026-06-29 | 413 | 7d |
| 415 |  | Aprovação | 1d | 2026-06-30 | 2026-06-30 | 414 | 7d |
| 416 | 1.1.11.6 | **PQ-F0009-0306-MB-J-00001** | 5d | 2026-06-23 | 2026-06-29 |  | 8d |
| 417 |  | Emissão inicial | 1d | 2026-06-23 | 2026-06-23 | 472FS-5d | 8d |
| 418 |  | Análise Tecnored | 1d | 2026-06-24 | 2026-06-24 | 417 | 8d |
| 419 |  | Atendimento de comentários | 2d | 2026-06-25 | 2026-06-26 | 418 | 8d |
| 420 |  | Aprovação | 1d | 2026-06-29 | 2026-06-29 | 419 | 8d |

| ID | WBS | Task | Duration | Start | Finish | Predecessors | Total float |
| --- | --- | --- | --- | --- | --- | --- | --- |
| 421 | 1.1.11.7 | **FG-F0009-0306-MB-J-00001** | 9d | 2026-05-29 | 2026-06-12 |  | 19d |
| 422 |  | Emissão inicial | 5d | 2026-05-29 | 2026-06-08 | 57FS-4d | 19d |
| 423 |  | Análise Tecnored | 1d | 2026-06-09 | 2026-06-09 | 422 | 19d |
| 424 |  | Atendimento de comentários | 2d | 2026-06-10 | 2026-06-11 | 423 | 19d |
| 425 |  | Aprovação | 1d | 2026-06-12 | 2026-06-12 | 424 | 19d |
| 426 | 1.1.11.8 | **FG-F0009-0306-MB-J-00002** | 7d | 2026-05-29 | 2026-06-10 |  | 1d |
| 427 |  | Emissão inicial | 3d | 2026-05-29 | 2026-06-02 | 57FS-4d | 1d |
| 428 |  | Análise Tecnored | 1d | 2026-06-03 | 2026-06-03 | 427 | 21d |
| 429 |  | Atendimento de comentários | 2d | 2026-06-08 | 2026-06-09 | 428 | 21d |
| 430 |  | Aprovação | 1d | 2026-06-10 | 2026-06-10 | 429 | 21d |
| 431 | 1.1.11.9 | **FG-F0009-0306-MB-J-00003** | 9d | 2026-05-29 | 2026-06-12 |  | 19d |
| 432 |  | Emissão inicial | 5d | 2026-05-29 | 2026-06-08 | 57FS-4d | 19d |
| 433 |  | Análise Tecnored | 1d | 2026-06-09 | 2026-06-09 | 432 | 19d |
| 434 |  | Atendimento de comentários | 2d | 2026-06-10 | 2026-06-11 | 433 | 19d |
| 435 |  | Aprovação | 1d | 2026-06-12 | 2026-06-12 | 434 | 19d |
| 436 | 1.1.11.10 | **AG-F0009-0306-MB-J-00001** | 14d | 2026-06-10 | 2026-06-29 |  | 8d |
| 437 |  | Emissão inicial | 10d | 2026-06-10 | 2026-06-23 | 397 | 8d |
| 438 |  | Análise Tecnored | 1d | 2026-06-24 | 2026-06-24 | 437 | 8d |
| 439 |  | Atendimento de comentários | 2d | 2026-06-25 | 2026-06-26 | 438 | 8d |
| 440 |  | Aprovação | 1d | 2026-06-29 | 2026-06-29 | 439 | 8d |
| 441 | 1.1.11.11 | **AG-F0009-0306-MB-J-00002** | 14d | 2026-06-10 | 2026-06-29 |  | 8d |
| 442 |  | Emissão inicial | 10d | 2026-06-10 | 2026-06-23 | 397 | 8d |
| 443 |  | Análise Tecnored | 1d | 2026-06-24 | 2026-06-24 | 442 | 8d |
| 444 |  | Atendimento de comentários | 2d | 2026-06-25 | 2026-06-26 | 443 | 8d |
| 445 |  | Aprovação | 1d | 2026-06-29 | 2026-06-29 | 444 | 8d |
| 446 | 1.1.11.12 | **AG-F0009-0306-MB-J-00003** | 14d | 2026-06-10 | 2026-06-29 |  | 1d |
| 447 |  | Emissão inicial | 10d | 2026-06-10 | 2026-06-23 | 397 | 1d |
| 448 |  | Análise Tecnored | 1d | 2026-06-24 | 2026-06-24 | 447 | 8d |
| 449 |  | Atendimento de comentários | 2d | 2026-06-25 | 2026-06-26 | 448 | 8d |
| 450 |  | Aprovação | 1d | 2026-06-29 | 2026-06-29 | 449 | 8d |
| 451 | 1.1.11.13 | **AG-F0009-0306-MB-J-00004** | 14d | 2026-06-10 | 2026-06-29 |  | 8d |
| 452 |  | Emissão inicial | 10d | 2026-06-10 | 2026-06-23 | 397 | 8d |
| 453 |  | Análise Tecnored | 1d | 2026-06-24 | 2026-06-24 | 452 | 8d |
| 454 |  | Atendimento de comentários | 2d | 2026-06-25 | 2026-06-26 | 453 | 8d |
| 455 |  | Aprovação | 1d | 2026-06-29 | 2026-06-29 | 454 | 8d |
| 456 | 1.1.11.14 | **DI-F0009-0306-MB-J-00001** | 7d | 2026-06-24 | 2026-07-02 |  | 1d |
| 457 |  | Emissão inicial | 3d | 2026-06-24 | 2026-06-26 | 447 | 1d |
| 458 |  | Análise Tecnored | 1d | 2026-06-29 | 2026-06-29 | 457 | 5d |
| 459 |  | Atendimento de comentários | 2d | 2026-06-30 | 2026-07-01 | 458 | 5d |
| 460 |  | Aprovação | 1d | 2026-07-02 | 2026-07-02 | 459 | 5d |
| 461 | 1.1.11.15 | **LI-F0009-0306-MB-J-00002** | 7d | 2026-06-26 | 2026-07-06 |  | 3d |
| 462 |  | Emissão inicial | 3d | 2026-06-26 | 2026-06-30 | 477 | 3d |
| 463 |  | Análise Tecnored | 1d | 2026-07-01 | 2026-07-01 | 462 | 3d |
| 464 |  | Atendimento de comentários | 2d | 2026-07-02 | 2026-07-03 | 463 | 3d |
| 465 |  | Aprovação | 1d | 2026-07-06 | 2026-07-06 | 464 | 3d |
| 466 | 1.1.11.16 | **LI-F0009-0306-MB-J-00003** | 6d | 2026-06-26 | 2026-07-03 |  | 1d |
| 467 |  | Emissão inicial | 2d | 2026-06-26 | 2026-06-29 | 477 | 1d |
| 468 |  | Análise Tecnored | 1d | 2026-06-30 | 2026-06-30 | 467 | 4d |
| 469 |  | Atendimento de comentários | 2d | 2026-07-01 | 2026-07-02 | 468 | 4d |
| 470 |  | Aprovação | 1d | 2026-07-03 | 2026-07-03 | 469 | 4d |
| 471 | 1.1.11.17 | **LM-F0009-0306-MB-J-00001** | 6d | 2026-06-26 | 2026-07-03 |  | 4d |
| 472 |  | Emissão inicial | 2d | 2026-06-26 | 2026-06-29 | 562FS-5d | 4d |
| 473 |  | Análise Tecnored | 1d | 2026-06-30 | 2026-06-30 | 472 | 4d |
| 474 |  | Atendimento de comentários | 2d | 2026-07-01 | 2026-07-02 | 473 | 4d |
| 475 |  | Aprovação | 1d | 2026-07-03 | 2026-07-03 | 474 | 4d |
| 476 | 1.1.11.18 | **ET-F0009-0306-MB-J-00001** | 6d | 2026-06-24 | 2026-07-01 |  | 1d |
| 477 |  | Emissão inicial | 2d | 2026-06-24 | 2026-06-25 | 407 | 1d |
| 478 |  | Análise Tecnored | 1d | 2026-06-26 | 2026-06-26 | 477 | 6d |
| 479 |  | Atendimento de comentários | 2d | 2026-06-29 | 2026-06-30 | 478 | 6d |
| 480 |  | Aprovação | 1d | 2026-07-01 | 2026-07-01 | 479 | 6d |
| 481 | 1.1.11.19 | **FD-F0009-0306-MB-J-00001** | 11d | 2026-06-24 | 2026-07-08 |  | 1d |
| 482 |  | Emissão inicial | 7d | 2026-06-24 | 2026-07-02 | 407 | 1d |
| 483 |  | Análise Tecnored | 1d | 2026-07-03 | 2026-07-03 | 482 | 1d |
| 484 |  | Atendimento de comentários | 2d | 2026-07-06 | 2026-07-07 | 483 | 1d |
| 485 |  | Aprovação | 1d | 2026-07-08 | 2026-07-08 | 484 | 1d |
| 486 | 1.1.11.20 | **FD-F0009-0306-MB-J-00002** | 11d | 2026-06-24 | 2026-07-08 |  | 1d |
| 487 |  | Emissão inicial | 7d | 2026-06-24 | 2026-07-02 | 407 | 1d |
| 488 |  | Análise Tecnored | 1d | 2026-07-03 | 2026-07-03 | 487 | 1d |
| 489 |  | Atendimento de comentários | 2d | 2026-07-06 | 2026-07-07 | 488 | 1d |
| 490 |  | Aprovação | 1d | 2026-07-08 | 2026-07-08 | 489 | 1d |

| ID | WBS | Task | Duration | Start | Finish | Predecessors | Total float |
| --- | --- | --- | --- | --- | --- | --- | --- |
| 491 | 1.1.11.21 | **FD-F0009-0306-MB-J-00003** | 11d | 2026-06-24 | 2026-07-08 |  | 1d |
| 492 |  | Emissão inicial | 7d | 2026-06-24 | 2026-07-02 | 407 | 1d |
| 493 |  | Análise Tecnored | 1d | 2026-07-03 | 2026-07-03 | 492 | 1d |
| 494 |  | Atendimento de comentários | 2d | 2026-07-06 | 2026-07-07 | 493 | 1d |
| 495 |  | Aprovação | 1d | 2026-07-08 | 2026-07-08 | 494 | 1d |
| 496 | 1.1.11.22 | **FD-F0009-0306-MB-J-00004** | 11d | 2026-06-24 | 2026-07-08 |  | 1d |
| 497 |  | Emissão inicial | 7d | 2026-06-24 | 2026-07-02 | 407 | 1d |
| 498 |  | Análise Tecnored | 1d | 2026-07-03 | 2026-07-03 | 497 | 1d |
| 499 |  | Atendimento de comentários | 2d | 2026-07-06 | 2026-07-07 | 498 | 1d |
| 500 |  | Aprovação | 1d | 2026-07-08 | 2026-07-08 | 499 | 1d |
| 501 | 1.1.11.23 | **FD-F0009-0306-MB-J-00005** | 11d | 2026-06-24 | 2026-07-08 |  | 1d |
| 502 |  | Emissão inicial | 7d | 2026-06-24 | 2026-07-02 | 407 | 1d |
| 503 |  | Análise Tecnored | 1d | 2026-07-03 | 2026-07-03 | 502 | 1d |
| 504 |  | Atendimento de comentários | 2d | 2026-07-06 | 2026-07-07 | 503 | 1d |
| 505 |  | Aprovação | 1d | 2026-07-08 | 2026-07-08 | 504 | 1d |
| 506 | 1.1.11.24 | **FD-F0009-0306-MB-J-00006** | 11d | 2026-06-24 | 2026-07-08 |  | 1d |
| 507 |  | Emissão inicial | 7d | 2026-06-24 | 2026-07-02 | 407 | 1d |
| 508 |  | Análise Tecnored | 1d | 2026-07-03 | 2026-07-03 | 507 | 1d |
| 509 |  | Atendimento de comentários | 2d | 2026-07-06 | 2026-07-07 | 508 | 1d |
| 510 |  | Aprovação | 1d | 2026-07-08 | 2026-07-08 | 509 | 1d |
| 511 | 1.1.11.25 | **FD-F0009-0306-MB-J-00007** | 11d | 2026-06-24 | 2026-07-08 |  | 1d |
| 512 |  | Emissão inicial | 7d | 2026-06-24 | 2026-07-02 | 407 | 1d |
| 513 |  | Análise Tecnored | 1d | 2026-07-03 | 2026-07-03 | 512 | 1d |
| 514 |  | Atendimento de comentários | 2d | 2026-07-06 | 2026-07-07 | 513 | 1d |
| 515 |  | Aprovação | 1d | 2026-07-08 | 2026-07-08 | 514 | 1d |
| 516 | 1.1.11.26 | **FD-F0009-0306-MB-J-00008** | 11d | 2026-06-24 | 2026-07-08 |  | 1d |
| 517 |  | Emissão inicial | 7d | 2026-06-24 | 2026-07-02 | 407 | 1d |
| 518 |  | Análise Tecnored | 1d | 2026-07-03 | 2026-07-03 | 517 | 1d |
| 519 |  | Atendimento de comentários | 2d | 2026-07-06 | 2026-07-07 | 518 | 1d |
| 520 |  | Aprovação | 1d | 2026-07-08 | 2026-07-08 | 519 | 1d |
| 521 | 1.1.11.27 | **FD-F0009-0306-MB-J-00009** | 11d | 2026-06-24 | 2026-07-08 |  | 1d |
| 522 |  | Emissão inicial | 7d | 2026-06-24 | 2026-07-02 | 407 | 1d |
| 523 |  | Análise Tecnored | 1d | 2026-07-03 | 2026-07-03 | 522 | 1d |
| 524 |  | Atendimento de comentários | 2d | 2026-07-06 | 2026-07-07 | 523 | 1d |
| 525 |  | Aprovação | 1d | 2026-07-08 | 2026-07-08 | 524 | 1d |
| 526 | 1.1.11.28 | **FD-F0009-0306-MB-J-00010** | 11d | 2026-06-24 | 2026-07-08 |  | 1d |
| 527 |  | Emissão inicial | 7d | 2026-06-24 | 2026-07-02 | 407 | 1d |
| 528 |  | Análise Tecnored | 1d | 2026-07-03 | 2026-07-03 | 527 | 1d |
| 529 |  | Atendimento de comentários | 2d | 2026-07-06 | 2026-07-07 | 528 | 1d |
| 530 |  | Aprovação | 1d | 2026-07-08 | 2026-07-08 | 529 | 1d |
| 531 | 1.1.11.29 | **FD-F0009-0306-MB-J-00011** | 11d | 2026-06-24 | 2026-07-08 |  | 1d |
| 532 |  | Emissão inicial | 7d | 2026-06-24 | 2026-07-02 | 407 | 1d |
| 533 |  | Análise Tecnored | 1d | 2026-07-03 | 2026-07-03 | 532 | 1d |
| 534 |  | Atendimento de comentários | 2d | 2026-07-06 | 2026-07-07 | 533 | 1d |
| 535 |  | Aprovação | 1d | 2026-07-08 | 2026-07-08 | 534 | 1d |
| 536 | 1.1.11.30 | **FD-F0009-0306-MB-J-00012** | 11d | 2026-06-24 | 2026-07-08 |  | 1d |
| 537 |  | Emissão inicial | 7d | 2026-06-24 | 2026-07-02 | 407 | 1d |
| 538 |  | Análise Tecnored | 1d | 2026-07-03 | 2026-07-03 | 537 | 1d |
| 539 |  | Atendimento de comentários | 2d | 2026-07-06 | 2026-07-07 | 538 | 1d |
| 540 |  | Aprovação | 1d | 2026-07-08 | 2026-07-08 | 539 | 1d |
| 541 | 1.1.11.31 | **FD-F0009-0306-MB-J-00013** | 11d | 2026-06-24 | 2026-07-08 |  | 1d |
| 542 |  | Emissão inicial | 7d | 2026-06-24 | 2026-07-02 | 407 | 1d |
| 543 |  | Análise Tecnored | 1d | 2026-07-03 | 2026-07-03 | 542 | 1d |
| 544 |  | Atendimento de comentários | 2d | 2026-07-06 | 2026-07-07 | 543 | 1d |
| 545 |  | Aprovação | 1d | 2026-07-08 | 2026-07-08 | 544 | 1d |
| 546 | 1.1.11.32 | **FD-F0009-0306-MB-J-00014** | 11d | 2026-06-24 | 2026-07-08 |  | 1d |
| 547 |  | Emissão inicial | 7d | 2026-06-24 | 2026-07-02 | 407 | 1d |
| 548 |  | Análise Tecnored | 1d | 2026-07-03 | 2026-07-03 | 547 | 1d |
| 549 |  | Atendimento de comentários | 2d | 2026-07-06 | 2026-07-07 | 548 | 1d |
| 550 |  | Aprovação | 1d | 2026-07-08 | 2026-07-08 | 549 | 1d |
| 551 | 1.1.11.33 | **FD-F0009-0306-MB-J-00015** | 11d | 2026-06-24 | 2026-07-08 |  | 1d |
| 552 |  | Emissão inicial | 7d | 2026-06-24 | 2026-07-02 | 407 | 1d |
| 553 |  | Análise Tecnored | 1d | 2026-07-03 | 2026-07-03 | 552 | 1d |
| 554 |  | Atendimento de comentários | 2d | 2026-07-06 | 2026-07-07 | 553 | 1d |
| 555 |  | Aprovação | 1d | 2026-07-08 | 2026-07-08 | 554 | 1d |
| 556 | 1.1.11.34 | **FD-F0009-0306-MB-J-00016** | 11d | 2026-06-24 | 2026-07-08 |  | 1d |
| 557 |  | Emissão inicial | 7d | 2026-06-24 | 2026-07-02 | 407 | 1d |
| 558 |  | Análise Tecnored | 1d | 2026-07-03 | 2026-07-03 | 557 | 1d |
| 559 |  | Atendimento de comentários | 2d | 2026-07-06 | 2026-07-07 | 558 | 1d |
| 560 |  | Aprovação | 1d | 2026-07-08 | 2026-07-08 | 559 | 1d |

| ID | WBS | Task | Duration | Start | Finish | Predecessors | Total float |
| --- | --- | --- | --- | --- | --- | --- | --- |
| 561 | 1.1.11.35 | **DT-F0009-0306-MB-J-00001** | 7d | 2026-06-30 | 2026-07-08 |  | 1d |
| 562 |  | Emissão inicial | 3d | 2026-06-30 | 2026-07-02 | 467 | 1d |
| 563 |  | Análise Tecnored | 1d | 2026-07-03 | 2026-07-03 | 562 | 1d |
| 564 |  | Atendimento de comentários | 2d | 2026-07-06 | 2026-07-07 | 563 | 1d |
| 565 |  | Aprovação | 1d | 2026-07-08 | 2026-07-08 | 564 | 1d |
| 566 | 1.1.12 | **Civil** | 13d | 2026-06-18 | 2026-07-06 |  | 3d |
| 567 | 1.1.12.1 | **MC-F0009-0306-MB-C-00001** | 12d | 2026-06-18 | 2026-07-03 |  | 3d |
| 568 |  | Emissão inicial | 8d | 2026-06-18 | 2026-06-29 | 245 | 3d |
| 569 |  | Análise Tecnored | 1d | 2026-06-30 | 2026-06-30 | 568 | 4d |
| 570 |  | Atendimento de comentários | 2d | 2026-07-01 | 2026-07-02 | 569 | 4d |
| 571 |  | Aprovação | 1d | 2026-07-03 | 2026-07-03 | 570 | 4d |
| 572 | 1.1.12.2 | **PQ-F0009-0306-MB-C-00001** | 5d | 2026-06-30 | 2026-07-06 |  | 3d |
| 573 |  | Emissão inicial | 1d | 2026-06-30 | 2026-06-30 | 568 | 3d |
| 574 |  | Análise Tecnored | 1d | 2026-07-01 | 2026-07-01 | 573 | 3d |
| 575 |  | Atendimento de comentários | 2d | 2026-07-02 | 2026-07-03 | 574 | 3d |
| 576 |  | Aprovação | 1d | 2026-07-06 | 2026-07-06 | 575 | 3d |

## Version 2 (data date 2026-06-09, saved 2026-06-10, file CR-F0009-0306-MB-F-00001 09062026_C2-BRSPL01S-0017EO.mpp)

Note of the change: Primeira versao dashboard

Last finish 2026-07-15 → 2026-07-21 (+6d). Complete tasks 17 → 25.

Changed:

| ID | Task | Start | Finish | Duration | Complete | Total float | Other |
| --- | --- | --- | --- | --- | --- | --- | --- |
| 1 | **F0009 - Programa Marabá** |  |  |  | 4% → 8% |  |  |
| 2 | **Área 0306 - Sopradores** |  | 2026-07-09 → 2026-07-08 (-1d) | 52d → 51d | 4% → 8% | 0d → none |  |
| 3 | KOM - Início de projeto |  |  | 0d → 1d |  |  | constraint start no earlier than 2026-04-27 → none |
| 4 | **Marcos** |  | 2026-06-05 → 2026-06-09 (+4d) | 12d → 14d | 0% → 50% | 0d → none |  |
| 5 | Critério de Projeto de Processo |  |  | 0d → 1d |  |  |  |
| 6 | Critério de Projeto de Mecânica |  |  | 0d → 1d |  |  |  |
| 7 | Critério de Projeto de Elétrica |  |  | 0d → 1d |  |  |  |
| 8 | Critério de Projeto de Automação | 2026-06-05 A → 2026-06-09 A (+4d) | 2026-06-05 → 2026-06-09 A (+4d) | 0d → 1d | 75% → 100% |  |  |
| 9 | Critério de Projeto de Tubulação |  |  | 0d → 1d |  |  |  |
| 10 | Critério de Projeto de Estrutura metálica |  |  | 0d → 1d |  |  |  |
| 11 | **Pendências** |  |  | 0d → 1d |  |  |  |
| 12 | Recebimento de dados de entrada |  |  | 0d → 1d |  |  | constraint none → finish no earlier than 2026-04-29 |
| 13 | **Planejamento** |  |  | 25.4d → 26d | 86% → 77% | 26.6d → none |  |
| 14 | **LD-F0009-0306-MB-F-00001** |  |  | 25.4d → 26d | 86% → 77% | 26.6d → none |  |
| 17 | Atendimento de comentários |  |  | 2d → 2.6d |  |  | constraint none → finish no earlier than 2026-05-12 |
| 18 | Aprovação | 2026-05-29 → 2026-06-01 (+3d) | 2026-06-01 → 2026-06-02 (+1d) | 1d → 2d |  | 26.6d → 33d | constraint none → finish no earlier than 2026-06-01 |
| 19 | **CR-F0009-0306-MB-F-00001** |  |  | 21.4d → 22d | 86% → 77% | 27.6d → none |  |
| 22 | Atendimento de comentários |  |  | 2d → 2.6d |  |  | constraint none → finish no earlier than 2026-05-15 |
| 23 | Aprovação | 2026-05-28 → 2026-05-29 (+1d) | 2026-05-29 → 2026-06-01 (+3d) | 1d → 2d |  | 27.6d → 34d | constraint none → finish no earlier than 2026-05-29 |
| 24 | **Coordenação** |  | 2026-07-09 → 2026-07-08 (-1d) | 52d → 51d | 11% → 14% | 0d → none |  |
| 25 | **RM-F0009-0306-MB-G-00001** | 2026-06-01 → 2026-06-03 (+2d) | 2026-06-11 → 2026-06-12 (+1d) | 7d → 6d |  | 0d → none |  |
| 26 | Emissão inicial | 2026-06-01 → 2026-06-03 (+2d) | 2026-06-03 → 2026-06-09 (+6d) |  |  | 0d → 9d | constraint none → start no earlier than 2026-06-03 |
| 27 | Análise Tecnored | 2026-06-08 → 2026-06-10 (+2d) | 2026-06-08 → 2026-06-10 (+2d) |  |  | 20d → 27d | constraint none → start no earlier than 2026-06-10 |
| 28 | Atendimento de comentários | 2026-06-09 → 2026-06-11 (+2d) | 2026-06-10 → 2026-06-11 (+1d) | 2d → 1d |  | 20d → 27d | constraint none → finish no earlier than 2026-06-11 |
| 29 | Aprovação | 2026-06-11 → 2026-06-12 (+1d) | 2026-06-11 → 2026-06-12 (+1d) |  |  | 20d → 27d | constraint none → start no earlier than 2026-06-12 |
| 30 | **RM-F0009-0306-MB-G-00002** | 2026-06-22 → 2026-06-24 (+2d) |  | 7d → 5d |  | 0d → none |  |
| 31 | Emissão inicial | 2026-06-22 → 2026-06-24 (+2d) | 2026-06-24 → 2026-06-25 (+1d) | 3d → 2d |  | 0d → 9d | constraint none → finish no earlier than 2026-06-25 |
| 32 | Análise Tecnored | 2026-06-25 → 2026-06-26 (+1d) | 2026-06-25 → 2026-06-26 (+1d) |  |  | 7d → 15d | constraint none → start no earlier than 2026-06-26 |
| 33 | Atendimento de comentários | 2026-06-26 → 2026-06-29 (+3d) |  | 2d → 1d |  | 7d → 15d | constraint none → finish no earlier than 2026-06-29 |
| 35 | **RL-F0009-0306-MB-G-00001** | 2026-07-02 → 2026-07-03 (+1d) | 2026-07-09 → 2026-07-08 (-1d) | 6d → 4d |  | 0d → none |  |
| 36 | Emissão inicial | 2026-07-02 → 2026-07-03 (+1d) |  | 2d → 1d |  | 0d → 9d | constraint none → finish no earlier than 2026-07-03 |
| 38 | Atendimento de comentários |  | 2026-07-08 → 2026-07-07 (-1d) | 2d → 1d |  | 0d → 9d | constraint none → finish no earlier than 2026-07-07 |
| 39 | Aprovação | 2026-07-09 → 2026-07-08 (-1d) | 2026-07-09 → 2026-07-08 (-1d) |  |  | 0d → 9d | constraint none → start no earlier than 2026-07-08 |
| 45 | **Processo** |  |  | 4d → 5d |  | 20d → none |  |
| 46 | **CP-F0009-0306-MB-P-00001** | 2026-05-05 → 2026-06-08 (+34d) | 2026-06-11 → 2026-06-22 (+11d) | 26d → 11d |  | 20d → 21d |  |
| 47 | Emissão inicial | 2026-05-05 → 2026-06-08 (+34d) | 2026-05-13 → 2026-06-16 (+34d) |  |  | 35d → 21d |  |
| 48 | Análise Tecnored | 2026-06-08 → 2026-06-17 (+9d) | 2026-06-08 → 2026-06-17 (+9d) |  |  | 20d → 21d |  |
| 49 | Atendimento de comentários | 2026-06-09 → 2026-06-18 (+9d) | 2026-06-10 → 2026-06-19 (+9d) |  |  | 20d → 21d |  |
| 50 | Aprovação | 2026-06-11 → 2026-06-22 (+11d) | 2026-06-11 → 2026-06-22 (+11d) |  |  | 20d → 21d |  |
| 56 | **FG-F0009-0306-MB-P-00001** |  |  | 4d → 5d |  | 20d → none |  |
| 61 | **Mecânica** |  | 2026-07-02 → 2026-07-08 (+6d) | 26d → 30d | 7% → 10% | 5d → none |  |
| 62 | **CP-F0009-0306-MB-M-00001** | 2026-05-05 → 2026-05-26 (+21d) | 2026-05-22 → 2026-06-11 (+20d) | 14d → 11d |  | -1d → -8d |  |
| 63 | Emissão inicial | 2026-05-05 → 2026-05-26 (+21d) | 2026-05-13 → 2026-06-03 (+21d) |  |  | -1d → -8d |  |
| 64 | Análise Tecnored | 2026-05-19 → 2026-06-08 (+20d) | 2026-05-19 → 2026-06-08 (+20d) |  |  | 32d → 28d |  |
| 65 | Atendimento de comentários | 2026-05-20 → 2026-06-09 (+20d) | 2026-05-21 → 2026-06-10 (+20d) |  |  | 32d → 28d |  |
| 66 | Aprovação | 2026-05-22 → 2026-06-11 (+20d) | 2026-05-22 → 2026-06-11 (+20d) |  |  | 32d → 28d |  |
| 67 | **MD-F0009-0306-MB-M-00001** | 2026-06-02 → 2026-06-08 (+6d) | 2026-06-12 → 2026-06-16 (+4d) |  |  | -14d → -8d |  |
| 68 | Emissão inicial | 2026-06-02 → 2026-06-08 (+6d) | 2026-06-08 → 2026-06-10 (+2d) |  |  | -14d → -8d |  |
| 69 | Análise Tecnored | 2026-06-09 → 2026-06-11 (+2d) | 2026-06-09 → 2026-06-11 (+2d) |  |  | 19d → 25d |  |
| 70 | Atendimento de comentários | 2026-06-10 → 2026-06-12 (+2d) | 2026-06-11 → 2026-06-15 (+4d) |  |  | 19d → 25d |  |
| 71 | Aprovação | 2026-06-12 → 2026-06-16 (+4d) | 2026-06-12 → 2026-06-16 (+4d) |  |  | 19d → 25d |  |
| 77 | **PQ-F0009-0306-MB-M-00001** | 2026-06-02 → 2026-06-19 (+17d) | 2026-06-12 → 2026-06-29 (+17d) |  |  | 19d → none |  |
| 78 | Emissão inicial | 2026-06-02 → 2026-06-19 (+17d) | 2026-06-08 → 2026-06-23 (+15d) |  |  | 19d → 16d | constraint none → start no earlier than 2026-06-19 |
| 79 | Análise Tecnored | 2026-06-09 → 2026-06-24 (+15d) | 2026-06-09 → 2026-06-24 (+15d) |  |  | 19d → 16d | constraint none → start no earlier than 2026-06-24 |
| 80 | Atendimento de comentários | 2026-06-10 → 2026-06-25 (+15d) | 2026-06-11 → 2026-06-26 (+15d) |  |  | 19d → 16d | constraint none → start no earlier than 2026-06-25 |
| 81 | Aprovação | 2026-06-12 → 2026-06-29 (+17d) | 2026-06-12 → 2026-06-29 (+17d) |  |  | 19d → 16d | constraint none → start no earlier than 2026-06-29 |
| 82 | **AG-F0009-0306-MB-L-00001** | 2026-06-22 → 2026-06-29 (+7d) | 2026-07-02 → 2026-07-08 (+6d) | 9d → 8d |  | 5d → none |  |
| 83 | Emissão inicial | 2026-06-22 → 2026-06-29 (+7d) | 2026-06-26 → 2026-07-03 (+7d) |  |  | 5d → 9d | constraint none → start no earlier than 2026-06-29 |
| 84 | Análise Tecnored | 2026-06-29 → 2026-07-06 (+7d) | 2026-06-29 → 2026-07-06 (+7d) |  |  | 5d → 9d | constraint none → start no earlier than 2026-07-06 |
| 85 | Atendimento de comentários | 2026-06-30 → 2026-07-07 (+7d) | 2026-07-01 → 2026-07-07 (+6d) | 2d → 1d |  | 5d → 9d | constraint none → finish no earlier than 2026-07-07 |
| 86 | Aprovação | 2026-07-02 → 2026-07-08 (+6d) | 2026-07-02 → 2026-07-08 (+6d) |  |  | 5d → 9d | constraint none → start no earlier than 2026-07-08 |
| 87 | **AG-F0009-0306-MB-L-00002** | 2026-06-22 → 2026-06-29 (+7d) | 2026-07-02 → 2026-07-08 (+6d) | 9d → 8d |  | 5d → none |  |
| 88 | Emissão inicial | 2026-06-22 → 2026-06-29 (+7d) | 2026-06-26 → 2026-07-03 (+7d) |  |  | 5d → 9d | constraint none → start no earlier than 2026-06-29 |
| 89 | Análise Tecnored | 2026-06-29 → 2026-07-06 (+7d) | 2026-06-29 → 2026-07-06 (+7d) |  |  | 5d → 9d | constraint none → start no earlier than 2026-07-06 |
| 90 | Atendimento de comentários | 2026-06-30 → 2026-07-07 (+7d) | 2026-07-01 → 2026-07-07 (+6d) | 2d → 1d |  | 5d → 9d | constraint none → finish no earlier than 2026-07-07 |
| 91 | Aprovação | 2026-07-02 → 2026-07-08 (+6d) | 2026-07-02 → 2026-07-08 (+6d) |  |  | 5d → 9d | constraint none → start no earlier than 2026-07-08 |
| 92 | **AG-F0009-0306-MB-L-00003** | 2026-06-22 → 2026-06-29 (+7d) | 2026-07-02 → 2026-07-08 (+6d) | 9d → 8d |  | 5d → none |  |
| 93 | Emissão inicial | 2026-06-22 → 2026-06-29 (+7d) | 2026-06-26 → 2026-07-03 (+7d) |  |  | 5d → 9d | constraint none → start no earlier than 2026-06-29 |
| 94 | Análise Tecnored | 2026-06-29 → 2026-07-06 (+7d) | 2026-06-29 → 2026-07-06 (+7d) |  |  | 5d → 9d | constraint none → start no earlier than 2026-07-06 |
| 95 | Atendimento de comentários | 2026-06-30 → 2026-07-07 (+7d) | 2026-07-01 → 2026-07-07 (+6d) | 2d → 1d |  | 5d → 9d | constraint none → finish no earlier than 2026-07-07 |

| ID | Task | Start | Finish | Duration | Complete | Total float | Other |
| --- | --- | --- | --- | --- | --- | --- | --- |
| 96 | Aprovação | 2026-07-02 → 2026-07-08 (+6d) | 2026-07-02 → 2026-07-08 (+6d) |  |  | 5d → 9d | constraint none → start no earlier than 2026-07-08 |
| 97 | **AG-F0009-0306-MB-L-00004** | 2026-06-22 → 2026-06-29 (+7d) | 2026-07-02 → 2026-07-08 (+6d) | 9d → 8d |  | 5d → none |  |
| 98 | Emissão inicial | 2026-06-22 → 2026-06-29 (+7d) | 2026-06-26 → 2026-07-03 (+7d) |  |  | 5d → 9d | constraint none → start no earlier than 2026-06-29 |
| 99 | Análise Tecnored | 2026-06-29 → 2026-07-06 (+7d) | 2026-06-29 → 2026-07-06 (+7d) |  |  | 5d → 9d | constraint none → start no earlier than 2026-07-06 |
| 100 | Atendimento de comentários | 2026-06-30 → 2026-07-07 (+7d) | 2026-07-01 → 2026-07-07 (+6d) | 2d → 1d |  | 5d → 9d | constraint none → finish no earlier than 2026-07-07 |
| 101 | Aprovação | 2026-07-02 → 2026-07-08 (+6d) | 2026-07-02 → 2026-07-08 (+6d) |  |  | 5d → 9d | constraint none → start no earlier than 2026-07-08 |
| 112 | **MC-F0009-0306-MB-M-00001** | 2026-06-03 → 2026-06-12 (+9d) | 2026-06-17 → 2026-06-24 (+7d) |  |  | 0d → none |  |
| 113 | Emissão inicial | 2026-06-03 → 2026-06-12 (+9d) | 2026-06-11 → 2026-06-18 (+7d) |  |  | 0d → 3d | constraint none → start no earlier than 2026-06-12 |
| 114 | Análise Tecnored | 2026-06-12 → 2026-06-19 (+7d) | 2026-06-12 → 2026-06-19 (+7d) |  |  | 0d → 3d | constraint none → start no earlier than 2026-06-19 |
| 115 | Atendimento de comentários | 2026-06-15 → 2026-06-22 (+7d) | 2026-06-16 → 2026-06-23 (+7d) |  |  | 16d → 19d | constraint none → start no earlier than 2026-06-22 |
| 116 | Aprovação | 2026-06-17 → 2026-06-24 (+7d) | 2026-06-17 → 2026-06-24 (+7d) |  |  | 16d → 19d | constraint none → start no earlier than 2026-06-24 |
| 117 | **ML-F0009-0306-MB-M-00001** |  |  |  | 56% → 89% | 22d → none |  |
| 119 | Análise Tecnored | 2026-06-02 A | 2026-06-02 A |  | 0% → 100% | 0d → none |  |
| 120 | Atendimento de comentários | 2026-06-03 A |  |  | 0% → 75% | 5d → 0.5d |  |
| 121 | Aprovação | 2026-06-09 A |  |  | 0% → 50% | 22d → 30d |  |
| 122 | **FD-F0009-0306-MB-M-00001** | 2026-06-12 → 2026-06-19 (+7d) | 2026-06-22 → 2026-06-29 (+7d) |  |  | 13d → none |  |
| 123 | Emissão inicial | 2026-06-12 → 2026-06-19 (+7d) | 2026-06-16 → 2026-06-23 (+7d) |  |  | 13d → 16d | constraint none → start no earlier than 2026-06-19 |
| 124 | Análise Tecnored | 2026-06-17 → 2026-06-24 (+7d) | 2026-06-17 → 2026-06-24 (+7d) |  |  | 13d → 16d | constraint none → start no earlier than 2026-06-24 |
| 125 | Atendimento de comentários | 2026-06-18 → 2026-06-25 (+7d) | 2026-06-19 → 2026-06-26 (+7d) |  |  | 13d → 16d | constraint none → start no earlier than 2026-06-25 |
| 126 | Aprovação | 2026-06-22 → 2026-06-29 (+7d) | 2026-06-22 → 2026-06-29 (+7d) |  |  | 13d → 16d | constraint none → start no earlier than 2026-06-29 |
| 127 | **FD-F0009-0306-MB-M-00002** | 2026-06-12 → 2026-06-19 (+7d) | 2026-06-22 → 2026-06-29 (+7d) |  |  | 13d → none |  |
| 128 | Emissão inicial | 2026-06-12 → 2026-06-19 (+7d) | 2026-06-16 → 2026-06-23 (+7d) |  |  | 13d → 16d | constraint none → start no earlier than 2026-06-19 |
| 129 | Análise Tecnored | 2026-06-17 → 2026-06-24 (+7d) | 2026-06-17 → 2026-06-24 (+7d) |  |  | 13d → 16d | constraint none → start no earlier than 2026-06-24 |
| 130 | Atendimento de comentários | 2026-06-18 → 2026-06-25 (+7d) | 2026-06-19 → 2026-06-26 (+7d) |  |  | 13d → 16d | constraint none → start no earlier than 2026-06-25 |
| 131 | Aprovação | 2026-06-22 → 2026-06-29 (+7d) | 2026-06-22 → 2026-06-29 (+7d) |  |  | 13d → 16d | constraint none → start no earlier than 2026-06-29 |
| 132 | **Tubulação/Utilidades** | 2026-06-11 → 2026-06-08 A (-3d) |  | 18d → 21d | 0% → 2% | 3d → none |  |
| 133 | **CP-F0009-0306-MB-T-00001** | 2026-05-05 → 2026-06-08 (+34d) | 2026-05-27 → 2026-06-22 (+26d) | 17d → 11d |  | 29d → 21d |  |
| 134 | Emissão inicial | 2026-05-05 → 2026-06-08 (+34d) | 2026-05-13 → 2026-06-16 (+34d) |  |  | 35d → 21d |  |
| 135 | Análise Tecnored | 2026-05-22 → 2026-06-17 (+26d) | 2026-05-22 → 2026-06-17 (+26d) |  |  | 29d → 21d |  |
| 136 | Atendimento de comentários | 2026-05-25 → 2026-06-18 (+24d) | 2026-05-26 → 2026-06-19 (+24d) |  |  | 29d → 21d |  |
| 137 | Aprovação | 2026-05-27 → 2026-06-22 (+26d) | 2026-05-27 → 2026-06-22 (+26d) |  |  | 29d → 21d |  |
| 148 | **ET-F0009-0306-MB-T-00001** | 2026-06-25 → 2026-06-18 (-7d) | 2026-07-03 → 2026-06-26 (-7d) |  |  | 4d → 17d |  |
| 149 | Emissão inicial | 2026-06-25 → 2026-06-18 (-7d) | 2026-06-29 → 2026-06-22 (-7d) |  |  | 4d → 17d |  |
| 150 | Análise Tecnored | 2026-06-30 → 2026-06-23 (-7d) | 2026-06-30 → 2026-06-23 (-7d) |  |  | 4d → 17d |  |
| 151 | Atendimento de comentários | 2026-07-01 → 2026-06-24 (-7d) | 2026-07-02 → 2026-06-25 (-7d) |  |  | 4d → 17d |  |
| 152 | Aprovação | 2026-07-03 → 2026-06-26 (-7d) | 2026-07-03 → 2026-06-26 (-7d) |  |  | 4d → 17d |  |
| 153 | **FD-F0009-0306-MB-T-00001** | 2026-06-22 → 2026-06-15 (-7d) | 2026-06-30 → 2026-06-23 (-7d) |  |  | 7d → none |  |
| 154 | Emissão inicial | 2026-06-22 → 2026-06-15 (-7d) | 2026-06-24 → 2026-06-17 (-7d) |  |  | 7d → 20d | constraint none → start no earlier than 2026-06-15 |
| 155 | Análise Tecnored | 2026-06-25 → 2026-06-18 (-7d) | 2026-06-25 → 2026-06-18 (-7d) |  |  | 7d → 20d | constraint none → start no earlier than 2026-06-18 |
| 156 | Atendimento de comentários | 2026-06-26 → 2026-06-19 (-7d) | 2026-06-29 → 2026-06-22 (-7d) |  |  | 7d → 20d | constraint none → start no earlier than 2026-06-19 |
| 157 | Aprovação | 2026-06-30 → 2026-06-23 (-7d) | 2026-06-30 → 2026-06-23 (-7d) |  |  | 7d → 20d | constraint none → start no earlier than 2026-06-23 |
| 158 | **FD-F0009-0306-MB-T-00002** | 2026-06-22 → 2026-06-15 (-7d) | 2026-06-30 → 2026-06-23 (-7d) |  |  | 7d → 20d |  |
| 159 | Emissão inicial | 2026-06-22 → 2026-06-15 (-7d) | 2026-06-24 → 2026-06-17 (-7d) |  |  | 7d → 20d |  |
| 160 | Análise Tecnored | 2026-06-25 → 2026-06-18 (-7d) | 2026-06-25 → 2026-06-18 (-7d) |  |  | 7d → 20d |  |
| 161 | Atendimento de comentários | 2026-06-26 → 2026-06-19 (-7d) | 2026-06-29 → 2026-06-22 (-7d) |  |  | 7d → 20d |  |
| 162 | Aprovação | 2026-06-30 → 2026-06-23 (-7d) | 2026-06-30 → 2026-06-23 (-7d) |  |  | 7d → 20d |  |
| 163 | **PQ-F0009-0306-MB-T-00001** | 2026-06-23 → 2026-06-16 (-7d) | 2026-07-01 → 2026-06-24 (-7d) |  |  | 6d → none |  |
| 164 | Emissão inicial | 2026-06-23 → 2026-06-16 (-7d) | 2026-06-25 → 2026-06-18 (-7d) |  |  | 6d → 19d | constraint none → start no earlier than 2026-06-16 |
| 165 | Análise Tecnored | 2026-06-26 → 2026-06-19 (-7d) | 2026-06-26 → 2026-06-19 (-7d) |  |  | 6d → 19d | constraint none → start no earlier than 2026-06-19 |
| 166 | Atendimento de comentários | 2026-06-29 → 2026-06-22 (-7d) | 2026-06-30 → 2026-06-23 (-7d) |  |  | 6d → 19d | constraint none → start no earlier than 2026-06-22 |
| 167 | Aprovação | 2026-07-01 → 2026-06-24 (-7d) | 2026-07-01 → 2026-06-24 (-7d) |  |  | 6d → 19d | constraint none → start no earlier than 2026-06-24 |
| 168 | **MC-F0009-0306-MB-T-00001** | 2026-06-17 → 2026-06-10 (-7d) | 2026-06-25 → 2026-06-18 (-7d) |  |  | 3d → none |  |
| 169 | Emissão inicial | 2026-06-17 → 2026-06-10 (-7d) | 2026-06-19 → 2026-06-12 (-7d) |  |  | 3d → 16d | constraint none → start no earlier than 2026-06-10 |
| 170 | Análise Tecnored | 2026-06-22 → 2026-06-15 (-7d) | 2026-06-22 → 2026-06-15 (-7d) |  |  | 3d → 16d | constraint none → start no earlier than 2026-06-15 |
| 171 | Atendimento de comentários | 2026-06-23 → 2026-06-16 (-7d) | 2026-06-24 → 2026-06-17 (-7d) |  |  | 3d → 16d | constraint none → start no earlier than 2026-06-16 |
| 172 | Aprovação | 2026-06-25 → 2026-06-18 (-7d) | 2026-06-25 → 2026-06-18 (-7d) |  |  | 3d → 16d | constraint none → start no earlier than 2026-06-18 |
| 173 | **FG-F0009-0306-MB-T-00001** | 2026-06-11 → 2026-06-08 A (-3d) | 2026-06-19 → 2026-06-12 (-7d) | 7d → 5d | 0% → 20% | 3d → none |  |
| 174 | Emissão inicial | 2026-06-11 → 2026-06-08 A (-3d) | 2026-06-15 → 2026-06-08 A (-7d) | 3d → 1d | 0% → 100% | 3d → none | constraint none → finish no earlier than 2026-06-08 |
| 175 | Análise Tecnored | 2026-06-16 → 2026-06-09 (-7d) | 2026-06-16 → 2026-06-09 (-7d) |  |  | 3d → 16d | constraint none → start no earlier than 2026-06-09 |
| 176 | Atendimento de comentários | 2026-06-17 → 2026-06-10 (-7d) | 2026-06-18 → 2026-06-11 (-7d) |  |  | 14d → 27d | constraint none → start no earlier than 2026-06-10 |
| 177 | Aprovação | 2026-06-19 → 2026-06-12 (-7d) | 2026-06-19 → 2026-06-12 (-7d) |  |  | 14d → 27d | constraint none → start no earlier than 2026-06-12 |
| 213 | **LK-F0009-0306-MB-T-00001** | 2026-06-26 → 2026-06-19 (-7d) | 2026-07-06 → 2026-06-29 (-7d) |  |  | 3d → none |  |
| 214 | Emissão inicial | 2026-06-26 → 2026-06-19 (-7d) | 2026-06-30 → 2026-06-23 (-7d) |  |  | 3d → 16d | constraint none → start no earlier than 2026-06-19 |
| 215 | Análise Tecnored | 2026-07-01 → 2026-06-24 (-7d) | 2026-07-01 → 2026-06-24 (-7d) |  |  | 3d → 16d | constraint none → start no earlier than 2026-06-24 |
| 216 | Atendimento de comentários | 2026-07-02 → 2026-06-25 (-7d) | 2026-07-03 → 2026-06-26 (-7d) |  |  | 3d → 16d | constraint none → start no earlier than 2026-06-25 |
| 217 | Aprovação | 2026-07-06 → 2026-06-29 (-7d) | 2026-07-06 → 2026-06-29 (-7d) |  |  | 3d → 16d | constraint none → start no earlier than 2026-06-29 |
| 218 | **MC-F0009-0306-MB-T-00002** | 2026-06-02 → 2026-06-08 (+6d) | 2026-06-23 → 2026-06-25 (+2d) |  |  | 12d → 18d |  |
| 219 | Emissão inicial | 2026-06-02 → 2026-06-08 (+6d) | 2026-06-17 → 2026-06-19 (+2d) |  |  | 12d → 18d |  |
| 220 | Análise Tecnored | 2026-06-18 → 2026-06-22 (+4d) | 2026-06-18 → 2026-06-22 (+4d) |  |  | 12d → 18d |  |
| 221 | Atendimento de comentários | 2026-06-19 → 2026-06-23 (+4d) | 2026-06-22 → 2026-06-24 (+2d) |  |  | 12d → 18d |  |

| ID | Task | Start | Finish | Duration | Complete | Total float | Other |
| --- | --- | --- | --- | --- | --- | --- | --- |
| 222 | Aprovação | 2026-06-23 → 2026-06-25 (+2d) | 2026-06-23 → 2026-06-25 (+2d) |  |  | 12d → 18d |  |
| 223 | **Estrutura metálica** | 2026-06-15 → 2026-06-22 (+7d) | 2026-07-09 → 2026-07-02 (-7d) | 19d → 9d |  | 0d → none |  |
| 224 | **CP-F0009-0306-MB-S-00001** | 2026-06-08 → 2026-06-22 (+14d) | 2026-06-23 → 2026-07-07 (+14d) |  |  | 12d → 10d |  |
| 225 | Emissão inicial | 2026-06-08 → 2026-06-22 (+14d) | 2026-06-17 → 2026-07-01 (+14d) |  |  | 12d → 10d |  |
| 226 | Análise Tecnored | 2026-06-18 → 2026-07-02 (+14d) | 2026-06-18 → 2026-07-02 (+14d) |  |  | 12d → 10d |  |
| 227 | Atendimento de comentários | 2026-06-19 → 2026-07-03 (+14d) | 2026-06-22 → 2026-07-06 (+14d) |  |  | 12d → 10d |  |
| 228 | Aprovação | 2026-06-23 → 2026-07-07 (+14d) | 2026-06-23 → 2026-07-07 (+14d) |  |  | 12d → 10d |  |
| 229 | **ML-F0009-0306-MB-S-00001** | 2026-06-15 → 2026-06-22 (+7d) | 2026-06-25 → 2026-07-02 (+7d) |  |  | 0d → none |  |
| 230 | Emissão inicial | 2026-06-15 → 2026-06-22 (+7d) | 2026-06-19 → 2026-06-26 (+7d) |  |  | 0d → 3d | constraint none → start no earlier than 2026-06-22 |
| 231 | Análise Tecnored | 2026-06-22 → 2026-06-29 (+7d) | 2026-06-22 → 2026-06-29 (+7d) |  |  | 0d → 3d | constraint none → start no earlier than 2026-06-29 |
| 232 | Atendimento de comentários | 2026-06-23 → 2026-06-30 (+7d) | 2026-06-24 → 2026-07-01 (+7d) |  |  | 0d → 3d | constraint none → start no earlier than 2026-06-30 |
| 233 | Aprovação | 2026-06-25 → 2026-07-02 (+7d) | 2026-06-25 → 2026-07-02 (+7d) |  |  | 0d → 3d | constraint none → start no earlier than 2026-07-02 |
| 234 | **PQ-F0009-0306-MB-S-00001** | 2026-07-01 → 2026-06-22 (-9d) | 2026-07-09 → 2026-07-02 (-7d) | 7d → 9d |  | 0d → none |  |
| 235 | Emissão inicial | 2026-07-01 → 2026-07-08 (+7d) | 2026-07-03 → 2026-07-10 (+7d) |  |  | 0d → 3d | constraint none → start no earlier than 2026-06-22 |
| 236 | Análise Tecnored | 2026-07-06 → 2026-07-13 (+7d) | 2026-07-06 → 2026-07-13 (+7d) |  |  | 0d → 3d | constraint none → start no earlier than 2026-06-29 |
| 237 | Atendimento de comentários | 2026-07-07 → 2026-07-14 (+7d) | 2026-07-08 → 2026-07-15 (+7d) |  |  | 0d → 3d | constraint none → start no earlier than 2026-06-30 |
| 238 | Aprovação | 2026-07-09 → 2026-07-16 (+7d) | 2026-07-09 → 2026-07-16 (+7d) |  |  | 0d → 3d | constraint none → start no earlier than 2026-07-02 |
| 239 | **LM-F0009-0306-MB-S-00001** | 2026-06-26 → 2026-06-22 (-4d) | 2026-07-06 → 2026-07-02 (-4d) | 7d → 9d |  | 0d → none |  |
| 240 | Emissão inicial | 2026-06-26 → 2026-07-03 (+7d) | 2026-06-30 → 2026-07-07 (+7d) |  |  | 0d → 3d | constraint none → start no earlier than 2026-06-22 |
| 241 | Análise Tecnored | 2026-07-01 → 2026-07-08 (+7d) | 2026-07-01 → 2026-07-08 (+7d) |  |  | 3d → 6d | constraint none → start no earlier than 2026-06-29 |
| 242 | Atendimento de comentários | 2026-07-02 → 2026-07-09 (+7d) | 2026-07-03 → 2026-07-10 (+7d) |  |  | 3d → 6d | constraint none → start no earlier than 2026-06-30 |
| 243 | Aprovação | 2026-07-06 → 2026-07-13 (+7d) | 2026-07-06 → 2026-07-13 (+7d) |  |  | 3d → 6d | constraint none → start no earlier than 2026-07-02 |
| 244 | **MC-F0009-0306-MB-S-00001** | 2026-06-15 → 2026-06-22 (+7d) | 2026-06-23 → 2026-07-02 (+9d) | 7d → 9d |  | 0d → none |  |
| 245 | Emissão inicial | 2026-06-15 → 2026-06-22 (+7d) | 2026-06-17 → 2026-06-24 (+7d) |  |  | 0d → 3d | constraint none → start no earlier than 2026-06-22 |
| 246 | Análise Tecnored | 2026-06-18 → 2026-06-29 (+11d) | 2026-06-18 → 2026-06-29 (+11d) |  |  | 12d → 13d | constraint none → start no earlier than 2026-06-29 |
| 247 | Atendimento de comentários | 2026-06-19 → 2026-06-30 (+11d) | 2026-06-22 → 2026-07-01 (+9d) |  |  | 12d → 13d | constraint none → start no earlier than 2026-06-30 |
| 248 | Aprovação | 2026-06-23 → 2026-07-02 (+9d) | 2026-06-23 → 2026-07-02 (+9d) |  |  | 12d → 13d | constraint none → start no earlier than 2026-07-02 |
| 249 | **AG-F0009-0306-MB-S-00001** | 2026-06-25 → 2026-06-22 (-3d) | 2026-07-07 → 2026-07-02 (-5d) |  |  | 2d → none |  |
| 250 | Emissão inicial | 2026-06-25 → 2026-07-02 (+7d) | 2026-07-01 → 2026-07-08 (+7d) |  |  | 2d → 5d | constraint none → start no earlier than 2026-06-22 |
| 251 | Análise Tecnored | 2026-07-02 → 2026-07-09 (+7d) | 2026-07-02 → 2026-07-09 (+7d) |  |  | 2d → 5d | constraint none → start no earlier than 2026-06-29 |
| 252 | Atendimento de comentários | 2026-07-03 → 2026-07-10 (+7d) | 2026-07-06 → 2026-07-13 (+7d) |  |  | 2d → 5d | constraint none → start no earlier than 2026-06-30 |
| 253 | Aprovação | 2026-07-07 → 2026-07-14 (+7d) | 2026-07-07 → 2026-07-14 (+7d) |  |  | 2d → 5d | constraint none → start no earlier than 2026-07-02 |
| 254 | **AG-F0009-0306-MB-S-00002** | 2026-06-25 → 2026-06-22 (-3d) | 2026-07-07 → 2026-07-02 (-5d) |  |  | 2d → none |  |
| 255 | Emissão inicial | 2026-06-25 → 2026-07-02 (+7d) | 2026-07-01 → 2026-07-08 (+7d) |  |  | 2d → 5d | constraint none → start no earlier than 2026-06-22 |
| 256 | Análise Tecnored | 2026-07-02 → 2026-07-09 (+7d) | 2026-07-02 → 2026-07-09 (+7d) |  |  | 2d → 5d | constraint none → start no earlier than 2026-06-29 |
| 257 | Atendimento de comentários | 2026-07-03 → 2026-07-10 (+7d) | 2026-07-06 → 2026-07-13 (+7d) |  |  | 2d → 5d | constraint none → start no earlier than 2026-06-30 |
| 258 | Aprovação | 2026-07-07 → 2026-07-14 (+7d) | 2026-07-07 → 2026-07-14 (+7d) |  |  | 2d → 5d | constraint none → start no earlier than 2026-07-02 |
| 259 | **AG-F0009-0306-MB-S-00003** | 2026-06-25 → 2026-06-22 (-3d) | 2026-07-07 → 2026-07-02 (-5d) |  |  | 2d → none |  |
| 260 | Emissão inicial | 2026-06-25 → 2026-07-02 (+7d) | 2026-07-01 → 2026-07-08 (+7d) |  |  | 2d → 5d | constraint none → start no earlier than 2026-06-22 |
| 261 | Análise Tecnored | 2026-07-02 → 2026-07-09 (+7d) | 2026-07-02 → 2026-07-09 (+7d) |  |  | 2d → 5d | constraint none → start no earlier than 2026-06-29 |
| 262 | Atendimento de comentários | 2026-07-03 → 2026-07-10 (+7d) | 2026-07-06 → 2026-07-13 (+7d) |  |  | 2d → 5d | constraint none → start no earlier than 2026-06-30 |
| 263 | Aprovação | 2026-07-07 → 2026-07-14 (+7d) | 2026-07-07 → 2026-07-14 (+7d) |  |  | 2d → 5d | constraint none → start no earlier than 2026-07-02 |
| 264 | **AG-F0009-0306-MB-S-00004** | 2026-06-25 → 2026-06-22 (-3d) | 2026-07-07 → 2026-07-02 (-5d) |  |  | 2d → none |  |
| 265 | Emissão inicial | 2026-06-25 → 2026-07-02 (+7d) | 2026-07-01 → 2026-07-08 (+7d) |  |  | 2d → 5d | constraint none → start no earlier than 2026-06-22 |
| 266 | Análise Tecnored | 2026-07-02 → 2026-07-09 (+7d) | 2026-07-02 → 2026-07-09 (+7d) |  |  | 2d → 5d | constraint none → start no earlier than 2026-06-29 |
| 267 | Atendimento de comentários | 2026-07-03 → 2026-07-10 (+7d) | 2026-07-06 → 2026-07-13 (+7d) |  |  | 2d → 5d | constraint none → start no earlier than 2026-06-30 |
| 268 | Aprovação | 2026-07-07 → 2026-07-14 (+7d) | 2026-07-07 → 2026-07-14 (+7d) |  |  | 2d → 5d | constraint none → start no earlier than 2026-07-02 |
| 269 | **AG-F0009-0306-MB-S-00005** | 2026-06-25 → 2026-06-22 (-3d) | 2026-07-07 → 2026-07-02 (-5d) |  |  | 2d → none |  |
| 270 | Emissão inicial | 2026-06-25 → 2026-07-02 (+7d) | 2026-07-01 → 2026-07-08 (+7d) |  |  | 2d → 5d | constraint none → start no earlier than 2026-06-22 |
| 271 | Análise Tecnored | 2026-07-02 → 2026-07-09 (+7d) | 2026-07-02 → 2026-07-09 (+7d) |  |  | 2d → 5d | constraint none → start no earlier than 2026-06-29 |
| 272 | Atendimento de comentários | 2026-07-03 → 2026-07-10 (+7d) | 2026-07-06 → 2026-07-13 (+7d) |  |  | 2d → 5d | constraint none → start no earlier than 2026-06-30 |
| 273 | Aprovação | 2026-07-07 → 2026-07-14 (+7d) | 2026-07-07 → 2026-07-14 (+7d) |  |  | 2d → 5d | constraint none → start no earlier than 2026-07-02 |
| 274 | **PL-F0009-0306-MB-S-00001** | 2026-06-25 → 2026-06-22 (-3d) | 2026-07-07 → 2026-07-02 (-5d) |  |  | 2d → none |  |
| 275 | Emissão inicial | 2026-06-25 → 2026-07-02 (+7d) | 2026-07-01 → 2026-07-08 (+7d) |  |  | 2d → 5d | constraint none → start no earlier than 2026-06-22 |
| 276 | Análise Tecnored | 2026-07-02 → 2026-07-09 (+7d) | 2026-07-02 → 2026-07-09 (+7d) |  |  | 2d → 5d | constraint none → start no earlier than 2026-06-29 |
| 277 | Atendimento de comentários | 2026-07-03 → 2026-07-10 (+7d) | 2026-07-06 → 2026-07-13 (+7d) |  |  | 2d → 5d | constraint none → start no earlier than 2026-06-30 |
| 278 | Aprovação | 2026-07-07 → 2026-07-14 (+7d) | 2026-07-07 → 2026-07-14 (+7d) |  |  | 2d → 5d | constraint none → start no earlier than 2026-07-02 |
| 279 | **Elétrica** |  | 2026-07-08 → 2026-07-06 (-2d) | 28d → 26d | 2% → 5% | 1d → none |  |
| 280 | **CP-F0009-0306-MB-E-00001** | 2026-05-05 → 2026-05-28 (+23d) | 2026-06-11 → 2026-06-15 (+4d) | 26d → 11d |  | 20d → 26d |  |
| 281 | Emissão inicial | 2026-05-05 → 2026-05-28 (+23d) | 2026-05-13 → 2026-06-09 (+27d) |  |  | 35d → 26d |  |
| 282 | Análise Tecnored | 2026-06-08 → 2026-06-10 (+2d) | 2026-06-08 → 2026-06-10 (+2d) |  |  | 20d → 26d |  |
| 283 | Atendimento de comentários | 2026-06-09 → 2026-06-11 (+2d) | 2026-06-10 → 2026-06-12 (+2d) |  |  | 20d → 26d |  |
| 284 | Aprovação | 2026-06-11 → 2026-06-15 (+4d) | 2026-06-11 → 2026-06-15 (+4d) |  |  | 20d → 26d |  |
| 290 | **RL-F0009-0306-MB-E-00001** | 2026-06-02 A |  |  | 0% → 43% | 1d → none |  |
| 291 | Emissão inicial | 2026-06-02 A | 2026-06-08 A |  | 0% → 100% | 1d → none |  |
| 296 | Emissão inicial | 2026-06-26 → 2026-07-10 (+14d) | 2026-06-30 → 2026-07-14 (+14d) |  |  | 3d → 1d |  |
| 297 | Análise Tecnored | 2026-07-01 → 2026-07-15 (+14d) | 2026-07-01 → 2026-07-15 (+14d) |  |  | 3d → 1d |  |
| 298 | Atendimento de comentários | 2026-07-02 → 2026-07-16 (+14d) | 2026-07-03 → 2026-07-17 (+14d) |  |  | 3d → 1d |  |
| 299 | Aprovação | 2026-07-06 → 2026-07-20 (+14d) | 2026-07-06 → 2026-07-20 (+14d) |  |  | 3d → 1d |  |
| 300 | **LR-F0009-0306-MB-E-00001** |  | 2026-06-09 → 2026-06-12 (+3d) | 7d → 10d | 43% → 60% | 22d → none |  |

| ID | Task | Start | Finish | Duration | Complete | Total float | Other |
| --- | --- | --- | --- | --- | --- | --- | --- |
| 302 | Análise Tecnored | 2026-06-02 A | 2026-06-02 → 2026-06-09 (+7d) | 1d → 4d | 0% → 75% | 22d → 27d | constraint none → finish no earlier than 2026-06-09 |
| 303 | Atendimento de comentários | 2026-06-03 → 2026-06-10 (+7d) | 2026-06-08 → 2026-06-11 (+3d) |  |  | 22d → 27d | constraint none → start no earlier than 2026-06-10 |
| 304 | Aprovação | 2026-06-09 → 2026-06-12 (+3d) | 2026-06-09 → 2026-06-12 (+3d) |  |  | 22d → 27d | constraint none → start no earlier than 2026-06-12 |
| 321 | Emissão inicial | 2026-06-19 → 2026-07-03 (+14d) | 2026-06-25 → 2026-07-09 (+14d) |  |  | 3d → 1d |  |
| 322 | Análise Tecnored | 2026-06-26 → 2026-07-10 (+14d) | 2026-06-26 → 2026-07-10 (+14d) |  |  | 6d → 4d |  |
| 323 | Atendimento de comentários | 2026-06-29 → 2026-07-13 (+14d) | 2026-06-30 → 2026-07-14 (+14d) |  |  | 6d → 4d |  |
| 324 | Aprovação | 2026-07-01 → 2026-07-15 (+14d) | 2026-07-01 → 2026-07-15 (+14d) |  |  | 6d → 4d |  |
| 326 | Emissão inicial | 2026-06-19 → 2026-07-03 (+14d) | 2026-06-25 → 2026-07-09 (+14d) |  |  | 1d → 0d |  |
| 327 | Análise Tecnored | 2026-06-26 → 2026-07-10 (+14d) | 2026-06-26 → 2026-07-10 (+14d) |  |  | 6d → 4d |  |
| 328 | Atendimento de comentários | 2026-06-29 → 2026-07-13 (+14d) | 2026-06-30 → 2026-07-14 (+14d) |  |  | 6d → 4d |  |
| 329 | Aprovação | 2026-07-01 → 2026-07-15 (+14d) | 2026-07-01 → 2026-07-15 (+14d) |  |  | 6d → 4d |  |
| 340 | **DU-F0009-0306-MB-E-00002** | 2026-06-26 → 2026-06-16 (-10d) | 2026-07-03 → 2026-06-25 (-8d) | 6d → 8d |  | 4d → none |  |
| 341 | Emissão inicial | 2026-06-26 → 2026-07-10 (+14d) | 2026-06-29 → 2026-07-15 (+16d) | 2d → 4d |  | 4d → 0d | constraint none → finish no earlier than 2026-06-19 |
| 342 | Análise Tecnored | 2026-06-30 → 2026-07-16 (+16d) | 2026-06-30 → 2026-07-16 (+16d) |  |  | 4d → 0d | constraint none → start no earlier than 2026-06-22 |
| 343 | Atendimento de comentários | 2026-07-01 → 2026-07-17 (+16d) | 2026-07-02 → 2026-07-20 (+18d) |  |  | 4d → 0d | constraint none → start no earlier than 2026-06-23 |
| 344 | Aprovação | 2026-07-03 → 2026-07-21 (+18d) | 2026-07-03 → 2026-07-21 (+18d) |  |  | 4d → 0d | constraint none → start no earlier than 2026-06-25 |
| 345 | **DU-F0009-0306-MB-E-00003** | 2026-06-26 → 2026-06-16 (-10d) | 2026-07-08 → 2026-06-25 (-13d) | 9d → 8d |  | 1d → none |  |
| 346 | Emissão inicial | 2026-06-26 → 2026-07-10 (+14d) | 2026-07-02 → 2026-07-15 (+13d) | 5d → 4d |  | 1d → 0d | constraint none → finish no earlier than 2026-06-19 |
| 347 | Análise Tecnored | 2026-07-03 → 2026-07-16 (+13d) | 2026-07-03 → 2026-07-16 (+13d) |  |  | 1d → 0d | constraint none → start no earlier than 2026-06-22 |
| 348 | Atendimento de comentários | 2026-07-06 → 2026-07-17 (+11d) | 2026-07-07 → 2026-07-20 (+13d) |  |  | 1d → 0d | constraint none → start no earlier than 2026-06-23 |
| 349 | Aprovação | 2026-07-08 → 2026-07-21 (+13d) | 2026-07-08 → 2026-07-21 (+13d) |  |  | 1d → 0d | constraint none → start no earlier than 2026-06-25 |
| 350 | **DU-F0009-0306-MB-E-00004** | 2026-06-09 → 2026-06-12 (+3d) | 2026-07-01 → 2026-06-24 (-7d) | 17d → 9d |  | 6d → none |  |
| 351 | Emissão inicial | 2026-06-09 → 2026-06-12 (+3d) | 2026-06-15 → 2026-06-18 (+3d) |  |  | 18d → 23d | constraint none → start no earlier than 2026-06-12 |
| 352 | Análise Tecnored | 2026-06-26 → 2026-07-10 (+14d) | 2026-06-26 → 2026-07-10 (+14d) |  |  | 6d → 4d | constraint none → start no earlier than 2026-06-19 |
| 353 | Atendimento de comentários | 2026-06-29 → 2026-07-13 (+14d) | 2026-06-30 → 2026-07-14 (+14d) |  |  | 6d → 4d | constraint none → start no earlier than 2026-06-22 |
| 354 | Aprovação | 2026-07-01 → 2026-07-15 (+14d) | 2026-07-01 → 2026-07-15 (+14d) |  |  | 6d → 4d | constraint none → start no earlier than 2026-06-24 |
| 355 | **AG-F0009-0306-MB-E-00002** | 2026-06-16 → 2026-06-12 (-4d) | 2026-06-25 → 2026-06-24 (-1d) | 8d → 9d |  | 10d → none |  |
| 356 | Emissão inicial |  | 2026-06-19 → 2026-06-22 (+3d) | 4d → 5d |  | 10d → 17d | constraint none → finish no earlier than 2026-06-18 |
| 357 | Análise Tecnored | 2026-06-22 → 2026-06-23 (+1d) | 2026-06-22 → 2026-06-23 (+1d) |  |  | 10d → 17d | constraint none → start no earlier than 2026-06-19 |
| 358 | Atendimento de comentários | 2026-06-23 → 2026-06-24 (+1d) | 2026-06-24 → 2026-06-25 (+1d) |  |  | 10d → 17d | constraint none → start no earlier than 2026-06-22 |
| 359 | Aprovação | 2026-06-25 → 2026-06-26 (+1d) | 2026-06-25 → 2026-06-26 (+1d) |  |  | 10d → 17d | constraint none → start no earlier than 2026-06-24 |
| 360 | **AG-F0009-0306-MB-E-00003** | 2026-06-16 → 2026-06-12 (-4d) | 2026-06-25 → 2026-06-24 (-1d) | 8d → 9d |  | 10d → none |  |
| 361 | Emissão inicial |  | 2026-06-19 → 2026-06-22 (+3d) | 4d → 5d |  | 10d → 17d | constraint none → finish no earlier than 2026-06-18 |
| 362 | Análise Tecnored | 2026-06-22 → 2026-06-23 (+1d) | 2026-06-22 → 2026-06-23 (+1d) |  |  | 10d → 17d | constraint none → start no earlier than 2026-06-19 |
| 363 | Atendimento de comentários | 2026-06-23 → 2026-06-24 (+1d) | 2026-06-24 → 2026-06-25 (+1d) |  |  | 10d → 17d | constraint none → start no earlier than 2026-06-22 |
| 364 | Aprovação | 2026-06-25 → 2026-06-26 (+1d) | 2026-06-25 → 2026-06-26 (+1d) |  |  | 10d → 17d | constraint none → start no earlier than 2026-06-24 |
| 375 | **FD-F0009-0306-MB-E-00003** | 2026-06-12 → 2026-05-29 (-14d) | 2026-06-24 → 2026-07-08 (+14d) | 9d → 27d |  | 11d → none |  |
| 376 | Emissão inicial |  | 2026-06-18 → 2026-06-22 (+4d) | 5d → 7d |  | 11d → 15d | constraint none → finish no earlier than 2026-06-18 |
| 377 | Análise Tecnored | 2026-06-19 → 2026-06-23 (+4d) | 2026-06-19 → 2026-06-25 (+6d) | 1d → 3d |  | 11d → 15d | constraint none → finish no earlier than 2026-06-12 |
| 378 | Atendimento de comentários | 2026-06-22 → 2026-06-26 (+4d) | 2026-06-23 → 2026-06-26 (+3d) | 2d → 1d |  | 11d → 15d | constraint none → finish no earlier than 2026-06-15 |
| 379 | Aprovação | 2026-06-24 → 2026-06-29 (+5d) | 2026-06-24 → 2026-06-30 (+6d) | 1d → 2d |  | 11d → 15d | constraint none → finish no earlier than 2026-06-17 |
| 380 | **FD-F0009-0306-MB-E-00004** | 2026-06-12 → 2026-06-18 (+6d) | 2026-06-24 → 2026-06-18 (-6d) | 9d → 1d |  | 11d → none |  |
| 381 | Emissão inicial | 2026-06-12 → 2026-06-29 (+17d) | 2026-06-18 → 2026-07-06 (+18d) | 5d → 6d |  | 11d → 6d | constraint none → finish no earlier than 2026-07-06 |
| 382 | Análise Tecnored | 2026-06-19 → 2026-07-07 (+18d) | 2026-06-19 → 2026-07-08 (+19d) | 1d → 2d |  | 11d → 6d | constraint none → finish no earlier than 2026-06-30 |
| 383 | Atendimento de comentários | 2026-06-22 → 2026-07-09 (+17d) | 2026-06-23 → 2026-07-09 (+16d) | 2d → 1d |  | 11d → 6d | constraint none → finish no earlier than 2026-07-01 |
| 384 | Aprovação | 2026-06-24 → 2026-07-10 (+16d) | 2026-06-24 → 2026-07-13 (+19d) | 1d → 2d |  | 11d → 6d | constraint none → finish no earlier than 2026-07-03 |
| 385 | **FD-F0009-0306-MB-E-00005** | 2026-06-12 → 2026-07-06 (+24d) | 2026-06-24 → 2026-07-06 (+12d) | 9d → 1d |  | 1d → none |  |
| 386 | Emissão inicial | 2026-06-12 → 2026-06-25 (+13d) | 2026-06-18 → 2026-07-02 (+14d) | 5d → 6d |  | 1d → 0d | constraint none → finish no earlier than 2026-07-02 |
| 387 | Análise Tecnored | 2026-06-19 → 2026-07-03 (+14d) | 2026-06-19 → 2026-07-06 (+17d) | 1d → 2d |  | 11d → 8d | constraint none → finish no earlier than 2026-06-26 |
| 388 | Atendimento de comentários | 2026-06-22 → 2026-07-07 (+15d) | 2026-06-23 → 2026-07-07 (+14d) | 2d → 1d |  | 11d → 8d | constraint none → finish no earlier than 2026-06-29 |
| 389 | Aprovação | 2026-06-24 → 2026-07-08 (+14d) | 2026-06-24 → 2026-07-09 (+15d) | 1d → 2d |  | 11d → 8d | constraint none → finish no earlier than 2026-07-01 |
| 390 | **Automação e instrumentação** | 2026-05-29 A | 2026-07-08 → 2026-07-03 (-5d) | 27d → 24d | 0% → 5% | 1d → 12d |  |
| 391 | **CP-F0009-0306-MB-J-00001** |  | 2026-06-11 → 2026-06-15 (+4d) | 26d → 28d |  | 20d → 26d |  |
| 393 | Análise Tecnored | 2026-06-08 → 2026-06-10 (+2d) | 2026-06-08 → 2026-06-10 (+2d) |  |  | 20d → 26d |  |
| 394 | Atendimento de comentários | 2026-06-09 → 2026-06-11 (+2d) | 2026-06-10 → 2026-06-12 (+2d) |  |  | 20d → 26d |  |
| 395 | Aprovação | 2026-06-11 → 2026-06-15 (+4d) | 2026-06-11 → 2026-06-15 (+4d) |  |  | 20d → 26d |  |
| 396 | **LI-F0009-0306-MB-J-00001** | 2026-06-03 → 2026-06-09 (+6d) | 2026-06-15 → 2026-06-19 (+4d) | 7d → 9d |  | 1d → 12d |  |
| 397 | Emissão inicial | 2026-06-03 → 2026-06-09 (+6d) | 2026-06-09 → 2026-06-15 (+6d) | 3d → 5d |  | 1d → 12d | constraint none → finish no earlier than 2026-06-15 |
| 398 | Análise Tecnored | 2026-06-10 → 2026-06-16 (+6d) | 2026-06-10 → 2026-06-16 (+6d) |  |  | 18d → 22d |  |
| 399 | Atendimento de comentários | 2026-06-11 → 2026-06-17 (+6d) | 2026-06-12 → 2026-06-18 (+6d) |  |  | 18d → 22d |  |
| 400 | Aprovação | 2026-06-15 → 2026-06-19 (+4d) | 2026-06-15 → 2026-06-19 (+4d) |  |  | 18d → 22d |  |
| 401 | **LE-F0009-0306-MB-J-00001** | 2026-06-26 → 2026-06-17 (-9d) | 2026-07-03 → 2026-06-23 (-10d) | 6d → 5d |  | 4d → 20d |  |
| 402 | Emissão inicial | 2026-06-26 → 2026-06-17 (-9d) | 2026-06-29 → 2026-06-17 (-12d) | 2d → 1d |  | 4d → 20d |  |
| 403 | Análise Tecnored | 2026-06-30 → 2026-06-18 (-12d) | 2026-06-30 → 2026-06-18 (-12d) |  |  | 4d → 20d |  |
| 404 | Atendimento de comentários | 2026-07-01 → 2026-06-19 (-12d) | 2026-07-02 → 2026-06-22 (-10d) |  |  | 4d → 20d |  |
| 405 | Aprovação | 2026-07-03 → 2026-06-23 (-10d) | 2026-07-03 → 2026-06-23 (-10d) |  |  | 4d → 20d |  |
| 406 | **LZ-F0009-0306-MB-J-00001** | 2026-06-22 → 2026-05-29 A (-24d) | 2026-06-29 → 2026-06-11 (-18d) | 6d → 8d | 0% → 50% | 1d → 28d |  |
| 407 | Emissão inicial | 2026-06-22 → 2026-05-29 A (-24d) | 2026-06-23 → 2026-06-03 A (-20d) | 2d → 4d | 0% → 100% | 1d → none |  |
| 408 | Análise Tecnored | 2026-06-24 → 2026-06-08 (-16d) | 2026-06-24 → 2026-06-08 (-16d) |  |  | 8d → 28d |  |
| 409 | Atendimento de comentários | 2026-06-25 → 2026-06-09 (-16d) | 2026-06-26 → 2026-06-10 (-16d) |  |  | 8d → 28d |  |

| ID | Task | Start | Finish | Duration | Complete | Total float | Predecessors | Other |
| --- | --- | --- | --- | --- | --- | --- | --- | --- |
| 410 | Aprovação | 2026-06-29 → 2026-06-11 (-18d) | 2026-06-29 → 2026-06-11 (-18d) |  |  | 8d → 28d |  |  |
| 411 | **LE-F0009-0306-MB-J-00002** | 2026-06-22 → 2026-06-11 (-11d) | 2026-06-30 → 2026-06-23 (-7d) | 7d → 9d |  | 7d → 20d |  |  |
| 412 | Emissão inicial | 2026-06-22 → 2026-06-11 (-11d) | 2026-06-24 → 2026-06-18 (-6d) | 3d → 6d |  | 7d → 20d |  |  |
| 413 | Análise Tecnored | 2026-06-25 → 2026-06-19 (-6d) | 2026-06-25 → 2026-06-19 (-6d) |  |  | 7d → 20d |  |  |
| 414 | Atendimento de comentários | 2026-06-26 → 2026-06-22 (-4d) | 2026-06-29 → 2026-06-22 (-7d) | 2d → 1d |  | 7d → 20d |  |  |
| 415 | Aprovação | 2026-06-30 → 2026-06-23 (-7d) | 2026-06-30 → 2026-06-23 (-7d) |  |  | 7d → 20d |  |  |
| 416 | **PQ-F0009-0306-MB-J-00001** | 2026-06-23 → 2026-06-16 (-7d) | 2026-06-29 → 2026-06-26 (-3d) | 5d → 9d |  | 8d → 17d |  |  |
| 417 | Emissão inicial | 2026-06-23 → 2026-06-16 (-7d) |  | 1d → 6d |  | 8d → 17d |  |  |
| 419 | Atendimento de comentários |  | 2026-06-26 → 2026-06-25 (-1d) | 2d → 1d |  | 8d → 17d |  |  |
| 420 | Aprovação | 2026-06-29 → 2026-06-26 (-3d) | 2026-06-29 → 2026-06-26 (-3d) |  |  | 8d → 17d |  |  |
| 421 | **FG-F0009-0306-MB-J-00001** | 2026-05-29 → 2026-06-01 A (+3d) | 2026-06-12 → 2026-06-11 (-1d) | 9d → 7d | 0% → 50% | 19d → 28d |  |  |
| 422 | Emissão inicial | 2026-05-29 → 2026-06-01 A (+3d) | 2026-06-08 A | 5d → 4d | 0% → 100% | 19d → none |  |  |
| 423 | Análise Tecnored |  |  |  |  | 19d → 28d |  | constraint none → start no earlier than 2026-06-09 |
| 424 | Atendimento de comentários |  |  |  |  | 19d → 28d |  | constraint none → start no earlier than 2026-06-10 |
| 425 | Aprovação | 2026-06-12 → 2026-06-11 (-1d) | 2026-06-12 → 2026-06-11 (-1d) |  |  | 19d → 28d | 424 → 424FF | constraint none → start no earlier than 2026-06-11 |
| 426 | **FG-F0009-0306-MB-J-00002** | 2026-05-29 → 2026-06-01 A (+3d) | 2026-06-10 → 2026-06-12 (+2d) | 7d → 8d | 0% → 50% | 1d → 27d |  |  |
| 427 | Emissão inicial | 2026-05-29 → 2026-06-01 A (+3d) | 2026-06-02 → 2026-06-08 A (+6d) | 3d → 4d | 0% → 100% | 1d → none |  |  |
| 428 | Análise Tecnored | 2026-06-03 → 2026-06-09 (+6d) | 2026-06-03 → 2026-06-09 (+6d) |  |  | 21d → 27d |  | constraint none → start no earlier than 2026-06-09 |
| 429 | Atendimento de comentários | 2026-06-08 → 2026-06-10 (+2d) | 2026-06-09 → 2026-06-11 (+2d) |  |  | 21d → 27d |  | constraint none → start no earlier than 2026-06-10 |
| 430 | Aprovação | 2026-06-10 → 2026-06-12 (+2d) | 2026-06-10 → 2026-06-12 (+2d) |  |  | 21d → 27d |  | constraint none → start no earlier than 2026-06-12 |
| 431 | **FG-F0009-0306-MB-J-00003** | 2026-05-29 → 2026-06-01 A (+3d) |  | 9d → 8d | 0% → 50% | 19d → 27d |  |  |
| 432 | Emissão inicial | 2026-05-29 → 2026-06-01 A (+3d) | 2026-06-08 A | 5d → 4d | 0% → 100% | 19d → none |  |  |
| 433 | Análise Tecnored |  |  |  |  | 19d → 27d |  | constraint none → start no earlier than 2026-06-09 |
| 434 | Atendimento de comentários |  |  |  |  | 19d → 27d |  | constraint none → start no earlier than 2026-06-10 |
| 435 | Aprovação |  |  |  |  | 19d → 27d |  | constraint none → start no earlier than 2026-06-12 |
| 436 | **AG-F0009-0306-MB-J-00001** | 2026-06-10 → 2026-06-16 (+6d) | 2026-06-29 → 2026-07-03 (+4d) |  |  | 8d → 12d |  |  |
| 437 | Emissão inicial | 2026-06-10 → 2026-06-16 (+6d) | 2026-06-23 → 2026-06-29 (+6d) |  |  | 8d → 12d |  |  |
| 438 | Análise Tecnored | 2026-06-24 → 2026-06-30 (+6d) | 2026-06-24 → 2026-06-30 (+6d) |  |  | 8d → 12d |  |  |
| 439 | Atendimento de comentários | 2026-06-25 → 2026-07-01 (+6d) | 2026-06-26 → 2026-07-02 (+6d) |  |  | 8d → 12d |  |  |
| 440 | Aprovação | 2026-06-29 → 2026-07-03 (+4d) | 2026-06-29 → 2026-07-03 (+4d) |  |  | 8d → 12d |  |  |
| 441 | **AG-F0009-0306-MB-J-00002** | 2026-06-10 → 2026-06-16 (+6d) | 2026-06-29 → 2026-06-24 (-5d) | 14d → 7d |  | 8d → 19d |  |  |
| 442 | Emissão inicial | 2026-06-10 → 2026-06-16 (+6d) | 2026-06-23 → 2026-06-18 (-5d) | 10d → 3d |  | 8d → 19d |  |  |
| 443 | Análise Tecnored | 2026-06-24 → 2026-06-19 (-5d) | 2026-06-24 → 2026-06-19 (-5d) |  |  | 8d → 19d |  |  |
| 444 | Atendimento de comentários | 2026-06-25 → 2026-06-22 (-3d) | 2026-06-26 → 2026-06-23 (-3d) |  |  | 8d → 19d |  |  |
| 445 | Aprovação | 2026-06-29 → 2026-06-24 (-5d) | 2026-06-29 → 2026-06-24 (-5d) |  |  | 8d → 19d |  |  |
| 446 | **AG-F0009-0306-MB-J-00003** | 2026-06-10 → 2026-06-16 (+6d) | 2026-06-29 → 2026-06-24 (-5d) | 14d → 7d |  | 1d → 17d |  |  |
| 447 | Emissão inicial | 2026-06-10 → 2026-06-16 (+6d) | 2026-06-23 → 2026-06-18 (-5d) | 10d → 3d |  | 1d → 17d |  |  |
| 448 | Análise Tecnored | 2026-06-24 → 2026-06-19 (-5d) | 2026-06-24 → 2026-06-19 (-5d) |  |  | 8d → 19d |  |  |
| 449 | Atendimento de comentários | 2026-06-25 → 2026-06-22 (-3d) | 2026-06-26 → 2026-06-23 (-3d) |  |  | 8d → 19d |  |  |
| 450 | Aprovação | 2026-06-29 → 2026-06-24 (-5d) | 2026-06-29 → 2026-06-24 (-5d) |  |  | 8d → 19d |  |  |
| 451 | **AG-F0009-0306-MB-J-00004** | 2026-06-10 → 2026-06-16 (+6d) | 2026-06-29 → 2026-06-23 (-6d) | 14d → 6d |  | 8d → 20d |  |  |
| 452 | Emissão inicial | 2026-06-10 → 2026-06-16 (+6d) | 2026-06-23 → 2026-06-17 (-6d) | 10d → 2d |  | 8d → 20d |  |  |
| 453 | Análise Tecnored | 2026-06-24 → 2026-06-18 (-6d) | 2026-06-24 → 2026-06-18 (-6d) |  |  | 8d → 20d |  |  |
| 454 | Atendimento de comentários | 2026-06-25 → 2026-06-19 (-6d) | 2026-06-26 → 2026-06-22 (-4d) |  |  | 8d → 20d |  |  |
| 455 | Aprovação | 2026-06-29 → 2026-06-23 (-6d) | 2026-06-29 → 2026-06-23 (-6d) |  |  | 8d → 20d |  |  |
| 456 | **DI-F0009-0306-MB-J-00001** | 2026-06-24 → 2026-06-19 (-5d) | 2026-07-02 → 2026-06-26 (-6d) | 7d → 6d |  | 1d → 17d |  |  |
| 457 | Emissão inicial | 2026-06-24 → 2026-06-19 (-5d) | 2026-06-26 → 2026-06-22 (-4d) | 3d → 2d |  | 1d → 17d |  |  |
| 458 | Análise Tecnored | 2026-06-29 → 2026-06-23 (-6d) | 2026-06-29 → 2026-06-23 (-6d) |  |  | 5d → 17d |  |  |
| 459 | Atendimento de comentários | 2026-06-30 → 2026-06-24 (-6d) | 2026-07-01 → 2026-06-25 (-6d) |  |  | 5d → 17d |  |  |
| 460 | Aprovação | 2026-07-02 → 2026-06-26 (-6d) | 2026-07-02 → 2026-06-26 (-6d) |  |  | 5d → 17d |  |  |
| 461 | **LI-F0009-0306-MB-J-00002** | 2026-06-26 → 2026-06-09 (-17d) | 2026-07-06 → 2026-06-19 (-17d) | 7d → 9d |  | 3d → 22d |  |  |
| 462 | Emissão inicial | 2026-06-26 → 2026-06-09 (-17d) | 2026-06-30 → 2026-06-15 (-15d) | 3d → 5d |  | 3d → 22d | 477 → none | constraint none → start no earlier than 2026-06-09 |
| 463 | Análise Tecnored | 2026-07-01 → 2026-06-16 (-15d) | 2026-07-01 → 2026-06-16 (-15d) |  |  | 3d → 22d |  |  |
| 464 | Atendimento de comentários | 2026-07-02 → 2026-06-17 (-15d) | 2026-07-03 → 2026-06-18 (-15d) |  |  | 3d → 22d |  |  |
| 465 | Aprovação | 2026-07-06 → 2026-06-19 (-17d) | 2026-07-06 → 2026-06-19 (-17d) |  |  | 3d → 22d |  |  |
| 466 | **LI-F0009-0306-MB-J-00003** | 2026-06-26 → 2026-06-09 (-17d) | 2026-07-03 → 2026-06-18 (-15d) | 6d → 8d |  | 1d → 17d |  |  |
| 467 | Emissão inicial | 2026-06-26 → 2026-06-09 (-17d) | 2026-06-29 → 2026-06-15 (-14d) | 2d → 5d |  | 1d → 17d | 477 → none | constraint none → start no earlier than 2026-06-09 |
| 468 | Análise Tecnored | 2026-06-30 → 2026-06-16 (-14d) | 2026-06-30 → 2026-06-16 (-14d) |  |  | 4d → 23d |  |  |
| 469 | Atendimento de comentários | 2026-07-01 → 2026-06-17 (-14d) | 2026-07-02 → 2026-06-17 (-15d) | 2d → 1d |  | 4d → 23d |  |  |
| 470 | Aprovação | 2026-07-03 → 2026-06-18 (-15d) | 2026-07-03 → 2026-06-18 (-15d) |  |  | 4d → 23d |  |  |
| 471 | **LM-F0009-0306-MB-J-00001** | 2026-06-26 → 2026-06-12 (-14d) | 2026-07-03 → 2026-06-25 (-8d) | 6d → 10d |  | 4d → 17d |  |  |
| 472 | Emissão inicial | 2026-06-26 → 2026-06-12 (-14d) | 2026-06-29 → 2026-06-22 (-7d) | 2d → 7d |  | 4d → 17d |  |  |
| 473 | Análise Tecnored | 2026-06-30 → 2026-06-23 (-7d) | 2026-06-30 → 2026-06-23 (-7d) |  |  | 4d → 18d |  |  |
| 474 | Atendimento de comentários | 2026-07-01 → 2026-06-24 (-7d) | 2026-07-02 → 2026-06-24 (-8d) | 2d → 1d |  | 4d → 18d |  |  |
| 475 | Aprovação | 2026-07-03 → 2026-06-25 (-8d) | 2026-07-03 → 2026-06-25 (-8d) |  |  | 4d → 18d |  |  |
| 476 | **ET-F0009-0306-MB-J-00001** | 2026-06-24 → 2026-06-08 (-16d) | 2026-07-01 → 2026-06-19 (-12d) | 6d → 10d |  | 1d → 20d |  |  |
| 477 | Emissão inicial | 2026-06-24 → 2026-06-08 (-16d) | 2026-06-25 → 2026-06-16 (-9d) | 2d → 7d |  | 1d → 20d |  |  |
| 478 | Análise Tecnored | 2026-06-26 → 2026-06-17 (-9d) | 2026-06-26 → 2026-06-17 (-9d) |  |  | 6d → 22d |  |  |
| 479 | Atendimento de comentários | 2026-06-29 → 2026-06-18 (-11d) | 2026-06-30 → 2026-06-18 (-12d) | 2d → 1d |  | 6d → 22d |  |  |
| 480 | Aprovação | 2026-07-01 → 2026-06-19 (-12d) | 2026-07-01 → 2026-06-19 (-12d) |  |  | 6d → 22d |  |  |

| ID | Task | Start | Finish | Duration | Total float |
| --- | --- | --- | --- | --- | --- |
| 481 | **FD-F0009-0306-MB-J-00001** | 2026-06-24 → 2026-06-08 (-16d) | 2026-07-08 → 2026-06-19 (-19d) | 11d → 10d | 1d → 22d |
| 482 | Emissão inicial | 2026-06-24 → 2026-06-08 (-16d) | 2026-07-02 → 2026-06-16 (-16d) |  | 1d → 22d |
| 483 | Análise Tecnored | 2026-07-03 → 2026-06-17 (-16d) | 2026-07-03 → 2026-06-17 (-16d) |  | 1d → 22d |
| 484 | Atendimento de comentários | 2026-07-06 → 2026-06-18 (-18d) | 2026-07-07 → 2026-06-18 (-19d) | 2d → 1d | 1d → 22d |
| 485 | Aprovação | 2026-07-08 → 2026-06-19 (-19d) | 2026-07-08 → 2026-06-19 (-19d) |  | 1d → 22d |
| 486 | **FD-F0009-0306-MB-J-00002** | 2026-06-24 → 2026-06-08 (-16d) | 2026-07-08 → 2026-06-19 (-19d) | 11d → 10d | 1d → 22d |
| 487 | Emissão inicial | 2026-06-24 → 2026-06-08 (-16d) | 2026-07-02 → 2026-06-16 (-16d) |  | 1d → 22d |
| 488 | Análise Tecnored | 2026-07-03 → 2026-06-17 (-16d) | 2026-07-03 → 2026-06-17 (-16d) |  | 1d → 22d |
| 489 | Atendimento de comentários | 2026-07-06 → 2026-06-18 (-18d) | 2026-07-07 → 2026-06-18 (-19d) | 2d → 1d | 1d → 22d |
| 490 | Aprovação | 2026-07-08 → 2026-06-19 (-19d) | 2026-07-08 → 2026-06-19 (-19d) |  | 1d → 22d |
| 491 | **FD-F0009-0306-MB-J-00003** | 2026-06-24 → 2026-06-08 (-16d) | 2026-07-08 → 2026-06-19 (-19d) | 11d → 10d | 1d → 22d |
| 492 | Emissão inicial | 2026-06-24 → 2026-06-08 (-16d) | 2026-07-02 → 2026-06-16 (-16d) |  | 1d → 22d |
| 493 | Análise Tecnored | 2026-07-03 → 2026-06-17 (-16d) | 2026-07-03 → 2026-06-17 (-16d) |  | 1d → 22d |
| 494 | Atendimento de comentários | 2026-07-06 → 2026-06-18 (-18d) | 2026-07-07 → 2026-06-18 (-19d) | 2d → 1d | 1d → 22d |
| 495 | Aprovação | 2026-07-08 → 2026-06-19 (-19d) | 2026-07-08 → 2026-06-19 (-19d) |  | 1d → 22d |
| 496 | **FD-F0009-0306-MB-J-00004** | 2026-06-24 → 2026-06-08 (-16d) | 2026-07-08 → 2026-06-19 (-19d) | 11d → 10d | 1d → 22d |
| 497 | Emissão inicial | 2026-06-24 → 2026-06-08 (-16d) | 2026-07-02 → 2026-06-16 (-16d) |  | 1d → 22d |
| 498 | Análise Tecnored | 2026-07-03 → 2026-06-17 (-16d) | 2026-07-03 → 2026-06-17 (-16d) |  | 1d → 22d |
| 499 | Atendimento de comentários | 2026-07-06 → 2026-06-18 (-18d) | 2026-07-07 → 2026-06-18 (-19d) | 2d → 1d | 1d → 22d |
| 500 | Aprovação | 2026-07-08 → 2026-06-19 (-19d) | 2026-07-08 → 2026-06-19 (-19d) |  | 1d → 22d |
| 501 | **FD-F0009-0306-MB-J-00005** | 2026-06-24 → 2026-06-08 (-16d) | 2026-07-08 → 2026-06-19 (-19d) | 11d → 10d | 1d → 22d |
| 502 | Emissão inicial | 2026-06-24 → 2026-06-08 (-16d) | 2026-07-02 → 2026-06-16 (-16d) |  | 1d → 22d |
| 503 | Análise Tecnored | 2026-07-03 → 2026-06-17 (-16d) | 2026-07-03 → 2026-06-17 (-16d) |  | 1d → 22d |
| 504 | Atendimento de comentários | 2026-07-06 → 2026-06-18 (-18d) | 2026-07-07 → 2026-06-18 (-19d) | 2d → 1d | 1d → 22d |
| 505 | Aprovação | 2026-07-08 → 2026-06-19 (-19d) | 2026-07-08 → 2026-06-19 (-19d) |  | 1d → 22d |
| 506 | **FD-F0009-0306-MB-J-00006** | 2026-06-24 → 2026-06-08 (-16d) | 2026-07-08 → 2026-06-19 (-19d) | 11d → 10d | 1d → 22d |
| 507 | Emissão inicial | 2026-06-24 → 2026-06-08 (-16d) | 2026-07-02 → 2026-06-16 (-16d) |  | 1d → 22d |
| 508 | Análise Tecnored | 2026-07-03 → 2026-06-17 (-16d) | 2026-07-03 → 2026-06-17 (-16d) |  | 1d → 22d |
| 509 | Atendimento de comentários | 2026-07-06 → 2026-06-18 (-18d) | 2026-07-07 → 2026-06-18 (-19d) | 2d → 1d | 1d → 22d |
| 510 | Aprovação | 2026-07-08 → 2026-06-19 (-19d) | 2026-07-08 → 2026-06-19 (-19d) |  | 1d → 22d |
| 511 | **FD-F0009-0306-MB-J-00007** | 2026-06-24 → 2026-06-08 (-16d) | 2026-07-08 → 2026-06-19 (-19d) | 11d → 10d | 1d → 22d |
| 512 | Emissão inicial | 2026-06-24 → 2026-06-08 (-16d) | 2026-07-02 → 2026-06-16 (-16d) |  | 1d → 22d |
| 513 | Análise Tecnored | 2026-07-03 → 2026-06-17 (-16d) | 2026-07-03 → 2026-06-17 (-16d) |  | 1d → 22d |
| 514 | Atendimento de comentários | 2026-07-06 → 2026-06-18 (-18d) | 2026-07-07 → 2026-06-18 (-19d) | 2d → 1d | 1d → 22d |
| 515 | Aprovação | 2026-07-08 → 2026-06-19 (-19d) | 2026-07-08 → 2026-06-19 (-19d) |  | 1d → 22d |
| 516 | **FD-F0009-0306-MB-J-00008** | 2026-06-24 → 2026-06-08 (-16d) | 2026-07-08 → 2026-06-19 (-19d) | 11d → 10d | 1d → 22d |
| 517 | Emissão inicial | 2026-06-24 → 2026-06-08 (-16d) | 2026-07-02 → 2026-06-16 (-16d) |  | 1d → 22d |
| 518 | Análise Tecnored | 2026-07-03 → 2026-06-17 (-16d) | 2026-07-03 → 2026-06-17 (-16d) |  | 1d → 22d |
| 519 | Atendimento de comentários | 2026-07-06 → 2026-06-18 (-18d) | 2026-07-07 → 2026-06-18 (-19d) | 2d → 1d | 1d → 22d |
| 520 | Aprovação | 2026-07-08 → 2026-06-19 (-19d) | 2026-07-08 → 2026-06-19 (-19d) |  | 1d → 22d |
| 521 | **FD-F0009-0306-MB-J-00009** | 2026-06-24 → 2026-06-08 (-16d) | 2026-07-08 → 2026-06-19 (-19d) | 11d → 10d | 1d → 22d |
| 522 | Emissão inicial | 2026-06-24 → 2026-06-08 (-16d) | 2026-07-02 → 2026-06-16 (-16d) |  | 1d → 22d |
| 523 | Análise Tecnored | 2026-07-03 → 2026-06-17 (-16d) | 2026-07-03 → 2026-06-17 (-16d) |  | 1d → 22d |
| 524 | Atendimento de comentários | 2026-07-06 → 2026-06-18 (-18d) | 2026-07-07 → 2026-06-18 (-19d) | 2d → 1d | 1d → 22d |
| 525 | Aprovação | 2026-07-08 → 2026-06-19 (-19d) | 2026-07-08 → 2026-06-19 (-19d) |  | 1d → 22d |
| 526 | **FD-F0009-0306-MB-J-00010** | 2026-06-24 → 2026-06-08 (-16d) | 2026-07-08 → 2026-06-19 (-19d) | 11d → 10d | 1d → 22d |
| 527 | Emissão inicial | 2026-06-24 → 2026-06-08 (-16d) | 2026-07-02 → 2026-06-16 (-16d) |  | 1d → 22d |
| 528 | Análise Tecnored | 2026-07-03 → 2026-06-17 (-16d) | 2026-07-03 → 2026-06-17 (-16d) |  | 1d → 22d |
| 529 | Atendimento de comentários | 2026-07-06 → 2026-06-18 (-18d) | 2026-07-07 → 2026-06-18 (-19d) | 2d → 1d | 1d → 22d |
| 530 | Aprovação | 2026-07-08 → 2026-06-19 (-19d) | 2026-07-08 → 2026-06-19 (-19d) |  | 1d → 22d |
| 531 | **FD-F0009-0306-MB-J-00011** | 2026-06-24 → 2026-06-08 (-16d) | 2026-07-08 → 2026-06-19 (-19d) | 11d → 10d | 1d → 22d |
| 532 | Emissão inicial | 2026-06-24 → 2026-06-08 (-16d) | 2026-07-02 → 2026-06-16 (-16d) |  | 1d → 22d |
| 533 | Análise Tecnored | 2026-07-03 → 2026-06-17 (-16d) | 2026-07-03 → 2026-06-17 (-16d) |  | 1d → 22d |
| 534 | Atendimento de comentários | 2026-07-06 → 2026-06-18 (-18d) | 2026-07-07 → 2026-06-18 (-19d) | 2d → 1d | 1d → 22d |
| 535 | Aprovação | 2026-07-08 → 2026-06-19 (-19d) | 2026-07-08 → 2026-06-19 (-19d) |  | 1d → 22d |
| 536 | **FD-F0009-0306-MB-J-00012** | 2026-06-24 → 2026-06-08 (-16d) | 2026-07-08 → 2026-06-19 (-19d) | 11d → 10d | 1d → 22d |
| 537 | Emissão inicial | 2026-06-24 → 2026-06-08 (-16d) | 2026-07-02 → 2026-06-16 (-16d) |  | 1d → 22d |
| 538 | Análise Tecnored | 2026-07-03 → 2026-06-17 (-16d) | 2026-07-03 → 2026-06-17 (-16d) |  | 1d → 22d |
| 539 | Atendimento de comentários | 2026-07-06 → 2026-06-18 (-18d) | 2026-07-07 → 2026-06-18 (-19d) | 2d → 1d | 1d → 22d |
| 540 | Aprovação | 2026-07-08 → 2026-06-19 (-19d) | 2026-07-08 → 2026-06-19 (-19d) |  | 1d → 22d |
| 541 | **FD-F0009-0306-MB-J-00013** | 2026-06-24 → 2026-06-08 (-16d) | 2026-07-08 → 2026-06-19 (-19d) | 11d → 10d | 1d → 22d |
| 542 | Emissão inicial | 2026-06-24 → 2026-06-08 (-16d) | 2026-07-02 → 2026-06-16 (-16d) |  | 1d → 22d |
| 543 | Análise Tecnored | 2026-07-03 → 2026-06-17 (-16d) | 2026-07-03 → 2026-06-17 (-16d) |  | 1d → 22d |
| 544 | Atendimento de comentários | 2026-07-06 → 2026-06-18 (-18d) | 2026-07-07 → 2026-06-18 (-19d) | 2d → 1d | 1d → 22d |
| 545 | Aprovação | 2026-07-08 → 2026-06-19 (-19d) | 2026-07-08 → 2026-06-19 (-19d) |  | 1d → 22d |
| 546 | **FD-F0009-0306-MB-J-00014** | 2026-06-24 → 2026-06-08 (-16d) | 2026-07-08 → 2026-06-15 (-23d) | 11d → 6d | 1d → 26d |
| 547 | Emissão inicial | 2026-06-24 → 2026-06-08 (-16d) | 2026-07-02 → 2026-06-10 (-22d) | 7d → 3d | 1d → 26d |
| 548 | Análise Tecnored | 2026-07-03 → 2026-06-11 (-22d) | 2026-07-03 → 2026-06-11 (-22d) |  | 1d → 26d |
| 549 | Atendimento de comentários | 2026-07-06 → 2026-06-12 (-24d) | 2026-07-07 → 2026-06-12 (-25d) | 2d → 1d | 1d → 26d |
| 550 | Aprovação | 2026-07-08 → 2026-06-15 (-23d) | 2026-07-08 → 2026-06-15 (-23d) |  | 1d → 26d |

| ID | Task | Start | Finish | Duration | Total float |
| --- | --- | --- | --- | --- | --- |
| 551 | **FD-F0009-0306-MB-J-00015** | 2026-06-24 → 2026-06-08 (-16d) | 2026-07-08 → 2026-06-30 (-8d) | 11d → 17d | 1d → 15d |
| 552 | Emissão inicial | 2026-06-24 → 2026-06-08 (-16d) | 2026-07-02 → 2026-06-18 (-14d) | 7d → 9d | 1d → 15d |
| 553 | Análise Tecnored | 2026-07-03 → 2026-06-19 (-14d) | 2026-07-03 → 2026-06-26 (-7d) | 1d → 6d | 1d → 15d |
| 554 | Atendimento de comentários | 2026-07-06 → 2026-06-29 (-7d) | 2026-07-07 → 2026-06-29 (-8d) | 2d → 1d | 1d → 15d |
| 555 | Aprovação | 2026-07-08 → 2026-06-30 (-8d) | 2026-07-08 → 2026-06-30 (-8d) |  | 1d → 15d |
| 556 | **FD-F0009-0306-MB-J-00016** | 2026-06-24 → 2026-06-08 (-16d) | 2026-07-08 → 2026-07-02 (-6d) | 11d → 19d | 1d → 13d |
| 557 | Emissão inicial | 2026-06-24 → 2026-06-08 (-16d) | 2026-07-02 → 2026-06-19 (-13d) | 7d → 10d | 1d → 13d |
| 558 | Análise Tecnored | 2026-07-03 → 2026-06-22 (-11d) | 2026-07-03 → 2026-06-29 (-4d) | 1d → 6d | 1d → 13d |
| 559 | Atendimento de comentários | 2026-07-06 → 2026-06-30 (-6d) | 2026-07-07 → 2026-06-30 (-7d) | 2d → 1d | 1d → 13d |
| 560 | Aprovação | 2026-07-08 → 2026-07-01 (-7d) | 2026-07-08 → 2026-07-02 (-6d) | 1d → 2d | 1d → 13d |
| 561 | **DT-F0009-0306-MB-J-00001** | 2026-06-30 → 2026-06-16 (-14d) | 2026-07-08 → 2026-06-24 (-14d) |  | 1d → 17d |
| 562 | Emissão inicial | 2026-06-30 → 2026-06-16 (-14d) | 2026-07-02 → 2026-06-18 (-14d) |  | 1d → 17d |
| 563 | Análise Tecnored | 2026-07-03 → 2026-06-19 (-14d) | 2026-07-03 → 2026-06-19 (-14d) |  | 1d → 19d |
| 564 | Atendimento de comentários | 2026-07-06 → 2026-06-22 (-14d) | 2026-07-07 → 2026-06-23 (-14d) |  | 1d → 19d |
| 565 | Aprovação | 2026-07-08 → 2026-06-24 (-14d) | 2026-07-08 → 2026-06-24 (-14d) |  | 1d → 19d |
| 566 | **Civil** | 2026-06-18 → 2026-06-25 (+7d) | 2026-07-06 → 2026-07-13 (+7d) |  | 3d → 6d |
| 567 | **MC-F0009-0306-MB-C-00001** | 2026-06-18 → 2026-06-25 (+7d) | 2026-07-03 → 2026-07-10 (+7d) |  | 3d → 6d |
| 568 | Emissão inicial | 2026-06-18 → 2026-06-25 (+7d) | 2026-06-29 → 2026-07-06 (+7d) |  | 3d → 6d |
| 569 | Análise Tecnored | 2026-06-30 → 2026-07-07 (+7d) | 2026-06-30 → 2026-07-07 (+7d) |  | 4d → 7d |
| 570 | Atendimento de comentários | 2026-07-01 → 2026-07-08 (+7d) | 2026-07-02 → 2026-07-09 (+7d) |  | 4d → 7d |
| 571 | Aprovação | 2026-07-03 → 2026-07-10 (+7d) | 2026-07-03 → 2026-07-10 (+7d) |  | 4d → 7d |
| 572 | **PQ-F0009-0306-MB-C-00001** | 2026-06-30 → 2026-07-07 (+7d) | 2026-07-06 → 2026-07-13 (+7d) |  | 3d → 6d |
| 573 | Emissão inicial | 2026-06-30 → 2026-07-07 (+7d) | 2026-06-30 → 2026-07-07 (+7d) |  | 3d → 6d |
| 574 | Análise Tecnored | 2026-07-01 → 2026-07-08 (+7d) | 2026-07-01 → 2026-07-08 (+7d) |  | 3d → 6d |
| 575 | Atendimento de comentários | 2026-07-02 → 2026-07-09 (+7d) | 2026-07-03 → 2026-07-10 (+7d) |  | 3d → 6d |
| 576 | Aprovação | 2026-07-06 → 2026-07-13 (+7d) | 2026-07-06 → 2026-07-13 (+7d) |  | 3d → 6d |

## Version 3 (data date 2026-06-11, saved 2026-06-11, file CR-F0009-0306-MB-F-00001 11062026_C2.mpp)

Note of the change: Primeira versao dashboard

Last finish 2026-07-21 → 2026-07-15 (-6d). Complete tasks 25 → 28.

Added:

| ID | Task | Duration | Start | Finish | Predecessors | Constraint |
| --- | --- | --- | --- | --- | --- | --- |
| 117 | **MC-F0009-0306-MB-M-00002** | 9d | 2026-06-12 | 2026-06-24 |  |  |
| 118 | Emissão inicial | 5d | 2026-06-12 | 2026-06-18 | 124 | start no earlier than 2026-06-12 |
| 119 | Análise Tecnored | 1d | 2026-06-19 | 2026-06-19 | 118 | start no earlier than 2026-06-19 |
| 120 | Atendimento de comentários | 2d | 2026-06-22 | 2026-06-23 | 119 | start no earlier than 2026-06-22 |
| 121 | Aprovação | 1d | 2026-06-24 | 2026-06-24 | 120 | start no earlier than 2026-06-24 |

Changed:

| ID | Task | Start | Finish | Duration | Complete | Total float | Predecessors | Other |
| --- | --- | --- | --- | --- | --- | --- | --- | --- |
| 1 | **F0009 - Programa Marabá** |  |  |  | 8% → 9% | none → 0d |  |  |
| 2 | **Área 0306 - Sopradores** |  |  |  | 8% → 9% | none → 0d |  |  |
| 4 | **Marcos** |  | 2026-06-09 → 2026-06-15 (+6d) | 14d → 18d | 50% → 66% | none → 0d |  |  |
| 7 | Critério de Projeto de Elétrica | 2026-06-05 A | 2026-06-05 → 2026-06-15 (+10d) | 1d → 7d | 0% → 70% |  |  |  |
| 13 | **Planejamento** |  | 2026-06-01 → 2026-06-02 (+1d) | 26d → 27d |  | none → 24d |  |  |
| 24 | **Coordenação** |  | 2026-07-08 → 2026-06-30 (-8d) | 51d → 45d |  | none → 6d |  |  |
| 25 | **RM-F0009-0306-MB-G-00001** | 2026-06-03 → 2026-06-02 (-1d) | 2026-06-12 → 2026-06-11 (-1d) |  |  | none → 6d |  |  |
| 26 | Emissão inicial | 2026-06-03 → 2026-06-02 (-1d) | 2026-06-09 → 2026-06-08 (-1d) |  |  | 9d → 6d |  | constraint start no earlier than 2026-06-03 → none |
| 27 | Análise Tecnored | 2026-06-10 → 2026-06-09 (-1d) | 2026-06-10 → 2026-06-09 (-1d) |  |  | 27d → 19d |  | constraint start no earlier than 2026-06-10 → none |
| 28 | Atendimento de comentários | 2026-06-11 → 2026-06-10 (-1d) | 2026-06-11 → 2026-06-10 (-1d) |  |  | 27d → 19d |  | constraint finish no earlier than 2026-06-11 → none |
| 29 | Aprovação | 2026-06-12 → 2026-06-11 (-1d) | 2026-06-12 → 2026-06-11 (-1d) |  |  | 27d → 19d |  | constraint start no earlier than 2026-06-12 → none |
| 30 | **RM-F0009-0306-MB-G-00002** | 2026-06-24 → 2026-06-16 (-8d) | 2026-06-30 → 2026-06-22 (-8d) |  |  | none → 6d |  |  |
| 31 | Emissão inicial | 2026-06-24 → 2026-06-16 (-8d) | 2026-06-25 → 2026-06-17 (-8d) |  |  | 9d → 6d | 26FS+10d → 26FS+5d | constraint finish no earlier than 2026-06-25 → none |
| 32 | Análise Tecnored | 2026-06-26 → 2026-06-18 (-8d) | 2026-06-26 → 2026-06-18 (-8d) |  |  | 15d → 12d |  | constraint start no earlier than 2026-06-26 → none |
| 33 | Atendimento de comentários | 2026-06-29 → 2026-06-19 (-10d) | 2026-06-29 → 2026-06-19 (-10d) |  |  | 15d → 12d |  | constraint finish no earlier than 2026-06-29 → none |
| 34 | Aprovação | 2026-06-30 → 2026-06-22 (-8d) | 2026-06-30 → 2026-06-22 (-8d) |  |  | 15d → 12d |  |  |
| 35 | **RL-F0009-0306-MB-G-00001** | 2026-07-03 → 2026-06-25 (-8d) | 2026-07-08 → 2026-06-30 (-8d) |  |  | none → 6d |  |  |
| 36 | Emissão inicial | 2026-07-03 → 2026-06-25 (-8d) | 2026-07-03 → 2026-06-25 (-8d) |  |  | 9d → 6d |  | constraint finish no earlier than 2026-07-03 → none |
| 37 | Análise Tecnored | 2026-07-06 → 2026-06-26 (-10d) | 2026-07-06 → 2026-06-26 (-10d) |  |  | 9d → 6d |  |  |
| 38 | Atendimento de comentários | 2026-07-07 → 2026-06-29 (-8d) | 2026-07-07 → 2026-06-29 (-8d) |  |  | 9d → 6d |  | constraint finish no earlier than 2026-07-07 → none |
| 39 | Aprovação | 2026-07-08 → 2026-06-30 (-8d) | 2026-07-08 → 2026-06-30 (-8d) |  |  | 9d → 6d |  | constraint start no earlier than 2026-07-08 → none |
| 40 | **LP-F0009-0306-MB-G-00001** |  | 2026-07-02 → 2026-06-18 (-14d) | 47d → 37d |  | none → 14d |  |  |
| 42 | Análise Tecnored | 2026-06-15 → 2026-06-08 (-7d) | 2026-06-15 → 2026-06-08 (-7d) |  |  | 13d → 14d | 41FS+30d → 41FS+25d |  |
| 43 | Atendimento de comentários | 2026-06-30 → 2026-06-16 (-14d) | 2026-07-01 → 2026-06-17 (-14d) |  |  | 13d → 14d | 42FS+10d → 42FS+5d |  |
| 44 | Aprovação | 2026-07-02 → 2026-06-18 (-14d) | 2026-07-02 → 2026-06-18 (-14d) |  |  | 13d → 14d |  |  |
| 45 | **Processo** |  |  | 5d → 4d |  | none → 19d |  |  |
| 46 | **CP-F0009-0306-MB-P-00001** | 2026-06-08 → 2026-05-05 (-34d) | 2026-06-22 → 2026-06-11 (-11d) | 11d → 26d |  | 21d → 19d |  |  |
| 47 | Emissão inicial | 2026-06-08 → 2026-05-05 (-34d) | 2026-06-16 → 2026-05-13 (-34d) |  |  | 21d → 34d |  |  |
| 48 | Análise Tecnored | 2026-06-17 → 2026-06-08 (-9d) | 2026-06-17 → 2026-06-08 (-9d) |  |  | 21d → 19d |  |  |
| 49 | Atendimento de comentários | 2026-06-18 → 2026-06-09 (-9d) | 2026-06-19 → 2026-06-10 (-9d) |  |  | 21d → 19d |  |  |
| 50 | Aprovação | 2026-06-22 → 2026-06-11 (-11d) | 2026-06-22 → 2026-06-11 (-11d) |  |  | 21d → 19d |  |  |
| 61 | **Mecânica** |  |  |  | 10% → 12% | none → 0d |  |  |
| 62 | **CP-F0009-0306-MB-M-00001** | 2026-05-26 → 2026-05-05 (-21d) | 2026-06-11 → 2026-05-25 (-17d) | 11d → 15d |  | -8d → -2d |  |  |
| 63 | Emissão inicial | 2026-05-26 → 2026-05-05 (-21d) | 2026-06-03 → 2026-05-13 (-21d) |  |  | -8d → -2d |  |  |
| 64 | Análise Tecnored | 2026-06-08 → 2026-05-20 (-19d) | 2026-06-08 → 2026-05-20 (-19d) |  |  | 28d → 30d |  |  |
| 65 | Atendimento de comentários | 2026-06-09 → 2026-05-21 (-19d) | 2026-06-10 → 2026-05-22 (-19d) |  |  | 28d → 30d |  |  |
| 66 | Aprovação | 2026-06-11 → 2026-05-25 (-17d) | 2026-06-11 → 2026-05-25 (-17d) |  |  | 28d → 30d |  |  |
| 67 | **MD-F0009-0306-MB-M-00001** | 2026-06-08 → 2026-06-02 (-6d) | 2026-06-16 → 2026-06-12 (-4d) |  |  | -8d → -15d |  |  |
| 68 | Emissão inicial | 2026-06-08 → 2026-06-02 (-6d) | 2026-06-10 → 2026-06-08 (-2d) |  |  | -8d → -15d |  |  |
| 69 | Análise Tecnored | 2026-06-11 → 2026-06-09 (-2d) | 2026-06-11 → 2026-06-09 (-2d) |  |  | 25d → 18d |  |  |
| 70 | Atendimento de comentários | 2026-06-12 → 2026-06-10 (-2d) | 2026-06-15 → 2026-06-11 (-4d) |  |  | 25d → 18d |  |  |
| 71 | Aprovação | 2026-06-16 → 2026-06-12 (-4d) | 2026-06-16 → 2026-06-12 (-4d) |  |  | 25d → 18d |  |  |
| 72 | **LE-F0009-0306-MB-M-00001** |  |  |  | 33% → 83% |  |  |  |
| 74 | Análise Tecnored | 2026-05-28 A | 2026-05-28 A |  | 0% → 100% | -3d → none |  |  |
| 75 | Atendimento de comentários | 2026-05-29 A | 2026-06-01 A |  | 0% → 100% | -3d → none |  |  |
| 128 | Emissão inicial |  |  |  |  | 16d → 7d | 113 → 113, 118 |  |
| 133 | Emissão inicial |  |  |  |  | 16d → 7d | 113 → 113, 118 |  |
| 138 | **CP-F0009-0306-MB-T-00001** | 2026-06-08 → 2026-05-05 (-34d) | 2026-06-22 → 2026-05-28 (-25d) | 11d → 18d |  | 21d → 27d |  |  |
| 139 | Emissão inicial | 2026-06-08 → 2026-05-05 (-34d) | 2026-06-16 → 2026-05-13 (-34d) |  |  | 21d → 34d |  |  |
| 140 | Análise Tecnored | 2026-06-17 → 2026-05-25 (-23d) | 2026-06-17 → 2026-05-25 (-23d) |  |  | 21d → 27d |  |  |
| 141 | Atendimento de comentários | 2026-06-18 → 2026-05-26 (-23d) | 2026-06-19 → 2026-05-27 (-23d) |  |  | 21d → 27d |  |  |
| 142 | Aprovação | 2026-06-22 → 2026-05-28 (-25d) | 2026-06-22 → 2026-05-28 (-25d) |  |  | 21d → 27d |  |  |
| 223 | **MC-F0009-0306-MB-T-00002** | 2026-06-08 → 2026-06-02 (-6d) | 2026-06-25 → 2026-06-23 (-2d) |  |  | 18d → 11d |  |  |
| 224 | Emissão inicial | 2026-06-08 → 2026-06-02 (-6d) | 2026-06-19 → 2026-06-17 (-2d) |  |  | 18d → 11d |  |  |
| 225 | Análise Tecnored | 2026-06-22 → 2026-06-18 (-4d) | 2026-06-22 → 2026-06-18 (-4d) |  |  | 18d → 11d |  |  |
| 226 | Atendimento de comentários | 2026-06-23 → 2026-06-19 (-4d) | 2026-06-24 → 2026-06-22 (-2d) |  |  | 18d → 11d |  |  |
| 227 | Aprovação | 2026-06-25 → 2026-06-23 (-2d) | 2026-06-25 → 2026-06-23 (-2d) |  |  | 18d → 11d |  |  |
| 228 | **Estrutura metálica** |  | 2026-07-02 → 2026-07-08 (+6d) | 9d → 13d |  | none → 0d |  |  |
| 229 | **CP-F0009-0306-MB-S-00001** | 2026-06-22 → 2026-06-08 (-14d) | 2026-07-07 → 2026-06-23 (-14d) |  |  | 10d → 11d |  |  |
| 230 | Emissão inicial | 2026-06-22 → 2026-06-08 (-14d) | 2026-07-01 → 2026-06-17 (-14d) |  |  | 10d → 11d |  |  |
| 231 | Análise Tecnored | 2026-07-02 → 2026-06-18 (-14d) | 2026-07-02 → 2026-06-18 (-14d) |  |  | 10d → 11d |  |  |
| 232 | Atendimento de comentários | 2026-07-03 → 2026-06-19 (-14d) | 2026-07-06 → 2026-06-22 (-14d) |  |  | 10d → 11d |  |  |
| 233 | Aprovação | 2026-07-07 → 2026-06-23 (-14d) | 2026-07-07 → 2026-06-23 (-14d) |  |  | 10d → 11d |  |  |
| 234 | **ML-F0009-0306-MB-S-00001** |  | 2026-07-02 → 2026-06-30 (-2d) | 9d → 7d |  | none → 0d |  |  |
| 235 | Emissão inicial |  | 2026-06-26 → 2026-06-25 (-1d) | 5d → 4d |  | 3d → 0d |  | constraint start no earlier than 2026-06-22 → none |
| 236 | Análise Tecnored | 2026-06-29 → 2026-06-26 (-3d) | 2026-06-29 → 2026-06-26 (-3d) |  |  | 3d → 6d |  | constraint start no earlier than 2026-06-29 → none |
| 237 | Atendimento de comentários | 2026-06-30 → 2026-06-29 (-1d) | 2026-07-01 → 2026-06-29 (-2d) | 2d → 1d |  | 3d → 6d |  | constraint start no earlier than 2026-06-30 → none |
| 238 | Aprovação | 2026-07-02 → 2026-06-30 (-2d) | 2026-07-02 → 2026-06-30 (-2d) |  |  | 3d → 6d |  | constraint start no earlier than 2026-07-02 → none |
| 239 | **PQ-F0009-0306-MB-S-00001** | 2026-06-22 → 2026-07-01 (+9d) | 2026-07-02 → 2026-07-08 (+6d) | 9d → 6d |  | none → 0d |  |  |
| 240 | Emissão inicial | 2026-07-08 → 2026-07-01 (-7d) | 2026-07-10 → 2026-07-03 (-7d) |  |  | 3d → 0d |  | constraint start no earlier than 2026-06-22 → none |

| ID | Task | Start | Finish | Duration | Complete | Total float | Predecessors | Other |
| --- | --- | --- | --- | --- | --- | --- | --- | --- |
| 241 | Análise Tecnored | 2026-07-13 → 2026-07-06 (-7d) | 2026-07-13 → 2026-07-06 (-7d) |  |  | 3d → 0d |  | constraint start no earlier than 2026-06-29 → none |
| 242 | Atendimento de comentários | 2026-07-14 → 2026-07-07 (-7d) | 2026-07-15 → 2026-07-07 (-8d) | 2d → 1d |  | 3d → 0d |  | constraint start no earlier than 2026-06-30 → none |
| 243 | Aprovação | 2026-07-16 → 2026-07-08 (-8d) | 2026-07-16 → 2026-07-08 (-8d) |  |  | 3d → 0d |  | constraint start no earlier than 2026-07-02 → none |
| 244 | **LM-F0009-0306-MB-S-00001** | 2026-06-22 → 2026-06-26 (+4d) | 2026-07-02 → 2026-07-03 (+1d) | 9d → 6d |  | none → 0d |  |  |
| 245 | Emissão inicial | 2026-07-03 → 2026-06-26 (-7d) | 2026-07-07 → 2026-06-30 (-7d) |  |  | 3d → 0d | 238 → 235 | constraint start no earlier than 2026-06-22 → none |
| 246 | Análise Tecnored | 2026-07-08 → 2026-07-01 (-7d) | 2026-07-08 → 2026-07-01 (-7d) |  |  | 6d → 3d |  | constraint start no earlier than 2026-06-29 → none |
| 247 | Atendimento de comentários | 2026-07-09 → 2026-07-02 (-7d) | 2026-07-10 → 2026-07-02 (-8d) | 2d → 1d |  | 6d → 3d |  | constraint start no earlier than 2026-06-30 → none |
| 248 | Aprovação | 2026-07-13 → 2026-07-03 (-10d) | 2026-07-13 → 2026-07-03 (-10d) |  |  | 6d → 3d |  | constraint start no earlier than 2026-07-02 → none |
| 249 | **MC-F0009-0306-MB-S-00001** |  | 2026-07-02 → 2026-06-29 (-3d) | 9d → 6d |  | none → 0d |  |  |
| 250 | Emissão inicial |  |  |  |  | 3d → 0d | 114 → 114, 119 | constraint start no earlier than 2026-06-22 → none |
| 251 | Análise Tecnored | 2026-06-29 → 2026-06-25 (-4d) | 2026-06-29 → 2026-06-25 (-4d) |  |  | 13d → 7d |  | constraint start no earlier than 2026-06-29 → none |
| 252 | Atendimento de comentários | 2026-06-30 → 2026-06-26 (-4d) | 2026-07-01 → 2026-06-26 (-5d) | 2d → 1d |  | 13d → 7d |  | constraint start no earlier than 2026-06-30 → none |
| 253 | Aprovação | 2026-07-02 → 2026-06-29 (-3d) | 2026-07-02 → 2026-06-29 (-3d) |  |  | 13d → 7d |  | constraint start no earlier than 2026-07-02 → none |
| 254 | **AG-F0009-0306-MB-S-00001** | 2026-06-22 → 2026-06-26 (+4d) | 2026-07-02 → 2026-07-06 (+4d) | 9d → 7d |  | none → 2d |  |  |
| 255 | Emissão inicial | 2026-07-02 → 2026-06-26 (-6d) | 2026-07-08 → 2026-07-01 (-7d) | 5d → 4d |  | 5d → 2d | 237 → 235 | constraint start no earlier than 2026-06-22 → none |
| 256 | Análise Tecnored | 2026-07-09 → 2026-07-02 (-7d) | 2026-07-09 → 2026-07-02 (-7d) |  |  | 5d → 2d |  | constraint start no earlier than 2026-06-29 → none |
| 257 | Atendimento de comentários | 2026-07-10 → 2026-07-03 (-7d) | 2026-07-13 → 2026-07-03 (-10d) | 2d → 1d |  | 5d → 2d |  | constraint start no earlier than 2026-06-30 → none |
| 258 | Aprovação | 2026-07-14 → 2026-07-06 (-8d) | 2026-07-14 → 2026-07-06 (-8d) |  |  | 5d → 2d |  | constraint start no earlier than 2026-07-02 → none |
| 259 | **AG-F0009-0306-MB-S-00002** | 2026-06-22 → 2026-06-26 (+4d) | 2026-07-02 → 2026-07-06 (+4d) | 9d → 7d |  | none → 2d |  |  |
| 260 | Emissão inicial | 2026-07-02 → 2026-06-26 (-6d) | 2026-07-08 → 2026-07-01 (-7d) | 5d → 4d |  | 5d → 2d | 237 → 235 | constraint start no earlier than 2026-06-22 → none |
| 261 | Análise Tecnored | 2026-07-09 → 2026-07-02 (-7d) | 2026-07-09 → 2026-07-02 (-7d) |  |  | 5d → 2d |  | constraint start no earlier than 2026-06-29 → none |
| 262 | Atendimento de comentários | 2026-07-10 → 2026-07-03 (-7d) | 2026-07-13 → 2026-07-03 (-10d) | 2d → 1d |  | 5d → 2d |  | constraint start no earlier than 2026-06-30 → none |
| 263 | Aprovação | 2026-07-14 → 2026-07-06 (-8d) | 2026-07-14 → 2026-07-06 (-8d) |  |  | 5d → 2d |  | constraint start no earlier than 2026-07-02 → none |
| 264 | **AG-F0009-0306-MB-S-00003** | 2026-06-22 → 2026-06-26 (+4d) | 2026-07-02 → 2026-07-06 (+4d) | 9d → 7d |  | none → 2d |  |  |
| 265 | Emissão inicial | 2026-07-02 → 2026-06-26 (-6d) | 2026-07-08 → 2026-07-01 (-7d) | 5d → 4d |  | 5d → 2d | 237 → 235 | constraint start no earlier than 2026-06-22 → none |
| 266 | Análise Tecnored | 2026-07-09 → 2026-07-02 (-7d) | 2026-07-09 → 2026-07-02 (-7d) |  |  | 5d → 2d |  | constraint start no earlier than 2026-06-29 → none |
| 267 | Atendimento de comentários | 2026-07-10 → 2026-07-03 (-7d) | 2026-07-13 → 2026-07-03 (-10d) | 2d → 1d |  | 5d → 2d |  | constraint start no earlier than 2026-06-30 → none |
| 268 | Aprovação | 2026-07-14 → 2026-07-06 (-8d) | 2026-07-14 → 2026-07-06 (-8d) |  |  | 5d → 2d |  | constraint start no earlier than 2026-07-02 → none |
| 269 | **AG-F0009-0306-MB-S-00004** | 2026-06-22 → 2026-06-26 (+4d) | 2026-07-02 → 2026-07-06 (+4d) | 9d → 7d |  | none → 2d |  |  |
| 270 | Emissão inicial | 2026-07-02 → 2026-06-26 (-6d) | 2026-07-08 → 2026-07-01 (-7d) | 5d → 4d |  | 5d → 2d | 237 → 235 | constraint start no earlier than 2026-06-22 → none |
| 271 | Análise Tecnored | 2026-07-09 → 2026-07-02 (-7d) | 2026-07-09 → 2026-07-02 (-7d) |  |  | 5d → 2d |  | constraint start no earlier than 2026-06-29 → none |
| 272 | Atendimento de comentários | 2026-07-10 → 2026-07-03 (-7d) | 2026-07-13 → 2026-07-03 (-10d) | 2d → 1d |  | 5d → 2d |  | constraint start no earlier than 2026-06-30 → none |
| 273 | Aprovação | 2026-07-14 → 2026-07-06 (-8d) | 2026-07-14 → 2026-07-06 (-8d) |  |  | 5d → 2d |  | constraint start no earlier than 2026-07-02 → none |
| 274 | **AG-F0009-0306-MB-S-00005** | 2026-06-22 → 2026-06-26 (+4d) | 2026-07-02 → 2026-07-06 (+4d) | 9d → 7d |  | none → 2d |  |  |
| 275 | Emissão inicial | 2026-07-02 → 2026-06-26 (-6d) | 2026-07-08 → 2026-07-01 (-7d) | 5d → 4d |  | 5d → 2d | 237 → 235 | constraint start no earlier than 2026-06-22 → none |
| 276 | Análise Tecnored | 2026-07-09 → 2026-07-02 (-7d) | 2026-07-09 → 2026-07-02 (-7d) |  |  | 5d → 2d |  | constraint start no earlier than 2026-06-29 → none |
| 277 | Atendimento de comentários | 2026-07-10 → 2026-07-03 (-7d) | 2026-07-13 → 2026-07-03 (-10d) | 2d → 1d |  | 5d → 2d |  | constraint start no earlier than 2026-06-30 → none |
| 278 | Aprovação | 2026-07-14 → 2026-07-06 (-8d) | 2026-07-14 → 2026-07-06 (-8d) |  |  | 5d → 2d |  | constraint start no earlier than 2026-07-02 → none |
| 279 | **PL-F0009-0306-MB-S-00001** | 2026-06-22 → 2026-06-26 (+4d) | 2026-07-02 → 2026-07-06 (+4d) | 9d → 7d |  | none → 2d |  |  |
| 280 | Emissão inicial | 2026-07-02 → 2026-06-26 (-6d) | 2026-07-08 → 2026-07-01 (-7d) | 5d → 4d |  | 5d → 2d | 237 → 235 | constraint start no earlier than 2026-06-22 → none |
| 281 | Análise Tecnored | 2026-07-09 → 2026-07-02 (-7d) | 2026-07-09 → 2026-07-02 (-7d) |  |  | 5d → 2d |  | constraint start no earlier than 2026-06-29 → none |
| 282 | Atendimento de comentários | 2026-07-10 → 2026-07-03 (-7d) | 2026-07-13 → 2026-07-03 (-10d) | 2d → 1d |  | 5d → 2d |  | constraint start no earlier than 2026-06-30 → none |
| 283 | Aprovação | 2026-07-14 → 2026-07-06 (-8d) | 2026-07-14 → 2026-07-06 (-8d) |  |  | 5d → 2d |  | constraint start no earlier than 2026-07-02 → none |
| 284 | **Elétrica** |  | 2026-07-06 → 2026-06-29 (-7d) | 26d → 21d | 5% → 6% | none → 7d |  |  |
| 285 | **CP-F0009-0306-MB-E-00001** | 2026-05-28 → 2026-05-05 (-23d) | 2026-06-15 → 2026-06-19 (+4d) | 11d → 32d |  | 26d → 13d |  |  |
| 286 | Emissão inicial | 2026-05-28 → 2026-05-05 (-23d) | 2026-06-09 → 2026-05-13 (-27d) |  |  | 26d → 34d |  |  |
| 287 | Análise Tecnored | 2026-06-10 → 2026-06-16 (+6d) | 2026-06-10 → 2026-06-16 (+6d) |  |  | 26d → 13d |  |  |
| 288 | Atendimento de comentários | 2026-06-11 → 2026-06-17 (+6d) | 2026-06-12 → 2026-06-18 (+6d) |  |  | 26d → 13d |  |  |
| 289 | Aprovação | 2026-06-15 → 2026-06-19 (+4d) | 2026-06-15 → 2026-06-19 (+4d) |  |  | 26d → 13d |  |  |
| 290 | **ML-F0009-0306-MB-E-00001** |  | 2026-06-19 → 2026-06-17 (-2d) | 9d → 7d |  | none → 7d |  |  |
| 291 | Emissão inicial |  | 2026-06-15 → 2026-06-12 (-3d) | 5d → 4d |  | 13d → 7d |  |  |
| 292 | Análise Tecnored | 2026-06-16 → 2026-06-15 (-1d) | 2026-06-16 → 2026-06-15 (-1d) |  |  | 22d → 15d |  |  |
| 293 | Atendimento de comentários | 2026-06-17 → 2026-06-16 (-1d) | 2026-06-18 → 2026-06-16 (-2d) | 2d → 1d |  | 22d → 15d |  |  |
| 294 | Aprovação | 2026-06-19 → 2026-06-17 (-2d) | 2026-06-19 → 2026-06-17 (-2d) |  |  | 22d → 15d |  |  |
| 295 | **RL-F0009-0306-MB-E-00001** |  | 2026-06-12 → 2026-06-10 (-2d) | 7d → 5d | 43% → 50% | none → 20d |  |  |
| 296 | Emissão inicial |  |  |  |  |  | 306 → 306FS-1d |  |
| 298 | Atendimento de comentários |  | 2026-06-11 → 2026-06-10 (-1d) | 2d → 1d |  | 27d → 20d |  |  |
| 299 | Aprovação | 2026-06-12 → 2026-06-10 (-2d) | 2026-06-12 → 2026-06-10 (-2d) |  |  | 27d → 20d | 298 → 298FF |  |
| 300 | **LE-F0009-0306-MB-E-00001** | 2026-06-26 → 2026-06-19 (-7d) | 2026-07-06 → 2026-06-25 (-11d) | 7d → 5d |  | none → 9d |  |  |
| 301 | Emissão inicial | 2026-07-10 → 2026-06-19 (-21d) | 2026-07-14 → 2026-06-23 (-21d) |  |  | 1d → 9d |  |  |
| 302 | Análise Tecnored | 2026-07-15 → 2026-06-24 (-21d) | 2026-07-15 → 2026-06-24 (-21d) |  |  | 1d → 9d |  |  |
| 303 | Atendimento de comentários | 2026-07-16 → 2026-06-25 (-21d) | 2026-07-17 → 2026-06-25 (-22d) | 2d → 1d |  | 1d → 9d |  |  |
| 304 | Aprovação | 2026-07-20 → 2026-06-25 (-25d) | 2026-07-20 → 2026-06-25 (-25d) |  |  | 1d → 9d | 303 → 303FF |  |
| 305 | **LR-F0009-0306-MB-E-00001** |  | 2026-06-12 → 2026-06-03 (-9d) | 10d → 5d | 60% → 67% | none → 23d |  |  |
| 307 | Análise Tecnored |  | 2026-06-09 → 2026-06-02 A (-7d) | 4d → 1d | 75% → 100% | 27d → none |  | constraint finish no earlier than 2026-06-09 → none |
| 308 | Atendimento de comentários | 2026-06-10 → 2026-06-03 (-7d) | 2026-06-11 → 2026-06-03 (-8d) | 2d → 1d |  | 27d → 23d |  | constraint start no earlier than 2026-06-10 → none |
| 309 | Aprovação | 2026-06-12 → 2026-06-03 (-9d) | 2026-06-12 → 2026-06-03 (-9d) |  |  | 27d → 23d | 308 → 308FF | constraint start no earlier than 2026-06-12 → none |
| 310 | **LM-F0009-0306-MB-E-00001** | 2026-06-23 → 2026-06-22 (-1d) | 2026-06-29 → 2026-06-24 (-5d) | 5d → 3d |  | none → 7d |  |  |
| 311 | Emissão inicial | 2026-06-23 → 2026-06-22 (-1d) | 2026-06-23 → 2026-06-22 (-1d) |  |  | 13d → 7d |  |  |
| 312 | Análise Tecnored | 2026-06-24 → 2026-06-23 (-1d) | 2026-06-24 → 2026-06-23 (-1d) |  |  | 16d → 10d |  |  |

| ID | Task | Start | Finish | Duration | Total float | Predecessors | Other |
| --- | --- | --- | --- | --- | --- | --- | --- |
| 313 | Atendimento de comentários | 2026-06-25 → 2026-06-24 (-1d) | 2026-06-26 → 2026-06-24 (-2d) | 2d → 1d | 16d → 10d |  |  |
| 314 | Aprovação | 2026-06-29 → 2026-06-24 (-5d) | 2026-06-29 → 2026-06-24 (-5d) |  | 16d → 10d | 313 → 313FF |  |
| 315 | **PQ-F0009-0306-MB-E-00001** | 2026-06-24 → 2026-06-23 (-1d) | 2026-07-02 → 2026-06-29 (-3d) | 7d → 5d | none → 7d |  |  |
| 316 | Emissão inicial | 2026-06-24 → 2026-06-23 (-1d) | 2026-06-26 → 2026-06-25 (-1d) |  | 13d → 7d |  |  |
| 317 | Análise Tecnored | 2026-06-29 → 2026-06-26 (-3d) | 2026-06-29 → 2026-06-26 (-3d) |  | 13d → 7d |  |  |
| 318 | Atendimento de comentários | 2026-06-30 → 2026-06-29 (-1d) | 2026-07-01 → 2026-06-29 (-2d) | 2d → 1d | 13d → 7d |  |  |
| 319 | Aprovação | 2026-07-02 → 2026-06-29 (-3d) | 2026-07-02 → 2026-06-29 (-3d) |  | 13d → 7d | 318 → 318FF |  |
| 320 | **MD-F0009-0306-MB-E-00001** | 2026-06-24 → 2026-06-23 (-1d) | 2026-07-01 → 2026-06-30 (-1d) |  | 14d → 6d |  |  |
| 321 | Emissão inicial | 2026-06-24 → 2026-06-23 (-1d) | 2026-06-25 → 2026-06-24 (-1d) |  | 14d → 6d |  |  |
| 322 | Análise Tecnored | 2026-06-26 → 2026-06-25 (-1d) | 2026-06-26 → 2026-06-25 (-1d) |  | 14d → 6d |  |  |
| 323 | Atendimento de comentários | 2026-06-29 → 2026-06-26 (-3d) | 2026-06-30 → 2026-06-29 (-1d) |  | 14d → 6d |  |  |
| 324 | Aprovação | 2026-07-01 → 2026-06-30 (-1d) | 2026-07-01 → 2026-06-30 (-1d) |  | 14d → 6d |  |  |
| 325 | **MC-F0009-0306-MB-E-00001** | 2026-06-19 → 2026-06-16 (-3d) | 2026-07-01 → 2026-06-22 (-9d) | 9d → 5d | none → 9d |  |  |
| 326 | Emissão inicial | 2026-07-03 → 2026-06-16 (-17d) | 2026-07-09 → 2026-06-18 (-21d) | 5d → 3d | 1d → 9d |  |  |
| 327 | Análise Tecnored | 2026-07-10 → 2026-06-19 (-21d) | 2026-07-10 → 2026-06-19 (-21d) |  | 4d → 12d |  |  |
| 328 | Atendimento de comentários | 2026-07-13 → 2026-06-22 (-21d) | 2026-07-14 → 2026-06-22 (-22d) | 2d → 1d | 4d → 12d |  |  |
| 329 | Aprovação | 2026-07-15 → 2026-06-22 (-23d) | 2026-07-15 → 2026-06-22 (-23d) |  | 4d → 12d | 328 → 328FF |  |
| 330 | **MC-F0009-0306-MB-E-00002** | 2026-06-19 → 2026-06-16 (-3d) | 2026-07-01 → 2026-06-22 (-9d) | 9d → 5d | none → 9d |  |  |
| 331 | Emissão inicial | 2026-07-03 → 2026-06-16 (-17d) | 2026-07-09 → 2026-06-18 (-21d) | 5d → 3d | 0d → 9d |  |  |
| 332 | Análise Tecnored | 2026-07-10 → 2026-06-19 (-21d) | 2026-07-10 → 2026-06-19 (-21d) |  | 4d → 12d |  |  |
| 333 | Atendimento de comentários | 2026-07-13 → 2026-06-22 (-21d) | 2026-07-14 → 2026-06-22 (-22d) | 2d → 1d | 4d → 12d |  |  |
| 334 | Aprovação | 2026-07-15 → 2026-06-22 (-23d) | 2026-07-15 → 2026-06-22 (-23d) |  | 4d → 12d | 333 → 333FF |  |
| 335 | **AG-F0009-0306-MB-E-00001** | 2026-06-16 → 2026-06-15 (-1d) | 2026-06-25 → 2026-06-22 (-3d) | 8d → 6d | none → 7d |  |  |
| 336 | Emissão inicial | 2026-06-16 → 2026-06-15 (-1d) | 2026-06-19 → 2026-06-18 (-1d) |  | 13d → 7d |  |  |
| 337 | Análise Tecnored | 2026-06-22 → 2026-06-19 (-3d) | 2026-06-22 → 2026-06-19 (-3d) |  | 13d → 7d |  |  |
| 338 | Atendimento de comentários | 2026-06-23 → 2026-06-22 (-1d) | 2026-06-24 → 2026-06-22 (-2d) | 2d → 1d | 18d → 12d |  |  |
| 339 | Aprovação | 2026-06-25 → 2026-06-22 (-3d) | 2026-06-25 → 2026-06-22 (-3d) |  | 18d → 12d | 338 → 338FF |  |
| 340 | **DU-F0009-0306-MB-E-00001** |  | 2026-06-17 → 2026-06-15 (-2d) | 7d → 5d | none → 9d |  |  |
| 343 | Atendimento de comentários |  | 2026-06-16 → 2026-06-15 (-1d) | 2d → 1d | 24d → 17d |  |  |
| 344 | Aprovação | 2026-06-17 → 2026-06-15 (-2d) | 2026-06-17 → 2026-06-15 (-2d) |  | 24d → 17d | 343 → 343FF |  |
| 345 | **DU-F0009-0306-MB-E-00002** | 2026-06-16 → 2026-06-19 (+3d) |  | 8d → 5d | none → 9d |  |  |
| 346 | Emissão inicial | 2026-07-10 → 2026-06-19 (-21d) | 2026-07-15 → 2026-06-23 (-22d) | 4d → 3d | 0d → 9d |  | constraint finish no earlier than 2026-06-19 → none |
| 347 | Análise Tecnored | 2026-07-16 → 2026-06-24 (-22d) | 2026-07-16 → 2026-06-24 (-22d) |  | 0d → 9d |  | constraint start no earlier than 2026-06-22 → none |
| 348 | Atendimento de comentários | 2026-07-17 → 2026-06-25 (-22d) | 2026-07-20 → 2026-06-25 (-25d) | 2d → 1d | 0d → 9d |  | constraint start no earlier than 2026-06-23 → none |
| 349 | Aprovação | 2026-07-21 → 2026-06-25 (-26d) | 2026-07-21 → 2026-06-25 (-26d) |  | 0d → 9d | 348 → 348FF | constraint start no earlier than 2026-06-25 → none |
| 350 | **DU-F0009-0306-MB-E-00003** | 2026-06-16 → 2026-06-19 (+3d) |  | 8d → 5d | none → 9d |  |  |
| 351 | Emissão inicial | 2026-07-10 → 2026-06-19 (-21d) | 2026-07-15 → 2026-06-23 (-22d) | 4d → 3d | 0d → 9d |  | constraint finish no earlier than 2026-06-19 → none |
| 352 | Análise Tecnored | 2026-07-16 → 2026-06-24 (-22d) | 2026-07-16 → 2026-06-24 (-22d) |  | 0d → 9d |  | constraint start no earlier than 2026-06-22 → none |
| 353 | Atendimento de comentários | 2026-07-17 → 2026-06-25 (-22d) | 2026-07-20 → 2026-06-25 (-25d) | 2d → 1d | 0d → 9d |  | constraint start no earlier than 2026-06-23 → none |
| 354 | Aprovação | 2026-07-21 → 2026-06-25 (-26d) | 2026-07-21 → 2026-06-25 (-26d) |  | 0d → 9d | 353 → 353FF | constraint start no earlier than 2026-06-25 → none |
| 355 | **DU-F0009-0306-MB-E-00004** | 2026-06-12 → 2026-06-09 (-3d) | 2026-06-24 → 2026-06-23 (-1d) | 9d → 11d | none → 11d |  |  |
| 356 | Emissão inicial | 2026-06-12 → 2026-06-09 (-3d) | 2026-06-18 → 2026-06-11 (-7d) | 5d → 3d | 23d → 19d |  | constraint start no earlier than 2026-06-12 → none |
| 357 | Análise Tecnored | 2026-07-10 → 2026-06-19 (-21d) | 2026-07-10 → 2026-06-19 (-21d) |  | 4d → 11d |  | constraint start no earlier than 2026-06-19 → none |
| 358 | Atendimento de comentários | 2026-07-13 → 2026-06-22 (-21d) | 2026-07-14 → 2026-06-22 (-22d) | 2d → 1d | 4d → 11d |  | constraint start no earlier than 2026-06-22 → none |
| 359 | Aprovação | 2026-07-15 → 2026-06-23 (-22d) | 2026-07-15 → 2026-06-23 (-22d) |  | 4d → 11d |  | constraint start no earlier than 2026-06-24 → none |
| 360 | **AG-F0009-0306-MB-E-00002** | 2026-06-12 → 2026-06-10 (-2d) | 2026-06-24 → 2026-06-17 (-7d) | 9d → 6d | none → 15d |  |  |
| 361 | Emissão inicial | 2026-06-16 → 2026-06-10 (-6d) | 2026-06-22 → 2026-06-15 (-7d) | 5d → 4d | 17d → 15d | 291 → 341FS-2d | constraint finish no earlier than 2026-06-18 → none |
| 362 | Análise Tecnored | 2026-06-23 → 2026-06-16 (-7d) | 2026-06-23 → 2026-06-16 (-7d) |  | 17d → 15d |  | constraint start no earlier than 2026-06-19 → none |
| 363 | Atendimento de comentários | 2026-06-24 → 2026-06-17 (-7d) | 2026-06-25 → 2026-06-17 (-8d) | 2d → 1d | 17d → 15d |  | constraint start no earlier than 2026-06-22 → none |
| 364 | Aprovação | 2026-06-26 → 2026-06-17 (-9d) | 2026-06-26 → 2026-06-17 (-9d) |  | 17d → 15d | 363 → 363FF | constraint start no earlier than 2026-06-24 → none |
| 365 | **AG-F0009-0306-MB-E-00003** | 2026-06-12 → 2026-06-10 (-2d) | 2026-06-24 → 2026-06-17 (-7d) | 9d → 6d | none → 15d |  |  |
| 366 | Emissão inicial | 2026-06-16 → 2026-06-10 (-6d) | 2026-06-22 → 2026-06-15 (-7d) | 5d → 4d | 17d → 15d | 291 → 341FS-2d | constraint finish no earlier than 2026-06-18 → none |
| 367 | Análise Tecnored | 2026-06-23 → 2026-06-16 (-7d) | 2026-06-23 → 2026-06-16 (-7d) |  | 17d → 15d |  | constraint start no earlier than 2026-06-19 → none |
| 368 | Atendimento de comentários | 2026-06-24 → 2026-06-17 (-7d) | 2026-06-25 → 2026-06-17 (-8d) | 2d → 1d | 17d → 15d |  | constraint start no earlier than 2026-06-22 → none |
| 369 | Aprovação | 2026-06-26 → 2026-06-17 (-9d) | 2026-06-26 → 2026-06-17 (-9d) |  | 17d → 15d | 368 → 368FF | constraint start no earlier than 2026-06-24 → none |
| 370 | **FD-F0009-0306-MB-E-00001** | 2026-06-12 → 2026-06-10 (-2d) | 2026-06-24 → 2026-06-17 (-7d) | 9d → 6d | none → 15d |  |  |
| 371 | Emissão inicial | 2026-06-12 → 2026-06-10 (-2d) | 2026-06-18 → 2026-06-15 (-3d) | 5d → 4d | 19d → 15d | 341 → 341FS-2d |  |
| 372 | Análise Tecnored | 2026-06-19 → 2026-06-16 (-3d) | 2026-06-19 → 2026-06-16 (-3d) |  | 19d → 15d |  |  |
| 373 | Atendimento de comentários | 2026-06-22 → 2026-06-17 (-5d) | 2026-06-23 → 2026-06-17 (-6d) | 2d → 1d | 19d → 15d |  |  |
| 374 | Aprovação | 2026-06-24 → 2026-06-17 (-7d) | 2026-06-24 → 2026-06-17 (-7d) |  | 19d → 15d | 373 → 373FF |  |
| 375 | **FD-F0009-0306-MB-E-00002** | 2026-06-12 → 2026-06-10 (-2d) | 2026-06-24 → 2026-06-17 (-7d) | 9d → 6d | none → 15d |  |  |
| 376 | Emissão inicial | 2026-06-12 → 2026-06-10 (-2d) | 2026-06-18 → 2026-06-15 (-3d) | 5d → 4d | 19d → 15d | 341 → 341FS-2d |  |
| 377 | Análise Tecnored | 2026-06-19 → 2026-06-16 (-3d) | 2026-06-19 → 2026-06-16 (-3d) |  | 19d → 15d |  |  |
| 378 | Atendimento de comentários | 2026-06-22 → 2026-06-17 (-5d) | 2026-06-23 → 2026-06-17 (-6d) | 2d → 1d | 19d → 15d |  |  |
| 379 | Aprovação | 2026-06-24 → 2026-06-17 (-7d) | 2026-06-24 → 2026-06-17 (-7d) |  | 19d → 15d | 378 → 378FF |  |
| 380 | **FD-F0009-0306-MB-E-00003** | 2026-05-29 → 2026-06-15 (+17d) | 2026-07-08 → 2026-06-22 (-16d) | 27d → 6d | none → 12d |  |  |
| 381 | Emissão inicial | 2026-06-12 → 2026-06-15 (+3d) | 2026-06-22 → 2026-06-18 (-4d) | 7d → 4d | 15d → 12d | 341 → 341FS-2d |  |
| 382 | Análise Tecnored | 2026-06-23 → 2026-06-19 (-4d) | 2026-06-25 → 2026-06-19 (-6d) | 3d → 1d | 15d → 12d |  |  |
| 383 | Atendimento de comentários | 2026-06-26 → 2026-06-22 (-4d) | 2026-06-26 → 2026-06-22 (-4d) |  | 15d → 12d |  |  |
| 384 | Aprovação | 2026-06-29 → 2026-06-22 (-7d) | 2026-06-30 → 2026-06-22 (-8d) | 2d → 1d | 15d → 12d | 383 → 383FF |  |

| ID | Task | Start | Finish | Duration | Total float | Predecessors | Other |
| --- | --- | --- | --- | --- | --- | --- | --- |
| 385 | **FD-F0009-0306-MB-E-00004** | 2026-06-18 → 2026-06-10 (-8d) |  | 1d → 7d | none → 14d |  |  |
| 386 | Emissão inicial | 2026-06-29 → 2026-06-10 (-19d) | 2026-07-06 → 2026-06-15 (-21d) | 6d → 4d | 6d → 14d | 341 → 341FS-2d | constraint finish no earlier than 2026-07-06 → none |
| 387 | Análise Tecnored | 2026-07-07 → 2026-06-16 (-21d) | 2026-07-08 → 2026-06-16 (-22d) | 2d → 1d | 6d → 14d |  | constraint finish no earlier than 2026-06-30 → none |
| 388 | Atendimento de comentários | 2026-07-09 → 2026-06-17 (-22d) | 2026-07-09 → 2026-06-17 (-22d) |  | 6d → 14d |  | constraint finish no earlier than 2026-07-01 → none |
| 389 | Aprovação | 2026-07-10 → 2026-06-18 (-22d) | 2026-07-13 → 2026-06-18 (-25d) | 2d → 1d | 6d → 14d |  | constraint finish no earlier than 2026-07-03 → none |
| 390 | **FD-F0009-0306-MB-E-00005** | 2026-07-06 → 2026-06-10 (-26d) | 2026-07-06 → 2026-06-18 (-18d) | 1d → 7d | none → 9d |  |  |
| 391 | Emissão inicial | 2026-06-25 → 2026-06-10 (-15d) | 2026-07-02 → 2026-06-15 (-17d) | 6d → 4d | 0d → 9d | 341 → 341FS-2d | constraint finish no earlier than 2026-07-02 → none |
| 392 | Análise Tecnored | 2026-07-03 → 2026-06-16 (-17d) | 2026-07-06 → 2026-06-16 (-20d) | 2d → 1d | 8d → 14d |  | constraint finish no earlier than 2026-06-26 → none |
| 393 | Atendimento de comentários | 2026-07-07 → 2026-06-17 (-20d) | 2026-07-07 → 2026-06-17 (-20d) |  | 8d → 14d |  | constraint finish no earlier than 2026-06-29 → none |
| 394 | Aprovação | 2026-07-08 → 2026-06-18 (-20d) | 2026-07-09 → 2026-06-18 (-21d) | 2d → 1d | 8d → 14d |  | constraint finish no earlier than 2026-07-01 → none |
| 395 | **Automação e instrumentação** | 2026-05-29 A → 2026-04-29 A (-30d) | 2026-07-03 → 2026-07-06 (+3d) | 24d → 47d | 12d → 2d |  |  |
| 402 | Emissão inicial |  |  |  | 12d → 7d |  | constraint finish no earlier than 2026-06-15 → none |
| 406 | **LE-F0009-0306-MB-J-00001** | 2026-06-17 → 2026-04-29 (-49d) | 2026-06-23 → 2026-05-08 (-46d) | 5d → 8d | 20d → 41d |  |  |
| 407 | Emissão inicial | 2026-06-17 → 2026-04-29 (-49d) | 2026-06-17 → 2026-05-04 (-44d) | 1d → 4d | 20d → 41d | 482 → none |  |
| 408 | Análise Tecnored | 2026-06-18 → 2026-05-05 (-44d) | 2026-06-18 → 2026-05-05 (-44d) |  | 20d → 41d |  |  |
| 409 | Atendimento de comentários | 2026-06-19 → 2026-05-06 (-44d) | 2026-06-22 → 2026-05-07 (-46d) |  | 20d → 41d |  |  |
| 410 | Aprovação | 2026-06-23 → 2026-05-08 (-46d) | 2026-06-23 → 2026-05-08 (-46d) |  | 20d → 41d |  |  |
| 411 | **LZ-F0009-0306-MB-J-00001** | 2026-05-29 A → 2026-06-25 A (+27d) | 2026-06-11 → 2026-07-06 (+25d) |  | 28d → 2d |  |  |
| 412 | Emissão inicial | 2026-05-29 A → 2026-06-25 A (+27d) | 2026-06-03 A → 2026-06-30 A (+27d) |  |  |  |  |
| 413 | Análise Tecnored | 2026-06-08 → 2026-07-01 (+23d) | 2026-06-08 → 2026-07-01 (+23d) |  | 28d → 2d |  |  |
| 414 | Atendimento de comentários | 2026-06-09 → 2026-07-02 (+23d) | 2026-06-10 → 2026-07-03 (+23d) |  | 28d → 2d |  |  |
| 415 | Aprovação | 2026-06-11 → 2026-07-06 (+25d) | 2026-06-11 → 2026-07-06 (+25d) |  | 28d → 2d |  |  |
| 416 | **LE-F0009-0306-MB-J-00002** | 2026-06-11 → 2026-06-25 (+14d) | 2026-06-23 → 2026-07-03 (+10d) | 9d → 7d | 20d → 3d |  |  |
| 417 | Emissão inicial | 2026-06-11 → 2026-06-25 (+14d) | 2026-06-18 → 2026-06-30 (+12d) | 6d → 4d | 20d → 3d | 482FS-4d → 412SS |  |
| 418 | Análise Tecnored | 2026-06-19 → 2026-07-01 (+12d) | 2026-06-19 → 2026-07-01 (+12d) |  | 20d → 3d |  |  |
| 419 | Atendimento de comentários | 2026-06-22 → 2026-07-02 (+10d) | 2026-06-22 → 2026-07-02 (+10d) |  | 20d → 3d |  |  |
| 420 | Aprovação | 2026-06-23 → 2026-07-03 (+10d) | 2026-06-23 → 2026-07-03 (+10d) |  | 20d → 3d |  |  |
| 421 | **PQ-F0009-0306-MB-J-00001** | 2026-06-16 → 2026-06-24 (+8d) | 2026-06-26 → 2026-07-06 (+10d) |  | 17d → 2d |  |  |
| 422 | Emissão inicial | 2026-06-16 → 2026-06-24 (+8d) | 2026-06-23 → 2026-07-01 (+8d) |  | 17d → 2d |  |  |
| 423 | Análise Tecnored | 2026-06-24 → 2026-07-02 (+8d) | 2026-06-24 → 2026-07-02 (+8d) |  | 17d → 2d |  |  |
| 424 | Atendimento de comentários | 2026-06-25 → 2026-07-03 (+8d) | 2026-06-25 → 2026-07-03 (+8d) |  | 17d → 2d |  |  |
| 425 | Aprovação | 2026-06-26 → 2026-07-06 (+10d) | 2026-06-26 → 2026-07-06 (+10d) |  | 17d → 2d |  |  |
| 428 | Análise Tecnored |  |  |  | 28d → 19d |  | constraint start no earlier than 2026-06-09 → none |
| 429 | Atendimento de comentários |  |  |  | 28d → 19d |  | constraint start no earlier than 2026-06-10 → none |
| 430 | Aprovação |  |  |  | 28d → 19d |  | constraint start no earlier than 2026-06-11 → none |
| 433 | Análise Tecnored |  |  |  | 27d → 18d |  | constraint start no earlier than 2026-06-09 → none |
| 434 | Atendimento de comentários |  |  |  | 27d → 18d |  | constraint start no earlier than 2026-06-10 → none |
| 435 | Aprovação |  |  |  | 27d → 18d |  | constraint start no earlier than 2026-06-12 → none |
| 438 | Análise Tecnored |  |  |  | 27d → 18d |  | constraint start no earlier than 2026-06-09 → none |
| 439 | Atendimento de comentários |  |  |  | 27d → 18d |  | constraint start no earlier than 2026-06-10 → none |
| 440 | Aprovação |  |  |  | 27d → 18d |  | constraint start no earlier than 2026-06-12 → none |
| 441 | **AG-F0009-0306-MB-J-00001** |  | 2026-07-03 → 2026-06-29 (-4d) | 14d → 10d | 12d → 7d |  |  |
| 442 | Emissão inicial |  | 2026-06-29 → 2026-06-23 (-6d) | 10d → 6d | 12d → 7d |  |  |
| 443 | Análise Tecnored | 2026-06-30 → 2026-06-24 (-6d) | 2026-06-30 → 2026-06-24 (-6d) |  | 12d → 7d |  |  |
| 444 | Atendimento de comentários | 2026-07-01 → 2026-06-25 (-6d) | 2026-07-02 → 2026-06-26 (-6d) |  | 12d → 7d |  |  |
| 445 | Aprovação | 2026-07-03 → 2026-06-29 (-4d) | 2026-07-03 → 2026-06-29 (-4d) |  | 12d → 7d |  |  |
| 461 | **DI-F0009-0306-MB-J-00001** | 2026-06-19 → 2026-04-29 (-51d) | 2026-06-26 → 2026-05-08 (-49d) | 6d → 8d | 17d → 41d |  |  |
| 462 | Emissão inicial | 2026-06-19 → 2026-04-29 (-51d) | 2026-06-22 → 2026-05-04 (-49d) | 2d → 4d | 17d → 41d | 452 → none |  |
| 463 | Análise Tecnored | 2026-06-23 → 2026-05-05 (-49d) | 2026-06-23 → 2026-05-05 (-49d) |  | 17d → 41d |  |  |
| 464 | Atendimento de comentários | 2026-06-24 → 2026-05-06 (-49d) | 2026-06-25 → 2026-05-07 (-49d) |  | 17d → 41d |  |  |
| 465 | Aprovação | 2026-06-26 → 2026-05-08 (-49d) | 2026-06-26 → 2026-05-08 (-49d) |  | 17d → 41d |  |  |
| 466 | **LI-F0009-0306-MB-J-00002** | 2026-06-09 → 2026-04-29 (-41d) | 2026-06-19 → 2026-05-11 (-39d) |  | 22d → 40d |  |  |
| 467 | Emissão inicial | 2026-06-09 → 2026-04-29 (-41d) | 2026-06-15 → 2026-05-05 (-41d) |  | 22d → 40d |  | constraint start no earlier than 2026-06-09 → none |
| 468 | Análise Tecnored | 2026-06-16 → 2026-05-06 (-41d) | 2026-06-16 → 2026-05-06 (-41d) |  | 22d → 40d |  |  |
| 469 | Atendimento de comentários | 2026-06-17 → 2026-05-07 (-41d) | 2026-06-18 → 2026-05-08 (-41d) |  | 22d → 40d |  |  |
| 470 | Aprovação | 2026-06-19 → 2026-05-11 (-39d) | 2026-06-19 → 2026-05-11 (-39d) |  | 22d → 40d |  |  |
| 471 | **LI-F0009-0306-MB-J-00003** | 2026-06-09 → 2026-04-29 (-41d) | 2026-06-18 → 2026-05-08 (-41d) |  | 17d → 41d |  |  |
| 472 | Emissão inicial | 2026-06-09 → 2026-04-29 (-41d) | 2026-06-15 → 2026-05-05 (-41d) |  | 17d → 41d |  | constraint start no earlier than 2026-06-09 → none |
| 473 | Análise Tecnored | 2026-06-16 → 2026-05-06 (-41d) | 2026-06-16 → 2026-05-06 (-41d) |  | 23d → 41d |  |  |
| 474 | Atendimento de comentários | 2026-06-17 → 2026-05-07 (-41d) | 2026-06-17 → 2026-05-07 (-41d) |  | 23d → 41d |  |  |
| 475 | Aprovação | 2026-06-18 → 2026-05-08 (-41d) | 2026-06-18 → 2026-05-08 (-41d) |  | 23d → 41d |  |  |
| 476 | **LM-F0009-0306-MB-J-00001** | 2026-06-12 → 2026-06-25 (+13d) | 2026-06-25 → 2026-07-03 (+8d) | 10d → 7d | 17d → 2d |  |  |
| 477 | Emissão inicial | 2026-06-12 → 2026-06-25 (+13d) | 2026-06-22 → 2026-06-30 (+8d) | 7d → 4d | 17d → 2d | 567FS-5d → 412SS |  |
| 478 | Análise Tecnored | 2026-06-23 → 2026-07-01 (+8d) | 2026-06-23 → 2026-07-01 (+8d) |  | 18d → 3d |  |  |
| 479 | Atendimento de comentários | 2026-06-24 → 2026-07-02 (+8d) | 2026-06-24 → 2026-07-02 (+8d) |  | 18d → 3d |  |  |
| 480 | Aprovação | 2026-06-25 → 2026-07-03 (+8d) | 2026-06-25 → 2026-07-03 (+8d) |  | 18d → 3d |  |  |
| 481 | **ET-F0009-0306-MB-J-00001** | 2026-06-08 → 2026-06-25 (+17d) | 2026-06-19 → 2026-07-03 (+14d) | 10d → 7d | 20d → 3d |  |  |
| 482 | Emissão inicial | 2026-06-08 → 2026-06-25 (+17d) | 2026-06-16 → 2026-06-30 (+14d) | 7d → 4d | 20d → 3d | 412 → 412SS |  |
| 483 | Análise Tecnored | 2026-06-17 → 2026-07-01 (+14d) | 2026-06-17 → 2026-07-01 (+14d) |  | 22d → 3d |  |  |
| 484 | Atendimento de comentários | 2026-06-18 → 2026-07-02 (+14d) | 2026-06-18 → 2026-07-02 (+14d) |  | 22d → 3d |  |  |

| ID | Task | Start | Finish | Duration | Total float | Predecessors |
| --- | --- | --- | --- | --- | --- | --- |
| 485 | Aprovação | 2026-06-19 → 2026-07-03 (+14d) | 2026-06-19 → 2026-07-03 (+14d) |  | 22d → 3d |  |
| 486 | **FD-F0009-0306-MB-J-00001** | 2026-06-08 → 2026-04-29 (-40d) | 2026-06-19 → 2026-05-12 (-38d) |  | 22d → 33d |  |
| 487 | Emissão inicial | 2026-06-08 → 2026-04-29 (-40d) | 2026-06-16 → 2026-05-07 (-40d) |  | 22d → 33d | 412 → none |
| 488 | Análise Tecnored | 2026-06-17 → 2026-05-08 (-40d) | 2026-06-17 → 2026-05-08 (-40d) |  | 22d → 39d |  |
| 489 | Atendimento de comentários | 2026-06-18 → 2026-05-11 (-38d) | 2026-06-18 → 2026-05-11 (-38d) |  | 22d → 39d |  |
| 490 | Aprovação | 2026-06-19 → 2026-05-12 (-38d) | 2026-06-19 → 2026-05-12 (-38d) |  | 22d → 39d |  |
| 491 | **FD-F0009-0306-MB-J-00002** | 2026-06-08 → 2026-04-29 (-40d) | 2026-06-19 → 2026-05-12 (-38d) |  | 22d → 39d |  |
| 492 | Emissão inicial | 2026-06-08 → 2026-04-29 (-40d) | 2026-06-16 → 2026-05-07 (-40d) |  | 22d → 39d | 412 → 487SS |
| 493 | Análise Tecnored | 2026-06-17 → 2026-05-08 (-40d) | 2026-06-17 → 2026-05-08 (-40d) |  | 22d → 39d |  |
| 494 | Atendimento de comentários | 2026-06-18 → 2026-05-11 (-38d) | 2026-06-18 → 2026-05-11 (-38d) |  | 22d → 39d |  |
| 495 | Aprovação | 2026-06-19 → 2026-05-12 (-38d) | 2026-06-19 → 2026-05-12 (-38d) |  | 22d → 39d |  |
| 496 | **FD-F0009-0306-MB-J-00003** | 2026-06-08 → 2026-04-29 (-40d) | 2026-06-19 → 2026-05-12 (-38d) |  | 22d → 39d |  |
| 497 | Emissão inicial | 2026-06-08 → 2026-04-29 (-40d) | 2026-06-16 → 2026-05-07 (-40d) |  | 22d → 39d | 412 → 487SS |
| 498 | Análise Tecnored | 2026-06-17 → 2026-05-08 (-40d) | 2026-06-17 → 2026-05-08 (-40d) |  | 22d → 39d |  |
| 499 | Atendimento de comentários | 2026-06-18 → 2026-05-11 (-38d) | 2026-06-18 → 2026-05-11 (-38d) |  | 22d → 39d |  |
| 500 | Aprovação | 2026-06-19 → 2026-05-12 (-38d) | 2026-06-19 → 2026-05-12 (-38d) |  | 22d → 39d |  |
| 501 | **FD-F0009-0306-MB-J-00004** | 2026-06-08 → 2026-04-29 (-40d) | 2026-06-19 → 2026-05-12 (-38d) |  | 22d → 39d |  |
| 502 | Emissão inicial | 2026-06-08 → 2026-04-29 (-40d) | 2026-06-16 → 2026-05-07 (-40d) |  | 22d → 39d | 412 → 487SS |
| 503 | Análise Tecnored | 2026-06-17 → 2026-05-08 (-40d) | 2026-06-17 → 2026-05-08 (-40d) |  | 22d → 39d |  |
| 504 | Atendimento de comentários | 2026-06-18 → 2026-05-11 (-38d) | 2026-06-18 → 2026-05-11 (-38d) |  | 22d → 39d |  |
| 505 | Aprovação | 2026-06-19 → 2026-05-12 (-38d) | 2026-06-19 → 2026-05-12 (-38d) |  | 22d → 39d |  |
| 506 | **FD-F0009-0306-MB-J-00005** | 2026-06-08 → 2026-04-29 (-40d) | 2026-06-19 → 2026-05-12 (-38d) |  | 22d → 39d |  |
| 507 | Emissão inicial | 2026-06-08 → 2026-04-29 (-40d) | 2026-06-16 → 2026-05-07 (-40d) |  | 22d → 39d | 412 → 487SS |
| 508 | Análise Tecnored | 2026-06-17 → 2026-05-08 (-40d) | 2026-06-17 → 2026-05-08 (-40d) |  | 22d → 39d |  |
| 509 | Atendimento de comentários | 2026-06-18 → 2026-05-11 (-38d) | 2026-06-18 → 2026-05-11 (-38d) |  | 22d → 39d |  |
| 510 | Aprovação | 2026-06-19 → 2026-05-12 (-38d) | 2026-06-19 → 2026-05-12 (-38d) |  | 22d → 39d |  |
| 511 | **FD-F0009-0306-MB-J-00006** | 2026-06-08 → 2026-04-29 (-40d) | 2026-06-19 → 2026-05-12 (-38d) |  | 22d → 39d |  |
| 512 | Emissão inicial | 2026-06-08 → 2026-04-29 (-40d) | 2026-06-16 → 2026-05-07 (-40d) |  | 22d → 39d | 412 → 487SS |
| 513 | Análise Tecnored | 2026-06-17 → 2026-05-08 (-40d) | 2026-06-17 → 2026-05-08 (-40d) |  | 22d → 39d |  |
| 514 | Atendimento de comentários | 2026-06-18 → 2026-05-11 (-38d) | 2026-06-18 → 2026-05-11 (-38d) |  | 22d → 39d |  |
| 515 | Aprovação | 2026-06-19 → 2026-05-12 (-38d) | 2026-06-19 → 2026-05-12 (-38d) |  | 22d → 39d |  |
| 516 | **FD-F0009-0306-MB-J-00007** | 2026-06-08 → 2026-04-29 (-40d) | 2026-06-19 → 2026-05-12 (-38d) |  | 22d → 39d |  |
| 517 | Emissão inicial | 2026-06-08 → 2026-04-29 (-40d) | 2026-06-16 → 2026-05-07 (-40d) |  | 22d → 39d | 412 → 487SS |
| 518 | Análise Tecnored | 2026-06-17 → 2026-05-08 (-40d) | 2026-06-17 → 2026-05-08 (-40d) |  | 22d → 39d |  |
| 519 | Atendimento de comentários | 2026-06-18 → 2026-05-11 (-38d) | 2026-06-18 → 2026-05-11 (-38d) |  | 22d → 39d |  |
| 520 | Aprovação | 2026-06-19 → 2026-05-12 (-38d) | 2026-06-19 → 2026-05-12 (-38d) |  | 22d → 39d |  |
| 521 | **FD-F0009-0306-MB-J-00008** | 2026-06-08 → 2026-04-29 (-40d) | 2026-06-19 → 2026-05-12 (-38d) |  | 22d → 39d |  |
| 522 | Emissão inicial | 2026-06-08 → 2026-04-29 (-40d) | 2026-06-16 → 2026-05-07 (-40d) |  | 22d → 39d | 412 → 487SS |
| 523 | Análise Tecnored | 2026-06-17 → 2026-05-08 (-40d) | 2026-06-17 → 2026-05-08 (-40d) |  | 22d → 39d |  |
| 524 | Atendimento de comentários | 2026-06-18 → 2026-05-11 (-38d) | 2026-06-18 → 2026-05-11 (-38d) |  | 22d → 39d |  |
| 525 | Aprovação | 2026-06-19 → 2026-05-12 (-38d) | 2026-06-19 → 2026-05-12 (-38d) |  | 22d → 39d |  |
| 526 | **FD-F0009-0306-MB-J-00009** | 2026-06-08 → 2026-04-29 (-40d) | 2026-06-19 → 2026-05-12 (-38d) |  | 22d → 39d |  |
| 527 | Emissão inicial | 2026-06-08 → 2026-04-29 (-40d) | 2026-06-16 → 2026-05-07 (-40d) |  | 22d → 39d | 412 → 487SS |
| 528 | Análise Tecnored | 2026-06-17 → 2026-05-08 (-40d) | 2026-06-17 → 2026-05-08 (-40d) |  | 22d → 39d |  |
| 529 | Atendimento de comentários | 2026-06-18 → 2026-05-11 (-38d) | 2026-06-18 → 2026-05-11 (-38d) |  | 22d → 39d |  |
| 530 | Aprovação | 2026-06-19 → 2026-05-12 (-38d) | 2026-06-19 → 2026-05-12 (-38d) |  | 22d → 39d |  |
| 531 | **FD-F0009-0306-MB-J-00010** | 2026-06-08 → 2026-04-29 (-40d) | 2026-06-19 → 2026-05-12 (-38d) |  | 22d → 39d |  |
| 532 | Emissão inicial | 2026-06-08 → 2026-04-29 (-40d) | 2026-06-16 → 2026-05-07 (-40d) |  | 22d → 39d | 412 → 487SS |
| 533 | Análise Tecnored | 2026-06-17 → 2026-05-08 (-40d) | 2026-06-17 → 2026-05-08 (-40d) |  | 22d → 39d |  |
| 534 | Atendimento de comentários | 2026-06-18 → 2026-05-11 (-38d) | 2026-06-18 → 2026-05-11 (-38d) |  | 22d → 39d |  |
| 535 | Aprovação | 2026-06-19 → 2026-05-12 (-38d) | 2026-06-19 → 2026-05-12 (-38d) |  | 22d → 39d |  |
| 536 | **FD-F0009-0306-MB-J-00011** | 2026-06-08 → 2026-04-29 (-40d) | 2026-06-19 → 2026-05-12 (-38d) |  | 22d → 39d |  |
| 537 | Emissão inicial | 2026-06-08 → 2026-04-29 (-40d) | 2026-06-16 → 2026-05-07 (-40d) |  | 22d → 39d | 412 → 487SS |
| 538 | Análise Tecnored | 2026-06-17 → 2026-05-08 (-40d) | 2026-06-17 → 2026-05-08 (-40d) |  | 22d → 39d |  |
| 539 | Atendimento de comentários | 2026-06-18 → 2026-05-11 (-38d) | 2026-06-18 → 2026-05-11 (-38d) |  | 22d → 39d |  |
| 540 | Aprovação | 2026-06-19 → 2026-05-12 (-38d) | 2026-06-19 → 2026-05-12 (-38d) |  | 22d → 39d |  |
| 541 | **FD-F0009-0306-MB-J-00012** | 2026-06-08 → 2026-04-29 (-40d) | 2026-06-19 → 2026-05-12 (-38d) |  | 22d → 39d |  |
| 542 | Emissão inicial | 2026-06-08 → 2026-04-29 (-40d) | 2026-06-16 → 2026-05-07 (-40d) |  | 22d → 39d | 412 → 487SS |
| 543 | Análise Tecnored | 2026-06-17 → 2026-05-08 (-40d) | 2026-06-17 → 2026-05-08 (-40d) |  | 22d → 39d |  |
| 544 | Atendimento de comentários | 2026-06-18 → 2026-05-11 (-38d) | 2026-06-18 → 2026-05-11 (-38d) |  | 22d → 39d |  |
| 545 | Aprovação | 2026-06-19 → 2026-05-12 (-38d) | 2026-06-19 → 2026-05-12 (-38d) |  | 22d → 39d |  |
| 546 | **FD-F0009-0306-MB-J-00013** | 2026-06-08 → 2026-04-29 (-40d) | 2026-06-19 → 2026-05-12 (-38d) |  | 22d → 39d |  |
| 547 | Emissão inicial | 2026-06-08 → 2026-04-29 (-40d) | 2026-06-16 → 2026-05-07 (-40d) |  | 22d → 39d | 412 → 487SS |
| 548 | Análise Tecnored | 2026-06-17 → 2026-05-08 (-40d) | 2026-06-17 → 2026-05-08 (-40d) |  | 22d → 39d |  |
| 549 | Atendimento de comentários | 2026-06-18 → 2026-05-11 (-38d) | 2026-06-18 → 2026-05-11 (-38d) |  | 22d → 39d |  |
| 550 | Aprovação | 2026-06-19 → 2026-05-12 (-38d) | 2026-06-19 → 2026-05-12 (-38d) |  | 22d → 39d |  |
| 551 | **FD-F0009-0306-MB-J-00014** | 2026-06-08 → 2026-04-29 (-40d) | 2026-06-15 → 2026-05-12 (-34d) | 6d → 10d | 26d → 39d |  |
| 552 | Emissão inicial | 2026-06-08 → 2026-04-29 (-40d) | 2026-06-10 → 2026-05-07 (-34d) | 3d → 7d | 26d → 39d | 412 → 487SS |
| 553 | Análise Tecnored | 2026-06-11 → 2026-05-08 (-34d) | 2026-06-11 → 2026-05-08 (-34d) |  | 26d → 39d |  |
| 554 | Atendimento de comentários | 2026-06-12 → 2026-05-11 (-32d) | 2026-06-12 → 2026-05-11 (-32d) |  | 26d → 39d |  |

| ID | Task | Start | Finish | Duration | Total float | Predecessors |
| --- | --- | --- | --- | --- | --- | --- |
| 555 | Aprovação | 2026-06-15 → 2026-05-12 (-34d) | 2026-06-15 → 2026-05-12 (-34d) |  | 26d → 39d |  |
| 556 | **FD-F0009-0306-MB-J-00015** | 2026-06-08 → 2026-04-29 (-40d) | 2026-06-30 → 2026-05-19 (-42d) | 17d → 15d | 15d → 34d |  |
| 557 | Emissão inicial | 2026-06-08 → 2026-04-29 (-40d) | 2026-06-18 → 2026-05-07 (-42d) | 9d → 7d | 15d → 34d | 412 → 487SS |
| 558 | Análise Tecnored | 2026-06-19 → 2026-05-08 (-42d) | 2026-06-26 → 2026-05-15 (-42d) |  | 15d → 34d |  |
| 559 | Atendimento de comentários | 2026-06-29 → 2026-05-18 (-42d) | 2026-06-29 → 2026-05-18 (-42d) |  | 15d → 34d |  |
| 560 | Aprovação | 2026-06-30 → 2026-05-19 (-42d) | 2026-06-30 → 2026-05-19 (-42d) |  | 15d → 34d |  |
| 561 | **FD-F0009-0306-MB-J-00016** | 2026-06-08 → 2026-04-29 (-40d) | 2026-07-02 → 2026-05-20 (-43d) | 19d → 16d | 13d → 33d |  |
| 562 | Emissão inicial | 2026-06-08 → 2026-04-29 (-40d) | 2026-06-19 → 2026-05-07 (-43d) | 10d → 7d | 13d → 33d | 412 → 487SS |
| 563 | Análise Tecnored | 2026-06-22 → 2026-05-08 (-45d) | 2026-06-29 → 2026-05-15 (-45d) |  | 13d → 33d |  |
| 564 | Atendimento de comentários | 2026-06-30 → 2026-05-18 (-43d) | 2026-06-30 → 2026-05-18 (-43d) |  | 13d → 33d |  |
| 565 | Aprovação | 2026-07-01 → 2026-05-19 (-43d) | 2026-07-02 → 2026-05-20 (-43d) |  | 13d → 33d |  |
| 566 | **DT-F0009-0306-MB-J-00001** | 2026-06-16 → 2026-04-29 (-48d) | 2026-06-24 → 2026-05-08 (-47d) | 7d → 8d | 17d → 41d |  |
| 567 | Emissão inicial | 2026-06-16 → 2026-04-29 (-48d) | 2026-06-18 → 2026-05-04 (-45d) | 3d → 4d | 17d → 41d | 472 → none |
| 568 | Análise Tecnored | 2026-06-19 → 2026-05-05 (-45d) | 2026-06-19 → 2026-05-05 (-45d) |  | 19d → 41d |  |
| 569 | Atendimento de comentários | 2026-06-22 → 2026-05-06 (-47d) | 2026-06-23 → 2026-05-07 (-47d) |  | 19d → 41d |  |
| 570 | Aprovação | 2026-06-24 → 2026-05-08 (-47d) | 2026-06-24 → 2026-05-08 (-47d) |  | 19d → 41d |  |
| 571 | **Civil** | 2026-06-25 → 2026-06-23 (-2d) | 2026-07-13 → 2026-07-03 (-10d) | 13d → 9d | 6d → 3d |  |
| 572 | **MC-F0009-0306-MB-C-00001** | 2026-06-25 → 2026-06-23 (-2d) | 2026-07-10 → 2026-07-02 (-8d) | 12d → 8d | 6d → 3d |  |
| 573 | Emissão inicial | 2026-06-25 → 2026-06-23 (-2d) | 2026-07-06 → 2026-06-29 (-7d) | 8d → 5d | 6d → 3d | 250 → 250FS-2d |
| 574 | Análise Tecnored | 2026-07-07 → 2026-06-30 (-7d) | 2026-07-07 → 2026-06-30 (-7d) |  | 7d → 4d |  |
| 575 | Atendimento de comentários | 2026-07-08 → 2026-07-01 (-7d) | 2026-07-09 → 2026-07-01 (-8d) | 2d → 1d | 7d → 4d |  |
| 576 | Aprovação | 2026-07-10 → 2026-07-02 (-8d) | 2026-07-10 → 2026-07-02 (-8d) |  | 7d → 4d |  |
| 577 | **PQ-F0009-0306-MB-C-00001** | 2026-07-07 → 2026-06-30 (-7d) | 2026-07-13 → 2026-07-03 (-10d) | 5d → 4d | 6d → 3d |  |
| 578 | Emissão inicial | 2026-07-07 → 2026-06-30 (-7d) | 2026-07-07 → 2026-06-30 (-7d) |  | 6d → 3d |  |
| 579 | Análise Tecnored | 2026-07-08 → 2026-07-01 (-7d) | 2026-07-08 → 2026-07-01 (-7d) |  | 6d → 3d |  |
| 580 | Atendimento de comentários | 2026-07-09 → 2026-07-02 (-7d) | 2026-07-10 → 2026-07-02 (-8d) | 2d → 1d | 6d → 3d |  |
| 581 | Aprovação | 2026-07-13 → 2026-07-03 (-10d) | 2026-07-13 → 2026-07-03 (-10d) |  | 6d → 3d |  |

## Version 4 (data date 2026-06-15, saved 2026-06-16, file CR-F0009-0306-MB-F-00001 15062026_C2.mpp)

Note of the change: Primeira versao dashboard

Last finish 2026-07-15 → 2026-07-16 (+1d). Complete tasks 28 → 31.

Changed:

| ID | Task | Start | Finish | Duration | Complete | Total float | Predecessors | Other |
| --- | --- | --- | --- | --- | --- | --- | --- | --- |
| 1 | **F0009 - Programa Marabá** |  | 2026-07-08 → 2026-07-14 (+6d) | 51d → 55d | 9% → 13% |  |  |  |
| 2 | **Área 0306 - Sopradores** |  | 2026-07-08 → 2026-07-14 (+6d) | 51d → 55d | 9% → 13% |  |  |  |
| 4 | **Marcos** |  |  |  | 66% → 89% |  |  |  |
| 5 | Critério de Projeto de Processo | 2026-06-05 A |  |  | 0% → 70% |  |  |  |
| 7 | Critério de Projeto de Elétrica |  | 2026-06-15 A |  | 70% → 100% |  |  |  |
| 24 | **Coordenação** |  | 2026-06-30 → 2026-07-07 (+7d) | 45d → 50d | 14% → 20% | 6d → 5d |  |  |
| 25 | **RM-F0009-0306-MB-G-00001** | 2026-06-02 → 2026-06-11 A (+9d) | 2026-06-11 → 2026-06-18 (+7d) |  | 0% → 25% | 6d → 18d |  |  |
| 26 | Emissão inicial | 2026-06-02 → 2026-06-11 A (+9d) | 2026-06-08 → 2026-06-15 (+7d) |  | 0% → 50% | 6d → 5d |  | constraint none → finish no earlier than 2026-06-15 |
| 27 | Análise Tecnored | 2026-06-09 → 2026-06-16 (+7d) | 2026-06-09 → 2026-06-16 (+7d) |  |  | 19d → 18d |  |  |
| 28 | Atendimento de comentários | 2026-06-10 → 2026-06-17 (+7d) | 2026-06-10 → 2026-06-17 (+7d) |  |  | 19d → 18d |  |  |
| 29 | Aprovação | 2026-06-11 → 2026-06-18 (+7d) | 2026-06-11 → 2026-06-18 (+7d) |  |  | 19d → 18d |  |  |
| 30 | **RM-F0009-0306-MB-G-00002** | 2026-06-16 → 2026-06-23 (+7d) | 2026-06-22 → 2026-06-29 (+7d) |  |  | 6d → 5d |  |  |
| 31 | Emissão inicial | 2026-06-16 → 2026-06-23 (+7d) | 2026-06-17 → 2026-06-24 (+7d) |  |  | 6d → 5d |  |  |
| 32 | Análise Tecnored | 2026-06-18 → 2026-06-25 (+7d) | 2026-06-18 → 2026-06-25 (+7d) |  |  | 12d → 11d |  |  |
| 33 | Atendimento de comentários | 2026-06-19 → 2026-06-26 (+7d) | 2026-06-19 → 2026-06-26 (+7d) |  |  | 12d → 11d |  |  |
| 34 | Aprovação | 2026-06-22 → 2026-06-29 (+7d) | 2026-06-22 → 2026-06-29 (+7d) |  |  | 12d → 11d |  |  |
| 35 | **RL-F0009-0306-MB-G-00001** | 2026-06-25 → 2026-07-02 (+7d) | 2026-06-30 → 2026-07-07 (+7d) |  |  | 6d → 5d |  |  |
| 36 | Emissão inicial | 2026-06-25 → 2026-07-02 (+7d) | 2026-06-25 → 2026-07-02 (+7d) |  |  | 6d → 5d |  |  |
| 37 | Análise Tecnored | 2026-06-26 → 2026-07-03 (+7d) | 2026-06-26 → 2026-07-03 (+7d) |  |  | 6d → 5d |  |  |
| 38 | Atendimento de comentários | 2026-06-29 → 2026-07-06 (+7d) | 2026-06-29 → 2026-07-06 (+7d) |  |  | 6d → 5d |  |  |
| 39 | Aprovação | 2026-06-30 → 2026-07-07 (+7d) | 2026-06-30 → 2026-07-07 (+7d) |  |  | 6d → 5d |  |  |
| 61 | **Mecânica** |  |  |  | 12% → 24% | 0d → 4d |  |  |
| 67 | **MD-F0009-0306-MB-M-00001** | 2026-06-02 → 2026-06-18 (+16d) | 2026-06-12 → 2026-06-26 (+14d) |  |  | -15d → 12d |  |  |
| 68 | Emissão inicial | 2026-06-02 → 2026-06-18 (+16d) | 2026-06-08 → 2026-06-22 (+14d) |  |  | -15d → 12d |  |  |
| 69 | Análise Tecnored | 2026-06-09 → 2026-06-23 (+14d) | 2026-06-09 → 2026-06-23 (+14d) |  |  | 18d → 12d |  |  |
| 70 | Atendimento de comentários | 2026-06-10 → 2026-06-24 (+14d) | 2026-06-11 → 2026-06-25 (+14d) |  |  | 18d → 12d |  |  |
| 71 | Aprovação | 2026-06-12 → 2026-06-26 (+14d) | 2026-06-12 → 2026-06-26 (+14d) |  |  | 18d → 12d |  |  |
| 72 | **LE-F0009-0306-MB-M-00001** | 2026-05-26 A → 2026-06-11 A (+16d) | 2026-06-02 → 2026-06-18 (+16d) |  |  | none → 18d |  |  |
| 73 | Emissão inicial | 2026-05-26 A → 2026-06-11 A (+16d) | 2026-05-27 A → 2026-06-12 A (+16d) |  |  |  |  |  |
| 74 | Análise Tecnored | 2026-05-28 A → 2026-06-15 A (+18d) | 2026-05-28 A → 2026-06-15 A (+18d) |  |  |  |  |  |
| 75 | Atendimento de comentários | 2026-05-29 A → 2026-06-16 A (+18d) | 2026-06-01 A → 2026-06-17 A (+16d) |  |  |  |  |  |
| 76 | Aprovação | 2026-06-02 → 2026-06-18 (+16d) | 2026-06-02 → 2026-06-18 (+16d) |  |  | 24d → 18d |  |  |
| 77 | **PQ-F0009-0306-MB-M-00001** | 2026-06-19 A |  |  | 0% → 43% | none → 11d |  |  |
| 78 | Emissão inicial | 2026-06-19 A | 2026-06-23 A |  | 0% → 100% | 7d → none |  |  |
| 102 | **PL-F0009-0306-MB-M-00001** | 2026-06-03 A | 2026-06-22 → 2026-06-18 (-4d) | 12d → 10d | 0% → 60% | none → 18d |  |  |
| 103 | Emissão inicial | 2026-06-03 A | 2026-06-16 → 2026-06-12 A (-4d) | 8d → 6d | 0% → 100% | 12d → none |  | constraint none → finish no earlier than 2026-06-12 |
| 104 | Análise Tecnored | 2026-06-17 → 2026-06-15 (-2d) | 2026-06-17 → 2026-06-15 (-2d) |  |  | 12d → 18d |  |  |
| 105 | Atendimento de comentários | 2026-06-18 → 2026-06-16 (-2d) | 2026-06-19 → 2026-06-17 (-2d) |  |  | 12d → 18d |  |  |
| 106 | Aprovação | 2026-06-22 → 2026-06-18 (-4d) | 2026-06-22 → 2026-06-18 (-4d) |  |  | 12d → 18d |  |  |
| 112 | **MC-F0009-0306-MB-M-00001** |  | 2026-06-24 → 2026-06-23 (-1d) | 9d → 8d |  | none → 6d |  |  |
| 113 | Emissão inicial |  | 2026-06-18 → 2026-06-16 (-2d) | 5d → 3d |  | 0d → 6d |  | constraint start no earlier than 2026-06-12 → finish no earlier than 2026-06-16 |
| 114 | Análise Tecnored | 2026-06-19 → 2026-06-17 (-2d) | 2026-06-19 → 2026-06-17 (-2d) |  |  | 0d → 6d |  | constraint start no earlier than 2026-06-19 → finish no earlier than 2026-06-17 |
| 115 | Atendimento de comentários | 2026-06-22 → 2026-06-18 (-4d) | 2026-06-23 → 2026-06-19 (-4d) |  |  | 10d → 16d |  | constraint start no earlier than 2026-06-22 → finish no earlier than 2026-06-19 |
| 116 | Aprovação | 2026-06-24 → 2026-06-23 (-1d) | 2026-06-24 → 2026-06-23 (-1d) |  |  | 10d → 15d |  | constraint start no earlier than 2026-06-24 → finish no earlier than 2026-06-23 |
| 117 | **MC-F0009-0306-MB-M-00002** |  | 2026-06-24 → 2026-06-23 (-1d) | 9d → 8d |  | none → 6d |  |  |
| 118 | Emissão inicial |  | 2026-06-18 → 2026-06-16 (-2d) | 5d → 3d |  | 0d → 6d |  | constraint start no earlier than 2026-06-12 → finish no earlier than 2026-06-16 |
| 119 | Análise Tecnored | 2026-06-19 → 2026-06-17 (-2d) | 2026-06-19 → 2026-06-17 (-2d) |  |  | 0d → 6d |  | constraint start no earlier than 2026-06-19 → finish no earlier than 2026-06-17 |
| 120 | Atendimento de comentários | 2026-06-22 → 2026-06-18 (-4d) | 2026-06-23 → 2026-06-19 (-4d) |  |  | 10d → 16d |  | constraint start no earlier than 2026-06-22 → finish no earlier than 2026-06-19 |
| 121 | Aprovação | 2026-06-24 → 2026-06-23 (-1d) | 2026-06-24 → 2026-06-23 (-1d) |  |  | 10d → 15d |  | constraint start no earlier than 2026-06-24 → finish no earlier than 2026-06-23 |
| 127 | **FD-F0009-0306-MB-M-00001** | 2026-06-19 → 2026-06-17 (-2d) |  | 7d → 9d |  | none → 11d |  |  |
| 128 | Emissão inicial | 2026-06-19 → 2026-06-17 (-2d) | 2026-06-23 → 2026-06-19 (-4d) |  |  | 7d → 13d |  | constraint start no earlier than 2026-06-19 → start no earlier than 2026-06-16 |
| 137 | **Tubulação/Utilidades** |  | 2026-07-06 → 2026-07-07 (+1d) | 21d → 22d |  | 2d → 5d |  |  |
| 143 | **MD-F0009-0306-MB-U-00001** | 2026-07-07 → 2026-07-08 (+1d) | 2026-07-15 → 2026-07-16 (+1d) |  |  | -5d → -2d |  |  |
| 144 | Emissão inicial | 2026-07-07 → 2026-07-08 (+1d) | 2026-07-09 → 2026-07-10 (+1d) |  |  | -5d → -2d |  |  |
| 145 | Análise Tecnored | 2026-07-10 → 2026-07-13 (+3d) | 2026-07-10 → 2026-07-13 (+3d) |  |  | -5d → -2d |  |  |
| 146 | Atendimento de comentários | 2026-07-13 → 2026-07-14 (+1d) | 2026-07-14 → 2026-07-15 (+1d) |  |  | -5d → -2d |  |  |
| 147 | Aprovação | 2026-07-15 → 2026-07-16 (+1d) | 2026-07-15 → 2026-07-16 (+1d) |  |  | -5d → -2d |  |  |
| 148 | **ML-F0009-0306-MB-T-00001** | 2026-06-17 → 2026-06-15 (-2d) | 2026-06-25 → 2026-06-26 (+1d) | 7d → 10d |  | none → 5d |  |  |
| 149 | Emissão inicial | 2026-06-17 → 2026-06-15 (-2d) | 2026-06-19 → 2026-06-22 (+3d) | 3d → 6d |  | 2d → 5d | 123FS+9d → none | constraint none → finish no earlier than 2026-06-22 |
| 150 | Análise Tecnored | 2026-06-22 → 2026-06-23 (+1d) | 2026-06-22 → 2026-06-23 (+1d) |  |  | 2d → 5d |  |  |
| 151 | Atendimento de comentários | 2026-06-23 → 2026-06-24 (+1d) | 2026-06-24 → 2026-06-25 (+1d) |  |  | 2d → 5d |  |  |
| 152 | Aprovação | 2026-06-25 → 2026-06-26 (+1d) | 2026-06-25 → 2026-06-26 (+1d) |  |  | 2d → 5d |  |  |
| 153 | **ET-F0009-0306-MB-T-00001** | 2026-06-18 → 2026-06-25 (+7d) | 2026-06-26 → 2026-07-03 (+7d) |  |  | 8d → 7d |  |  |
| 154 | Emissão inicial | 2026-06-18 → 2026-06-25 (+7d) | 2026-06-22 → 2026-06-29 (+7d) |  |  | 8d → 7d |  |  |
| 155 | Análise Tecnored | 2026-06-23 → 2026-06-30 (+7d) | 2026-06-23 → 2026-06-30 (+7d) |  |  | 8d → 7d |  |  |
| 156 | Atendimento de comentários | 2026-06-24 → 2026-07-01 (+7d) | 2026-06-25 → 2026-07-02 (+7d) |  |  | 8d → 7d |  |  |
| 157 | Aprovação | 2026-06-26 → 2026-07-03 (+7d) | 2026-06-26 → 2026-07-03 (+7d) |  |  | 8d → 7d |  |  |
| 158 | **FD-F0009-0306-MB-T-00001** | 2026-06-15 → 2026-06-22 (+7d) | 2026-06-23 → 2026-06-30 (+7d) |  |  | none → 10d |  |  |
| 159 | Emissão inicial | 2026-06-15 → 2026-06-22 (+7d) | 2026-06-17 → 2026-06-24 (+7d) |  |  | 11d → 10d |  | constraint start no earlier than 2026-06-15 → start no earlier than 2026-06-22 |
| 160 | Análise Tecnored | 2026-06-18 → 2026-06-25 (+7d) | 2026-06-18 → 2026-06-25 (+7d) |  |  | 11d → 10d |  |  |

| ID | Task | Start | Finish | Total float | Other |
| --- | --- | --- | --- | --- | --- |
| 161 | Atendimento de comentários | 2026-06-19 → 2026-06-26 (+7d) | 2026-06-22 → 2026-06-29 (+7d) | 11d → 10d |  |
| 162 | Aprovação | 2026-06-23 → 2026-06-30 (+7d) | 2026-06-23 → 2026-06-30 (+7d) | 11d → 10d |  |
| 168 | **PQ-F0009-0306-MB-T-00001** | 2026-06-16 → 2026-06-22 (+6d) | 2026-06-24 → 2026-06-30 (+6d) | none → 10d |  |
| 169 | Emissão inicial | 2026-06-16 → 2026-06-22 (+6d) | 2026-06-18 → 2026-06-24 (+6d) |  | constraint start no earlier than 2026-06-16 → start no earlier than 2026-06-22 |
| 170 | Análise Tecnored | 2026-06-19 → 2026-06-25 (+6d) | 2026-06-19 → 2026-06-25 (+6d) |  |  |
| 171 | Atendimento de comentários | 2026-06-22 → 2026-06-26 (+4d) | 2026-06-23 → 2026-06-29 (+6d) |  |  |
| 172 | Aprovação | 2026-06-24 → 2026-06-30 (+6d) | 2026-06-24 → 2026-06-30 (+6d) |  |  |
| 188 | **AG-F0009-0306-MB-T-00001** | 2026-06-26 → 2026-06-29 (+3d) | 2026-07-06 → 2026-07-07 (+1d) | none → 5d |  |
| 189 | Emissão inicial | 2026-06-26 → 2026-06-29 (+3d) | 2026-06-30 → 2026-07-01 (+1d) | 2d → 5d |  |
| 190 | Análise Tecnored | 2026-07-01 → 2026-07-02 (+1d) | 2026-07-01 → 2026-07-02 (+1d) | 2d → 5d |  |
| 191 | Atendimento de comentários | 2026-07-02 → 2026-07-03 (+1d) | 2026-07-03 → 2026-07-06 (+3d) | 2d → 5d |  |
| 192 | Aprovação | 2026-07-06 → 2026-07-07 (+1d) | 2026-07-06 → 2026-07-07 (+1d) | 2d → 5d |  |
| 193 | **AG-F0009-0306-MB-T-00002** | 2026-06-26 → 2026-06-29 (+3d) | 2026-07-06 → 2026-07-07 (+1d) | none → 5d |  |
| 194 | Emissão inicial | 2026-06-26 → 2026-06-29 (+3d) | 2026-06-30 → 2026-07-01 (+1d) | 2d → 5d |  |
| 195 | Análise Tecnored | 2026-07-01 → 2026-07-02 (+1d) | 2026-07-01 → 2026-07-02 (+1d) | 2d → 5d |  |
| 196 | Atendimento de comentários | 2026-07-02 → 2026-07-03 (+1d) | 2026-07-03 → 2026-07-06 (+3d) | 2d → 5d |  |
| 197 | Aprovação | 2026-07-06 → 2026-07-07 (+1d) | 2026-07-06 → 2026-07-07 (+1d) | 2d → 5d |  |
| 198 | **AG-F0009-0306-MB-T-00003** | 2026-06-26 → 2026-06-29 (+3d) | 2026-07-06 → 2026-07-07 (+1d) | none → 5d |  |
| 199 | Emissão inicial | 2026-06-26 → 2026-06-29 (+3d) | 2026-06-30 → 2026-07-01 (+1d) | 2d → 5d |  |
| 200 | Análise Tecnored | 2026-07-01 → 2026-07-02 (+1d) | 2026-07-01 → 2026-07-02 (+1d) | 2d → 5d |  |
| 201 | Atendimento de comentários | 2026-07-02 → 2026-07-03 (+1d) | 2026-07-03 → 2026-07-06 (+3d) | 2d → 5d |  |
| 202 | Aprovação | 2026-07-06 → 2026-07-07 (+1d) | 2026-07-06 → 2026-07-07 (+1d) | 2d → 5d |  |
| 218 | **LK-F0009-0306-MB-T-00001** | 2026-06-19 → 2026-06-22 (+3d) | 2026-06-29 → 2026-06-30 (+1d) | none → 10d |  |
| 219 | Emissão inicial | 2026-06-19 → 2026-06-22 (+3d) | 2026-06-23 → 2026-06-24 (+1d) | 7d → 10d | constraint start no earlier than 2026-06-19 → finish no earlier than 2026-06-24 |
| 220 | Análise Tecnored | 2026-06-24 → 2026-06-25 (+1d) | 2026-06-24 → 2026-06-25 (+1d) | 7d → 10d |  |
| 221 | Atendimento de comentários | 2026-06-25 → 2026-06-26 (+1d) | 2026-06-26 → 2026-06-29 (+3d) | 7d → 10d |  |
| 222 | Aprovação | 2026-06-29 → 2026-06-30 (+1d) | 2026-06-29 → 2026-06-30 (+1d) | 7d → 10d |  |
| 228 | **Estrutura metálica** | 2026-06-22 → 2026-06-18 (-4d) | 2026-07-08 → 2026-07-06 (-2d) | 0d → 6d |  |
| 234 | **ML-F0009-0306-MB-S-00001** | 2026-06-22 → 2026-06-18 (-4d) | 2026-06-30 → 2026-06-26 (-4d) | 0d → 6d |  |
| 235 | Emissão inicial | 2026-06-22 → 2026-06-18 (-4d) | 2026-06-25 → 2026-06-23 (-2d) | 0d → 6d |  |
| 236 | Análise Tecnored | 2026-06-26 → 2026-06-24 (-2d) | 2026-06-26 → 2026-06-24 (-2d) | 6d → 12d |  |
| 237 | Atendimento de comentários | 2026-06-29 → 2026-06-25 (-4d) | 2026-06-29 → 2026-06-25 (-4d) | 6d → 12d |  |
| 238 | Aprovação | 2026-06-30 → 2026-06-26 (-4d) | 2026-06-30 → 2026-06-26 (-4d) | 6d → 12d |  |
| 239 | **PQ-F0009-0306-MB-S-00001** | 2026-07-01 → 2026-06-29 (-2d) | 2026-07-08 → 2026-07-06 (-2d) | 0d → 6d |  |
| 240 | Emissão inicial | 2026-07-01 → 2026-06-29 (-2d) | 2026-07-03 → 2026-07-01 (-2d) | 0d → 6d |  |
| 241 | Análise Tecnored | 2026-07-06 → 2026-07-02 (-4d) | 2026-07-06 → 2026-07-02 (-4d) | 0d → 6d |  |
| 242 | Atendimento de comentários | 2026-07-07 → 2026-07-03 (-4d) | 2026-07-07 → 2026-07-03 (-4d) | 0d → 6d |  |
| 243 | Aprovação | 2026-07-08 → 2026-07-06 (-2d) | 2026-07-08 → 2026-07-06 (-2d) | 0d → 6d |  |
| 244 | **LM-F0009-0306-MB-S-00001** | 2026-06-26 → 2026-06-24 (-2d) | 2026-07-03 → 2026-07-01 (-2d) | 0d → 6d |  |
| 245 | Emissão inicial | 2026-06-26 → 2026-06-24 (-2d) | 2026-06-30 → 2026-06-26 (-4d) | 0d → 6d |  |
| 246 | Análise Tecnored | 2026-07-01 → 2026-06-29 (-2d) | 2026-07-01 → 2026-06-29 (-2d) | 3d → 9d |  |
| 247 | Atendimento de comentários | 2026-07-02 → 2026-06-30 (-2d) | 2026-07-02 → 2026-06-30 (-2d) | 3d → 9d |  |
| 248 | Aprovação | 2026-07-03 → 2026-07-01 (-2d) | 2026-07-03 → 2026-07-01 (-2d) | 3d → 9d |  |
| 249 | **MC-F0009-0306-MB-S-00001** | 2026-06-22 → 2026-06-18 (-4d) | 2026-06-29 → 2026-06-25 (-4d) | 0d → 6d |  |
| 250 | Emissão inicial | 2026-06-22 → 2026-06-18 (-4d) | 2026-06-24 → 2026-06-22 (-2d) | 0d → 6d |  |
| 251 | Análise Tecnored | 2026-06-25 → 2026-06-23 (-2d) | 2026-06-25 → 2026-06-23 (-2d) | 7d → 13d |  |
| 252 | Atendimento de comentários | 2026-06-26 → 2026-06-24 (-2d) | 2026-06-26 → 2026-06-24 (-2d) | 7d → 13d |  |
| 253 | Aprovação | 2026-06-29 → 2026-06-25 (-4d) | 2026-06-29 → 2026-06-25 (-4d) | 7d → 13d |  |
| 254 | **AG-F0009-0306-MB-S-00001** | 2026-06-26 → 2026-06-24 (-2d) | 2026-07-06 → 2026-07-02 (-4d) | 2d → 8d |  |
| 255 | Emissão inicial | 2026-06-26 → 2026-06-24 (-2d) | 2026-07-01 → 2026-06-29 (-2d) | 2d → 8d |  |
| 256 | Análise Tecnored | 2026-07-02 → 2026-06-30 (-2d) | 2026-07-02 → 2026-06-30 (-2d) | 2d → 8d |  |
| 257 | Atendimento de comentários | 2026-07-03 → 2026-07-01 (-2d) | 2026-07-03 → 2026-07-01 (-2d) | 2d → 8d |  |
| 258 | Aprovação | 2026-07-06 → 2026-07-02 (-4d) | 2026-07-06 → 2026-07-02 (-4d) | 2d → 8d |  |
| 259 | **AG-F0009-0306-MB-S-00002** | 2026-06-26 → 2026-06-24 (-2d) | 2026-07-06 → 2026-07-02 (-4d) | 2d → 8d |  |
| 260 | Emissão inicial | 2026-06-26 → 2026-06-24 (-2d) | 2026-07-01 → 2026-06-29 (-2d) | 2d → 8d |  |
| 261 | Análise Tecnored | 2026-07-02 → 2026-06-30 (-2d) | 2026-07-02 → 2026-06-30 (-2d) | 2d → 8d |  |
| 262 | Atendimento de comentários | 2026-07-03 → 2026-07-01 (-2d) | 2026-07-03 → 2026-07-01 (-2d) | 2d → 8d |  |
| 263 | Aprovação | 2026-07-06 → 2026-07-02 (-4d) | 2026-07-06 → 2026-07-02 (-4d) | 2d → 8d |  |
| 264 | **AG-F0009-0306-MB-S-00003** | 2026-06-26 → 2026-06-24 (-2d) | 2026-07-06 → 2026-07-02 (-4d) | 2d → 8d |  |
| 265 | Emissão inicial | 2026-06-26 → 2026-06-24 (-2d) | 2026-07-01 → 2026-06-29 (-2d) | 2d → 8d |  |
| 266 | Análise Tecnored | 2026-07-02 → 2026-06-30 (-2d) | 2026-07-02 → 2026-06-30 (-2d) | 2d → 8d |  |
| 267 | Atendimento de comentários | 2026-07-03 → 2026-07-01 (-2d) | 2026-07-03 → 2026-07-01 (-2d) | 2d → 8d |  |
| 268 | Aprovação | 2026-07-06 → 2026-07-02 (-4d) | 2026-07-06 → 2026-07-02 (-4d) | 2d → 8d |  |
| 269 | **AG-F0009-0306-MB-S-00004** | 2026-06-26 → 2026-06-24 (-2d) | 2026-07-06 → 2026-07-02 (-4d) | 2d → 8d |  |
| 270 | Emissão inicial | 2026-06-26 → 2026-06-24 (-2d) | 2026-07-01 → 2026-06-29 (-2d) | 2d → 8d |  |
| 271 | Análise Tecnored | 2026-07-02 → 2026-06-30 (-2d) | 2026-07-02 → 2026-06-30 (-2d) | 2d → 8d |  |
| 272 | Atendimento de comentários | 2026-07-03 → 2026-07-01 (-2d) | 2026-07-03 → 2026-07-01 (-2d) | 2d → 8d |  |
| 273 | Aprovação | 2026-07-06 → 2026-07-02 (-4d) | 2026-07-06 → 2026-07-02 (-4d) | 2d → 8d |  |
| 274 | **AG-F0009-0306-MB-S-00005** | 2026-06-26 → 2026-06-24 (-2d) | 2026-07-06 → 2026-07-02 (-4d) | 2d → 8d |  |
| 275 | Emissão inicial | 2026-06-26 → 2026-06-24 (-2d) | 2026-07-01 → 2026-06-29 (-2d) | 2d → 8d |  |

| ID | Task | Start | Finish | Duration | Complete | Total float | Other |
| --- | --- | --- | --- | --- | --- | --- | --- |
| 276 | Análise Tecnored | 2026-07-02 → 2026-06-30 (-2d) | 2026-07-02 → 2026-06-30 (-2d) |  |  | 2d → 8d |  |
| 277 | Atendimento de comentários | 2026-07-03 → 2026-07-01 (-2d) | 2026-07-03 → 2026-07-01 (-2d) |  |  | 2d → 8d |  |
| 278 | Aprovação | 2026-07-06 → 2026-07-02 (-4d) | 2026-07-06 → 2026-07-02 (-4d) |  |  | 2d → 8d |  |
| 279 | **PL-F0009-0306-MB-S-00001** | 2026-06-26 → 2026-06-24 (-2d) | 2026-07-06 → 2026-07-02 (-4d) |  |  | 2d → 8d |  |
| 280 | Emissão inicial | 2026-06-26 → 2026-06-24 (-2d) | 2026-07-01 → 2026-06-29 (-2d) |  |  | 2d → 8d |  |
| 281 | Análise Tecnored | 2026-07-02 → 2026-06-30 (-2d) | 2026-07-02 → 2026-06-30 (-2d) |  |  | 2d → 8d |  |
| 282 | Atendimento de comentários | 2026-07-03 → 2026-07-01 (-2d) | 2026-07-03 → 2026-07-01 (-2d) |  |  | 2d → 8d |  |
| 283 | Aprovação | 2026-07-06 → 2026-07-02 (-4d) | 2026-07-06 → 2026-07-02 (-4d) |  |  | 2d → 8d |  |
| 284 | **Elétrica** |  | 2026-06-29 → 2026-07-14 (+15d) | 21d → 32d |  | 7d → 0d |  |
| 290 | **ML-F0009-0306-MB-E-00001** | 2026-06-09 → 2026-06-24 (+15d) | 2026-06-17 → 2026-07-02 (+15d) |  |  | 7d → 0d |  |
| 291 | Emissão inicial | 2026-06-09 → 2026-06-24 (+15d) | 2026-06-12 → 2026-06-29 (+17d) |  |  | 7d → 0d | constraint none → finish no earlier than 2026-06-29 |
| 292 | Análise Tecnored | 2026-06-15 → 2026-06-30 (+15d) | 2026-06-15 → 2026-06-30 (+15d) |  |  | 15d → 8d |  |
| 293 | Atendimento de comentários | 2026-06-16 → 2026-07-01 (+15d) | 2026-06-16 → 2026-07-01 (+15d) |  |  | 15d → 8d |  |
| 294 | Aprovação | 2026-06-17 → 2026-07-02 (+15d) | 2026-06-17 → 2026-07-02 (+15d) |  |  | 15d → 8d |  |
| 300 | **LE-F0009-0306-MB-E-00001** | 2026-06-19 → 2026-06-30 (+11d) | 2026-06-25 → 2026-07-06 (+11d) |  |  | 9d → 6d |  |
| 301 | Emissão inicial | 2026-06-19 → 2026-06-30 (+11d) | 2026-06-23 → 2026-07-02 (+9d) |  |  | 9d → 6d | constraint none → finish no earlier than 2026-06-29 |
| 302 | Análise Tecnored | 2026-06-24 → 2026-07-03 (+9d) | 2026-06-24 → 2026-07-03 (+9d) |  |  | 9d → 6d |  |
| 303 | Atendimento de comentários | 2026-06-25 → 2026-07-06 (+11d) | 2026-06-25 → 2026-07-06 (+11d) |  |  | 9d → 6d |  |
| 304 | Aprovação | 2026-06-25 → 2026-07-06 (+11d) | 2026-06-25 → 2026-07-06 (+11d) |  |  | 9d → 6d |  |
| 310 | **LM-F0009-0306-MB-E-00001** | 2026-06-22 → 2026-07-07 (+15d) | 2026-06-24 → 2026-07-09 (+15d) |  |  | 7d → 0d |  |
| 311 | Emissão inicial | 2026-06-22 → 2026-07-07 (+15d) | 2026-06-22 → 2026-07-07 (+15d) |  |  | 7d → 0d |  |
| 312 | Análise Tecnored | 2026-06-23 → 2026-07-08 (+15d) | 2026-06-23 → 2026-07-08 (+15d) |  |  | 10d → 3d |  |
| 313 | Atendimento de comentários | 2026-06-24 → 2026-07-09 (+15d) | 2026-06-24 → 2026-07-09 (+15d) |  |  | 10d → 3d |  |
| 314 | Aprovação | 2026-06-24 → 2026-07-09 (+15d) | 2026-06-24 → 2026-07-09 (+15d) |  |  | 10d → 3d |  |
| 315 | **PQ-F0009-0306-MB-E-00001** | 2026-06-23 → 2026-07-08 (+15d) | 2026-06-29 → 2026-07-14 (+15d) |  |  | 7d → 0d |  |
| 316 | Emissão inicial | 2026-06-23 → 2026-07-08 (+15d) | 2026-06-25 → 2026-07-10 (+15d) |  |  | 7d → 0d |  |
| 317 | Análise Tecnored | 2026-06-26 → 2026-07-13 (+17d) | 2026-06-26 → 2026-07-13 (+17d) |  |  | 7d → 0d |  |
| 318 | Atendimento de comentários | 2026-06-29 → 2026-07-14 (+15d) | 2026-06-29 → 2026-07-14 (+15d) |  |  | 7d → 0d |  |
| 319 | Aprovação | 2026-06-29 → 2026-07-14 (+15d) | 2026-06-29 → 2026-07-14 (+15d) |  |  | 7d → 0d |  |
| 320 | **MD-F0009-0306-MB-E-00001** | 2026-06-23 → 2026-07-08 (+15d) | 2026-06-30 → 2026-07-15 (+15d) |  |  | 6d → -1d |  |
| 321 | Emissão inicial | 2026-06-23 → 2026-07-08 (+15d) | 2026-06-24 → 2026-07-09 (+15d) |  |  | 6d → -1d |  |
| 322 | Análise Tecnored | 2026-06-25 → 2026-07-10 (+15d) | 2026-06-25 → 2026-07-10 (+15d) |  |  | 6d → -1d |  |
| 323 | Atendimento de comentários | 2026-06-26 → 2026-07-13 (+17d) | 2026-06-29 → 2026-07-14 (+15d) |  |  | 6d → -1d |  |
| 324 | Aprovação | 2026-06-30 → 2026-07-15 (+15d) | 2026-06-30 → 2026-07-15 (+15d) |  |  | 6d → -1d |  |
| 325 | **MC-F0009-0306-MB-E-00001** | 2026-06-16 → 2026-06-25 (+9d) | 2026-06-22 → 2026-07-01 (+9d) |  |  | 9d → 6d |  |
| 326 | Emissão inicial | 2026-06-16 → 2026-06-25 (+9d) | 2026-06-18 → 2026-06-29 (+11d) |  |  | 9d → 6d | constraint none → finish no earlier than 2026-06-29 |
| 327 | Análise Tecnored | 2026-06-19 → 2026-06-30 (+11d) | 2026-06-19 → 2026-06-30 (+11d) |  |  | 12d → 9d |  |
| 328 | Atendimento de comentários | 2026-06-22 → 2026-07-01 (+9d) | 2026-06-22 → 2026-07-01 (+9d) |  |  | 12d → 9d |  |
| 329 | Aprovação | 2026-06-22 → 2026-07-01 (+9d) | 2026-06-22 → 2026-07-01 (+9d) |  |  | 12d → 9d |  |
| 330 | **MC-F0009-0306-MB-E-00002** | 2026-06-16 → 2026-06-25 (+9d) | 2026-06-22 → 2026-07-01 (+9d) |  |  | 9d → 6d |  |
| 331 | Emissão inicial | 2026-06-16 → 2026-06-25 (+9d) | 2026-06-18 → 2026-06-29 (+11d) |  |  | 9d → 6d | constraint none → finish no earlier than 2026-06-29 |
| 332 | Análise Tecnored | 2026-06-19 → 2026-06-30 (+11d) | 2026-06-19 → 2026-06-30 (+11d) |  |  | 12d → 9d |  |
| 333 | Atendimento de comentários | 2026-06-22 → 2026-07-01 (+9d) | 2026-06-22 → 2026-07-01 (+9d) |  |  | 12d → 9d |  |
| 334 | Aprovação | 2026-06-22 → 2026-07-01 (+9d) | 2026-06-22 → 2026-07-01 (+9d) |  |  | 12d → 9d |  |
| 335 | **AG-F0009-0306-MB-E-00001** | 2026-06-15 → 2026-06-30 (+15d) | 2026-06-22 → 2026-07-07 (+15d) |  |  | 7d → 0d |  |
| 336 | Emissão inicial | 2026-06-15 → 2026-06-30 (+15d) | 2026-06-18 → 2026-07-03 (+15d) |  |  | 7d → 0d |  |
| 337 | Análise Tecnored | 2026-06-19 → 2026-07-06 (+17d) | 2026-06-19 → 2026-07-06 (+17d) |  |  | 7d → 0d |  |
| 338 | Atendimento de comentários | 2026-06-22 → 2026-07-07 (+15d) | 2026-06-22 → 2026-07-07 (+15d) |  |  | 12d → 5d |  |
| 339 | Aprovação | 2026-06-22 → 2026-07-07 (+15d) | 2026-06-22 → 2026-07-07 (+15d) |  |  | 12d → 5d |  |
| 345 | **DU-F0009-0306-MB-E-00002** | 2026-06-19 → 2026-06-30 (+11d) | 2026-06-25 → 2026-07-06 (+11d) |  |  | 9d → 6d |  |
| 346 | Emissão inicial | 2026-06-19 → 2026-06-30 (+11d) | 2026-06-23 → 2026-07-02 (+9d) |  |  | 9d → 6d |  |
| 347 | Análise Tecnored | 2026-06-24 → 2026-07-03 (+9d) | 2026-06-24 → 2026-07-03 (+9d) |  |  | 9d → 6d |  |
| 348 | Atendimento de comentários | 2026-06-25 → 2026-07-06 (+11d) | 2026-06-25 → 2026-07-06 (+11d) |  |  | 9d → 6d |  |
| 349 | Aprovação | 2026-06-25 → 2026-07-06 (+11d) | 2026-06-25 → 2026-07-06 (+11d) |  |  | 9d → 6d |  |
| 350 | **DU-F0009-0306-MB-E-00003** | 2026-06-19 → 2026-06-30 (+11d) | 2026-06-25 → 2026-07-06 (+11d) |  |  | 9d → 6d |  |
| 351 | Emissão inicial | 2026-06-19 → 2026-06-30 (+11d) | 2026-06-23 → 2026-07-02 (+9d) |  |  | 9d → 6d |  |
| 352 | Análise Tecnored | 2026-06-24 → 2026-07-03 (+9d) | 2026-06-24 → 2026-07-03 (+9d) |  |  | 9d → 6d |  |
| 353 | Atendimento de comentários | 2026-06-25 → 2026-07-06 (+11d) | 2026-06-25 → 2026-07-06 (+11d) |  |  | 9d → 6d |  |
| 354 | Aprovação | 2026-06-25 → 2026-07-06 (+11d) | 2026-06-25 → 2026-07-06 (+11d) |  |  | 9d → 6d |  |
| 355 | **DU-F0009-0306-MB-E-00004** |  | 2026-06-23 → 2026-07-02 (+9d) | 11d → 18d |  | 11d → 8d |  |
| 357 | Análise Tecnored | 2026-06-19 → 2026-06-30 (+11d) | 2026-06-19 → 2026-06-30 (+11d) |  |  | 11d → 8d |  |
| 358 | Atendimento de comentários | 2026-06-22 → 2026-07-01 (+9d) | 2026-06-22 → 2026-07-01 (+9d) |  |  | 11d → 8d |  |
| 359 | Aprovação | 2026-06-23 → 2026-07-02 (+9d) | 2026-06-23 → 2026-07-02 (+9d) |  |  | 11d → 8d |  |
| 395 | **Automação e instrumentação** | 2026-04-29 A → 2026-06-01 A (+33d) | 2026-07-06 → 2026-07-08 (+2d) | 47d → 26d | 5% → 10% | 2d → 4d |  |
| 401 | **LI-F0009-0306-MB-J-00001** | 2026-06-09 → 2026-06-16 (+7d) | 2026-06-19 → 2026-06-26 (+7d) |  |  | 7d → 8d |  |
| 402 | Emissão inicial | 2026-06-09 → 2026-06-16 (+7d) | 2026-06-15 → 2026-06-22 (+7d) |  |  | 7d → 8d | constraint none → finish no earlier than 2026-06-19 |
| 403 | Análise Tecnored | 2026-06-16 → 2026-06-23 (+7d) | 2026-06-16 → 2026-06-23 (+7d) |  |  | 13d → 12d |  |
| 404 | Atendimento de comentários | 2026-06-17 → 2026-06-24 (+7d) | 2026-06-18 → 2026-06-25 (+7d) |  |  | 13d → 12d |  |
| 405 | Aprovação | 2026-06-19 → 2026-06-26 (+7d) | 2026-06-19 → 2026-06-26 (+7d) |  |  | 13d → 12d | constraint none → finish no earlier than 2026-06-23 |
| 406 | **LE-F0009-0306-MB-J-00001** | 2026-04-29 → 2026-06-26 (+58d) | 2026-05-08 → 2026-07-07 (+60d) |  |  | 41d → 5d |  |

| ID | Task | Start | Finish | Duration | Complete | Total float | Other |
| --- | --- | --- | --- | --- | --- | --- | --- |
| 407 | Emissão inicial | 2026-04-29 → 2026-06-26 (+58d) | 2026-05-04 → 2026-07-01 (+58d) |  |  | 41d → 5d | constraint none → start no earlier than 2026-06-26 |
| 408 | Análise Tecnored | 2026-05-05 → 2026-07-02 (+58d) | 2026-05-05 → 2026-07-02 (+58d) |  |  | 41d → 5d |  |
| 409 | Atendimento de comentários | 2026-05-06 → 2026-07-03 (+58d) | 2026-05-07 → 2026-07-06 (+60d) |  |  | 41d → 5d |  |
| 410 | Aprovação | 2026-05-08 → 2026-07-07 (+60d) | 2026-05-08 → 2026-07-07 (+60d) |  |  | 41d → 5d |  |
| 411 | **LZ-F0009-0306-MB-J-00001** | 2026-06-25 A → 2026-06-26 A (+1d) | 2026-07-06 → 2026-07-07 (+1d) |  |  | 2d → 5d |  |
| 412 | Emissão inicial | 2026-06-25 A → 2026-06-26 A (+1d) | 2026-06-30 A → 2026-07-01 A (+1d) |  |  |  |  |
| 413 | Análise Tecnored | 2026-07-01 → 2026-07-02 (+1d) | 2026-07-01 → 2026-07-02 (+1d) |  |  | 2d → 5d |  |
| 414 | Atendimento de comentários | 2026-07-02 → 2026-07-03 (+1d) | 2026-07-03 → 2026-07-06 (+3d) |  |  | 2d → 5d |  |
| 415 | Aprovação | 2026-07-06 → 2026-07-07 (+1d) | 2026-07-06 → 2026-07-07 (+1d) |  |  | 2d → 5d |  |
| 416 | **LE-F0009-0306-MB-J-00002** | 2026-06-25 → 2026-06-26 (+1d) | 2026-07-03 → 2026-07-06 (+3d) |  |  | 3d → 6d |  |
| 417 | Emissão inicial | 2026-06-25 → 2026-06-26 (+1d) | 2026-06-30 → 2026-07-01 (+1d) |  |  | 3d → 6d |  |
| 418 | Análise Tecnored | 2026-07-01 → 2026-07-02 (+1d) | 2026-07-01 → 2026-07-02 (+1d) |  |  | 3d → 6d |  |
| 419 | Atendimento de comentários | 2026-07-02 → 2026-07-03 (+1d) | 2026-07-02 → 2026-07-03 (+1d) |  |  | 3d → 6d |  |
| 420 | Aprovação | 2026-07-03 → 2026-07-06 (+3d) | 2026-07-03 → 2026-07-06 (+3d) |  |  | 3d → 6d |  |
| 421 | **PQ-F0009-0306-MB-J-00001** | 2026-06-24 → 2026-06-25 (+1d) | 2026-07-06 → 2026-07-07 (+1d) |  |  | 2d → 5d |  |
| 422 | Emissão inicial | 2026-06-24 → 2026-06-25 (+1d) | 2026-07-01 → 2026-07-02 (+1d) |  |  | 2d → 5d |  |
| 423 | Análise Tecnored | 2026-07-02 → 2026-07-03 (+1d) | 2026-07-02 → 2026-07-03 (+1d) |  |  | 2d → 5d |  |
| 424 | Atendimento de comentários | 2026-07-03 → 2026-07-06 (+3d) | 2026-07-03 → 2026-07-06 (+3d) |  |  | 2d → 5d |  |
| 425 | Aprovação | 2026-07-06 → 2026-07-07 (+1d) | 2026-07-06 → 2026-07-07 (+1d) |  |  | 2d → 5d |  |
| 426 | **FG-F0009-0306-MB-J-00001** |  | 2026-06-11 → 2026-06-18 (+7d) | 7d → 12d | 50% → 69% | 19d → 18d |  |
| 427 | Emissão inicial |  | 2026-06-08 A → 2026-06-15 A (+7d) | 4d → 9d |  |  | constraint none → finish no earlier than 2026-06-12 |
| 428 | Análise Tecnored | 2026-06-09 → 2026-06-16 (+7d) | 2026-06-09 → 2026-06-16 (+7d) |  |  | 19d → 18d |  |
| 429 | Atendimento de comentários | 2026-06-10 → 2026-06-17 (+7d) | 2026-06-11 → 2026-06-18 (+7d) |  |  | 19d → 18d |  |
| 430 | Aprovação | 2026-06-11 → 2026-06-18 (+7d) | 2026-06-11 → 2026-06-18 (+7d) |  |  | 19d → 18d |  |
| 431 | **FG-F0009-0306-MB-J-00002** |  | 2026-06-12 → 2026-06-19 (+7d) | 8d → 13d | 50% → 69% | 18d → 17d |  |
| 432 | Emissão inicial |  | 2026-06-08 A → 2026-06-15 A (+7d) | 4d → 9d |  |  |  |
| 433 | Análise Tecnored | 2026-06-09 → 2026-06-16 (+7d) | 2026-06-09 → 2026-06-16 (+7d) |  |  | 18d → 17d |  |
| 434 | Atendimento de comentários | 2026-06-10 → 2026-06-17 (+7d) | 2026-06-11 → 2026-06-18 (+7d) |  |  | 18d → 17d |  |
| 435 | Aprovação | 2026-06-12 → 2026-06-19 (+7d) | 2026-06-12 → 2026-06-19 (+7d) |  |  | 18d → 17d |  |
| 436 | **FG-F0009-0306-MB-J-00003** |  | 2026-06-12 → 2026-06-19 (+7d) | 8d → 13d | 50% → 69% | 18d → 17d |  |
| 437 | Emissão inicial |  | 2026-06-08 A → 2026-06-15 A (+7d) | 4d → 9d |  |  | constraint none → finish no earlier than 2026-06-12 |
| 438 | Análise Tecnored | 2026-06-09 → 2026-06-16 (+7d) | 2026-06-09 → 2026-06-16 (+7d) |  |  | 18d → 17d |  |
| 439 | Atendimento de comentários | 2026-06-10 → 2026-06-17 (+7d) | 2026-06-11 → 2026-06-18 (+7d) |  |  | 18d → 17d |  |
| 440 | Aprovação | 2026-06-12 → 2026-06-19 (+7d) | 2026-06-12 → 2026-06-19 (+7d) |  |  | 18d → 17d |  |
| 441 | **AG-F0009-0306-MB-J-00001** | 2026-06-16 → 2026-06-23 (+7d) | 2026-06-29 → 2026-07-02 (+3d) | 10d → 8d |  | 7d → 8d |  |
| 442 | Emissão inicial | 2026-06-16 → 2026-06-23 (+7d) | 2026-06-23 → 2026-06-26 (+3d) | 6d → 4d |  | 7d → 8d | constraint none → finish no earlier than 2026-06-23 |
| 443 | Análise Tecnored | 2026-06-24 → 2026-06-29 (+5d) | 2026-06-24 → 2026-06-29 (+5d) |  |  | 7d → 8d |  |
| 444 | Atendimento de comentários | 2026-06-25 → 2026-06-30 (+5d) | 2026-06-26 → 2026-07-01 (+5d) |  |  | 7d → 8d |  |
| 445 | Aprovação | 2026-06-29 → 2026-07-02 (+3d) | 2026-06-29 → 2026-07-02 (+3d) |  |  | 7d → 8d |  |
| 446 | **AG-F0009-0306-MB-J-00002** | 2026-06-16 → 2026-06-23 (+7d) | 2026-06-24 → 2026-07-01 (+7d) |  |  | 10d → 9d |  |
| 447 | Emissão inicial | 2026-06-16 → 2026-06-23 (+7d) | 2026-06-18 → 2026-06-25 (+7d) |  |  | 10d → 9d |  |
| 448 | Análise Tecnored | 2026-06-19 → 2026-06-26 (+7d) | 2026-06-19 → 2026-06-26 (+7d) |  |  | 10d → 9d |  |
| 449 | Atendimento de comentários | 2026-06-22 → 2026-06-29 (+7d) | 2026-06-23 → 2026-06-30 (+7d) |  |  | 10d → 9d |  |
| 450 | Aprovação | 2026-06-24 → 2026-07-01 (+7d) | 2026-06-24 → 2026-07-01 (+7d) |  |  | 10d → 9d |  |
| 451 | **AG-F0009-0306-MB-J-00003** | 2026-06-16 → 2026-06-23 (+7d) | 2026-06-24 → 2026-07-01 (+7d) |  |  | 10d → 9d |  |
| 452 | Emissão inicial | 2026-06-16 → 2026-06-23 (+7d) | 2026-06-18 → 2026-06-25 (+7d) |  |  | 10d → 9d |  |
| 453 | Análise Tecnored | 2026-06-19 → 2026-06-26 (+7d) | 2026-06-19 → 2026-06-26 (+7d) |  |  | 10d → 9d |  |
| 454 | Atendimento de comentários | 2026-06-22 → 2026-06-29 (+7d) | 2026-06-23 → 2026-06-30 (+7d) |  |  | 10d → 9d |  |
| 455 | Aprovação | 2026-06-24 → 2026-07-01 (+7d) | 2026-06-24 → 2026-07-01 (+7d) |  |  | 10d → 9d |  |
| 456 | **AG-F0009-0306-MB-J-00004** | 2026-06-16 → 2026-06-23 (+7d) | 2026-06-23 → 2026-06-30 (+7d) |  |  | 11d → 10d |  |
| 457 | Emissão inicial | 2026-06-16 → 2026-06-23 (+7d) | 2026-06-17 → 2026-06-24 (+7d) |  |  | 11d → 10d |  |
| 458 | Análise Tecnored | 2026-06-18 → 2026-06-25 (+7d) | 2026-06-18 → 2026-06-25 (+7d) |  |  | 11d → 10d |  |
| 459 | Atendimento de comentários | 2026-06-19 → 2026-06-26 (+7d) | 2026-06-22 → 2026-06-29 (+7d) |  |  | 11d → 10d |  |
| 460 | Aprovação | 2026-06-23 → 2026-06-30 (+7d) | 2026-06-23 → 2026-06-30 (+7d) |  |  | 11d → 10d |  |
| 461 | **DI-F0009-0306-MB-J-00001** | 2026-04-29 → 2026-06-17 (+49d) | 2026-05-08 → 2026-06-26 (+49d) |  |  | 41d → 12d |  |
| 462 | Emissão inicial | 2026-04-29 → 2026-06-17 (+49d) | 2026-05-04 → 2026-06-22 (+49d) |  |  | 41d → 12d | constraint none → start no earlier than 2026-06-17 |
| 463 | Análise Tecnored | 2026-05-05 → 2026-06-23 (+49d) | 2026-05-05 → 2026-06-23 (+49d) |  |  | 41d → 12d |  |
| 464 | Atendimento de comentários | 2026-05-06 → 2026-06-24 (+49d) | 2026-05-07 → 2026-06-25 (+49d) |  |  | 41d → 12d |  |
| 465 | Aprovação | 2026-05-08 → 2026-06-26 (+49d) | 2026-05-08 → 2026-06-26 (+49d) |  |  | 41d → 12d |  |
| 466 | **LI-F0009-0306-MB-J-00002** | 2026-04-29 → 2026-06-26 (+58d) | 2026-05-11 → 2026-07-07 (+57d) | 9d → 8d |  | 40d → 5d |  |
| 467 | Emissão inicial | 2026-04-29 → 2026-06-26 (+58d) | 2026-05-05 → 2026-07-01 (+57d) | 5d → 4d |  | 40d → 5d | constraint none → finish no earlier than 2026-07-01 |
| 468 | Análise Tecnored | 2026-05-06 → 2026-07-02 (+57d) | 2026-05-06 → 2026-07-02 (+57d) |  |  | 40d → 5d | constraint none → start no earlier than 2026-07-02 |
| 469 | Atendimento de comentários | 2026-05-07 → 2026-07-03 (+57d) | 2026-05-08 → 2026-07-06 (+59d) |  |  | 40d → 5d | constraint none → start no earlier than 2026-07-03 |
| 470 | Aprovação | 2026-05-11 → 2026-07-07 (+57d) | 2026-05-11 → 2026-07-07 (+57d) |  |  | 40d → 5d | constraint none → start no earlier than 2026-07-07 |
| 471 | **LI-F0009-0306-MB-J-00003** | 2026-04-29 → 2026-06-26 (+58d) | 2026-05-08 → 2026-07-07 (+60d) |  |  | 41d → 5d |  |
| 472 | Emissão inicial | 2026-04-29 → 2026-06-26 (+58d) | 2026-05-05 → 2026-07-01 (+57d) | 5d → 4d |  | 41d → 5d | constraint none → finish no earlier than 2026-07-01 |
| 473 | Análise Tecnored | 2026-05-06 → 2026-07-02 (+57d) | 2026-05-06 → 2026-07-02 (+57d) |  |  | 41d → 5d | constraint none → start no earlier than 2026-07-02 |
| 474 | Atendimento de comentários | 2026-05-07 → 2026-07-03 (+57d) | 2026-05-07 → 2026-07-06 (+60d) | 1d → 2d |  | 41d → 5d | constraint none → finish no earlier than 2026-07-06 |
| 475 | Aprovação | 2026-05-08 → 2026-07-07 (+60d) | 2026-05-08 → 2026-07-07 (+60d) |  |  | 41d → 5d | constraint none → start no earlier than 2026-07-07 |
| 476 | **LM-F0009-0306-MB-J-00001** | 2026-06-25 → 2026-06-26 (+1d) | 2026-07-03 → 2026-07-06 (+3d) |  |  | 2d → 5d |  |

| ID | Task | Start | Finish | Total float | Other |
| --- | --- | --- | --- | --- | --- |
| 477 | Emissão inicial | 2026-06-25 → 2026-06-26 (+1d) | 2026-06-30 → 2026-07-01 (+1d) | 2d → 5d | constraint none → start no earlier than 2026-06-26 |
| 478 | Análise Tecnored | 2026-07-01 → 2026-07-02 (+1d) | 2026-07-01 → 2026-07-02 (+1d) | 3d → 6d |  |
| 479 | Atendimento de comentários | 2026-07-02 → 2026-07-03 (+1d) | 2026-07-02 → 2026-07-03 (+1d) | 3d → 6d |  |
| 480 | Aprovação | 2026-07-03 → 2026-07-06 (+3d) | 2026-07-03 → 2026-07-06 (+3d) | 3d → 6d |  |
| 481 | **ET-F0009-0306-MB-J-00001** | 2026-06-25 → 2026-06-26 (+1d) | 2026-07-03 → 2026-07-06 (+3d) | 3d → 6d |  |
| 482 | Emissão inicial | 2026-06-25 → 2026-06-26 (+1d) | 2026-06-30 → 2026-07-01 (+1d) | 3d → 6d |  |
| 483 | Análise Tecnored | 2026-07-01 → 2026-07-02 (+1d) | 2026-07-01 → 2026-07-02 (+1d) | 3d → 6d |  |
| 484 | Atendimento de comentários | 2026-07-02 → 2026-07-03 (+1d) | 2026-07-02 → 2026-07-03 (+1d) | 3d → 6d |  |
| 485 | Aprovação | 2026-07-03 → 2026-07-06 (+3d) | 2026-07-03 → 2026-07-06 (+3d) | 3d → 6d |  |
| 486 | **FD-F0009-0306-MB-J-00001** | 2026-04-29 → 2026-06-17 (+49d) | 2026-05-12 → 2026-06-30 (+49d) | 33d → 4d |  |
| 487 | Emissão inicial | 2026-04-29 → 2026-06-17 (+49d) | 2026-05-07 → 2026-06-25 (+49d) | 33d → 4d | constraint none → start no earlier than 2026-06-17 |
| 488 | Análise Tecnored | 2026-05-08 → 2026-06-26 (+49d) | 2026-05-08 → 2026-06-26 (+49d) | 39d → 10d |  |
| 489 | Atendimento de comentários | 2026-05-11 → 2026-06-29 (+49d) | 2026-05-11 → 2026-06-29 (+49d) | 39d → 10d |  |
| 490 | Aprovação | 2026-05-12 → 2026-06-30 (+49d) | 2026-05-12 → 2026-06-30 (+49d) | 39d → 10d |  |
| 491 | **FD-F0009-0306-MB-J-00002** | 2026-04-29 → 2026-06-17 (+49d) | 2026-05-12 → 2026-06-30 (+49d) | 39d → 10d |  |
| 492 | Emissão inicial | 2026-04-29 → 2026-06-17 (+49d) | 2026-05-07 → 2026-06-25 (+49d) | 39d → 10d |  |
| 493 | Análise Tecnored | 2026-05-08 → 2026-06-26 (+49d) | 2026-05-08 → 2026-06-26 (+49d) | 39d → 10d |  |
| 494 | Atendimento de comentários | 2026-05-11 → 2026-06-29 (+49d) | 2026-05-11 → 2026-06-29 (+49d) | 39d → 10d |  |
| 495 | Aprovação | 2026-05-12 → 2026-06-30 (+49d) | 2026-05-12 → 2026-06-30 (+49d) | 39d → 10d |  |
| 496 | **FD-F0009-0306-MB-J-00003** | 2026-04-29 → 2026-06-17 (+49d) | 2026-05-12 → 2026-06-30 (+49d) | 39d → 10d |  |
| 497 | Emissão inicial | 2026-04-29 → 2026-06-17 (+49d) | 2026-05-07 → 2026-06-25 (+49d) | 39d → 10d |  |
| 498 | Análise Tecnored | 2026-05-08 → 2026-06-26 (+49d) | 2026-05-08 → 2026-06-26 (+49d) | 39d → 10d |  |
| 499 | Atendimento de comentários | 2026-05-11 → 2026-06-29 (+49d) | 2026-05-11 → 2026-06-29 (+49d) | 39d → 10d |  |
| 500 | Aprovação | 2026-05-12 → 2026-06-30 (+49d) | 2026-05-12 → 2026-06-30 (+49d) | 39d → 10d |  |
| 501 | **FD-F0009-0306-MB-J-00004** | 2026-04-29 → 2026-06-17 (+49d) | 2026-05-12 → 2026-06-30 (+49d) | 39d → 10d |  |
| 502 | Emissão inicial | 2026-04-29 → 2026-06-17 (+49d) | 2026-05-07 → 2026-06-25 (+49d) | 39d → 10d |  |
| 503 | Análise Tecnored | 2026-05-08 → 2026-06-26 (+49d) | 2026-05-08 → 2026-06-26 (+49d) | 39d → 10d |  |
| 504 | Atendimento de comentários | 2026-05-11 → 2026-06-29 (+49d) | 2026-05-11 → 2026-06-29 (+49d) | 39d → 10d |  |
| 505 | Aprovação | 2026-05-12 → 2026-06-30 (+49d) | 2026-05-12 → 2026-06-30 (+49d) | 39d → 10d |  |
| 506 | **FD-F0009-0306-MB-J-00005** | 2026-04-29 → 2026-06-17 (+49d) | 2026-05-12 → 2026-06-30 (+49d) | 39d → 10d |  |
| 507 | Emissão inicial | 2026-04-29 → 2026-06-17 (+49d) | 2026-05-07 → 2026-06-25 (+49d) | 39d → 10d |  |
| 508 | Análise Tecnored | 2026-05-08 → 2026-06-26 (+49d) | 2026-05-08 → 2026-06-26 (+49d) | 39d → 10d |  |
| 509 | Atendimento de comentários | 2026-05-11 → 2026-06-29 (+49d) | 2026-05-11 → 2026-06-29 (+49d) | 39d → 10d |  |
| 510 | Aprovação | 2026-05-12 → 2026-06-30 (+49d) | 2026-05-12 → 2026-06-30 (+49d) | 39d → 10d |  |
| 511 | **FD-F0009-0306-MB-J-00006** | 2026-04-29 → 2026-06-17 (+49d) | 2026-05-12 → 2026-06-30 (+49d) | 39d → 10d |  |
| 512 | Emissão inicial | 2026-04-29 → 2026-06-17 (+49d) | 2026-05-07 → 2026-06-25 (+49d) | 39d → 10d |  |
| 513 | Análise Tecnored | 2026-05-08 → 2026-06-26 (+49d) | 2026-05-08 → 2026-06-26 (+49d) | 39d → 10d |  |
| 514 | Atendimento de comentários | 2026-05-11 → 2026-06-29 (+49d) | 2026-05-11 → 2026-06-29 (+49d) | 39d → 10d |  |
| 515 | Aprovação | 2026-05-12 → 2026-06-30 (+49d) | 2026-05-12 → 2026-06-30 (+49d) | 39d → 10d |  |
| 516 | **FD-F0009-0306-MB-J-00007** | 2026-04-29 → 2026-06-17 (+49d) | 2026-05-12 → 2026-06-30 (+49d) | 39d → 10d |  |
| 517 | Emissão inicial | 2026-04-29 → 2026-06-17 (+49d) | 2026-05-07 → 2026-06-25 (+49d) | 39d → 10d |  |
| 518 | Análise Tecnored | 2026-05-08 → 2026-06-26 (+49d) | 2026-05-08 → 2026-06-26 (+49d) | 39d → 10d |  |
| 519 | Atendimento de comentários | 2026-05-11 → 2026-06-29 (+49d) | 2026-05-11 → 2026-06-29 (+49d) | 39d → 10d |  |
| 520 | Aprovação | 2026-05-12 → 2026-06-30 (+49d) | 2026-05-12 → 2026-06-30 (+49d) | 39d → 10d |  |
| 521 | **FD-F0009-0306-MB-J-00008** | 2026-04-29 → 2026-06-17 (+49d) | 2026-05-12 → 2026-06-30 (+49d) | 39d → 10d |  |
| 522 | Emissão inicial | 2026-04-29 → 2026-06-17 (+49d) | 2026-05-07 → 2026-06-25 (+49d) | 39d → 10d |  |
| 523 | Análise Tecnored | 2026-05-08 → 2026-06-26 (+49d) | 2026-05-08 → 2026-06-26 (+49d) | 39d → 10d |  |
| 524 | Atendimento de comentários | 2026-05-11 → 2026-06-29 (+49d) | 2026-05-11 → 2026-06-29 (+49d) | 39d → 10d |  |
| 525 | Aprovação | 2026-05-12 → 2026-06-30 (+49d) | 2026-05-12 → 2026-06-30 (+49d) | 39d → 10d |  |
| 526 | **FD-F0009-0306-MB-J-00009** | 2026-04-29 → 2026-06-17 (+49d) | 2026-05-12 → 2026-06-30 (+49d) | 39d → 10d |  |
| 527 | Emissão inicial | 2026-04-29 → 2026-06-17 (+49d) | 2026-05-07 → 2026-06-25 (+49d) | 39d → 10d |  |
| 528 | Análise Tecnored | 2026-05-08 → 2026-06-26 (+49d) | 2026-05-08 → 2026-06-26 (+49d) | 39d → 10d |  |
| 529 | Atendimento de comentários | 2026-05-11 → 2026-06-29 (+49d) | 2026-05-11 → 2026-06-29 (+49d) | 39d → 10d |  |
| 530 | Aprovação | 2026-05-12 → 2026-06-30 (+49d) | 2026-05-12 → 2026-06-30 (+49d) | 39d → 10d |  |
| 531 | **FD-F0009-0306-MB-J-00010** | 2026-04-29 → 2026-06-17 (+49d) | 2026-05-12 → 2026-06-30 (+49d) | 39d → 10d |  |
| 532 | Emissão inicial | 2026-04-29 → 2026-06-17 (+49d) | 2026-05-07 → 2026-06-25 (+49d) | 39d → 10d |  |
| 533 | Análise Tecnored | 2026-05-08 → 2026-06-26 (+49d) | 2026-05-08 → 2026-06-26 (+49d) | 39d → 10d |  |
| 534 | Atendimento de comentários | 2026-05-11 → 2026-06-29 (+49d) | 2026-05-11 → 2026-06-29 (+49d) | 39d → 10d |  |
| 535 | Aprovação | 2026-05-12 → 2026-06-30 (+49d) | 2026-05-12 → 2026-06-30 (+49d) | 39d → 10d |  |
| 536 | **FD-F0009-0306-MB-J-00011** | 2026-04-29 → 2026-06-17 (+49d) | 2026-05-12 → 2026-06-30 (+49d) | 39d → 10d |  |
| 537 | Emissão inicial | 2026-04-29 → 2026-06-17 (+49d) | 2026-05-07 → 2026-06-25 (+49d) | 39d → 10d |  |
| 538 | Análise Tecnored | 2026-05-08 → 2026-06-26 (+49d) | 2026-05-08 → 2026-06-26 (+49d) | 39d → 10d |  |
| 539 | Atendimento de comentários | 2026-05-11 → 2026-06-29 (+49d) | 2026-05-11 → 2026-06-29 (+49d) | 39d → 10d |  |
| 540 | Aprovação | 2026-05-12 → 2026-06-30 (+49d) | 2026-05-12 → 2026-06-30 (+49d) | 39d → 10d |  |
| 541 | **FD-F0009-0306-MB-J-00012** | 2026-04-29 → 2026-06-17 (+49d) | 2026-05-12 → 2026-06-30 (+49d) | 39d → 10d |  |
| 542 | Emissão inicial | 2026-04-29 → 2026-06-17 (+49d) | 2026-05-07 → 2026-06-25 (+49d) | 39d → 10d |  |
| 543 | Análise Tecnored | 2026-05-08 → 2026-06-26 (+49d) | 2026-05-08 → 2026-06-26 (+49d) | 39d → 10d |  |
| 544 | Atendimento de comentários | 2026-05-11 → 2026-06-29 (+49d) | 2026-05-11 → 2026-06-29 (+49d) | 39d → 10d |  |
| 545 | Aprovação | 2026-05-12 → 2026-06-30 (+49d) | 2026-05-12 → 2026-06-30 (+49d) | 39d → 10d |  |
| 546 | **FD-F0009-0306-MB-J-00013** | 2026-04-29 → 2026-06-17 (+49d) | 2026-05-12 → 2026-06-30 (+49d) | 39d → 10d |  |

| ID | Task | Start | Finish | Total float | Other |
| --- | --- | --- | --- | --- | --- |
| 547 | Emissão inicial | 2026-04-29 → 2026-06-17 (+49d) | 2026-05-07 → 2026-06-25 (+49d) | 39d → 10d |  |
| 548 | Análise Tecnored | 2026-05-08 → 2026-06-26 (+49d) | 2026-05-08 → 2026-06-26 (+49d) | 39d → 10d |  |
| 549 | Atendimento de comentários | 2026-05-11 → 2026-06-29 (+49d) | 2026-05-11 → 2026-06-29 (+49d) | 39d → 10d |  |
| 550 | Aprovação | 2026-05-12 → 2026-06-30 (+49d) | 2026-05-12 → 2026-06-30 (+49d) | 39d → 10d |  |
| 551 | **FD-F0009-0306-MB-J-00014** | 2026-04-29 → 2026-06-17 (+49d) | 2026-05-12 → 2026-06-30 (+49d) | 39d → 10d |  |
| 552 | Emissão inicial | 2026-04-29 → 2026-06-17 (+49d) | 2026-05-07 → 2026-06-25 (+49d) | 39d → 10d |  |
| 553 | Análise Tecnored | 2026-05-08 → 2026-06-26 (+49d) | 2026-05-08 → 2026-06-26 (+49d) | 39d → 10d |  |
| 554 | Atendimento de comentários | 2026-05-11 → 2026-06-29 (+49d) | 2026-05-11 → 2026-06-29 (+49d) | 39d → 10d |  |
| 555 | Aprovação | 2026-05-12 → 2026-06-30 (+49d) | 2026-05-12 → 2026-06-30 (+49d) | 39d → 10d |  |
| 556 | **FD-F0009-0306-MB-J-00015** | 2026-04-29 → 2026-06-17 (+49d) | 2026-05-19 → 2026-07-07 (+49d) | 34d → 5d |  |
| 557 | Emissão inicial | 2026-04-29 → 2026-06-17 (+49d) | 2026-05-07 → 2026-06-25 (+49d) | 34d → 5d |  |
| 558 | Análise Tecnored | 2026-05-08 → 2026-06-26 (+49d) | 2026-05-15 → 2026-07-03 (+49d) | 34d → 5d |  |
| 559 | Atendimento de comentários | 2026-05-18 → 2026-07-06 (+49d) | 2026-05-18 → 2026-07-06 (+49d) | 34d → 5d |  |
| 560 | Aprovação | 2026-05-19 → 2026-07-07 (+49d) | 2026-05-19 → 2026-07-07 (+49d) | 34d → 5d |  |
| 561 | **FD-F0009-0306-MB-J-00016** | 2026-04-29 → 2026-06-17 (+49d) | 2026-05-20 → 2026-07-08 (+49d) | 33d → 4d |  |
| 562 | Emissão inicial | 2026-04-29 → 2026-06-17 (+49d) | 2026-05-07 → 2026-06-25 (+49d) | 33d → 4d |  |
| 563 | Análise Tecnored | 2026-05-08 → 2026-06-26 (+49d) | 2026-05-15 → 2026-07-03 (+49d) | 33d → 4d |  |
| 564 | Atendimento de comentários | 2026-05-18 → 2026-07-06 (+49d) | 2026-05-18 → 2026-07-06 (+49d) | 33d → 4d |  |
| 565 | Aprovação | 2026-05-19 → 2026-07-07 (+49d) | 2026-05-20 → 2026-07-08 (+49d) | 33d → 4d |  |
| 566 | **DT-F0009-0306-MB-J-00001** | 2026-04-29 → 2026-06-17 (+49d) | 2026-05-08 → 2026-06-26 (+49d) | 41d → 12d |  |
| 567 | Emissão inicial | 2026-04-29 → 2026-06-17 (+49d) | 2026-05-04 → 2026-06-22 (+49d) | 41d → 12d | constraint none → start no earlier than 2026-06-17 |
| 568 | Análise Tecnored | 2026-05-05 → 2026-06-23 (+49d) | 2026-05-05 → 2026-06-23 (+49d) | 41d → 12d |  |
| 569 | Atendimento de comentários | 2026-05-06 → 2026-06-24 (+49d) | 2026-05-07 → 2026-06-25 (+49d) | 41d → 12d |  |
| 570 | Aprovação | 2026-05-08 → 2026-06-26 (+49d) | 2026-05-08 → 2026-06-26 (+49d) | 41d → 12d |  |
| 571 | **Civil** | 2026-06-23 → 2026-06-19 (-4d) | 2026-07-03 → 2026-07-01 (-2d) | 3d → 9d |  |
| 572 | **MC-F0009-0306-MB-C-00001** | 2026-06-23 → 2026-06-19 (-4d) | 2026-07-02 → 2026-06-30 (-2d) | 3d → 9d |  |
| 573 | Emissão inicial | 2026-06-23 → 2026-06-19 (-4d) | 2026-06-29 → 2026-06-25 (-4d) | 3d → 9d |  |
| 574 | Análise Tecnored | 2026-06-30 → 2026-06-26 (-4d) | 2026-06-30 → 2026-06-26 (-4d) | 4d → 10d |  |
| 575 | Atendimento de comentários | 2026-07-01 → 2026-06-29 (-2d) | 2026-07-01 → 2026-06-29 (-2d) | 4d → 10d |  |
| 576 | Aprovação | 2026-07-02 → 2026-06-30 (-2d) | 2026-07-02 → 2026-06-30 (-2d) | 4d → 10d |  |
| 577 | **PQ-F0009-0306-MB-C-00001** | 2026-06-30 → 2026-06-26 (-4d) | 2026-07-03 → 2026-07-01 (-2d) | 3d → 9d |  |
| 578 | Emissão inicial | 2026-06-30 → 2026-06-26 (-4d) | 2026-06-30 → 2026-06-26 (-4d) | 3d → 9d |  |
| 579 | Análise Tecnored | 2026-07-01 → 2026-06-29 (-2d) | 2026-07-01 → 2026-06-29 (-2d) | 3d → 9d |  |
| 580 | Atendimento de comentários | 2026-07-02 → 2026-06-30 (-2d) | 2026-07-02 → 2026-06-30 (-2d) | 3d → 9d |  |
| 581 | Aprovação | 2026-07-03 → 2026-07-01 (-2d) | 2026-07-03 → 2026-07-01 (-2d) | 3d → 9d |  |

## Version 5 (data date 2026-06-17, saved 2026-06-17, file CR-F0009-0306-MB-F-00001 16062026_C2.mpp)

Note of the change: Primeira versao dashboard

Last finish stays 2026-07-16. Complete tasks 31 → 33.

Changed:

| ID | Task | Start | Finish | Duration | Complete | Total float |
| --- | --- | --- | --- | --- | --- | --- |
| 1 | **F0009 - Programa Marabá** |  |  |  | 13% → 14% |  |
| 2 | **Área 0306 - Sopradores** |  |  |  | 13% → 14% |  |
| 61 | **Mecânica** |  |  |  | 24% → 29% |  |
| 112 | **MC-F0009-0306-MB-M-00001** | 2026-06-12 A |  |  | 0% → 33% | 6d → 15d |
| 113 | Emissão inicial | 2026-06-12 A | 2026-06-16 → 2026-06-15 A (-1d) | 3d → 2d | 0% → 100% | 6d → none |
| 117 | **MC-F0009-0306-MB-M-00002** | 2026-06-12 A |  |  | 0% → 33% | 6d → 15d |
| 118 | Emissão inicial | 2026-06-12 A | 2026-06-16 → 2026-06-15 A (-1d) | 3d → 2d | 0% → 100% | 6d → none |
| 127 | **FD-F0009-0306-MB-M-00001** | 2026-06-17 → 2026-06-16 (-1d) |  | 9d → 10d |  |  |
| 128 | Emissão inicial | 2026-06-17 → 2026-06-16 (-1d) | 2026-06-19 → 2026-06-18 (-1d) |  |  | 13d → 14d |

## Version 6 (data date 2026-06-18, saved 2026-06-18, file CR-F0009-0306-MB-F-00001 18062026_C2.mpp)

Note of the change: Primeira versao dashboard

Last finish stays 2026-07-16. Complete tasks 33 → 35.

Added:

| ID | Task | Duration | Start | Finish | Predecessors | Constraint |
| --- | --- | --- | --- | --- | --- | --- |
| 411 | **LL-F0009-0306-MB-J-00001** | 8d | 2026-06-09 A | 2026-06-18 |  |  |
| 417 | Emissão inicial | 4d | 2026-06-16 | 2026-06-19 | 467FS-5d |  |
| 418 | Análise Tecnored | 1d | 2026-06-22 | 2026-06-22 | 417 |  |
| 419 | Atendimento de comentários | 2d | 2026-06-23 | 2026-06-24 | 418 |  |
| 420 | Aprovação | 1d | 2026-06-25 | 2026-06-25 | 419 |  |
| 571 | **LB-F0009-0306-MB-J-00001** | 7d | 2026-06-22 | 2026-06-30 |  |  |
| 572 | Emissão inicial | 3d | 2026-06-22 | 2026-06-24 |  | start no earlier than 2026-06-22 |
| 573 | Análise Tecnored | 1d | 2026-06-25 | 2026-06-25 | 572 |  |
| 574 | Atendimento de comentários | 2d | 2026-06-26 | 2026-06-29 | 573 |  |
| 575 | Aprovação | 1d | 2026-06-30 | 2026-06-30 | 574 |  |

Changed:

| ID | Task | Start | Finish | Duration | Complete | Total float | Predecessors | Other |
| --- | --- | --- | --- | --- | --- | --- | --- | --- |
| 14 | **LD-F0009-0306-MB-F-00001** |  | 2026-06-01 → 2026-06-02 (+1d) | 26d → 27d |  | none → 28d |  |  |
| 19 | **CR-F0009-0306-MB-F-00001** |  | 2026-05-29 → 2026-06-01 (+3d) | 22d → 23d |  | none → 29d |  |  |
| 56 | **FG-F0009-0306-MB-P-00001** |  |  | 5d → 4d |  | none → 23d |  |  |
| 61 | **Mecânica** |  |  |  | 29% → 32% |  |  |  |
| 77 | **PQ-F0009-0306-MB-M-00001** | 2026-06-19 A → 2026-06-10 A (-9d) |  | 7d → 14d | 43% → 50% |  |  |  |
| 78 | Emissão inicial | 2026-06-19 A → 2026-06-10 A (-9d) | 2026-06-23 A → 2026-06-12 A (-11d) |  |  |  |  | constraint start no earlier than 2026-06-19 → finish no earlier than 2026-06-12 |
| 79 | Análise Tecnored | 2026-06-24 A |  |  | 0% → 50% |  |  |  |
| 102 | **PL-F0009-0306-MB-M-00001** |  |  |  | 60% → 65% |  |  |  |
| 104 | Análise Tecnored | 2026-06-15 A |  |  | 0% → 50% |  |  |  |
| 112 | **MC-F0009-0306-MB-M-00001** |  |  |  | 33% → 50% |  |  |  |
| 114 | Análise Tecnored | 2026-06-17 A | 2026-06-17 A |  | 0% → 100% | 6d → none |  |  |
| 117 | **MC-F0009-0306-MB-M-00002** |  |  |  | 33% → 42% |  |  |  |
| 119 | Análise Tecnored | 2026-06-17 A |  |  | 0% → 50% |  |  |  |
| 284 | **Elétrica** |  |  |  | 6% → 7% |  |  |  |
| 295 | **RL-F0009-0306-MB-E-00001** |  | 2026-06-10 → 2026-06-11 (+1d) | 5d → 5.75d | 50% → 75% | 24d → 23.25d |  |  |
| 297 | Análise Tecnored | 2026-06-09 A | 2026-06-09 → 2026-06-10 A (+1d) | 1d → 2d | 0% → 100% | 24d → none |  |  |
| 298 | Atendimento de comentários | 2026-06-10 A | 2026-06-10 → 2026-06-11 (+1d) |  | 0% → 25% | 24d → 23.25d |  |  |
| 299 | Aprovação |  | 2026-06-10 → 2026-06-11 (+1d) |  |  | 24d → 23.25d |  |  |
| 305 | **LR-F0009-0306-MB-E-00001** |  |  |  | 67% → 71% |  |  |  |
| 308 | Atendimento de comentários | 2026-06-03 A |  |  | 0% → 25% |  |  |  |
| 395 | **Automação e instrumentação** |  |  |  | 10% → 9% |  |  |  |
| 412 | Emissão inicial | 2026-06-26 A → 2026-06-09 A (-17d) | 2026-07-01 A → 2026-06-12 A (-19d) |  |  |  |  |  |
| 413 | Análise Tecnored | 2026-07-02 → 2026-06-15 (-17d) | 2026-07-02 → 2026-06-15 (-17d) |  |  | 5d → 18d |  |  |
| 414 | Atendimento de comentários | 2026-07-03 → 2026-06-16 (-17d) | 2026-07-06 → 2026-06-17 (-19d) |  |  | 5d → 18d |  |  |
| 415 | Aprovação | 2026-07-07 → 2026-06-18 (-19d) | 2026-07-07 → 2026-06-18 (-19d) |  |  | 5d → 18d |  |  |
| 416 | **LZ-F0009-0306-MB-J-00001** | 2026-06-26 A → 2026-06-16 (-10d) | 2026-07-07 → 2026-06-25 (-12d) |  | 50% → 0% | 5d → 13d |  |  |
| 421 | **LE-F0009-0306-MB-J-00002** | 2026-06-26 → 2026-06-09 (-17d) | 2026-07-06 → 2026-06-17 (-19d) |  |  | 6d → 19d |  |  |
| 422 | Emissão inicial | 2026-06-26 → 2026-06-09 (-17d) | 2026-07-01 → 2026-06-12 (-19d) |  |  | 6d → 19d |  |  |
| 423 | Análise Tecnored | 2026-07-02 → 2026-06-15 (-17d) | 2026-07-02 → 2026-06-15 (-17d) |  |  | 6d → 19d |  |  |
| 424 | Atendimento de comentários | 2026-07-03 → 2026-06-16 (-17d) | 2026-07-03 → 2026-06-16 (-17d) |  |  | 6d → 19d |  |  |
| 425 | Aprovação | 2026-07-06 → 2026-06-17 (-19d) | 2026-07-06 → 2026-06-17 (-19d) |  |  | 6d → 19d |  |  |
| 482 | Emissão inicial |  |  |  |  |  | 412SS → 412SS, 417SS |  |
| 486 | **ET-F0009-0306-MB-J-00001** | 2026-06-26 → 2026-06-16 (-10d) | 2026-07-06 → 2026-06-24 (-12d) |  |  | 6d → 14d |  |  |
| 487 | Emissão inicial | 2026-06-26 → 2026-06-16 (-10d) | 2026-07-01 → 2026-06-19 (-12d) |  |  | 6d → 14d | 412SS → 412SS, 417SS |  |
| 488 | Análise Tecnored | 2026-07-02 → 2026-06-22 (-10d) | 2026-07-02 → 2026-06-22 (-10d) |  |  | 6d → 14d |  |  |
| 489 | Atendimento de comentários | 2026-07-03 → 2026-06-23 (-10d) | 2026-07-03 → 2026-06-23 (-10d) |  |  | 6d → 14d |  |  |
| 490 | Aprovação | 2026-07-06 → 2026-06-24 (-12d) | 2026-07-06 → 2026-06-24 (-12d) |  |  | 6d → 14d |  |  |

## Version 7 (data date 2026-06-19, saved 2026-06-22, file CR-F0009-0306-MB-F-00001 19062026_C2.mpp)

Note of the change: Primeira versao dashboard

Last finish 2026-07-16 → 2026-07-15 (-1d). Complete tasks 35 → 87.

Added:

| ID | Task | Duration | Start | Finish | Predecessors | Constraint |
| --- | --- | --- | --- | --- | --- | --- |
| 576 | **RE-F0009-0306-MB-J-00001** | 8d | 2026-06-16 A | 2026-06-25 |  |  |
| 577 | Emissão inicial | 4d | 2026-06-16 A | 2026-06-19 A |  | finish no earlier than 2026-06-19 |
| 578 | Análise Tecnored | 1d | 2026-06-22 | 2026-06-22 | 577 |  |
| 579 | Atendimento de comentários | 2d | 2026-06-23 | 2026-06-24 | 578 |  |
| 580 | Aprovação | 1d | 2026-06-25 | 2026-06-25 | 579 |  |

Changed:

| ID | Task | Start | Finish | Duration | Complete | Total float | Predecessors | Other |
| --- | --- | --- | --- | --- | --- | --- | --- | --- |
| 1 | **F0009 - Programa Marabá** |  | 2026-07-14 → 2026-07-09 (-5d) | 55d → 52d | 14% → 35% |  |  |  |
| 2 | **Área 0306 - Sopradores** |  | 2026-07-14 → 2026-07-09 (-5d) | 55d → 52d | 14% → 35% |  |  |  |
| 4 | **Marcos** |  | 2026-06-15 → 2026-06-23 (+8d) | 18d → 24d | 89% → 78% |  |  |  |
| 5 | Critério de Projeto de Processo | 2026-06-05 A → 2026-06-23 A (+18d) | 2026-06-05 → 2026-06-23 (+18d) |  |  |  |  |  |
| 7 | Critério de Projeto de Elétrica | 2026-06-05 A → 2026-06-15 A (+10d) |  | 7d → 1d |  |  |  |  |
| 10 | Critério de Projeto de Estrutura metálica | 2026-06-05 → 2026-06-23 (+18d) | 2026-06-05 → 2026-06-23 (+18d) |  |  |  |  |  |
| 13 | **Planejamento** |  | 2026-06-02 A |  | 77% → 100% | 28d → none |  |  |
| 14 | **LD-F0009-0306-MB-F-00001** |  | 2026-06-02 A |  | 77% → 100% | 28d → none |  |  |
| 18 | Aprovação | 2026-06-01 A | 2026-06-02 A |  | 0% → 100% | 28d → none |  |  |
| 19 | **CR-F0009-0306-MB-F-00001** |  | 2026-06-01 A |  | 77% → 100% | 29d → none |  |  |
| 23 | Aprovação | 2026-05-29 A | 2026-06-01 A |  | 0% → 100% | 29d → none |  |  |
| 24 | **Coordenação** |  | 2026-07-07 → 2026-06-30 (-7d) | 50d → 45d | 20% → 35% | 5d → 7d |  |  |
| 25 | **RM-F0009-0306-MB-G-00001** | 2026-06-11 A → 2026-06-18 A (+7d) | 2026-06-18 → 2026-06-25 (+7d) |  | 25% → 33% | 18d → 10d |  |  |
| 26 | Emissão inicial | 2026-06-11 A → 2026-06-18 A (+7d) | 2026-06-15 → 2026-06-22 (+7d) |  | 50% → 67% | 5d → 8d |  |  |
| 27 | Análise Tecnored | 2026-06-16 → 2026-06-23 (+7d) | 2026-06-16 → 2026-06-23 (+7d) |  |  | 18d → 8d |  |  |
| 28 | Atendimento de comentários | 2026-06-17 → 2026-06-24 (+7d) | 2026-06-17 → 2026-06-24 (+7d) |  |  | 18d → 10d |  |  |
| 29 | Aprovação | 2026-06-18 → 2026-06-25 (+7d) | 2026-06-18 → 2026-06-25 (+7d) |  |  | 18d → 10d |  |  |
| 30 | **RM-F0009-0306-MB-G-00002** | 2026-06-23 → 2026-06-30 (+7d) | 2026-06-29 → 2026-07-06 (+7d) |  |  | 5d → 3d |  |  |
| 31 | Emissão inicial | 2026-06-23 → 2026-06-30 (+7d) | 2026-06-24 → 2026-07-01 (+7d) |  |  | 5d → 3d |  |  |
| 32 | Análise Tecnored | 2026-06-25 → 2026-07-02 (+7d) | 2026-06-25 → 2026-07-02 (+7d) |  |  | 11d → 3d |  |  |
| 33 | Atendimento de comentários | 2026-06-26 → 2026-07-03 (+7d) | 2026-06-26 → 2026-07-03 (+7d) |  |  | 11d → 3d |  |  |
| 34 | Aprovação | 2026-06-29 → 2026-07-06 (+7d) | 2026-06-29 → 2026-07-06 (+7d) |  |  | 11d → 3d |  |  |
| 35 | **RL-F0009-0306-MB-G-00001** | 2026-07-02 → 2026-06-25 (-7d) | 2026-07-07 → 2026-06-30 (-7d) |  |  | 5d → 7d |  |  |
| 36 | Emissão inicial | 2026-07-02 → 2026-06-25 (-7d) | 2026-07-02 → 2026-06-25 (-7d) |  |  | 5d → 7d | 31FS+5d → 27 | constraint none → start no earlier than 2026-06-25 |
| 37 | Análise Tecnored | 2026-07-03 → 2026-06-26 (-7d) | 2026-07-03 → 2026-06-26 (-7d) |  |  | 5d → 7d |  |  |
| 38 | Atendimento de comentários | 2026-07-06 → 2026-06-29 (-7d) | 2026-07-06 → 2026-06-29 (-7d) |  |  | 5d → 7d |  |  |
| 39 | Aprovação | 2026-07-07 → 2026-06-30 (-7d) | 2026-07-07 → 2026-06-30 (-7d) |  |  | 5d → 7d |  |  |
| 40 | **LP-F0009-0306-MB-G-00001** |  | 2026-06-18 → 2026-06-30 (+12d) | 37d → 45d | 43% → 57% | 18d → 7d |  |  |
| 42 | Análise Tecnored | 2026-06-08 → 2026-06-18 A (+10d) | 2026-06-08 → 2026-06-18 A (+10d) |  | 0% → 100% | 18d → none |  | constraint none → start no earlier than 2026-06-18 |
| 43 | Atendimento de comentários | 2026-06-16 → 2026-06-26 (+10d) | 2026-06-17 → 2026-06-29 (+12d) |  |  | 18d → 7d |  |  |
| 44 | Aprovação | 2026-06-18 → 2026-06-30 (+12d) | 2026-06-18 → 2026-06-30 (+12d) |  |  | 18d → 7d |  |  |
| 45 | **Processo** |  | 2026-06-11 A |  | 80% → 100% | 23d → none |  |  |
| 46 | **CP-F0009-0306-MB-P-00001** |  | 2026-06-11 → 2026-06-29 (+18d) | 26d → 38d |  | 23d → 8d |  |  |
| 48 | Análise Tecnored | 2026-06-08 → 2026-06-24 (+16d) | 2026-06-08 → 2026-06-24 (+16d) |  |  | 23d → 8d |  |  |
| 49 | Atendimento de comentários | 2026-06-09 → 2026-06-25 (+16d) | 2026-06-10 → 2026-06-26 (+16d) |  |  | 23d → 8d |  |  |
| 50 | Aprovação | 2026-06-11 → 2026-06-29 (+18d) | 2026-06-11 → 2026-06-29 (+18d) |  |  | 23d → 8d |  |  |
| 56 | **FG-F0009-0306-MB-P-00001** |  | 2026-06-11 A |  | 80% → 100% | 23d → none |  |  |
| 60 | Aprovação | 2026-06-11 A | 2026-06-11 A |  | 0% → 100% | 23d → none |  |  |
| 61 | **Mecânica** |  | 2026-07-08 → 2026-06-30 (-8d) | 30d → 24d | 32% → 52% | 4d → 7d |  |  |
| 72 | **LE-F0009-0306-MB-M-00001** |  | 2026-06-18 A |  | 83% → 100% | 18d → none |  |  |
| 76 | Aprovação | 2026-06-18 A | 2026-06-18 A |  | 0% → 100% | 18d → none |  |  |
| 82 | **AG-F0009-0306-MB-L-00001** | 2026-06-29 → 2026-06-22 (-7d) | 2026-07-08 → 2026-06-30 (-8d) | 8d → 7d |  | 4d → 7d |  |  |
| 83 | Emissão inicial | 2026-06-29 → 2026-06-22 (-7d) | 2026-07-03 → 2026-06-25 (-8d) | 5d → 4d |  | 4d → 7d |  | constraint start no earlier than 2026-06-29 → finish no earlier than 2026-06-25 |
| 84 | Análise Tecnored | 2026-07-06 → 2026-06-26 (-10d) | 2026-07-06 → 2026-06-26 (-10d) |  |  | 4d → 7d |  | constraint start no earlier than 2026-07-06 → finish no earlier than 2026-06-26 |
| 85 | Atendimento de comentários | 2026-07-07 → 2026-06-29 (-8d) | 2026-07-07 → 2026-06-29 (-8d) |  |  | 4d → 7d |  | constraint finish no earlier than 2026-07-07 → finish no earlier than 2026-06-29 |
| 86 | Aprovação | 2026-07-08 → 2026-06-30 (-8d) | 2026-07-08 → 2026-06-30 (-8d) |  |  | 4d → 7d |  | constraint start no earlier than 2026-07-08 → finish no earlier than 2026-06-30 |
| 87 | **AG-F0009-0306-MB-L-00002** | 2026-06-29 → 2026-06-22 (-7d) | 2026-07-08 → 2026-06-30 (-8d) | 8d → 7d |  | 4d → 7d |  |  |
| 88 | Emissão inicial | 2026-06-29 → 2026-06-22 (-7d) | 2026-07-03 → 2026-06-25 (-8d) | 5d → 4d |  | 4d → 7d |  | constraint start no earlier than 2026-06-29 → finish no earlier than 2026-06-25 |
| 89 | Análise Tecnored | 2026-07-06 → 2026-06-26 (-10d) | 2026-07-06 → 2026-06-26 (-10d) |  |  | 4d → 7d |  | constraint start no earlier than 2026-07-06 → finish no earlier than 2026-06-26 |
| 90 | Atendimento de comentários | 2026-07-07 → 2026-06-29 (-8d) | 2026-07-07 → 2026-06-29 (-8d) |  |  | 4d → 7d |  | constraint finish no earlier than 2026-07-07 → finish no earlier than 2026-06-29 |
| 91 | Aprovação | 2026-07-08 → 2026-06-30 (-8d) | 2026-07-08 → 2026-06-30 (-8d) |  |  | 4d → 7d |  | constraint start no earlier than 2026-07-08 → finish no earlier than 2026-06-30 |
| 92 | **AG-F0009-0306-MB-L-00003** | 2026-06-29 → 2026-06-22 (-7d) | 2026-07-08 → 2026-06-30 (-8d) | 8d → 7d |  | 4d → 7d |  |  |
| 93 | Emissão inicial | 2026-06-29 → 2026-06-22 (-7d) | 2026-07-03 → 2026-06-25 (-8d) | 5d → 4d |  | 4d → 7d |  | constraint start no earlier than 2026-06-29 → finish no earlier than 2026-06-25 |
| 94 | Análise Tecnored | 2026-07-06 → 2026-06-26 (-10d) | 2026-07-06 → 2026-06-26 (-10d) |  |  | 4d → 7d |  | constraint start no earlier than 2026-07-06 → finish no earlier than 2026-06-26 |
| 95 | Atendimento de comentários | 2026-07-07 → 2026-06-29 (-8d) | 2026-07-07 → 2026-06-29 (-8d) |  |  | 4d → 7d |  | constraint finish no earlier than 2026-07-07 → finish no earlier than 2026-06-29 |
| 96 | Aprovação | 2026-07-08 → 2026-06-30 (-8d) | 2026-07-08 → 2026-06-30 (-8d) |  |  | 4d → 7d |  | constraint start no earlier than 2026-07-08 → finish no earlier than 2026-06-30 |
| 97 | **AG-F0009-0306-MB-L-00004** | 2026-06-29 → 2026-06-22 (-7d) | 2026-07-08 → 2026-06-30 (-8d) | 8d → 7d |  | 4d → 7d |  |  |
| 98 | Emissão inicial | 2026-06-29 → 2026-06-22 (-7d) | 2026-07-03 → 2026-06-25 (-8d) | 5d → 4d |  | 4d → 7d |  | constraint start no earlier than 2026-06-29 → finish no earlier than 2026-06-25 |
| 99 | Análise Tecnored | 2026-07-06 → 2026-06-26 (-10d) | 2026-07-06 → 2026-06-26 (-10d) |  |  | 4d → 7d |  | constraint start no earlier than 2026-07-06 → finish no earlier than 2026-06-26 |
| 100 | Atendimento de comentários | 2026-07-07 → 2026-06-29 (-8d) | 2026-07-07 → 2026-06-29 (-8d) |  |  | 4d → 7d |  | constraint finish no earlier than 2026-07-07 → finish no earlier than 2026-06-29 |
| 101 | Aprovação | 2026-07-08 → 2026-06-30 (-8d) | 2026-07-08 → 2026-06-30 (-8d) |  |  | 4d → 7d |  | constraint start no earlier than 2026-07-08 → finish no earlier than 2026-06-30 |
| 102 | **PL-F0009-0306-MB-M-00001** |  | 2026-06-18 A |  | 65% → 100% | 18d → none |  |  |
| 104 | Análise Tecnored |  | 2026-06-15 A |  | 50% → 100% | 18d → none |  |  |
| 105 | Atendimento de comentários | 2026-06-16 A | 2026-06-17 A |  | 0% → 100% | 18d → none |  |  |
| 106 | Aprovação | 2026-06-18 A | 2026-06-18 A |  | 0% → 100% | 18d → none |  |  |
| 112 | **MC-F0009-0306-MB-M-00001** |  |  |  | 50% → 83% | 15d → 12d |  |  |
| 114 | Análise Tecnored | 2026-06-17 A → 2026-06-16 A (-1d) |  |  |  |  |  |  |
| 115 | Atendimento de comentários | 2026-06-18 A | 2026-06-19 A |  | 0% → 100% | 16d → none |  |  |
| 117 | **MC-F0009-0306-MB-M-00002** |  |  |  | 42% → 83% | 15d → 12d |  |  |
| 119 | Análise Tecnored |  | 2026-06-17 A |  | 50% → 100% | 6d → none |  |  |

| ID | Task | Start | Finish | Duration | Complete | Total float | Other |
| --- | --- | --- | --- | --- | --- | --- | --- |
| 120 | Atendimento de comentários | 2026-06-18 A | 2026-06-19 A |  | 0% → 100% | 16d → none |  |
| 122 | **ML-F0009-0306-MB-M-00001** |  | 2026-06-09 A |  | 89% → 100% | 25d → none |  |
| 125 | Atendimento de comentários |  | 2026-06-08 A |  | 75% → 100% | 0.5d → none |  |
| 126 | Aprovação |  | 2026-06-09 A |  | 50% → 100% | 25d → none |  |
| 127 | **FD-F0009-0306-MB-M-00001** | 2026-06-16 → 2026-06-17 A (+1d) | 2026-06-29 → 2026-06-25 (-4d) | 10d → 7d | 0% → 43% | 11d → 10d |  |
| 128 | Emissão inicial | 2026-06-16 → 2026-06-17 A (+1d) | 2026-06-18 → 2026-06-19 A (+1d) |  | 0% → 100% | 14d → none | constraint start no earlier than 2026-06-16 → finish no earlier than 2026-06-19 |
| 129 | Análise Tecnored | 2026-06-24 → 2026-06-22 (-2d) | 2026-06-24 → 2026-06-22 (-2d) |  |  | 11d → 10d | constraint start no earlier than 2026-06-24 → finish no earlier than 2026-06-22 |
| 130 | Atendimento de comentários | 2026-06-25 → 2026-06-23 (-2d) | 2026-06-26 → 2026-06-24 (-2d) |  |  | 11d → 10d | constraint start no earlier than 2026-06-25 → finish no earlier than 2026-06-24 |
| 131 | Aprovação | 2026-06-29 → 2026-06-25 (-4d) | 2026-06-29 → 2026-06-25 (-4d) |  |  | 11d → 10d | constraint start no earlier than 2026-06-29 → finish no earlier than 2026-06-25 |
| 132 | **FD-F0009-0306-MB-M-00002** | 2026-06-19 → 2026-06-17 A (-2d) | 2026-06-29 → 2026-06-25 (-4d) |  | 0% → 43% | 11d → 10d |  |
| 133 | Emissão inicial | 2026-06-19 → 2026-06-17 A (-2d) | 2026-06-23 → 2026-06-19 A (-4d) |  | 0% → 100% | 11d → none | constraint start no earlier than 2026-06-19 → finish no earlier than 2026-06-19 |
| 134 | Análise Tecnored | 2026-06-24 → 2026-06-22 (-2d) | 2026-06-24 → 2026-06-22 (-2d) |  |  | 11d → 10d | constraint start no earlier than 2026-06-24 → finish no earlier than 2026-06-22 |
| 135 | Atendimento de comentários | 2026-06-25 → 2026-06-23 (-2d) | 2026-06-26 → 2026-06-24 (-2d) |  |  | 11d → 10d | constraint start no earlier than 2026-06-25 → finish no earlier than 2026-06-24 |
| 136 | Aprovação | 2026-06-29 → 2026-06-25 (-4d) | 2026-06-29 → 2026-06-25 (-4d) |  |  | 11d → 10d | constraint start no earlier than 2026-06-29 → finish no earlier than 2026-06-25 |
| 137 | **Tubulação/Utilidades** |  | 2026-07-07 → 2026-07-06 (-1d) | 22d → 21d | 2% → 18% | 5d → 3d |  |
| 143 | **MD-F0009-0306-MB-U-00001** | 2026-07-08 → 2026-07-07 (-1d) | 2026-07-16 → 2026-07-15 (-1d) |  |  | -2d → -4d |  |
| 144 | Emissão inicial | 2026-07-08 → 2026-07-07 (-1d) | 2026-07-10 → 2026-07-09 (-1d) |  |  | -2d → -4d |  |
| 145 | Análise Tecnored | 2026-07-13 → 2026-07-10 (-3d) | 2026-07-13 → 2026-07-10 (-3d) |  |  | -2d → -4d |  |
| 146 | Atendimento de comentários | 2026-07-14 → 2026-07-13 (-1d) | 2026-07-15 → 2026-07-14 (-1d) |  |  | -2d → -4d |  |
| 147 | Aprovação | 2026-07-16 → 2026-07-15 (-1d) | 2026-07-16 → 2026-07-15 (-1d) |  |  | -2d → -4d |  |
| 148 | **ML-F0009-0306-MB-T-00001** | 2026-06-15 A | 2026-06-26 → 2026-06-25 (-1d) | 10d → 9d | 0% → 56% | 5d → 3d |  |
| 149 | Emissão inicial | 2026-06-15 A | 2026-06-22 → 2026-06-19 A (-3d) | 6d → 5d | 0% → 100% | 5d → none | constraint finish no earlier than 2026-06-22 → finish no earlier than 2026-06-19 |
| 150 | Análise Tecnored | 2026-06-23 → 2026-06-22 (-1d) | 2026-06-23 → 2026-06-22 (-1d) |  |  | 5d → 3d |  |
| 151 | Atendimento de comentários | 2026-06-24 → 2026-06-23 (-1d) | 2026-06-25 → 2026-06-24 (-1d) |  |  | 5d → 3d |  |
| 152 | Aprovação | 2026-06-26 → 2026-06-25 (-1d) | 2026-06-26 → 2026-06-25 (-1d) |  |  | 5d → 3d |  |
| 178 | **FG-F0009-0306-MB-T-00001** |  | 2026-06-12 A |  | 20% → 100% | 22d → none |  |
| 180 | Análise Tecnored | 2026-06-09 A | 2026-06-09 A |  | 0% → 100% | 18d → none |  |
| 181 | Atendimento de comentários | 2026-06-10 A | 2026-06-11 A |  | 0% → 100% | 22d → none |  |
| 182 | Aprovação | 2026-06-12 A | 2026-06-12 A |  | 0% → 100% | 22d → none |  |
| 188 | **AG-F0009-0306-MB-T-00001** | 2026-06-29 → 2026-06-26 (-3d) | 2026-07-07 → 2026-07-06 (-1d) |  |  | 5d → 3d |  |
| 189 | Emissão inicial | 2026-06-29 → 2026-06-26 (-3d) | 2026-07-01 → 2026-06-30 (-1d) |  |  | 5d → 3d |  |
| 190 | Análise Tecnored | 2026-07-02 → 2026-07-01 (-1d) | 2026-07-02 → 2026-07-01 (-1d) |  |  | 5d → 3d |  |
| 191 | Atendimento de comentários | 2026-07-03 → 2026-07-02 (-1d) | 2026-07-06 → 2026-07-03 (-3d) |  |  | 5d → 3d |  |
| 192 | Aprovação | 2026-07-07 → 2026-07-06 (-1d) | 2026-07-07 → 2026-07-06 (-1d) |  |  | 5d → 3d |  |
| 193 | **AG-F0009-0306-MB-T-00002** | 2026-06-29 → 2026-06-26 (-3d) | 2026-07-07 → 2026-07-06 (-1d) |  |  | 5d → 3d |  |
| 194 | Emissão inicial | 2026-06-29 → 2026-06-26 (-3d) | 2026-07-01 → 2026-06-30 (-1d) |  |  | 5d → 3d |  |
| 195 | Análise Tecnored | 2026-07-02 → 2026-07-01 (-1d) | 2026-07-02 → 2026-07-01 (-1d) |  |  | 5d → 3d |  |
| 196 | Atendimento de comentários | 2026-07-03 → 2026-07-02 (-1d) | 2026-07-06 → 2026-07-03 (-3d) |  |  | 5d → 3d |  |
| 197 | Aprovação | 2026-07-07 → 2026-07-06 (-1d) | 2026-07-07 → 2026-07-06 (-1d) |  |  | 5d → 3d |  |
| 198 | **AG-F0009-0306-MB-T-00003** | 2026-06-29 → 2026-06-26 (-3d) | 2026-07-07 → 2026-07-06 (-1d) |  |  | 5d → 3d |  |
| 199 | Emissão inicial | 2026-06-29 → 2026-06-26 (-3d) | 2026-07-01 → 2026-06-30 (-1d) |  |  | 5d → 3d |  |
| 200 | Análise Tecnored | 2026-07-02 → 2026-07-01 (-1d) | 2026-07-02 → 2026-07-01 (-1d) |  |  | 5d → 3d |  |
| 201 | Atendimento de comentários | 2026-07-03 → 2026-07-02 (-1d) | 2026-07-06 → 2026-07-03 (-3d) |  |  | 5d → 3d |  |
| 202 | Aprovação | 2026-07-07 → 2026-07-06 (-1d) | 2026-07-07 → 2026-07-06 (-1d) |  |  | 5d → 3d |  |
| 228 | **Estrutura metálica** | 2026-06-18 → 2026-06-17 A (-1d) | 2026-07-06 → 2026-07-02 (-4d) | 13d → 12d | 0% → 8% | 6d → 5d |  |
| 229 | **CP-F0009-0306-MB-S-00001** | 2026-06-08 → 2026-06-24 (+16d) | 2026-06-23 → 2026-07-09 (+16d) |  |  | 15d → 0d |  |
| 230 | Emissão inicial | 2026-06-08 → 2026-06-24 (+16d) | 2026-06-17 → 2026-07-03 (+16d) |  |  | 15d → 0d |  |
| 231 | Análise Tecnored | 2026-06-18 → 2026-07-06 (+18d) | 2026-06-18 → 2026-07-06 (+18d) |  |  | 15d → 0d |  |
| 232 | Atendimento de comentários | 2026-06-19 → 2026-07-07 (+18d) | 2026-06-22 → 2026-07-08 (+16d) |  |  | 15d → 0d |  |
| 233 | Aprovação | 2026-06-23 → 2026-07-09 (+16d) | 2026-06-23 → 2026-07-09 (+16d) |  |  | 15d → 0d |  |
| 234 | **ML-F0009-0306-MB-S-00001** | 2026-06-18 → 2026-06-17 A (-1d) | 2026-06-26 → 2026-06-24 (-2d) | 7d → 6d | 0% → 50% | 6d → 11d |  |
| 235 | Emissão inicial | 2026-06-18 → 2026-06-17 A (-1d) | 2026-06-23 → 2026-06-19 A (-4d) | 4d → 3d | 0% → 100% | 6d → none | constraint none → start no earlier than 2026-06-12 |
| 236 | Análise Tecnored | 2026-06-24 → 2026-06-22 (-2d) | 2026-06-24 → 2026-06-22 (-2d) |  |  | 12d → 11d |  |
| 237 | Atendimento de comentários | 2026-06-25 → 2026-06-23 (-2d) | 2026-06-25 → 2026-06-23 (-2d) |  |  | 12d → 11d |  |
| 238 | Aprovação | 2026-06-26 → 2026-06-24 (-2d) | 2026-06-26 → 2026-06-24 (-2d) |  |  | 12d → 11d |  |
| 239 | **PQ-F0009-0306-MB-S-00001** | 2026-06-29 → 2026-06-25 (-4d) | 2026-07-06 → 2026-07-02 (-4d) |  |  | 6d → 5d |  |
| 240 | Emissão inicial | 2026-06-29 → 2026-06-25 (-4d) | 2026-07-01 → 2026-06-29 (-2d) |  |  | 6d → 5d |  |
| 241 | Análise Tecnored | 2026-07-02 → 2026-06-30 (-2d) | 2026-07-02 → 2026-06-30 (-2d) |  |  | 6d → 5d |  |
| 242 | Atendimento de comentários | 2026-07-03 → 2026-07-01 (-2d) | 2026-07-03 → 2026-07-01 (-2d) |  |  | 6d → 5d |  |
| 243 | Aprovação | 2026-07-06 → 2026-07-02 (-4d) | 2026-07-06 → 2026-07-02 (-4d) |  |  | 6d → 5d |  |
| 244 | **LM-F0009-0306-MB-S-00001** | 2026-06-24 → 2026-06-22 (-2d) | 2026-07-01 → 2026-06-29 (-2d) |  |  | 6d → 5d |  |
| 245 | Emissão inicial | 2026-06-24 → 2026-06-22 (-2d) | 2026-06-26 → 2026-06-24 (-2d) |  |  | 6d → 5d |  |
| 246 | Análise Tecnored | 2026-06-29 → 2026-06-25 (-4d) | 2026-06-29 → 2026-06-25 (-4d) |  |  | 9d → 8d |  |
| 247 | Atendimento de comentários | 2026-06-30 → 2026-06-26 (-4d) | 2026-06-30 → 2026-06-26 (-4d) |  |  | 9d → 8d |  |
| 248 | Aprovação | 2026-07-01 → 2026-06-29 (-2d) | 2026-07-01 → 2026-06-29 (-2d) |  |  | 9d → 8d |  |
| 249 | **MC-F0009-0306-MB-S-00001** | 2026-06-18 A | 2026-06-25 → 2026-06-24 (-1d) | 6d → 5d | 0% → 40% | 6d → 11d |  |
| 250 | Emissão inicial | 2026-06-18 A | 2026-06-22 → 2026-06-19 A (-3d) | 3d → 2d | 0% → 100% | 6d → none | constraint none → start no earlier than 2026-06-16 |
| 251 | Análise Tecnored | 2026-06-23 → 2026-06-22 (-1d) | 2026-06-23 → 2026-06-22 (-1d) |  |  | 13d → 11d |  |
| 252 | Atendimento de comentários | 2026-06-24 → 2026-06-23 (-1d) | 2026-06-24 → 2026-06-23 (-1d) |  |  | 13d → 11d |  |
| 253 | Aprovação | 2026-06-25 → 2026-06-24 (-1d) | 2026-06-25 → 2026-06-24 (-1d) |  |  | 13d → 11d |  |

| ID | Task | Start | Finish | Duration | Complete | Total float | Predecessors | Other |
| --- | --- | --- | --- | --- | --- | --- | --- | --- |
| 254 | **AG-F0009-0306-MB-S-00001** | 2026-06-24 → 2026-06-22 (-2d) | 2026-07-02 → 2026-06-30 (-2d) |  |  | 8d → 7d |  |  |
| 255 | Emissão inicial | 2026-06-24 → 2026-06-22 (-2d) | 2026-06-29 → 2026-06-25 (-4d) |  |  | 8d → 7d |  |  |
| 256 | Análise Tecnored | 2026-06-30 → 2026-06-26 (-4d) | 2026-06-30 → 2026-06-26 (-4d) |  |  | 8d → 7d |  |  |
| 257 | Atendimento de comentários | 2026-07-01 → 2026-06-29 (-2d) | 2026-07-01 → 2026-06-29 (-2d) |  |  | 8d → 7d |  |  |
| 258 | Aprovação | 2026-07-02 → 2026-06-30 (-2d) | 2026-07-02 → 2026-06-30 (-2d) |  |  | 8d → 7d |  |  |
| 259 | **AG-F0009-0306-MB-S-00002** | 2026-06-24 → 2026-06-22 (-2d) | 2026-07-02 → 2026-06-30 (-2d) |  |  | 8d → 7d |  |  |
| 260 | Emissão inicial | 2026-06-24 → 2026-06-22 (-2d) | 2026-06-29 → 2026-06-25 (-4d) |  |  | 8d → 7d |  |  |
| 261 | Análise Tecnored | 2026-06-30 → 2026-06-26 (-4d) | 2026-06-30 → 2026-06-26 (-4d) |  |  | 8d → 7d |  |  |
| 262 | Atendimento de comentários | 2026-07-01 → 2026-06-29 (-2d) | 2026-07-01 → 2026-06-29 (-2d) |  |  | 8d → 7d |  |  |
| 263 | Aprovação | 2026-07-02 → 2026-06-30 (-2d) | 2026-07-02 → 2026-06-30 (-2d) |  |  | 8d → 7d |  |  |
| 264 | **AG-F0009-0306-MB-S-00003** | 2026-06-24 → 2026-06-22 (-2d) | 2026-07-02 → 2026-06-30 (-2d) |  |  | 8d → 7d |  |  |
| 265 | Emissão inicial | 2026-06-24 → 2026-06-22 (-2d) | 2026-06-29 → 2026-06-25 (-4d) |  |  | 8d → 7d |  |  |
| 266 | Análise Tecnored | 2026-06-30 → 2026-06-26 (-4d) | 2026-06-30 → 2026-06-26 (-4d) |  |  | 8d → 7d |  |  |
| 267 | Atendimento de comentários | 2026-07-01 → 2026-06-29 (-2d) | 2026-07-01 → 2026-06-29 (-2d) |  |  | 8d → 7d |  |  |
| 268 | Aprovação | 2026-07-02 → 2026-06-30 (-2d) | 2026-07-02 → 2026-06-30 (-2d) |  |  | 8d → 7d |  |  |
| 269 | **AG-F0009-0306-MB-S-00004** | 2026-06-24 → 2026-06-22 (-2d) | 2026-07-02 → 2026-06-30 (-2d) |  |  | 8d → 7d |  |  |
| 270 | Emissão inicial | 2026-06-24 → 2026-06-22 (-2d) | 2026-06-29 → 2026-06-25 (-4d) |  |  | 8d → 7d |  |  |
| 271 | Análise Tecnored | 2026-06-30 → 2026-06-26 (-4d) | 2026-06-30 → 2026-06-26 (-4d) |  |  | 8d → 7d |  |  |
| 272 | Atendimento de comentários | 2026-07-01 → 2026-06-29 (-2d) | 2026-07-01 → 2026-06-29 (-2d) |  |  | 8d → 7d |  |  |
| 273 | Aprovação | 2026-07-02 → 2026-06-30 (-2d) | 2026-07-02 → 2026-06-30 (-2d) |  |  | 8d → 7d |  |  |
| 274 | **AG-F0009-0306-MB-S-00005** | 2026-06-24 → 2026-06-22 (-2d) | 2026-07-02 → 2026-06-30 (-2d) |  |  | 8d → 7d |  |  |
| 275 | Emissão inicial | 2026-06-24 → 2026-06-22 (-2d) | 2026-06-29 → 2026-06-25 (-4d) |  |  | 8d → 7d |  |  |
| 276 | Análise Tecnored | 2026-06-30 → 2026-06-26 (-4d) | 2026-06-30 → 2026-06-26 (-4d) |  |  | 8d → 7d |  |  |
| 277 | Atendimento de comentários | 2026-07-01 → 2026-06-29 (-2d) | 2026-07-01 → 2026-06-29 (-2d) |  |  | 8d → 7d |  |  |
| 278 | Aprovação | 2026-07-02 → 2026-06-30 (-2d) | 2026-07-02 → 2026-06-30 (-2d) |  |  | 8d → 7d |  |  |
| 279 | **PL-F0009-0306-MB-S-00001** | 2026-06-24 → 2026-06-22 (-2d) | 2026-07-02 → 2026-06-30 (-2d) |  |  | 8d → 7d |  |  |
| 280 | Emissão inicial | 2026-06-24 → 2026-06-22 (-2d) | 2026-06-29 → 2026-06-25 (-4d) |  |  | 8d → 7d |  |  |
| 281 | Análise Tecnored | 2026-06-30 → 2026-06-26 (-4d) | 2026-06-30 → 2026-06-26 (-4d) |  |  | 8d → 7d |  |  |
| 282 | Atendimento de comentários | 2026-07-01 → 2026-06-29 (-2d) | 2026-07-01 → 2026-06-29 (-2d) |  |  | 8d → 7d |  |  |
| 283 | Aprovação | 2026-07-02 → 2026-06-30 (-2d) | 2026-07-02 → 2026-06-30 (-2d) |  |  | 8d → 7d |  |  |
| 284 | **Elétrica** |  | 2026-07-14 → 2026-07-09 (-5d) | 32d → 29d | 7% → 21% |  |  |  |
| 290 | **ML-F0009-0306-MB-E-00001** | 2026-06-24 → 2026-06-22 (-2d) | 2026-07-02 → 2026-06-29 (-3d) | 7d → 6d |  |  |  |  |
| 291 | Emissão inicial | 2026-06-24 → 2026-06-22 (-2d) | 2026-06-29 → 2026-06-24 (-5d) | 4d → 3d |  |  |  | constraint finish no earlier than 2026-06-29 → finish no earlier than 2026-06-24 |
| 292 | Análise Tecnored | 2026-06-30 → 2026-06-25 (-5d) | 2026-06-30 → 2026-06-25 (-5d) |  |  |  |  |  |
| 293 | Atendimento de comentários | 2026-07-01 → 2026-06-26 (-5d) | 2026-07-01 → 2026-06-26 (-5d) |  |  |  |  |  |
| 294 | Aprovação | 2026-07-02 → 2026-06-29 (-3d) | 2026-07-02 → 2026-06-29 (-3d) |  |  |  |  |  |
| 295 | **RL-F0009-0306-MB-E-00001** |  | 2026-06-11 A |  | 75% → 100% | 23.25d → none |  |  |
| 298 | Atendimento de comentários |  | 2026-06-11 A |  | 25% → 100% | 23.25d → none |  |  |
| 299 | Aprovação | 2026-06-10 A | 2026-06-11 A |  | 0% → 100% | 23.25d → none |  |  |
| 300 | **LE-F0009-0306-MB-E-00001** | 2026-06-30 → 2026-06-25 (-5d) | 2026-07-06 → 2026-07-01 (-5d) |  |  |  |  |  |
| 301 | Emissão inicial | 2026-06-30 → 2026-06-25 (-5d) | 2026-07-02 → 2026-06-29 (-3d) |  |  |  |  |  |
| 302 | Análise Tecnored | 2026-07-03 → 2026-06-30 (-3d) | 2026-07-03 → 2026-06-30 (-3d) |  |  |  |  |  |
| 303 | Atendimento de comentários | 2026-07-06 → 2026-07-01 (-5d) | 2026-07-06 → 2026-07-01 (-5d) |  |  |  |  |  |
| 304 | Aprovação | 2026-07-06 → 2026-07-01 (-5d) | 2026-07-06 → 2026-07-01 (-5d) |  |  |  |  |  |
| 305 | **LR-F0009-0306-MB-E-00001** |  | 2026-06-03 A |  | 71% → 100% | 27d → none |  |  |
| 308 | Atendimento de comentários |  | 2026-06-03 A |  | 25% → 100% | 27d → none |  |  |
| 309 | Aprovação | 2026-06-03 A | 2026-06-03 A |  | 0% → 100% | 27d → none |  |  |
| 310 | **LM-F0009-0306-MB-E-00001** | 2026-07-07 → 2026-07-02 (-5d) | 2026-07-09 → 2026-07-06 (-3d) |  |  |  |  |  |
| 311 | Emissão inicial | 2026-07-07 → 2026-07-02 (-5d) | 2026-07-07 → 2026-07-02 (-5d) |  |  |  |  |  |
| 312 | Análise Tecnored | 2026-07-08 → 2026-07-03 (-5d) | 2026-07-08 → 2026-07-03 (-5d) |  |  |  |  |  |
| 313 | Atendimento de comentários | 2026-07-09 → 2026-07-06 (-3d) | 2026-07-09 → 2026-07-06 (-3d) |  |  |  |  |  |
| 314 | Aprovação | 2026-07-09 → 2026-07-06 (-3d) | 2026-07-09 → 2026-07-06 (-3d) |  |  |  |  |  |
| 315 | **PQ-F0009-0306-MB-E-00001** | 2026-07-08 → 2026-07-03 (-5d) | 2026-07-14 → 2026-07-09 (-5d) |  |  |  |  |  |
| 316 | Emissão inicial | 2026-07-08 → 2026-07-03 (-5d) | 2026-07-10 → 2026-07-07 (-3d) |  |  |  |  |  |
| 317 | Análise Tecnored | 2026-07-13 → 2026-07-08 (-5d) | 2026-07-13 → 2026-07-08 (-5d) |  |  |  |  |  |
| 318 | Atendimento de comentários | 2026-07-14 → 2026-07-09 (-5d) | 2026-07-14 → 2026-07-09 (-5d) |  |  |  |  |  |
| 319 | Aprovação | 2026-07-14 → 2026-07-09 (-5d) | 2026-07-14 → 2026-07-09 (-5d) |  |  |  |  |  |
| 320 | **MD-F0009-0306-MB-E-00001** | 2026-07-08 → 2026-07-03 (-5d) | 2026-07-15 → 2026-07-10 (-5d) |  |  |  |  |  |
| 321 | Emissão inicial | 2026-07-08 → 2026-07-03 (-5d) | 2026-07-09 → 2026-07-06 (-3d) |  |  |  |  |  |
| 322 | Análise Tecnored | 2026-07-10 → 2026-07-07 (-3d) | 2026-07-10 → 2026-07-07 (-3d) |  |  |  |  |  |
| 323 | Atendimento de comentários | 2026-07-13 → 2026-07-08 (-5d) | 2026-07-14 → 2026-07-09 (-5d) |  |  |  |  |  |
| 324 | Aprovação | 2026-07-15 → 2026-07-10 (-5d) | 2026-07-15 → 2026-07-10 (-5d) |  |  |  |  |  |
| 325 | **MC-F0009-0306-MB-E-00001** | 2026-06-25 → 2026-06-22 (-3d) | 2026-07-01 → 2026-06-26 (-5d) |  |  |  |  |  |
| 326 | Emissão inicial | 2026-06-25 → 2026-06-22 (-3d) | 2026-06-29 → 2026-06-24 (-5d) |  |  |  | 391 → none | constraint finish no earlier than 2026-06-29 → finish no earlier than 2026-06-24 |
| 327 | Análise Tecnored | 2026-06-30 → 2026-06-25 (-5d) | 2026-06-30 → 2026-06-25 (-5d) |  |  |  |  |  |
| 328 | Atendimento de comentários | 2026-07-01 → 2026-06-26 (-5d) | 2026-07-01 → 2026-06-26 (-5d) |  |  |  |  |  |
| 329 | Aprovação | 2026-07-01 → 2026-06-26 (-5d) | 2026-07-01 → 2026-06-26 (-5d) |  |  |  |  |  |
| 330 | **MC-F0009-0306-MB-E-00002** | 2026-06-25 → 2026-06-22 (-3d) | 2026-07-01 → 2026-06-26 (-5d) |  |  |  |  |  |
| 331 | Emissão inicial | 2026-06-25 → 2026-06-22 (-3d) | 2026-06-29 → 2026-06-24 (-5d) |  |  |  | 391 → none | constraint finish no earlier than 2026-06-29 → finish no earlier than 2026-06-24 |
| 332 | Análise Tecnored | 2026-06-30 → 2026-06-25 (-5d) | 2026-06-30 → 2026-06-25 (-5d) |  |  |  |  |  |

| ID | Task | Start | Finish | Duration | Complete | Total float | Predecessors | Other |
| --- | --- | --- | --- | --- | --- | --- | --- | --- |
| 333 | Atendimento de comentários | 2026-07-01 → 2026-06-26 (-5d) | 2026-07-01 → 2026-06-26 (-5d) |  |  |  |  |  |
| 334 | Aprovação | 2026-07-01 → 2026-06-26 (-5d) | 2026-07-01 → 2026-06-26 (-5d) |  |  |  |  |  |
| 335 | **AG-F0009-0306-MB-E-00001** | 2026-06-30 → 2026-06-25 (-5d) | 2026-07-07 → 2026-07-02 (-5d) |  |  |  |  |  |
| 336 | Emissão inicial | 2026-06-30 → 2026-06-25 (-5d) | 2026-07-03 → 2026-06-30 (-3d) |  |  |  |  |  |
| 337 | Análise Tecnored | 2026-07-06 → 2026-07-01 (-5d) | 2026-07-06 → 2026-07-01 (-5d) |  |  |  |  |  |
| 338 | Atendimento de comentários | 2026-07-07 → 2026-07-02 (-5d) | 2026-07-07 → 2026-07-02 (-5d) |  |  |  |  |  |
| 339 | Aprovação | 2026-07-07 → 2026-07-02 (-5d) | 2026-07-07 → 2026-07-02 (-5d) |  |  |  |  |  |
| 340 | **DU-F0009-0306-MB-E-00001** | 2026-06-09 → 2026-06-17 A (+8d) | 2026-06-15 → 2026-06-24 (+9d) | 5d → 6d | 0% → 50% | 13d → 11d |  |  |
| 341 | Emissão inicial | 2026-06-09 → 2026-06-17 A (+8d) | 2026-06-11 → 2026-06-19 A (+8d) |  | 0% → 100% | 13d → none |  | constraint none → start no earlier than 2026-06-17 |
| 342 | Análise Tecnored | 2026-06-12 → 2026-06-22 (+10d) | 2026-06-12 → 2026-06-22 (+10d) |  |  | 21d → 11d |  |  |
| 343 | Atendimento de comentários | 2026-06-15 → 2026-06-23 (+8d) | 2026-06-15 → 2026-06-23 (+8d) |  |  | 21d → 11d |  |  |
| 344 | Aprovação | 2026-06-15 → 2026-06-24 (+9d) | 2026-06-15 → 2026-06-24 (+9d) |  |  | 21d → 11d | 343FF → 343 |  |
| 345 | **DU-F0009-0306-MB-E-00002** | 2026-06-30 → 2026-06-17 A (-13d) | 2026-07-06 → 2026-06-24 (-12d) | 5d → 6d | 0% → 50% | 6d → 11d |  |  |
| 346 | Emissão inicial | 2026-06-30 → 2026-06-17 A (-13d) | 2026-07-02 → 2026-06-19 A (-13d) |  | 0% → 100% | 6d → none | 331 → 296 | constraint none → finish no earlier than 2026-06-19 |
| 347 | Análise Tecnored | 2026-07-03 → 2026-06-22 (-11d) | 2026-07-03 → 2026-06-22 (-11d) |  |  | 6d → 11d |  |  |
| 348 | Atendimento de comentários | 2026-07-06 → 2026-06-23 (-13d) | 2026-07-06 → 2026-06-23 (-13d) |  |  | 6d → 11d |  |  |
| 349 | Aprovação | 2026-07-06 → 2026-06-24 (-12d) | 2026-07-06 → 2026-06-24 (-12d) |  |  | 6d → 11d | 348FF → 348 |  |
| 350 | **DU-F0009-0306-MB-E-00003** | 2026-06-30 → 2026-06-17 A (-13d) | 2026-07-06 → 2026-06-24 (-12d) | 5d → 6d | 0% → 50% | 6d → 11d |  |  |
| 351 | Emissão inicial | 2026-06-30 → 2026-06-17 A (-13d) | 2026-07-02 → 2026-06-19 A (-13d) |  | 0% → 100% | 6d → none | 331 → 296 | constraint none → finish no earlier than 2026-06-19 |
| 352 | Análise Tecnored | 2026-07-03 → 2026-06-22 (-11d) | 2026-07-03 → 2026-06-22 (-11d) |  |  | 6d → 11d |  |  |
| 353 | Atendimento de comentários | 2026-07-06 → 2026-06-23 (-13d) | 2026-07-06 → 2026-06-23 (-13d) |  |  | 6d → 11d |  |  |
| 354 | Aprovação | 2026-07-06 → 2026-06-24 (-12d) | 2026-07-06 → 2026-06-24 (-12d) |  |  | 6d → 11d | 353FF → 353 |  |
| 355 | **DU-F0009-0306-MB-E-00004** | 2026-06-09 → 2026-06-17 A (+8d) | 2026-07-02 → 2026-06-24 (-8d) | 18d → 6d | 0% → 50% | 8d → 11d |  |  |
| 356 | Emissão inicial | 2026-06-09 → 2026-06-17 A (+8d) | 2026-06-11 → 2026-06-19 A (+8d) |  | 0% → 100% | 23d → none |  | constraint none → finish no earlier than 2026-06-19 |
| 357 | Análise Tecnored | 2026-06-30 → 2026-06-22 (-8d) | 2026-06-30 → 2026-06-22 (-8d) |  |  | 8d → 11d | 331 → 356 |  |
| 358 | Atendimento de comentários | 2026-07-01 → 2026-06-23 (-8d) | 2026-07-01 → 2026-06-23 (-8d) |  |  | 8d → 11d |  |  |
| 359 | Aprovação | 2026-07-02 → 2026-06-24 (-8d) | 2026-07-02 → 2026-06-24 (-8d) |  |  | 8d → 11d |  |  |
| 360 | **AG-F0009-0306-MB-E-00002** | 2026-06-10 → 2026-06-19 A (+9d) | 2026-06-17 → 2026-06-26 (+9d) |  | 0% → 14% | 19d → 9d |  |  |
| 361 | Emissão inicial | 2026-06-10 → 2026-06-19 A (+9d) | 2026-06-15 → 2026-06-24 (+9d) |  | 0% → 25% | 19d → 9d |  | constraint none → start no earlier than 2026-06-19 |
| 362 | Análise Tecnored | 2026-06-16 → 2026-06-25 (+9d) | 2026-06-16 → 2026-06-25 (+9d) |  |  | 19d → 9d |  |  |
| 363 | Atendimento de comentários | 2026-06-17 → 2026-06-26 (+9d) | 2026-06-17 → 2026-06-26 (+9d) |  |  | 19d → 9d |  |  |
| 364 | Aprovação | 2026-06-17 → 2026-06-26 (+9d) | 2026-06-17 → 2026-06-26 (+9d) |  |  | 19d → 9d |  |  |
| 365 | **AG-F0009-0306-MB-E-00003** | 2026-06-10 → 2026-06-19 A (+9d) | 2026-06-17 → 2026-06-26 (+9d) |  | 0% → 14% | 19d → 9d |  |  |
| 366 | Emissão inicial | 2026-06-10 → 2026-06-19 A (+9d) | 2026-06-15 → 2026-06-24 (+9d) |  | 0% → 25% | 19d → 9d |  | constraint none → start no earlier than 2026-06-19 |
| 367 | Análise Tecnored | 2026-06-16 → 2026-06-25 (+9d) | 2026-06-16 → 2026-06-25 (+9d) |  |  | 19d → 9d |  |  |
| 368 | Atendimento de comentários | 2026-06-17 → 2026-06-26 (+9d) | 2026-06-17 → 2026-06-26 (+9d) |  |  | 19d → 9d |  |  |
| 369 | Aprovação | 2026-06-17 → 2026-06-26 (+9d) | 2026-06-17 → 2026-06-26 (+9d) |  |  | 19d → 9d |  |  |
| 370 | **FD-F0009-0306-MB-E-00001** | 2026-06-10 → 2026-06-22 (+12d) | 2026-06-17 → 2026-06-29 (+12d) |  |  | 19d → 8d |  |  |
| 371 | Emissão inicial | 2026-06-10 → 2026-06-22 (+12d) | 2026-06-15 → 2026-06-25 (+10d) |  |  | 19d → 8d |  | constraint none → start no earlier than 2026-06-22 |
| 372 | Análise Tecnored | 2026-06-16 → 2026-06-26 (+10d) | 2026-06-16 → 2026-06-26 (+10d) |  |  | 19d → 8d |  |  |
| 373 | Atendimento de comentários | 2026-06-17 → 2026-06-29 (+12d) | 2026-06-17 → 2026-06-29 (+12d) |  |  | 19d → 8d |  |  |
| 374 | Aprovação | 2026-06-17 → 2026-06-29 (+12d) | 2026-06-17 → 2026-06-29 (+12d) |  |  | 19d → 8d |  |  |
| 375 | **FD-F0009-0306-MB-E-00002** | 2026-06-10 → 2026-06-22 (+12d) | 2026-06-17 → 2026-06-29 (+12d) |  |  | 19d → 8d |  |  |
| 376 | Emissão inicial | 2026-06-10 → 2026-06-22 (+12d) | 2026-06-15 → 2026-06-25 (+10d) |  |  | 19d → 8d |  | constraint none → start no earlier than 2026-06-22 |
| 377 | Análise Tecnored | 2026-06-16 → 2026-06-26 (+10d) | 2026-06-16 → 2026-06-26 (+10d) |  |  | 19d → 8d |  |  |
| 378 | Atendimento de comentários | 2026-06-17 → 2026-06-29 (+12d) | 2026-06-17 → 2026-06-29 (+12d) |  |  | 19d → 8d |  |  |
| 379 | Aprovação | 2026-06-17 → 2026-06-29 (+12d) | 2026-06-17 → 2026-06-29 (+12d) |  |  | 19d → 8d |  |  |
| 380 | **FD-F0009-0306-MB-E-00003** | 2026-06-15 → 2026-06-22 (+7d) | 2026-06-22 → 2026-06-29 (+7d) |  |  | 16d → 8d |  |  |
| 381 | Emissão inicial | 2026-06-15 → 2026-06-22 (+7d) | 2026-06-18 → 2026-06-25 (+7d) |  |  | 16d → 8d |  | constraint finish no earlier than 2026-06-18 → start no earlier than 2026-06-22 |
| 382 | Análise Tecnored | 2026-06-19 → 2026-06-26 (+7d) | 2026-06-19 → 2026-06-26 (+7d) |  |  | 16d → 8d |  |  |
| 383 | Atendimento de comentários | 2026-06-22 → 2026-06-29 (+7d) | 2026-06-22 → 2026-06-29 (+7d) |  |  | 16d → 8d |  |  |
| 384 | Aprovação | 2026-06-22 → 2026-06-29 (+7d) | 2026-06-22 → 2026-06-29 (+7d) |  |  | 16d → 8d |  |  |
| 385 | **FD-F0009-0306-MB-E-00004** | 2026-06-10 → 2026-06-22 (+12d) | 2026-06-18 → 2026-06-30 (+12d) |  |  | 18d → 7d |  |  |
| 386 | Emissão inicial | 2026-06-10 → 2026-06-22 (+12d) | 2026-06-15 → 2026-06-25 (+10d) |  |  | 18d → 7d |  | constraint none → start no earlier than 2026-06-22 |
| 387 | Análise Tecnored | 2026-06-16 → 2026-06-26 (+10d) | 2026-06-16 → 2026-06-26 (+10d) |  |  | 18d → 7d |  |  |
| 388 | Atendimento de comentários | 2026-06-17 → 2026-06-29 (+12d) | 2026-06-17 → 2026-06-29 (+12d) |  |  | 18d → 7d |  |  |
| 389 | Aprovação | 2026-06-18 → 2026-06-30 (+12d) | 2026-06-18 → 2026-06-30 (+12d) |  |  | 18d → 7d |  |  |
| 390 | **FD-F0009-0306-MB-E-00005** | 2026-06-10 → 2026-06-22 (+12d) | 2026-06-18 → 2026-06-30 (+12d) |  |  | 13d → 7d |  |  |
| 391 | Emissão inicial | 2026-06-10 → 2026-06-22 (+12d) | 2026-06-15 → 2026-06-25 (+10d) |  |  | 13d → 7d |  | constraint none → start no earlier than 2026-06-22 |
| 392 | Análise Tecnored | 2026-06-16 → 2026-06-26 (+10d) | 2026-06-16 → 2026-06-26 (+10d) |  |  | 18d → 7d |  |  |
| 393 | Atendimento de comentários | 2026-06-17 → 2026-06-29 (+12d) | 2026-06-17 → 2026-06-29 (+12d) |  |  | 18d → 7d |  |  |
| 394 | Aprovação | 2026-06-18 → 2026-06-30 (+12d) | 2026-06-18 → 2026-06-30 (+12d) |  |  | 18d → 7d |  |  |
| 395 | **Automação e instrumentação** |  | 2026-07-08 → 2026-07-07 (-1d) | 26d → 25d | 9% → 40% | 4d → 2d |  |  |
| 401 | **LI-F0009-0306-MB-J-00001** | 2026-06-16 A | 2026-06-26 → 2026-06-25 (-1d) | 9d → 8d | 0% → 50% | 8d → 10d |  |  |
| 402 | Emissão inicial | 2026-06-16 A | 2026-06-22 → 2026-06-19 A (-3d) | 5d → 4d | 0% → 100% | 8d → none |  |  |
| 403 | Análise Tecnored | 2026-06-23 → 2026-06-22 (-1d) | 2026-06-23 → 2026-06-22 (-1d) |  |  | 12d → 10d |  |  |
| 404 | Atendimento de comentários | 2026-06-24 → 2026-06-23 (-1d) | 2026-06-25 → 2026-06-24 (-1d) |  |  | 12d → 10d |  |  |
| 405 | Aprovação | 2026-06-26 → 2026-06-25 (-1d) | 2026-06-26 → 2026-06-25 (-1d) |  |  | 12d → 10d |  |  |
| 406 | **LE-F0009-0306-MB-J-00001** | 2026-06-26 → 2026-06-15 A (-11d) | 2026-07-07 → 2026-06-24 (-13d) |  | 0% → 63% | 5d → 11d |  |  |
| 407 | Emissão inicial | 2026-06-26 → 2026-06-15 A (-11d) | 2026-07-01 → 2026-06-18 A (-13d) |  | 0% → 100% | 5d → none |  | constraint start no earlier than 2026-06-26 → finish no earlier than 2026-06-18 |

| ID | Task | Start | Finish | Complete | Total float | Other |
| --- | --- | --- | --- | --- | --- | --- |
| 408 | Análise Tecnored | 2026-07-02 → 2026-06-19 A (-13d) | 2026-07-02 → 2026-06-19 A (-13d) | 0% → 100% | 5d → none |  |
| 409 | Atendimento de comentários | 2026-07-03 → 2026-06-22 (-11d) | 2026-07-06 → 2026-06-23 (-13d) |  | 5d → 11d |  |
| 410 | Aprovação | 2026-07-07 → 2026-06-24 (-13d) | 2026-07-07 → 2026-06-24 (-13d) |  | 5d → 11d |  |
| 411 | **LL-F0009-0306-MB-J-00001** |  | 2026-06-18 A | 50% → 100% | 18d → none |  |
| 413 | Análise Tecnored | 2026-06-15 A | 2026-06-15 A | 0% → 100% | 18d → none |  |
| 414 | Atendimento de comentários | 2026-06-16 A | 2026-06-17 A | 0% → 100% | 18d → none |  |
| 415 | Aprovação | 2026-06-18 A | 2026-06-18 A | 0% → 100% | 18d → none |  |
| 421 | **LE-F0009-0306-MB-J-00002** | 2026-06-09 A | 2026-06-17 A | 0% → 100% | 19d → none |  |
| 422 | Emissão inicial | 2026-06-09 A | 2026-06-12 A | 0% → 100% | 19d → none |  |
| 423 | Análise Tecnored | 2026-06-15 A | 2026-06-15 A | 0% → 100% | 19d → none |  |
| 424 | Atendimento de comentários | 2026-06-16 A | 2026-06-16 A | 0% → 100% | 19d → none |  |
| 425 | Aprovação | 2026-06-17 A | 2026-06-17 A | 0% → 100% | 19d → none |  |
| 431 | **FG-F0009-0306-MB-J-00001** |  | 2026-06-18 A | 69% → 100% | 18d → none |  |
| 433 | Análise Tecnored | 2026-06-16 A | 2026-06-16 A | 0% → 100% | 18d → none |  |
| 434 | Atendimento de comentários | 2026-06-17 A | 2026-06-18 A | 0% → 100% | 18d → none |  |
| 435 | Aprovação | 2026-06-18 A | 2026-06-18 A | 0% → 100% | 18d → none |  |
| 436 | **FG-F0009-0306-MB-J-00002** |  | 2026-06-19 A | 69% → 100% | 17d → none |  |
| 438 | Análise Tecnored | 2026-06-16 A | 2026-06-16 A | 0% → 100% | 17d → none |  |
| 439 | Atendimento de comentários | 2026-06-17 A | 2026-06-18 A | 0% → 100% | 17d → none |  |
| 440 | Aprovação | 2026-06-19 A | 2026-06-19 A | 0% → 100% | 17d → none |  |
| 441 | **FG-F0009-0306-MB-J-00003** |  | 2026-06-19 A | 69% → 100% | 17d → none |  |
| 443 | Análise Tecnored | 2026-06-16 A | 2026-06-16 A | 0% → 100% | 17d → none |  |
| 444 | Atendimento de comentários | 2026-06-17 A | 2026-06-18 A | 0% → 100% | 17d → none |  |
| 445 | Aprovação | 2026-06-19 A | 2026-06-19 A | 0% → 100% | 17d → none |  |
| 446 | **AG-F0009-0306-MB-J-00001** | 2026-06-23 → 2026-06-22 (-1d) | 2026-07-02 → 2026-07-01 (-1d) |  | 8d → 6d |  |
| 447 | Emissão inicial | 2026-06-23 → 2026-06-22 (-1d) | 2026-06-26 → 2026-06-25 (-1d) |  | 8d → 6d |  |
| 448 | Análise Tecnored | 2026-06-29 → 2026-06-26 (-3d) | 2026-06-29 → 2026-06-26 (-3d) |  | 8d → 6d |  |
| 449 | Atendimento de comentários | 2026-06-30 → 2026-06-29 (-1d) | 2026-07-01 → 2026-06-30 (-1d) |  | 8d → 6d |  |
| 450 | Aprovação | 2026-07-02 → 2026-07-01 (-1d) | 2026-07-02 → 2026-07-01 (-1d) |  | 8d → 6d |  |
| 451 | **AG-F0009-0306-MB-J-00002** | 2026-06-23 → 2026-06-22 (-1d) | 2026-07-01 → 2026-06-30 (-1d) |  | 9d → 7d |  |
| 452 | Emissão inicial | 2026-06-23 → 2026-06-22 (-1d) | 2026-06-25 → 2026-06-24 (-1d) |  | 9d → 7d |  |
| 453 | Análise Tecnored | 2026-06-26 → 2026-06-25 (-1d) | 2026-06-26 → 2026-06-25 (-1d) |  | 9d → 7d |  |
| 454 | Atendimento de comentários | 2026-06-29 → 2026-06-26 (-3d) | 2026-06-30 → 2026-06-29 (-1d) |  | 9d → 7d |  |
| 455 | Aprovação | 2026-07-01 → 2026-06-30 (-1d) | 2026-07-01 → 2026-06-30 (-1d) |  | 9d → 7d |  |
| 456 | **AG-F0009-0306-MB-J-00003** | 2026-06-23 → 2026-06-22 (-1d) | 2026-07-01 → 2026-06-30 (-1d) |  | 9d → 7d |  |
| 457 | Emissão inicial | 2026-06-23 → 2026-06-22 (-1d) | 2026-06-25 → 2026-06-24 (-1d) |  | 9d → 7d |  |
| 458 | Análise Tecnored | 2026-06-26 → 2026-06-25 (-1d) | 2026-06-26 → 2026-06-25 (-1d) |  | 9d → 7d |  |
| 459 | Atendimento de comentários | 2026-06-29 → 2026-06-26 (-3d) | 2026-06-30 → 2026-06-29 (-1d) |  | 9d → 7d |  |
| 460 | Aprovação | 2026-07-01 → 2026-06-30 (-1d) | 2026-07-01 → 2026-06-30 (-1d) |  | 9d → 7d |  |
| 461 | **AG-F0009-0306-MB-J-00004** | 2026-06-23 → 2026-06-22 (-1d) | 2026-06-30 → 2026-06-29 (-1d) |  | 10d → 8d |  |
| 462 | Emissão inicial | 2026-06-23 → 2026-06-22 (-1d) | 2026-06-24 → 2026-06-23 (-1d) |  | 10d → 8d |  |
| 463 | Análise Tecnored | 2026-06-25 → 2026-06-24 (-1d) | 2026-06-25 → 2026-06-24 (-1d) |  | 10d → 8d |  |
| 464 | Atendimento de comentários | 2026-06-26 → 2026-06-25 (-1d) | 2026-06-29 → 2026-06-26 (-3d) |  | 10d → 8d |  |
| 465 | Aprovação | 2026-06-30 → 2026-06-29 (-1d) | 2026-06-30 → 2026-06-29 (-1d) |  | 10d → 8d |  |
| 466 | **DI-F0009-0306-MB-J-00001** | 2026-06-17 A |  | 0% → 38% |  |  |
| 467 | Emissão inicial | 2026-06-17 A |  | 0% → 75% | 9d → 5d |  |
| 471 | **LI-F0009-0306-MB-J-00002** | 2026-06-26 → 2026-06-16 A (-10d) | 2026-07-07 → 2026-06-25 (-12d) | 0% → 50% | 5d → 10d |  |
| 472 | Emissão inicial | 2026-06-26 → 2026-06-16 A (-10d) | 2026-07-01 → 2026-06-19 A (-12d) | 0% → 100% | 5d → none | constraint finish no earlier than 2026-07-01 → finish no earlier than 2026-06-19 |
| 473 | Análise Tecnored | 2026-07-02 → 2026-06-22 (-10d) | 2026-07-02 → 2026-06-22 (-10d) |  | 5d → 10d | constraint start no earlier than 2026-07-02 → finish no earlier than 2026-06-22 |
| 474 | Atendimento de comentários | 2026-07-03 → 2026-06-23 (-10d) | 2026-07-06 → 2026-06-24 (-12d) |  | 5d → 10d | constraint start no earlier than 2026-07-03 → finish no earlier than 2026-06-24 |
| 475 | Aprovação | 2026-07-07 → 2026-06-25 (-12d) | 2026-07-07 → 2026-06-25 (-12d) |  | 5d → 10d | constraint start no earlier than 2026-07-07 → finish no earlier than 2026-06-25 |
| 476 | **LI-F0009-0306-MB-J-00003** | 2026-06-26 → 2026-06-16 A (-10d) | 2026-07-07 → 2026-06-25 (-12d) | 0% → 50% | 5d → 10d |  |
| 477 | Emissão inicial | 2026-06-26 → 2026-06-16 A (-10d) | 2026-07-01 → 2026-06-19 A (-12d) | 0% → 100% | 5d → none | constraint finish no earlier than 2026-07-01 → finish no earlier than 2026-06-19 |
| 478 | Análise Tecnored | 2026-07-02 → 2026-06-22 (-10d) | 2026-07-02 → 2026-06-22 (-10d) |  | 5d → 10d | constraint start no earlier than 2026-07-02 → finish no earlier than 2026-06-22 |
| 479 | Atendimento de comentários | 2026-07-03 → 2026-06-23 (-10d) | 2026-07-06 → 2026-06-24 (-12d) |  | 5d → 10d | constraint finish no earlier than 2026-07-06 → finish no earlier than 2026-06-24 |
| 480 | Aprovação | 2026-07-07 → 2026-06-25 (-12d) | 2026-07-07 → 2026-06-25 (-12d) |  | 5d → 10d | constraint start no earlier than 2026-07-07 → finish no earlier than 2026-06-25 |
| 486 | **ET-F0009-0306-MB-J-00001** | 2026-06-16 A |  | 0% → 57% | 14d → 11d |  |
| 487 | Emissão inicial | 2026-06-16 A | 2026-06-19 A | 0% → 100% | 14d → none |  |
| 491 | **FD-F0009-0306-MB-J-00001** | 2026-06-17 A |  | 0% → 30% | 4d → 7d |  |
| 492 | Emissão inicial | 2026-06-17 A |  | 0% → 43% | 4d → 7d |  |
| 496 | **FD-F0009-0306-MB-J-00002** | 2026-06-17 A |  | 0% → 30% | 10d → 7d |  |
| 497 | Emissão inicial | 2026-06-17 A |  | 0% → 43% | 10d → 7d |  |
| 501 | **FD-F0009-0306-MB-J-00003** | 2026-06-17 A |  | 0% → 30% | 10d → 7d |  |
| 502 | Emissão inicial | 2026-06-17 A |  | 0% → 43% | 10d → 7d |  |
| 506 | **FD-F0009-0306-MB-J-00004** | 2026-06-17 A |  | 0% → 30% | 10d → 7d |  |
| 507 | Emissão inicial | 2026-06-17 A |  | 0% → 43% | 10d → 7d |  |
| 511 | **FD-F0009-0306-MB-J-00005** | 2026-06-17 A |  | 0% → 30% | 10d → 7d |  |
| 512 | Emissão inicial | 2026-06-17 A |  | 0% → 43% | 10d → 7d |  |
| 516 | **FD-F0009-0306-MB-J-00006** | 2026-06-17 A |  | 0% → 30% | 10d → 7d |  |
| 517 | Emissão inicial | 2026-06-17 A |  | 0% → 43% | 10d → 7d |  |

| ID | Task | Start | Finish | Duration | Complete | Total float | Other |
| --- | --- | --- | --- | --- | --- | --- | --- |
| 521 | **FD-F0009-0306-MB-J-00007** | 2026-06-17 A |  |  | 0% → 30% | 10d → 7d |  |
| 522 | Emissão inicial | 2026-06-17 A |  |  | 0% → 43% | 10d → 7d |  |
| 526 | **FD-F0009-0306-MB-J-00008** | 2026-06-17 A |  |  | 0% → 30% | 10d → 7d |  |
| 527 | Emissão inicial | 2026-06-17 A |  |  | 0% → 43% | 10d → 7d |  |
| 531 | **FD-F0009-0306-MB-J-00009** | 2026-06-17 A |  |  | 0% → 30% | 10d → 7d |  |
| 532 | Emissão inicial | 2026-06-17 A |  |  | 0% → 43% | 10d → 7d |  |
| 536 | **FD-F0009-0306-MB-J-00010** | 2026-06-17 A |  |  | 0% → 30% | 10d → 7d |  |
| 537 | Emissão inicial | 2026-06-17 A |  |  | 0% → 43% | 10d → 7d |  |
| 541 | **FD-F0009-0306-MB-J-00011** | 2026-06-17 A |  |  | 0% → 30% | 10d → 7d |  |
| 542 | Emissão inicial | 2026-06-17 A |  |  | 0% → 43% | 10d → 7d |  |
| 546 | **FD-F0009-0306-MB-J-00012** | 2026-06-17 A |  |  | 0% → 30% | 10d → 7d |  |
| 547 | Emissão inicial | 2026-06-17 A |  |  | 0% → 43% | 10d → 7d |  |
| 551 | **FD-F0009-0306-MB-J-00013** | 2026-06-17 A |  |  | 0% → 30% | 10d → 7d |  |
| 552 | Emissão inicial | 2026-06-17 A |  |  | 0% → 43% | 10d → 7d |  |
| 556 | **FD-F0009-0306-MB-J-00014** | 2026-06-17 A |  |  | 0% → 30% | 10d → 7d |  |
| 557 | Emissão inicial | 2026-06-17 A |  |  | 0% → 43% | 10d → 7d |  |
| 561 | **FD-F0009-0306-MB-J-00015** | 2026-06-17 A | 2026-07-07 → 2026-06-30 (-7d) | 15d → 10d | 0% → 30% | 5d → 7d |  |
| 562 | Emissão inicial | 2026-06-17 A |  |  | 0% → 43% | 5d → 7d |  |
| 563 | Análise Tecnored |  | 2026-07-03 → 2026-06-26 (-7d) | 6d → 1d |  | 5d → 7d | constraint none → finish no earlier than 2026-06-26 |
| 564 | Atendimento de comentários | 2026-07-06 → 2026-06-29 (-7d) | 2026-07-06 → 2026-06-29 (-7d) |  |  | 5d → 7d | constraint none → start no earlier than 2026-06-29 |
| 565 | Aprovação | 2026-07-07 → 2026-06-30 (-7d) | 2026-07-07 → 2026-06-30 (-7d) |  |  | 5d → 7d | constraint none → start no earlier than 2026-06-30 |
| 566 | **FD-F0009-0306-MB-J-00016** | 2026-06-17 A | 2026-07-08 → 2026-06-30 (-8d) | 16d → 10d | 0% → 30% | 4d → 7d |  |
| 567 | Emissão inicial | 2026-06-17 A |  |  | 0% → 43% | 4d → 7d |  |
| 568 | Análise Tecnored |  | 2026-07-03 → 2026-06-26 (-7d) | 6d → 1d |  | 4d → 7d | constraint none → finish no earlier than 2026-06-26 |
| 569 | Atendimento de comentários | 2026-07-06 → 2026-06-29 (-7d) | 2026-07-06 → 2026-06-29 (-7d) |  |  | 4d → 7d | constraint none → start no earlier than 2026-06-29 |
| 570 | Aprovação | 2026-07-07 → 2026-06-30 (-7d) | 2026-07-08 → 2026-06-30 (-8d) | 2d → 1d |  | 4d → 7d | constraint none → finish no earlier than 2026-06-30 |
| 581 | **DT-F0009-0306-MB-J-00001** | 2026-06-17 → 2026-06-19 A (+2d) | 2026-06-26 → 2026-06-30 (+4d) |  | 0% → 13% | 12d → 7d |  |
| 582 | Emissão inicial | 2026-06-17 → 2026-06-19 A (+2d) | 2026-06-22 → 2026-06-24 (+2d) |  | 0% → 25% | 12d → 7d | constraint start no earlier than 2026-06-17 → start no earlier than 2026-06-19 |
| 583 | Análise Tecnored | 2026-06-23 → 2026-06-25 (+2d) | 2026-06-23 → 2026-06-25 (+2d) |  |  | 12d → 7d |  |
| 584 | Atendimento de comentários | 2026-06-24 → 2026-06-26 (+2d) | 2026-06-25 → 2026-06-29 (+4d) |  |  | 12d → 7d |  |
| 585 | Aprovação | 2026-06-26 → 2026-06-30 (+4d) | 2026-06-26 → 2026-06-30 (+4d) |  |  | 12d → 7d |  |
| 586 | **Civil** | 2026-06-19 → 2026-06-22 (+3d) | 2026-07-01 → 2026-07-02 (+1d) |  |  | 9d → 5d |  |
| 587 | **MC-F0009-0306-MB-C-00001** | 2026-06-19 → 2026-06-22 (+3d) | 2026-06-30 → 2026-07-01 (+1d) |  |  | 9d → 5d |  |
| 588 | Emissão inicial | 2026-06-19 → 2026-06-22 (+3d) | 2026-06-25 → 2026-06-26 (+1d) |  |  | 9d → 5d | constraint none → start no earlier than 2026-06-22 |
| 589 | Análise Tecnored | 2026-06-26 → 2026-06-29 (+3d) | 2026-06-26 → 2026-06-29 (+3d) |  |  | 10d → 6d |  |
| 590 | Atendimento de comentários | 2026-06-29 → 2026-06-30 (+1d) | 2026-06-29 → 2026-06-30 (+1d) |  |  | 10d → 6d |  |
| 591 | Aprovação | 2026-06-30 → 2026-07-01 (+1d) | 2026-06-30 → 2026-07-01 (+1d) |  |  | 10d → 6d |  |
| 592 | **PQ-F0009-0306-MB-C-00001** | 2026-06-26 → 2026-06-29 (+3d) | 2026-07-01 → 2026-07-02 (+1d) |  |  | 9d → 5d |  |
| 593 | Emissão inicial | 2026-06-26 → 2026-06-29 (+3d) | 2026-06-26 → 2026-06-29 (+3d) |  |  | 9d → 5d |  |
| 594 | Análise Tecnored | 2026-06-29 → 2026-06-30 (+1d) | 2026-06-29 → 2026-06-30 (+1d) |  |  | 9d → 5d |  |
| 595 | Atendimento de comentários | 2026-06-30 → 2026-07-01 (+1d) | 2026-06-30 → 2026-07-01 (+1d) |  |  | 9d → 5d |  |
| 596 | Aprovação | 2026-07-01 → 2026-07-02 (+1d) | 2026-07-01 → 2026-07-02 (+1d) |  |  | 9d → 5d |  |

## Version 8 (data date 2026-06-23, saved 2026-06-23, file CR-F0009-0306-MB-F-00001 22062026_C2.mpp)

Note of the change: Primeira versao dashboard

Last finish stays 2026-07-15. Complete tasks 87 → 86.

Changed:

| ID | Task | Start | Finish | Duration | Complete | Total float | Other |
| --- | --- | --- | --- | --- | --- | --- | --- |
| 1 | **F0009 - Programa Marabá** |  |  |  | 35% → 27% |  |  |
| 2 | **Área 0306 - Sopradores** |  |  |  | 35% → 27% |  |  |
| 24 | **Coordenação** |  |  |  | 35% → 32% |  |  |
| 25 | **RM-F0009-0306-MB-G-00001** |  |  |  | 33% → 25% |  |  |
| 26 | Emissão inicial |  |  |  | 67% → 50% |  |  |
| 61 | **Mecânica** |  | 2026-06-30 → 2026-07-02 (+2d) | 24d → 26d |  | 7d → 5d |  |
| 82 | **AG-F0009-0306-MB-L-00001** | 2026-06-22 → 2026-06-24 (+2d) | 2026-06-30 → 2026-07-02 (+2d) |  |  | 7d → 5d |  |
| 83 | Emissão inicial | 2026-06-22 → 2026-06-24 (+2d) | 2026-06-25 → 2026-06-29 (+4d) |  |  | 7d → 5d |  |
| 84 | Análise Tecnored | 2026-06-26 → 2026-06-30 (+4d) | 2026-06-26 → 2026-06-30 (+4d) |  |  | 7d → 5d |  |
| 85 | Atendimento de comentários | 2026-06-29 → 2026-07-01 (+2d) | 2026-06-29 → 2026-07-01 (+2d) |  |  | 7d → 5d |  |
| 86 | Aprovação | 2026-06-30 → 2026-07-02 (+2d) | 2026-06-30 → 2026-07-02 (+2d) |  |  | 7d → 5d |  |
| 87 | **AG-F0009-0306-MB-L-00002** | 2026-06-22 → 2026-06-24 (+2d) | 2026-06-30 → 2026-07-02 (+2d) |  |  | 7d → 5d |  |
| 88 | Emissão inicial | 2026-06-22 → 2026-06-24 (+2d) | 2026-06-25 → 2026-06-29 (+4d) |  |  | 7d → 5d |  |
| 89 | Análise Tecnored | 2026-06-26 → 2026-06-30 (+4d) | 2026-06-26 → 2026-06-30 (+4d) |  |  | 7d → 5d |  |
| 90 | Atendimento de comentários | 2026-06-29 → 2026-07-01 (+2d) | 2026-06-29 → 2026-07-01 (+2d) |  |  | 7d → 5d |  |
| 91 | Aprovação | 2026-06-30 → 2026-07-02 (+2d) | 2026-06-30 → 2026-07-02 (+2d) |  |  | 7d → 5d |  |
| 92 | **AG-F0009-0306-MB-L-00003** | 2026-06-22 → 2026-06-24 (+2d) | 2026-06-30 → 2026-07-02 (+2d) |  |  | 7d → 5d |  |
| 93 | Emissão inicial | 2026-06-22 → 2026-06-24 (+2d) | 2026-06-25 → 2026-06-29 (+4d) |  |  | 7d → 5d |  |
| 94 | Análise Tecnored | 2026-06-26 → 2026-06-30 (+4d) | 2026-06-26 → 2026-06-30 (+4d) |  |  | 7d → 5d |  |
| 95 | Atendimento de comentários | 2026-06-29 → 2026-07-01 (+2d) | 2026-06-29 → 2026-07-01 (+2d) |  |  | 7d → 5d |  |
| 96 | Aprovação | 2026-06-30 → 2026-07-02 (+2d) | 2026-06-30 → 2026-07-02 (+2d) |  |  | 7d → 5d |  |
| 97 | **AG-F0009-0306-MB-L-00004** | 2026-06-22 → 2026-06-24 (+2d) | 2026-06-30 → 2026-07-02 (+2d) |  |  | 7d → 5d |  |
| 98 | Emissão inicial | 2026-06-22 → 2026-06-24 (+2d) | 2026-06-25 → 2026-06-29 (+4d) |  |  | 7d → 5d |  |
| 99 | Análise Tecnored | 2026-06-26 → 2026-06-30 (+4d) | 2026-06-26 → 2026-06-30 (+4d) |  |  | 7d → 5d |  |
| 100 | Atendimento de comentários | 2026-06-29 → 2026-07-01 (+2d) | 2026-06-29 → 2026-07-01 (+2d) |  |  | 7d → 5d |  |
| 101 | Aprovação | 2026-06-30 → 2026-07-02 (+2d) | 2026-06-30 → 2026-07-02 (+2d) |  |  | 7d → 5d |  |
| 153 | **ET-F0009-0306-MB-T-00001** | 2026-06-25 → 2026-06-30 (+5d) | 2026-07-03 → 2026-07-08 (+5d) |  |  | 4d → 1d |  |
| 154 | Emissão inicial | 2026-06-25 → 2026-06-30 (+5d) | 2026-06-29 → 2026-07-02 (+3d) |  |  | 4d → 1d |  |
| 155 | Análise Tecnored | 2026-06-30 → 2026-07-03 (+3d) | 2026-06-30 → 2026-07-03 (+3d) |  |  | 4d → 1d |  |
| 156 | Atendimento de comentários | 2026-07-01 → 2026-07-06 (+5d) | 2026-07-02 → 2026-07-07 (+5d) |  |  | 4d → 1d |  |
| 157 | Aprovação | 2026-07-03 → 2026-07-08 (+5d) | 2026-07-03 → 2026-07-08 (+5d) |  |  | 4d → 1d |  |
| 158 | **FD-F0009-0306-MB-T-00001** | 2026-06-22 → 2026-06-25 (+3d) | 2026-06-30 → 2026-07-03 (+3d) |  |  | 7d → 4d |  |
| 159 | Emissão inicial | 2026-06-22 → 2026-06-25 (+3d) | 2026-06-24 → 2026-06-29 (+5d) |  |  | 7d → 4d | constraint start no earlier than 2026-06-22 → start no earlier than 2026-06-25 |
| 160 | Análise Tecnored | 2026-06-25 → 2026-06-30 (+5d) | 2026-06-25 → 2026-06-30 (+5d) |  |  | 7d → 4d |  |
| 161 | Atendimento de comentários | 2026-06-26 → 2026-07-01 (+5d) | 2026-06-29 → 2026-07-02 (+3d) |  |  | 7d → 4d |  |
| 162 | Aprovação | 2026-06-30 → 2026-07-03 (+3d) | 2026-06-30 → 2026-07-03 (+3d) |  |  | 7d → 4d |  |
| 168 | **PQ-F0009-0306-MB-T-00001** | 2026-06-22 → 2026-06-24 (+2d) | 2026-06-30 → 2026-07-02 (+2d) |  |  | 7d → 5d |  |
| 169 | Emissão inicial | 2026-06-22 → 2026-06-24 (+2d) | 2026-06-24 → 2026-06-26 (+2d) |  |  | 7d → 5d | constraint start no earlier than 2026-06-22 → finish no earlier than 2026-06-26 |
| 170 | Análise Tecnored | 2026-06-25 → 2026-06-29 (+4d) | 2026-06-25 → 2026-06-29 (+4d) |  |  | 7d → 5d |  |
| 171 | Atendimento de comentários | 2026-06-26 → 2026-06-30 (+4d) | 2026-06-29 → 2026-07-01 (+2d) |  |  | 7d → 5d |  |
| 172 | Aprovação | 2026-06-30 → 2026-07-02 (+2d) | 2026-06-30 → 2026-07-02 (+2d) |  |  | 7d → 5d |  |
| 218 | **LK-F0009-0306-MB-T-00001** | 2026-06-22 → 2026-06-24 (+2d) | 2026-06-30 → 2026-07-02 (+2d) |  |  | 7d → 5d |  |
| 219 | Emissão inicial | 2026-06-22 → 2026-06-24 (+2d) | 2026-06-24 → 2026-06-26 (+2d) |  |  | 7d → 5d | constraint finish no earlier than 2026-06-24 → finish no earlier than 2026-06-26 |
| 220 | Análise Tecnored | 2026-06-25 → 2026-06-29 (+4d) | 2026-06-25 → 2026-06-29 (+4d) |  |  | 7d → 5d | constraint start no earlier than 2026-06-24 → start no earlier than 2026-06-29 |
| 221 | Atendimento de comentários | 2026-06-26 → 2026-06-30 (+4d) | 2026-06-29 → 2026-07-01 (+2d) |  |  | 7d → 5d | constraint start no earlier than 2026-06-25 → start no earlier than 2026-06-30 |
| 222 | Aprovação | 2026-06-30 → 2026-07-02 (+2d) | 2026-06-30 → 2026-07-02 (+2d) |  |  | 7d → 5d | constraint start no earlier than 2026-06-29 → start no earlier than 2026-07-02 |
| 228 | **Estrutura metálica** | 2026-06-17 A → 2026-06-18 A (+1d) | 2026-07-02 → 2026-07-06 (+4d) | 12d → 13d | 8% → 3% | 5d → 3d |  |
| 234 | **ML-F0009-0306-MB-S-00001** | 2026-06-17 A → 2026-06-19 (+2d) | 2026-06-24 → 2026-06-26 (+2d) |  | 50% → 0% | 11d → 3d |  |
| 235 | Emissão inicial | 2026-06-17 A → 2026-06-19 (+2d) | 2026-06-19 A → 2026-06-23 (+4d) |  | 100% → 0% | none → 3d | constraint start no earlier than 2026-06-12 → start no earlier than 2026-06-19 |
| 236 | Análise Tecnored | 2026-06-22 → 2026-06-24 (+2d) | 2026-06-22 → 2026-06-24 (+2d) |  |  | 11d → 9d |  |
| 237 | Atendimento de comentários | 2026-06-23 → 2026-06-25 (+2d) | 2026-06-23 → 2026-06-25 (+2d) |  |  | 11d → 9d |  |
| 238 | Aprovação | 2026-06-24 → 2026-06-26 (+2d) | 2026-06-24 → 2026-06-26 (+2d) |  |  | 11d → 9d |  |
| 239 | **PQ-F0009-0306-MB-S-00001** | 2026-06-25 → 2026-06-29 (+4d) | 2026-07-02 → 2026-07-06 (+4d) |  |  | 5d → 3d |  |
| 240 | Emissão inicial | 2026-06-25 → 2026-06-29 (+4d) | 2026-06-29 → 2026-07-01 (+2d) |  |  | 5d → 3d |  |
| 241 | Análise Tecnored | 2026-06-30 → 2026-07-02 (+2d) | 2026-06-30 → 2026-07-02 (+2d) |  |  | 5d → 3d |  |
| 242 | Atendimento de comentários | 2026-07-01 → 2026-07-03 (+2d) | 2026-07-01 → 2026-07-03 (+2d) |  |  | 5d → 3d |  |
| 243 | Aprovação | 2026-07-02 → 2026-07-06 (+4d) | 2026-07-02 → 2026-07-06 (+4d) |  |  | 5d → 3d |  |
| 244 | **LM-F0009-0306-MB-S-00001** | 2026-06-22 → 2026-06-24 (+2d) | 2026-06-29 → 2026-07-01 (+2d) |  |  | 5d → 3d |  |
| 245 | Emissão inicial | 2026-06-22 → 2026-06-24 (+2d) | 2026-06-24 → 2026-06-26 (+2d) |  |  | 5d → 3d |  |
| 246 | Análise Tecnored | 2026-06-25 → 2026-06-29 (+4d) | 2026-06-25 → 2026-06-29 (+4d) |  |  | 8d → 6d |  |
| 247 | Atendimento de comentários | 2026-06-26 → 2026-06-30 (+4d) | 2026-06-26 → 2026-06-30 (+4d) |  |  | 8d → 6d |  |
| 248 | Aprovação | 2026-06-29 → 2026-07-01 (+2d) | 2026-06-29 → 2026-07-01 (+2d) |  |  | 8d → 6d |  |
| 254 | **AG-F0009-0306-MB-S-00001** | 2026-06-22 → 2026-06-24 (+2d) | 2026-06-30 → 2026-07-02 (+2d) |  |  | 7d → 5d |  |
| 255 | Emissão inicial | 2026-06-22 → 2026-06-24 (+2d) | 2026-06-25 → 2026-06-29 (+4d) |  |  | 7d → 5d |  |
| 256 | Análise Tecnored | 2026-06-26 → 2026-06-30 (+4d) | 2026-06-26 → 2026-06-30 (+4d) |  |  | 7d → 5d |  |
| 257 | Atendimento de comentários | 2026-06-29 → 2026-07-01 (+2d) | 2026-06-29 → 2026-07-01 (+2d) |  |  | 7d → 5d |  |
| 258 | Aprovação | 2026-06-30 → 2026-07-02 (+2d) | 2026-06-30 → 2026-07-02 (+2d) |  |  | 7d → 5d |  |
| 259 | **AG-F0009-0306-MB-S-00002** | 2026-06-22 → 2026-06-24 (+2d) | 2026-06-30 → 2026-07-02 (+2d) |  |  | 7d → 5d |  |
| 260 | Emissão inicial | 2026-06-22 → 2026-06-24 (+2d) | 2026-06-25 → 2026-06-29 (+4d) |  |  | 7d → 5d |  |
| 261 | Análise Tecnored | 2026-06-26 → 2026-06-30 (+4d) | 2026-06-26 → 2026-06-30 (+4d) |  |  | 7d → 5d |  |

| ID | Task | Start | Finish | Complete | Total float |
| --- | --- | --- | --- | --- | --- |
| 262 | Atendimento de comentários | 2026-06-29 → 2026-07-01 (+2d) | 2026-06-29 → 2026-07-01 (+2d) |  | 7d → 5d |
| 263 | Aprovação | 2026-06-30 → 2026-07-02 (+2d) | 2026-06-30 → 2026-07-02 (+2d) |  | 7d → 5d |
| 264 | **AG-F0009-0306-MB-S-00003** | 2026-06-22 → 2026-06-24 (+2d) | 2026-06-30 → 2026-07-02 (+2d) |  | 7d → 5d |
| 265 | Emissão inicial | 2026-06-22 → 2026-06-24 (+2d) | 2026-06-25 → 2026-06-29 (+4d) |  | 7d → 5d |
| 266 | Análise Tecnored | 2026-06-26 → 2026-06-30 (+4d) | 2026-06-26 → 2026-06-30 (+4d) |  | 7d → 5d |
| 267 | Atendimento de comentários | 2026-06-29 → 2026-07-01 (+2d) | 2026-06-29 → 2026-07-01 (+2d) |  | 7d → 5d |
| 268 | Aprovação | 2026-06-30 → 2026-07-02 (+2d) | 2026-06-30 → 2026-07-02 (+2d) |  | 7d → 5d |
| 269 | **AG-F0009-0306-MB-S-00004** | 2026-06-22 → 2026-06-24 (+2d) | 2026-06-30 → 2026-07-02 (+2d) |  | 7d → 5d |
| 270 | Emissão inicial | 2026-06-22 → 2026-06-24 (+2d) | 2026-06-25 → 2026-06-29 (+4d) |  | 7d → 5d |
| 271 | Análise Tecnored | 2026-06-26 → 2026-06-30 (+4d) | 2026-06-26 → 2026-06-30 (+4d) |  | 7d → 5d |
| 272 | Atendimento de comentários | 2026-06-29 → 2026-07-01 (+2d) | 2026-06-29 → 2026-07-01 (+2d) |  | 7d → 5d |
| 273 | Aprovação | 2026-06-30 → 2026-07-02 (+2d) | 2026-06-30 → 2026-07-02 (+2d) |  | 7d → 5d |
| 274 | **AG-F0009-0306-MB-S-00005** | 2026-06-22 → 2026-06-24 (+2d) | 2026-06-30 → 2026-07-02 (+2d) |  | 7d → 5d |
| 275 | Emissão inicial | 2026-06-22 → 2026-06-24 (+2d) | 2026-06-25 → 2026-06-29 (+4d) |  | 7d → 5d |
| 276 | Análise Tecnored | 2026-06-26 → 2026-06-30 (+4d) | 2026-06-26 → 2026-06-30 (+4d) |  | 7d → 5d |
| 277 | Atendimento de comentários | 2026-06-29 → 2026-07-01 (+2d) | 2026-06-29 → 2026-07-01 (+2d) |  | 7d → 5d |
| 278 | Aprovação | 2026-06-30 → 2026-07-02 (+2d) | 2026-06-30 → 2026-07-02 (+2d) |  | 7d → 5d |
| 279 | **PL-F0009-0306-MB-S-00001** | 2026-06-22 → 2026-06-24 (+2d) | 2026-06-30 → 2026-07-02 (+2d) |  | 7d → 5d |
| 280 | Emissão inicial | 2026-06-22 → 2026-06-24 (+2d) | 2026-06-25 → 2026-06-29 (+4d) |  | 7d → 5d |
| 281 | Análise Tecnored | 2026-06-26 → 2026-06-30 (+4d) | 2026-06-26 → 2026-06-30 (+4d) |  | 7d → 5d |
| 282 | Atendimento de comentários | 2026-06-29 → 2026-07-01 (+2d) | 2026-06-29 → 2026-07-01 (+2d) |  | 7d → 5d |
| 283 | Aprovação | 2026-06-30 → 2026-07-02 (+2d) | 2026-06-30 → 2026-07-02 (+2d) |  | 7d → 5d |
| 284 | **Elétrica** |  |  | 21% → 20% |  |
| 360 | **AG-F0009-0306-MB-E-00002** | 2026-06-19 A → 2026-06-19 |  | 14% → 0% |  |
| 361 | Emissão inicial | 2026-06-19 A → 2026-06-19 |  | 25% → 0% |  |
| 365 | **AG-F0009-0306-MB-E-00003** | 2026-06-19 A → 2026-06-19 |  | 14% → 0% |  |
| 366 | Emissão inicial | 2026-06-19 A → 2026-06-19 |  | 25% → 0% |  |
| 395 | **Automação e instrumentação** |  |  | 40% → 24% |  |
| 466 | **DI-F0009-0306-MB-J-00001** | 2026-06-17 A → 2026-06-17 |  | 38% → 0% | 9d → 5d |
| 467 | Emissão inicial | 2026-06-17 A → 2026-06-17 |  | 75% → 0% |  |
| 491 | **FD-F0009-0306-MB-J-00001** | 2026-06-17 A → 2026-06-17 |  | 30% → 0% |  |
| 492 | Emissão inicial | 2026-06-17 A → 2026-06-17 |  | 43% → 0% |  |
| 496 | **FD-F0009-0306-MB-J-00002** | 2026-06-17 A → 2026-06-17 |  | 30% → 0% |  |
| 497 | Emissão inicial | 2026-06-17 A → 2026-06-17 |  | 43% → 0% |  |
| 501 | **FD-F0009-0306-MB-J-00003** | 2026-06-17 A → 2026-06-17 |  | 30% → 0% |  |
| 502 | Emissão inicial | 2026-06-17 A → 2026-06-17 |  | 43% → 0% |  |
| 506 | **FD-F0009-0306-MB-J-00004** | 2026-06-17 A → 2026-06-17 |  | 30% → 0% |  |
| 507 | Emissão inicial | 2026-06-17 A → 2026-06-17 |  | 43% → 0% |  |
| 511 | **FD-F0009-0306-MB-J-00005** | 2026-06-17 A → 2026-06-17 |  | 30% → 0% |  |
| 512 | Emissão inicial | 2026-06-17 A → 2026-06-17 |  | 43% → 0% |  |
| 516 | **FD-F0009-0306-MB-J-00006** | 2026-06-17 A → 2026-06-17 |  | 30% → 0% |  |
| 517 | Emissão inicial | 2026-06-17 A → 2026-06-17 |  | 43% → 0% |  |
| 521 | **FD-F0009-0306-MB-J-00007** | 2026-06-17 A → 2026-06-17 |  | 30% → 0% |  |
| 522 | Emissão inicial | 2026-06-17 A → 2026-06-17 |  | 43% → 0% |  |
| 526 | **FD-F0009-0306-MB-J-00008** | 2026-06-17 A → 2026-06-17 |  | 30% → 0% |  |
| 527 | Emissão inicial | 2026-06-17 A → 2026-06-17 |  | 43% → 0% |  |
| 531 | **FD-F0009-0306-MB-J-00009** | 2026-06-17 A → 2026-06-17 |  | 30% → 0% |  |
| 532 | Emissão inicial | 2026-06-17 A → 2026-06-17 |  | 43% → 0% |  |
| 536 | **FD-F0009-0306-MB-J-00010** | 2026-06-17 A → 2026-06-17 |  | 30% → 0% |  |
| 537 | Emissão inicial | 2026-06-17 A → 2026-06-17 |  | 43% → 0% |  |
| 541 | **FD-F0009-0306-MB-J-00011** | 2026-06-17 A → 2026-06-17 |  | 30% → 0% |  |
| 542 | Emissão inicial | 2026-06-17 A → 2026-06-17 |  | 43% → 0% |  |
| 546 | **FD-F0009-0306-MB-J-00012** | 2026-06-17 A → 2026-06-17 |  | 30% → 0% |  |
| 547 | Emissão inicial | 2026-06-17 A → 2026-06-17 |  | 43% → 0% |  |
| 551 | **FD-F0009-0306-MB-J-00013** | 2026-06-17 A → 2026-06-17 |  | 30% → 0% |  |
| 552 | Emissão inicial | 2026-06-17 A → 2026-06-17 |  | 43% → 0% |  |
| 556 | **FD-F0009-0306-MB-J-00014** | 2026-06-17 A → 2026-06-17 |  | 30% → 0% |  |
| 557 | Emissão inicial | 2026-06-17 A → 2026-06-17 |  | 43% → 0% |  |
| 561 | **FD-F0009-0306-MB-J-00015** | 2026-06-17 A → 2026-06-17 |  | 30% → 0% |  |
| 562 | Emissão inicial | 2026-06-17 A → 2026-06-17 |  | 43% → 0% |  |
| 566 | **FD-F0009-0306-MB-J-00016** | 2026-06-17 A → 2026-06-17 |  | 30% → 0% |  |
| 567 | Emissão inicial | 2026-06-17 A → 2026-06-17 |  | 43% → 0% |  |
| 581 | **DT-F0009-0306-MB-J-00001** | 2026-06-19 A → 2026-06-19 |  | 13% → 0% |  |
| 582 | Emissão inicial | 2026-06-19 A → 2026-06-19 |  | 25% → 0% |  |

## Version 9 (data date 2026-06-24, saved 2026-06-24, file CR-F0009-0306-MB-F-00001 24062026_C2-BRSPL01S-00ZBY3.mpp)

Note of the change: Primeira versao dashboard

Last finish stays 2026-07-15. Complete tasks 86 → 77.

Changed:

| ID | Task | Start | Finish | Duration | Complete | Total float |
| --- | --- | --- | --- | --- | --- | --- |
| 1 | **F0009 - Programa Marabá** |  |  |  | 27% → 23% |  |
| 2 | **Área 0306 - Sopradores** |  |  |  | 27% → 23% |  |
| 284 | **Elétrica** |  |  |  | 20% → 21% |  |
| 395 | **Automação e instrumentação** | 2026-06-01 A → 2026-05-29 A (-3d) |  | 25d → 26d | 24% → 15% |  |
| 401 | **LI-F0009-0306-MB-J-00001** |  |  |  | 50% → 88% |  |
| 403 | Análise Tecnored | 2026-06-22 A | 2026-06-22 A |  | 0% → 100% | 10d → none |
| 404 | Atendimento de comentários | 2026-06-23 A | 2026-06-24 A |  | 0% → 100% | 10d → none |
| 431 | **FG-F0009-0306-MB-J-00001** | 2026-06-01 A → 2026-06-16 A (+15d) | 2026-06-18 A → 2026-06-26 (+8d) | 12d → 9d | 100% → 60% | none → 9d |
| 432 | Emissão inicial | 2026-06-01 A → 2026-06-16 A (+15d) | 2026-06-15 A → 2026-06-23 A (+8d) | 9d → 6d |  |  |
| 433 | Análise Tecnored | 2026-06-16 A → 2026-06-24 (+8d) | 2026-06-16 A → 2026-06-24 (+8d) |  | 100% → 0% | none → 9d |
| 434 | Atendimento de comentários | 2026-06-17 A → 2026-06-25 (+8d) | 2026-06-18 A → 2026-06-26 (+8d) |  | 100% → 0% | none → 9d |
| 435 | Aprovação | 2026-06-18 A → 2026-06-26 (+8d) | 2026-06-18 A → 2026-06-26 (+8d) |  | 100% → 0% | none → 9d |
| 436 | **FG-F0009-0306-MB-J-00002** | 2026-06-01 A → 2026-05-29 (-3d) | 2026-06-19 A → 2026-06-15 (-4d) | 13d → 10d | 100% → 0% | none → 18d |
| 437 | Emissão inicial | 2026-06-01 A → 2026-05-29 (-3d) | 2026-06-15 A → 2026-06-09 (-6d) | 9d → 6d | 100% → 0% | none → 18d |
| 438 | Análise Tecnored | 2026-06-16 A → 2026-06-10 (-6d) | 2026-06-16 A → 2026-06-10 (-6d) |  | 100% → 0% | none → 18d |
| 439 | Atendimento de comentários | 2026-06-17 A → 2026-06-11 (-6d) | 2026-06-18 A → 2026-06-12 (-6d) |  | 100% → 0% | none → 18d |
| 440 | Aprovação | 2026-06-19 A → 2026-06-15 (-4d) | 2026-06-19 A → 2026-06-15 (-4d) |  | 100% → 0% | none → 18d |
| 441 | **FG-F0009-0306-MB-J-00003** | 2026-06-01 A → 2026-06-03 (+2d) | 2026-06-19 A → 2026-06-18 (-1d) | 13d → 10d | 100% → 0% | none → 15d |
| 442 | Emissão inicial | 2026-06-01 A → 2026-06-03 (+2d) | 2026-06-15 A → 2026-06-12 (-3d) | 9d → 6d | 100% → 0% | none → 15d |
| 443 | Análise Tecnored | 2026-06-16 A → 2026-06-15 (-1d) | 2026-06-16 A → 2026-06-15 (-1d) |  | 100% → 0% | none → 15d |
| 444 | Atendimento de comentários | 2026-06-17 A → 2026-06-16 (-1d) | 2026-06-18 A → 2026-06-17 (-1d) |  | 100% → 0% | none → 15d |
| 445 | Aprovação | 2026-06-19 A → 2026-06-18 (-1d) | 2026-06-19 A → 2026-06-18 (-1d) |  | 100% → 0% | none → 15d |

## Version 10 (data date 2026-06-25, saved 2026-06-25, file CR-F0009-0306-MB-F-00001 25062026_C2-BRSPL01S-00ZBY3.mpp)

Note of the change: Primeira versao dashboard

Last finish 2026-07-15 → 2026-07-20 (+5d).

Added:

| ID | Task | Duration | Start | Finish | Predecessors | Constraint |
| --- | --- | --- | --- | --- | --- | --- |
| 60 | 0 | 1d | 2026-06-11 A | 2026-06-11 A | 59 |  |
| 133 | Emissão inicial | 3d | 2026-06-17 A | 2026-06-19 A | 113, 118 | finish no earlier than 2026-06-19 |
| 134 | Análise Tecnored | 1d | 2026-06-22 A | 2026-06-22 | 133 | finish no earlier than 2026-06-22 |
| 135 | Atendimento de comentários | 2d | 2026-06-23 | 2026-06-24 | 134 | finish no earlier than 2026-06-24 |
| 137 | **FD-F0009-0306-MB-M-00003** | 7d | 2026-06-17 A | 2026-06-25 |  |  |

Changed:

| ID | Task | Start | Finish | Duration | Complete | Total float | Predecessors | Other |
| --- | --- | --- | --- | --- | --- | --- | --- | --- |
| 1 | **F0009 - Programa Marabá** |  | 2026-07-09 → 2026-07-17 (+8d) | 52d → 57.55d | 23% → 35% |  |  |  |
| 2 | **Área 0306 - Sopradores** |  | 2026-07-09 → 2026-07-17 (+8d) | 52d → 57.55d | 23% → 35% |  |  |  |
| 4 | **Marcos** |  | 2026-06-23 → 2026-06-30 (+7d) | 24d → 29d |  |  |  |  |
| 5 | Critério de Projeto de Processo | 2026-06-23 A → 2026-06-30 A (+7d) | 2026-06-23 → 2026-06-30 (+7d) |  |  |  |  |  |
| 10 | Critério de Projeto de Estrutura metálica | 2026-06-23 → 2026-06-30 (+7d) | 2026-06-23 → 2026-06-30 (+7d) |  |  |  |  |  |
| 24 | **Coordenação** |  | 2026-06-30 → 2026-07-03 (+3d) | 45d → 48d |  | 7d → 9.55d |  |  |
| 25 | **RM-F0009-0306-MB-G-00001** | 2026-06-18 A → 2026-06-24 A (+6d) | 2026-06-25 → 2026-07-01 (+6d) |  |  | 10d → 11.55d |  |  |
| 26 | Emissão inicial | 2026-06-18 A → 2026-06-24 A (+6d) | 2026-06-22 → 2026-06-26 (+4d) |  |  | 8d → 9.55d |  |  |
| 27 | Análise Tecnored | 2026-06-23 → 2026-06-29 (+6d) | 2026-06-23 → 2026-06-29 (+6d) |  |  | 8d → 9.55d |  |  |
| 28 | Atendimento de comentários | 2026-06-24 → 2026-06-30 (+6d) | 2026-06-24 → 2026-06-30 (+6d) |  |  | 10d → 11.55d |  |  |
| 29 | Aprovação | 2026-06-25 → 2026-07-01 (+6d) | 2026-06-25 → 2026-07-01 (+6d) |  |  | 10d → 11.55d |  |  |
| 30 | **RM-F0009-0306-MB-G-00002** | 2026-06-30 → 2026-07-06 (+6d) | 2026-07-06 → 2026-07-10 (+4d) |  |  | 3d → 4.55d |  |  |
| 31 | Emissão inicial | 2026-06-30 → 2026-07-06 (+6d) | 2026-07-01 → 2026-07-07 (+6d) |  |  | 3d → 4.55d |  |  |
| 32 | Análise Tecnored | 2026-07-02 → 2026-07-08 (+6d) | 2026-07-02 → 2026-07-08 (+6d) |  |  | 3d → 4.55d |  |  |
| 33 | Atendimento de comentários | 2026-07-03 → 2026-07-09 (+6d) | 2026-07-03 → 2026-07-09 (+6d) |  |  | 3d → 4.55d |  |  |
| 34 | Aprovação | 2026-07-06 → 2026-07-10 (+4d) | 2026-07-06 → 2026-07-10 (+4d) |  |  | 3d → 4.55d |  |  |
| 35 | **RL-F0009-0306-MB-G-00001** | 2026-06-25 → 2026-06-30 (+5d) | 2026-06-30 → 2026-07-03 (+3d) |  |  | 7d → 9.55d |  |  |
| 36 | Emissão inicial | 2026-06-25 → 2026-06-30 (+5d) | 2026-06-25 → 2026-06-30 (+5d) |  |  | 7d → 9.55d |  |  |
| 37 | Análise Tecnored | 2026-06-26 → 2026-07-01 (+5d) | 2026-06-26 → 2026-07-01 (+5d) |  |  | 7d → 9.55d |  |  |
| 38 | Atendimento de comentários | 2026-06-29 → 2026-07-02 (+3d) | 2026-06-29 → 2026-07-02 (+3d) |  |  | 7d → 9.55d |  |  |
| 39 | Aprovação | 2026-06-30 → 2026-07-03 (+3d) | 2026-06-30 → 2026-07-03 (+3d) |  |  | 7d → 9.55d |  |  |
| 46 | **CP-F0009-0306-MB-P-00001** |  | 2026-06-29 → 2026-07-06 (+7d) | 38d → 43d |  | 8d → 8.55d |  |  |
| 48 | Análise Tecnored | 2026-06-24 → 2026-07-01 (+7d) | 2026-06-24 → 2026-07-01 (+7d) |  |  | 8d → 8.55d |  |  |
| 49 | Atendimento de comentários | 2026-06-25 → 2026-07-02 (+7d) | 2026-06-26 → 2026-07-03 (+7d) |  |  | 8d → 8.55d |  |  |
| 50 | Aprovação | 2026-06-29 → 2026-07-06 (+7d) | 2026-06-29 → 2026-07-06 (+7d) |  |  | 8d → 8.55d |  |  |
| 61 | **Mecânica** |  | 2026-07-02 → 2026-07-07 (+5d) | 26d → 29d | 52% → 53% | 5d → 7.55d |  |  |
| 82 | **AG-F0009-0306-MB-L-00001** | 2026-06-24 → 2026-06-29 (+5d) | 2026-07-02 → 2026-07-07 (+5d) |  |  | 5d → 7.55d |  |  |
| 83 | Emissão inicial | 2026-06-24 → 2026-06-29 (+5d) | 2026-06-29 → 2026-07-02 (+3d) |  |  | 5d → 7.55d |  |  |
| 84 | Análise Tecnored | 2026-06-30 → 2026-07-03 (+3d) | 2026-06-30 → 2026-07-03 (+3d) |  |  | 5d → 7.55d |  |  |
| 85 | Atendimento de comentários | 2026-07-01 → 2026-07-06 (+5d) | 2026-07-01 → 2026-07-06 (+5d) |  |  | 5d → 7.55d |  |  |
| 86 | Aprovação | 2026-07-02 → 2026-07-07 (+5d) | 2026-07-02 → 2026-07-07 (+5d) |  |  | 5d → 7.55d |  |  |
| 87 | **AG-F0009-0306-MB-L-00002** | 2026-06-24 → 2026-06-29 (+5d) | 2026-07-02 → 2026-07-07 (+5d) |  |  | 5d → 7.55d |  |  |
| 88 | Emissão inicial | 2026-06-24 → 2026-06-29 (+5d) | 2026-06-29 → 2026-07-02 (+3d) |  |  | 5d → 7.55d |  |  |
| 89 | Análise Tecnored | 2026-06-30 → 2026-07-03 (+3d) | 2026-06-30 → 2026-07-03 (+3d) |  |  | 5d → 7.55d |  |  |
| 90 | Atendimento de comentários | 2026-07-01 → 2026-07-06 (+5d) | 2026-07-01 → 2026-07-06 (+5d) |  |  | 5d → 7.55d |  |  |
| 91 | Aprovação | 2026-07-02 → 2026-07-07 (+5d) | 2026-07-02 → 2026-07-07 (+5d) |  |  | 5d → 7.55d |  |  |
| 92 | **AG-F0009-0306-MB-L-00003** | 2026-06-24 → 2026-06-29 (+5d) | 2026-07-02 → 2026-07-07 (+5d) |  |  | 5d → 7.55d |  |  |
| 93 | Emissão inicial | 2026-06-24 → 2026-06-29 (+5d) | 2026-06-29 → 2026-07-02 (+3d) |  |  | 5d → 7.55d |  |  |
| 94 | Análise Tecnored | 2026-06-30 → 2026-07-03 (+3d) | 2026-06-30 → 2026-07-03 (+3d) |  |  | 5d → 7.55d |  |  |
| 95 | Atendimento de comentários | 2026-07-01 → 2026-07-06 (+5d) | 2026-07-01 → 2026-07-06 (+5d) |  |  | 5d → 7.55d |  |  |
| 96 | Aprovação | 2026-07-02 → 2026-07-07 (+5d) | 2026-07-02 → 2026-07-07 (+5d) |  |  | 5d → 7.55d |  |  |
| 97 | **AG-F0009-0306-MB-L-00004** | 2026-06-24 → 2026-06-29 (+5d) | 2026-07-02 → 2026-07-07 (+5d) |  |  | 5d → 7.55d |  |  |
| 98 | Emissão inicial | 2026-06-24 → 2026-06-29 (+5d) | 2026-06-29 → 2026-07-02 (+3d) |  |  | 5d → 7.55d |  |  |
| 99 | Análise Tecnored | 2026-06-30 → 2026-07-03 (+3d) | 2026-06-30 → 2026-07-03 (+3d) |  |  | 5d → 7.55d |  |  |
| 100 | Atendimento de comentários | 2026-07-01 → 2026-07-06 (+5d) | 2026-07-01 → 2026-07-06 (+5d) |  |  | 5d → 7.55d |  |  |
| 101 | Aprovação | 2026-07-02 → 2026-07-07 (+5d) | 2026-07-02 → 2026-07-07 (+5d) |  |  | 5d → 7.55d |  |  |
| 127 | **FD-F0009-0306-MB-M-00001** |  |  |  | 43% → 50% | 10d → 15.55d |  |  |
| 129 | Análise Tecnored | 2026-06-22 A |  |  | 0% → 50% | 10d → 15.55d |  |  |
| 132 | **FD-F0009-0306-MB-M-00002** |  |  |  | 43% → 50% | 10d → 15.55d |  |  |
| 136 | Aprovação | 2026-06-11 A → 2026-06-25 (+14d) | 2026-06-11 A → 2026-06-25 (+14d) |  | 100% → 0% | none → 15.55d | 59 → 135 | constraint none → finish no earlier than 2026-06-25; baseline start 2026-06-11 → 2026-06-18; baseline finish 2026-06-11 → 2026-06-18 |
| 139 | Análise Tecnored | 2026-06-22 A |  |  | 0% → 50% | 10d → 15.55d |  |  |
| 142 | **Tubulação/Utilidades** |  | 2026-07-06 → 2026-07-03 (-3d) | 21d → 20d | 18% → 36% | 3d → 9.55d |  |  |
| 148 | **MD-F0009-0306-MB-U-00001** | 2026-07-07 → 2026-07-02 (-5d) | 2026-07-15 → 2026-07-10 (-5d) |  |  | -4d → 4.55d |  |  |
| 149 | Emissão inicial | 2026-07-07 → 2026-07-02 (-5d) | 2026-07-09 → 2026-07-06 (-3d) |  |  | -4d → 4.55d |  |  |
| 150 | Análise Tecnored | 2026-07-10 → 2026-07-07 (-3d) | 2026-07-10 → 2026-07-07 (-3d) |  |  | -4d → 4.55d |  |  |
| 151 | Atendimento de comentários | 2026-07-13 → 2026-07-08 (-5d) | 2026-07-14 → 2026-07-09 (-5d) |  |  | -4d → 4.55d |  |  |
| 152 | Aprovação | 2026-07-15 → 2026-07-10 (-5d) | 2026-07-15 → 2026-07-10 (-5d) |  |  | -4d → 4.55d |  |  |
| 173 | **PQ-F0009-0306-MB-T-00001** | 2026-06-24 → 2026-06-22 A (-2d) | 2026-07-02 → 2026-07-01 (-1d) | 7d → 8d | 0% → 33% | 5d → 11.55d |  |  |
| 174 | Emissão inicial | 2026-06-24 → 2026-06-22 A (-2d) | 2026-06-26 → 2026-06-25 A (-1d) | 3d → 2d | 0% → 100% | 5d → none |  | constraint finish no earlier than 2026-06-26 → finish no earlier than 2026-06-25 |
| 175 | Análise Tecnored | 2026-06-29 → 2026-06-26 (-3d) | 2026-06-29 → 2026-06-26 (-3d) |  |  | 5d → 11.55d |  |  |
| 176 | Atendimento de comentários | 2026-06-30 → 2026-06-29 (-1d) | 2026-07-01 → 2026-06-30 (-1d) |  |  | 5d → 11.55d |  |  |
| 177 | Aprovação | 2026-07-02 → 2026-07-01 (-1d) | 2026-07-02 → 2026-07-01 (-1d) |  |  | 5d → 11.55d |  |  |
| 193 | **AG-F0009-0306-MB-T-00001** | 2026-06-26 → 2026-06-23 A (-3d) | 2026-07-06 → 2026-07-01 (-5d) |  | 0% → 36% | 3d → 11.55d |  |  |
| 194 | Emissão inicial | 2026-06-26 → 2026-06-23 A (-3d) | 2026-06-30 → 2026-06-25 (-5d) |  | 0% → 85% | 3d → 11.55d | 157 → 155 |  |
| 195 | Análise Tecnored | 2026-07-01 → 2026-06-26 (-5d) | 2026-07-01 → 2026-06-26 (-5d) |  |  | 3d → 11.55d |  |  |
| 196 | Atendimento de comentários | 2026-07-02 → 2026-06-29 (-3d) | 2026-07-03 → 2026-06-30 (-3d) |  |  | 3d → 11.55d |  |  |
| 197 | Aprovação | 2026-07-06 → 2026-07-01 (-5d) | 2026-07-06 → 2026-07-01 (-5d) |  |  | 3d → 11.55d |  |  |
| 198 | **AG-F0009-0306-MB-T-00002** | 2026-06-26 → 2026-06-23 A (-3d) | 2026-07-06 → 2026-07-01 (-5d) |  | 0% → 36% | 3d → 11.55d |  |  |
| 199 | Emissão inicial | 2026-06-26 → 2026-06-23 A (-3d) | 2026-06-30 → 2026-06-25 (-5d) |  | 0% → 85% | 3d → 11.55d | 157 → 155 |  |
| 200 | Análise Tecnored | 2026-07-01 → 2026-06-26 (-5d) | 2026-07-01 → 2026-06-26 (-5d) |  |  | 3d → 11.55d |  |  |

| ID | Task | Start | Finish | Duration | Complete | Total float | Predecessors |
| --- | --- | --- | --- | --- | --- | --- | --- |
| 201 | Atendimento de comentários | 2026-07-02 → 2026-06-29 (-3d) | 2026-07-03 → 2026-06-30 (-3d) |  |  | 3d → 11.55d |  |
| 202 | Aprovação | 2026-07-06 → 2026-07-01 (-5d) | 2026-07-06 → 2026-07-01 (-5d) |  |  | 3d → 11.55d |  |
| 203 | **AG-F0009-0306-MB-T-00003** | 2026-06-26 → 2026-06-23 A (-3d) | 2026-07-06 → 2026-07-01 (-5d) |  | 0% → 36% | 3d → 11.55d |  |
| 204 | Emissão inicial | 2026-06-26 → 2026-06-23 A (-3d) | 2026-06-30 → 2026-06-25 (-5d) |  | 0% → 85% | 3d → 11.55d | 157 → 155 |
| 205 | Análise Tecnored | 2026-07-01 → 2026-06-26 (-5d) | 2026-07-01 → 2026-06-26 (-5d) |  |  | 3d → 11.55d |  |
| 206 | Atendimento de comentários | 2026-07-02 → 2026-06-29 (-3d) | 2026-07-03 → 2026-06-30 (-3d) |  |  | 3d → 11.55d |  |
| 207 | Aprovação | 2026-07-06 → 2026-07-01 (-5d) | 2026-07-06 → 2026-07-01 (-5d) |  |  | 3d → 11.55d |  |
| 233 | **Estrutura metálica** |  | 2026-07-06 → 2026-07-09 (+3d) | 13d → 16d | 3% → 6% | 3d → 5.55d |  |
| 234 | **CP-F0009-0306-MB-S-00001** | 2026-06-24 → 2026-07-01 (+7d) | 2026-07-09 → 2026-07-16 (+7d) |  |  | 0d → 0.55d |  |
| 235 | Emissão inicial | 2026-06-24 → 2026-07-01 (+7d) | 2026-07-03 → 2026-07-10 (+7d) |  |  | 0d → 0.55d |  |
| 236 | Análise Tecnored | 2026-07-06 → 2026-07-13 (+7d) | 2026-07-06 → 2026-07-13 (+7d) |  |  | 0d → 0.55d |  |
| 237 | Atendimento de comentários | 2026-07-07 → 2026-07-14 (+7d) | 2026-07-08 → 2026-07-15 (+7d) |  |  | 0d → 0.55d |  |
| 238 | Aprovação | 2026-07-09 → 2026-07-16 (+7d) | 2026-07-09 → 2026-07-16 (+7d) |  |  | 0d → 0.55d |  |
| 239 | **ML-F0009-0306-MB-S-00001** | 2026-06-19 → 2026-06-24 A (+5d) | 2026-06-26 → 2026-07-01 (+5d) |  | 0% → 35% | 3d → 11.55d |  |
| 240 | Emissão inicial | 2026-06-19 → 2026-06-24 A (+5d) | 2026-06-23 → 2026-06-26 (+3d) |  | 0% → 70% | 3d → 0d |  |
| 241 | Análise Tecnored | 2026-06-24 → 2026-06-29 (+5d) | 2026-06-24 → 2026-06-29 (+5d) |  |  | 9d → 0d |  |
| 242 | Atendimento de comentários | 2026-06-25 → 2026-06-30 (+5d) | 2026-06-25 → 2026-06-30 (+5d) |  |  | 9d → 11.55d |  |
| 243 | Aprovação | 2026-06-26 → 2026-07-01 (+5d) | 2026-06-26 → 2026-07-01 (+5d) |  |  | 9d → 11.55d |  |
| 244 | **PQ-F0009-0306-MB-S-00001** | 2026-06-29 → 2026-07-02 (+3d) | 2026-07-06 → 2026-07-09 (+3d) |  |  | 3d → 5.55d |  |
| 245 | Emissão inicial | 2026-06-29 → 2026-07-02 (+3d) | 2026-07-01 → 2026-07-06 (+5d) |  |  | 3d → 5.55d |  |
| 246 | Análise Tecnored | 2026-07-02 → 2026-07-07 (+5d) | 2026-07-02 → 2026-07-07 (+5d) |  |  | 3d → 5.55d |  |
| 247 | Atendimento de comentários | 2026-07-03 → 2026-07-08 (+5d) | 2026-07-03 → 2026-07-08 (+5d) |  |  | 3d → 5.55d |  |
| 248 | Aprovação | 2026-07-06 → 2026-07-09 (+3d) | 2026-07-06 → 2026-07-09 (+3d) |  |  | 3d → 5.55d |  |
| 249 | **LM-F0009-0306-MB-S-00001** | 2026-06-24 → 2026-06-29 (+5d) | 2026-07-01 → 2026-07-06 (+5d) |  |  | 3d → 5.55d |  |
| 250 | Emissão inicial | 2026-06-24 → 2026-06-29 (+5d) | 2026-06-26 → 2026-07-01 (+5d) |  |  | 3d → 5.55d |  |
| 251 | Análise Tecnored | 2026-06-29 → 2026-07-02 (+3d) | 2026-06-29 → 2026-07-02 (+3d) |  |  | 6d → 8.55d |  |
| 252 | Atendimento de comentários | 2026-06-30 → 2026-07-03 (+3d) | 2026-06-30 → 2026-07-03 (+3d) |  |  | 6d → 8.55d |  |
| 253 | Aprovação | 2026-07-01 → 2026-07-06 (+5d) | 2026-07-01 → 2026-07-06 (+5d) |  |  | 6d → 8.55d |  |
| 259 | **AG-F0009-0306-MB-S-00001** | 2026-06-24 → 2026-06-29 (+5d) | 2026-07-02 → 2026-07-07 (+5d) |  |  | 5d → 7.55d |  |
| 260 | Emissão inicial | 2026-06-24 → 2026-06-29 (+5d) | 2026-06-29 → 2026-07-02 (+3d) |  |  | 5d → 7.55d |  |
| 261 | Análise Tecnored | 2026-06-30 → 2026-07-03 (+3d) | 2026-06-30 → 2026-07-03 (+3d) |  |  | 5d → 7.55d |  |
| 262 | Atendimento de comentários | 2026-07-01 → 2026-07-06 (+5d) | 2026-07-01 → 2026-07-06 (+5d) |  |  | 5d → 7.55d |  |
| 263 | Aprovação | 2026-07-02 → 2026-07-07 (+5d) | 2026-07-02 → 2026-07-07 (+5d) |  |  | 5d → 7.55d |  |
| 264 | **AG-F0009-0306-MB-S-00002** | 2026-06-24 → 2026-06-29 (+5d) | 2026-07-02 → 2026-07-07 (+5d) |  |  | 5d → 7.55d |  |
| 265 | Emissão inicial | 2026-06-24 → 2026-06-29 (+5d) | 2026-06-29 → 2026-07-02 (+3d) |  |  | 5d → 7.55d |  |
| 266 | Análise Tecnored | 2026-06-30 → 2026-07-03 (+3d) | 2026-06-30 → 2026-07-03 (+3d) |  |  | 5d → 7.55d |  |
| 267 | Atendimento de comentários | 2026-07-01 → 2026-07-06 (+5d) | 2026-07-01 → 2026-07-06 (+5d) |  |  | 5d → 7.55d |  |
| 268 | Aprovação | 2026-07-02 → 2026-07-07 (+5d) | 2026-07-02 → 2026-07-07 (+5d) |  |  | 5d → 7.55d |  |
| 269 | **AG-F0009-0306-MB-S-00003** | 2026-06-24 → 2026-06-29 (+5d) | 2026-07-02 → 2026-07-07 (+5d) |  |  | 5d → 7.55d |  |
| 270 | Emissão inicial | 2026-06-24 → 2026-06-29 (+5d) | 2026-06-29 → 2026-07-02 (+3d) |  |  | 5d → 7.55d |  |
| 271 | Análise Tecnored | 2026-06-30 → 2026-07-03 (+3d) | 2026-06-30 → 2026-07-03 (+3d) |  |  | 5d → 7.55d |  |
| 272 | Atendimento de comentários | 2026-07-01 → 2026-07-06 (+5d) | 2026-07-01 → 2026-07-06 (+5d) |  |  | 5d → 7.55d |  |
| 273 | Aprovação | 2026-07-02 → 2026-07-07 (+5d) | 2026-07-02 → 2026-07-07 (+5d) |  |  | 5d → 7.55d |  |
| 274 | **AG-F0009-0306-MB-S-00004** | 2026-06-24 → 2026-06-29 (+5d) | 2026-07-02 → 2026-07-07 (+5d) |  |  | 5d → 7.55d |  |
| 275 | Emissão inicial | 2026-06-24 → 2026-06-29 (+5d) | 2026-06-29 → 2026-07-02 (+3d) |  |  | 5d → 7.55d |  |
| 276 | Análise Tecnored | 2026-06-30 → 2026-07-03 (+3d) | 2026-06-30 → 2026-07-03 (+3d) |  |  | 5d → 7.55d |  |
| 277 | Atendimento de comentários | 2026-07-01 → 2026-07-06 (+5d) | 2026-07-01 → 2026-07-06 (+5d) |  |  | 5d → 7.55d |  |
| 278 | Aprovação | 2026-07-02 → 2026-07-07 (+5d) | 2026-07-02 → 2026-07-07 (+5d) |  |  | 5d → 7.55d |  |
| 279 | **AG-F0009-0306-MB-S-00005** | 2026-06-24 → 2026-06-29 (+5d) | 2026-07-02 → 2026-07-07 (+5d) |  |  | 5d → 7.55d |  |
| 280 | Emissão inicial | 2026-06-24 → 2026-06-29 (+5d) | 2026-06-29 → 2026-07-02 (+3d) |  |  | 5d → 7.55d |  |
| 281 | Análise Tecnored | 2026-06-30 → 2026-07-03 (+3d) | 2026-06-30 → 2026-07-03 (+3d) |  |  | 5d → 7.55d |  |
| 282 | Atendimento de comentários | 2026-07-01 → 2026-07-06 (+5d) | 2026-07-01 → 2026-07-06 (+5d) |  |  | 5d → 7.55d |  |
| 283 | Aprovação | 2026-07-02 → 2026-07-07 (+5d) | 2026-07-02 → 2026-07-07 (+5d) |  |  | 5d → 7.55d |  |
| 284 | **PL-F0009-0306-MB-S-00001** | 2026-06-24 → 2026-06-29 (+5d) | 2026-07-02 → 2026-07-07 (+5d) |  |  | 5d → 7.55d |  |
| 285 | Emissão inicial | 2026-06-24 → 2026-06-29 (+5d) | 2026-06-29 → 2026-07-02 (+3d) |  |  | 5d → 7.55d |  |
| 286 | Análise Tecnored | 2026-06-30 → 2026-07-03 (+3d) | 2026-06-30 → 2026-07-03 (+3d) |  |  | 5d → 7.55d |  |
| 287 | Atendimento de comentários | 2026-07-01 → 2026-07-06 (+5d) | 2026-07-01 → 2026-07-06 (+5d) |  |  | 5d → 7.55d |  |
| 288 | Aprovação | 2026-07-02 → 2026-07-07 (+5d) | 2026-07-02 → 2026-07-07 (+5d) |  |  | 5d → 7.55d |  |
| 289 | **Elétrica** |  | 2026-07-09 → 2026-07-17 (+8d) | 29d → 34.55d | 21% → 16% |  |  |
| 295 | **ML-F0009-0306-MB-E-00001** | 2026-06-22 A | 2026-06-29 → 2026-07-07 (+8d) | 6d → 11.55d | 0% → 8% | 0d → 8d |  |
| 296 | Emissão inicial | 2026-06-22 A | 2026-06-24 → 2026-07-02 (+8d) |  | 0% → 15% |  | 125 → 125, 241 |
| 297 | Análise Tecnored | 2026-06-25 → 2026-07-02 (+7d) | 2026-06-25 → 2026-07-03 (+8d) |  |  |  |  |
| 298 | Atendimento de comentários | 2026-06-26 → 2026-07-03 (+7d) | 2026-06-26 → 2026-07-06 (+10d) |  |  |  |  |
| 299 | Aprovação | 2026-06-29 → 2026-07-06 (+7d) | 2026-06-29 → 2026-07-07 (+8d) |  |  |  |  |
| 300 | **RL-F0009-0306-MB-E-00001** |  | 2026-06-11 A → 2026-06-11 |  | 100% → 86% | none → 25.8d |  |
| 304 | Aprovação | 2026-06-10 A → 2026-06-10 | 2026-06-11 A → 2026-06-11 |  | 100% → 0% | none → 25.8d |  |
| 315 | **LM-F0009-0306-MB-E-00001** | 2026-07-02 → 2026-07-09 (+7d) | 2026-07-06 → 2026-07-14 (+8d) |  |  |  |  |
| 316 | Emissão inicial | 2026-07-02 → 2026-07-09 (+7d) | 2026-07-02 → 2026-07-10 (+8d) |  |  |  |  |
| 317 | Análise Tecnored | 2026-07-03 → 2026-07-10 (+7d) | 2026-07-03 → 2026-07-13 (+10d) |  |  |  |  |
| 318 | Atendimento de comentários | 2026-07-06 → 2026-07-13 (+7d) | 2026-07-06 → 2026-07-14 (+8d) |  |  |  |  |

| ID | Task | Start | Finish | Duration | Complete | Total float | Other |
| --- | --- | --- | --- | --- | --- | --- | --- |
| 319 | Aprovação | 2026-07-06 → 2026-07-13 (+7d) | 2026-07-06 → 2026-07-14 (+8d) |  |  |  |  |
| 320 | **PQ-F0009-0306-MB-E-00001** | 2026-07-03 → 2026-07-10 (+7d) | 2026-07-09 → 2026-07-17 (+8d) |  |  |  |  |
| 321 | Emissão inicial | 2026-07-03 → 2026-07-10 (+7d) | 2026-07-07 → 2026-07-15 (+8d) |  |  |  |  |
| 322 | Análise Tecnored | 2026-07-08 → 2026-07-15 (+7d) | 2026-07-08 → 2026-07-16 (+8d) |  |  |  |  |
| 323 | Atendimento de comentários | 2026-07-09 → 2026-07-16 (+7d) | 2026-07-09 → 2026-07-17 (+8d) |  |  |  |  |
| 324 | Aprovação | 2026-07-09 → 2026-07-16 (+7d) | 2026-07-09 → 2026-07-17 (+8d) |  |  |  |  |
| 325 | **MD-F0009-0306-MB-E-00001** | 2026-07-03 → 2026-07-10 (+7d) | 2026-07-10 → 2026-07-20 (+10d) |  |  |  |  |
| 326 | Emissão inicial | 2026-07-03 → 2026-07-10 (+7d) | 2026-07-06 → 2026-07-14 (+8d) |  |  |  |  |
| 327 | Análise Tecnored | 2026-07-07 → 2026-07-14 (+7d) | 2026-07-07 → 2026-07-15 (+8d) |  |  |  |  |
| 328 | Atendimento de comentários | 2026-07-08 → 2026-07-15 (+7d) | 2026-07-09 → 2026-07-17 (+8d) |  |  |  |  |
| 329 | Aprovação | 2026-07-10 → 2026-07-17 (+7d) | 2026-07-10 → 2026-07-20 (+10d) |  |  |  |  |
| 340 | **AG-F0009-0306-MB-E-00001** | 2026-06-25 → 2026-07-02 (+7d) | 2026-07-02 → 2026-07-10 (+8d) |  |  |  |  |
| 341 | Emissão inicial | 2026-06-25 → 2026-07-02 (+7d) | 2026-06-30 → 2026-07-08 (+8d) |  |  |  |  |
| 342 | Análise Tecnored | 2026-07-01 → 2026-07-08 (+7d) | 2026-07-01 → 2026-07-09 (+8d) |  |  |  |  |
| 343 | Atendimento de comentários | 2026-07-02 → 2026-07-09 (+7d) | 2026-07-02 → 2026-07-10 (+8d) |  |  |  |  |
| 344 | Aprovação | 2026-07-02 → 2026-07-09 (+7d) | 2026-07-02 → 2026-07-10 (+8d) |  |  |  |  |
| 345 | **DU-F0009-0306-MB-E-00001** | 2026-06-17 A → 2026-06-23 A (+6d) | 2026-06-24 → 2026-06-30 (+6d) |  |  | 11d → 12.55d |  |
| 346 | Emissão inicial | 2026-06-17 A → 2026-06-23 A (+6d) | 2026-06-19 A → 2026-06-25 A (+6d) |  |  |  |  |
| 347 | Análise Tecnored | 2026-06-22 → 2026-06-26 (+4d) | 2026-06-22 → 2026-06-26 (+4d) |  |  | 11d → 12.55d |  |
| 348 | Atendimento de comentários | 2026-06-23 → 2026-06-29 (+6d) | 2026-06-23 → 2026-06-29 (+6d) |  |  | 11d → 12.55d |  |
| 349 | Aprovação | 2026-06-24 → 2026-06-30 (+6d) | 2026-06-24 → 2026-06-30 (+6d) |  |  | 11d → 12.55d |  |
| 350 | **DU-F0009-0306-MB-E-00002** | 2026-06-17 A → 2026-06-17 | 2026-06-24 → 2026-07-01 (+7d) | 6d → 11d | 50% → 0% | 11d → 11.55d |  |
| 351 | Emissão inicial | 2026-06-17 A → 2026-06-17 | 2026-06-19 A → 2026-06-19 |  | 100% → 0% | none → 16.55d |  |
| 352 | Análise Tecnored | 2026-06-22 → 2026-06-29 (+7d) | 2026-06-22 → 2026-06-29 (+7d) |  |  | 11d → 11.55d | constraint none → start no earlier than 2026-06-29 |
| 353 | Atendimento de comentários | 2026-06-23 → 2026-06-30 (+7d) | 2026-06-23 → 2026-06-30 (+7d) |  |  | 11d → 11.55d | constraint none → start no earlier than 2026-06-30 |
| 354 | Aprovação | 2026-06-24 → 2026-07-01 (+7d) | 2026-06-24 → 2026-07-01 (+7d) |  |  | 11d → 11.55d | constraint none → start no earlier than 2026-07-01 |
| 355 | **DU-F0009-0306-MB-E-00003** | 2026-06-17 A → 2026-06-17 | 2026-06-24 → 2026-07-01 (+7d) | 6d → 11d | 50% → 0% | 11d → 11.55d |  |
| 356 | Emissão inicial | 2026-06-17 A → 2026-06-17 | 2026-06-19 A → 2026-06-19 |  | 100% → 0% | none → 16.55d |  |
| 357 | Análise Tecnored | 2026-06-22 → 2026-06-29 (+7d) | 2026-06-22 → 2026-06-29 (+7d) |  |  | 11d → 11.55d | constraint none → start no earlier than 2026-06-29 |
| 358 | Atendimento de comentários | 2026-06-23 → 2026-06-30 (+7d) | 2026-06-23 → 2026-06-30 (+7d) |  |  | 11d → 11.55d | constraint none → start no earlier than 2026-06-30 |
| 359 | Aprovação | 2026-06-24 → 2026-07-01 (+7d) | 2026-06-24 → 2026-07-01 (+7d) |  |  | 11d → 11.55d | constraint none → start no earlier than 2026-07-01 |
| 360 | **DU-F0009-0306-MB-E-00004** | 2026-06-17 A → 2026-06-17 | 2026-06-24 → 2026-07-01 (+7d) | 6d → 11d | 50% → 0% | 11d → 11.55d |  |
| 361 | Emissão inicial | 2026-06-17 A → 2026-06-17 | 2026-06-19 A → 2026-06-19 |  | 100% → 0% | none → 16.55d |  |
| 362 | Análise Tecnored | 2026-06-22 → 2026-06-29 (+7d) | 2026-06-22 → 2026-06-29 (+7d) |  |  | 11d → 11.55d | constraint none → start no earlier than 2026-06-29 |
| 363 | Atendimento de comentários | 2026-06-23 → 2026-06-30 (+7d) | 2026-06-23 → 2026-06-30 (+7d) |  |  | 11d → 11.55d | constraint none → start no earlier than 2026-06-30 |
| 364 | Aprovação | 2026-06-24 → 2026-07-01 (+7d) | 2026-06-24 → 2026-07-01 (+7d) |  |  | 11d → 11.55d | constraint none → start no earlier than 2026-07-01 |
| 365 | **AG-F0009-0306-MB-E-00002** | 2026-06-19 → 2026-06-24 (+5d) | 2026-06-26 → 2026-07-01 (+5d) |  |  | 9d → 11.55d |  |
| 366 | Emissão inicial | 2026-06-19 → 2026-06-24 (+5d) | 2026-06-24 → 2026-06-29 (+5d) |  |  | 9d → 11.55d |  |
| 367 | Análise Tecnored | 2026-06-25 → 2026-06-30 (+5d) | 2026-06-25 → 2026-06-30 (+5d) |  |  | 9d → 11.55d |  |
| 368 | Atendimento de comentários | 2026-06-26 → 2026-07-01 (+5d) | 2026-06-26 → 2026-07-01 (+5d) |  |  | 9d → 11.55d |  |
| 369 | Aprovação | 2026-06-26 → 2026-07-01 (+5d) | 2026-06-26 → 2026-07-01 (+5d) |  |  | 9d → 11.55d |  |
| 370 | **AG-F0009-0306-MB-E-00003** | 2026-06-19 → 2026-06-24 (+5d) | 2026-06-26 → 2026-07-01 (+5d) |  |  | 9d → 11.55d |  |
| 371 | Emissão inicial | 2026-06-19 → 2026-06-24 (+5d) | 2026-06-24 → 2026-06-29 (+5d) |  |  | 9d → 11.55d |  |
| 372 | Análise Tecnored | 2026-06-25 → 2026-06-30 (+5d) | 2026-06-25 → 2026-06-30 (+5d) |  |  | 9d → 11.55d |  |
| 373 | Atendimento de comentários | 2026-06-26 → 2026-07-01 (+5d) | 2026-06-26 → 2026-07-01 (+5d) |  |  | 9d → 11.55d |  |
| 374 | Aprovação | 2026-06-26 → 2026-07-01 (+5d) | 2026-06-26 → 2026-07-01 (+5d) |  |  | 9d → 11.55d |  |
| 375 | **FD-F0009-0306-MB-E-00001** | 2026-06-22 A |  |  | 0% → 57% | 8d → 13.55d |  |
| 376 | Emissão inicial | 2026-06-22 A | 2026-06-25 A |  | 0% → 100% | 8d → none |  |
| 380 | **FD-F0009-0306-MB-E-00002** | 2026-06-22 → 2026-06-24 (+2d) | 2026-06-29 → 2026-07-01 (+2d) |  |  | 8d → 11.55d |  |
| 381 | Emissão inicial | 2026-06-22 → 2026-06-24 (+2d) | 2026-06-25 → 2026-06-29 (+4d) |  |  | 8d → 11.55d | constraint start no earlier than 2026-06-22 → start no earlier than 2026-06-23 |
| 382 | Análise Tecnored | 2026-06-26 → 2026-06-30 (+4d) | 2026-06-26 → 2026-06-30 (+4d) |  |  | 8d → 11.55d |  |
| 383 | Atendimento de comentários | 2026-06-29 → 2026-07-01 (+2d) | 2026-06-29 → 2026-07-01 (+2d) |  |  | 8d → 11.55d |  |
| 384 | Aprovação | 2026-06-29 → 2026-07-01 (+2d) | 2026-06-29 → 2026-07-01 (+2d) |  |  | 8d → 11.55d |  |
| 385 | **FD-F0009-0306-MB-E-00003** | 2026-06-22 → 2026-06-24 (+2d) | 2026-06-29 → 2026-07-01 (+2d) |  |  | 8d → 11.55d |  |
| 386 | Emissão inicial | 2026-06-22 → 2026-06-24 (+2d) | 2026-06-25 → 2026-06-29 (+4d) |  |  | 8d → 11.55d | constraint start no earlier than 2026-06-22 → start no earlier than 2026-06-23 |
| 387 | Análise Tecnored | 2026-06-26 → 2026-06-30 (+4d) | 2026-06-26 → 2026-06-30 (+4d) |  |  | 8d → 11.55d | constraint finish no earlier than 2026-06-12 → start no earlier than 2026-06-29 |
| 388 | Atendimento de comentários | 2026-06-29 → 2026-07-01 (+2d) | 2026-06-29 → 2026-07-01 (+2d) |  |  | 8d → 11.55d | constraint finish no earlier than 2026-06-15 → start no earlier than 2026-06-30 |
| 389 | Aprovação | 2026-06-29 → 2026-07-01 (+2d) | 2026-06-29 → 2026-07-01 (+2d) |  |  | 8d → 11.55d | constraint finish no earlier than 2026-06-17 → start no earlier than 2026-06-30 |
| 390 | **FD-F0009-0306-MB-E-00004** | 2026-06-22 → 2026-06-24 (+2d) | 2026-06-30 → 2026-07-02 (+2d) |  |  | 7d → 10.55d |  |
| 391 | Emissão inicial | 2026-06-22 → 2026-06-24 (+2d) | 2026-06-25 → 2026-06-29 (+4d) |  |  | 7d → 10.55d | constraint start no earlier than 2026-06-22 → start no earlier than 2026-06-23 |
| 392 | Análise Tecnored | 2026-06-26 → 2026-06-30 (+4d) | 2026-06-26 → 2026-06-30 (+4d) |  |  | 7d → 10.55d | constraint none → start no earlier than 2026-06-29 |
| 393 | Atendimento de comentários | 2026-06-29 → 2026-07-01 (+2d) | 2026-06-29 → 2026-07-01 (+2d) |  |  | 7d → 10.55d | constraint none → start no earlier than 2026-06-30 |
| 394 | Aprovação | 2026-06-30 → 2026-07-02 (+2d) | 2026-06-30 → 2026-07-02 (+2d) |  |  | 7d → 10.55d |  |
| 395 | **FD-F0009-0306-MB-E-00005** | 2026-06-22 → 2026-06-24 (+2d) | 2026-06-30 → 2026-07-02 (+2d) |  |  | 7d → 10.55d |  |
| 396 | Emissão inicial | 2026-06-22 → 2026-06-24 (+2d) | 2026-06-25 → 2026-06-29 (+4d) |  |  | 7d → 10.55d | constraint start no earlier than 2026-06-22 → finish no earlier than 2026-06-25 |
| 397 | Análise Tecnored | 2026-06-26 → 2026-06-30 (+4d) | 2026-06-26 → 2026-06-30 (+4d) |  |  | 7d → 10.55d | constraint none → start no earlier than 2026-06-29 |
| 398 | Atendimento de comentários | 2026-06-29 → 2026-07-01 (+2d) | 2026-06-29 → 2026-07-01 (+2d) |  |  | 7d → 10.55d | constraint none → start no earlier than 2026-06-30 |
| 399 | Aprovação | 2026-06-30 → 2026-07-02 (+2d) | 2026-06-30 → 2026-07-02 (+2d) |  |  | 7d → 10.55d |  |
| 400 | **Automação e instrumentação** |  |  |  | 15% → 38% | 2d → 7.55d |  |
| 436 | **FG-F0009-0306-MB-J-00001** |  |  |  | 60% → 80% | 9d → 14.55d |  |

| ID | Task | Start | Finish | Complete | Total float |
| --- | --- | --- | --- | --- | --- |
| 438 | Análise Tecnored | 2026-06-24 A | 2026-06-24 A | 0% → 100% | 9d → none |
| 439 | Atendimento de comentários | 2026-06-25 A |  | 0% → 50% | 9d → 14.55d |
| 451 | **AG-F0009-0306-MB-J-00001** | 2026-06-22 A |  | 0% → 43% | 6d → 11.55d |
| 452 | Emissão inicial | 2026-06-22 A |  | 0% → 85% | 6d → 11.55d |
| 456 | **AG-F0009-0306-MB-J-00002** | 2026-06-22 A |  | 0% → 36% | 7d → 12.55d |
| 457 | Emissão inicial | 2026-06-22 A |  | 0% → 85% | 7d → 12.55d |
| 461 | **AG-F0009-0306-MB-J-00003** | 2026-06-22 A |  | 0% → 36% | 7d → 12.55d |
| 462 | Emissão inicial | 2026-06-22 A |  | 0% → 85% | 7d → 12.55d |
| 466 | **AG-F0009-0306-MB-J-00004** | 2026-06-22 A |  | 0% → 28% | 8d → 13.55d |
| 467 | Emissão inicial | 2026-06-22 A |  | 0% → 85% | 8d → 13.55d |
| 471 | **DI-F0009-0306-MB-J-00001** | 2026-06-17 A |  | 0% → 8% | 5d → 14.55d |
| 472 | Emissão inicial | 2026-06-17 A |  | 0% → 15% | 5d → 10.55d |
| 496 | **FD-F0009-0306-MB-J-00001** | 2026-06-17 A |  | 0% → 35% | 7d → 12.55d |
| 497 | Emissão inicial | 2026-06-17 A |  | 0% → 50% | 7d → 12.55d |
| 501 | **FD-F0009-0306-MB-J-00002** | 2026-06-17 A |  | 0% → 35% | 7d → 12.55d |
| 502 | Emissão inicial | 2026-06-17 A |  | 0% → 50% | 7d → 12.55d |
| 506 | **FD-F0009-0306-MB-J-00003** | 2026-06-17 → 2026-06-16 A (-1d) | 2026-06-30 → 2026-06-29 (-1d) | 0% → 35% | 7d → 13.55d |
| 507 | Emissão inicial | 2026-06-17 → 2026-06-16 A (-1d) | 2026-06-25 → 2026-06-24 (-1d) | 0% → 50% | 7d → 13.55d |
| 508 | Análise Tecnored | 2026-06-26 → 2026-06-25 (-1d) | 2026-06-26 → 2026-06-25 (-1d) |  | 7d → 13.55d |
| 509 | Atendimento de comentários | 2026-06-29 → 2026-06-26 (-3d) | 2026-06-29 → 2026-06-26 (-3d) |  | 7d → 13.55d |
| 510 | Aprovação | 2026-06-30 → 2026-06-29 (-1d) | 2026-06-30 → 2026-06-29 (-1d) |  | 7d → 13.55d |
| 511 | **FD-F0009-0306-MB-J-00004** | 2026-06-17 A |  | 0% → 35% | 7d → 12.55d |
| 512 | Emissão inicial | 2026-06-17 A |  | 0% → 50% | 7d → 12.55d |
| 516 | **FD-F0009-0306-MB-J-00005** | 2026-06-17 A |  | 0% → 35% | 7d → 12.55d |
| 517 | Emissão inicial | 2026-06-17 A |  | 0% → 50% | 7d → 12.55d |
| 521 | **FD-F0009-0306-MB-J-00006** | 2026-06-17 A |  | 0% → 35% | 7d → 12.55d |
| 522 | Emissão inicial | 2026-06-17 A |  | 0% → 50% | 7d → 12.55d |
| 526 | **FD-F0009-0306-MB-J-00007** | 2026-06-17 A |  | 0% → 35% | 7d → 12.55d |
| 527 | Emissão inicial | 2026-06-17 A |  | 0% → 50% | 7d → 12.55d |
| 531 | **FD-F0009-0306-MB-J-00008** | 2026-06-17 A |  | 0% → 35% | 7d → 12.55d |
| 532 | Emissão inicial | 2026-06-17 A |  | 0% → 50% | 7d → 12.55d |
| 536 | **FD-F0009-0306-MB-J-00009** | 2026-06-17 A |  | 0% → 35% | 7d → 12.55d |
| 537 | Emissão inicial | 2026-06-17 A |  | 0% → 50% | 7d → 12.55d |
| 541 | **FD-F0009-0306-MB-J-00010** | 2026-06-17 A |  | 0% → 35% | 7d → 12.55d |
| 542 | Emissão inicial | 2026-06-17 A |  | 0% → 50% | 7d → 12.55d |
| 546 | **FD-F0009-0306-MB-J-00011** | 2026-06-17 A |  | 0% → 35% | 7d → 12.55d |
| 547 | Emissão inicial | 2026-06-17 A |  | 0% → 50% | 7d → 12.55d |
| 551 | **FD-F0009-0306-MB-J-00012** | 2026-06-17 A |  | 0% → 35% | 7d → 12.55d |
| 552 | Emissão inicial | 2026-06-17 A |  | 0% → 50% | 7d → 12.55d |
| 556 | **FD-F0009-0306-MB-J-00013** | 2026-06-17 A |  | 0% → 35% | 7d → 12.55d |
| 557 | Emissão inicial | 2026-06-17 A |  | 0% → 50% | 7d → 12.55d |
| 561 | **FD-F0009-0306-MB-J-00014** | 2026-06-17 A |  | 0% → 35% | 7d → 12.55d |
| 562 | Emissão inicial | 2026-06-17 A |  | 0% → 50% | 7d → 12.55d |
| 566 | **FD-F0009-0306-MB-J-00015** | 2026-06-17 A |  | 0% → 35% | 7d → 12.55d |
| 567 | Emissão inicial | 2026-06-17 A |  | 0% → 50% | 7d → 12.55d |
| 571 | **FD-F0009-0306-MB-J-00016** | 2026-06-17 A |  | 0% → 35% | 7d → 12.55d |
| 572 | Emissão inicial | 2026-06-17 A |  | 0% → 50% | 7d → 12.55d |
| 581 | **RE-F0009-0306-MB-J-00001** |  |  | 50% → 56% | 10d → 15.55d |
| 583 | Análise Tecnored | 2026-06-22 A |  | 0% → 50% | 10d → 15.55d |
| 586 | **DT-F0009-0306-MB-J-00001** | 2026-06-19 A |  | 0% → 25% | 7d → 12.55d |
| 587 | Emissão inicial | 2026-06-19 A |  | 0% → 50% | 7d → 12.55d |

## Version 11 (data date 2026-06-26, saved 2026-06-26, file CR-F0009-0306-MB-F-00001 26062026_C2.mpp)

Note of the change: Primeira versao dashboard

Last finish 2026-07-20 → 2026-07-23 (+3d). Complete tasks 77 → 92.

Changed:

| ID | Task | Start | Finish | Duration | Complete | Total float | Other |
| --- | --- | --- | --- | --- | --- | --- | --- |
| 1 | **F0009 - Programa Marabá** |  | 2026-07-17 → 2026-07-22 (+5d) | 57.55d → 61d | 35% → 47% |  |  |
| 2 | **Área 0306 - Sopradores** |  | 2026-07-17 → 2026-07-22 (+5d) | 57.55d → 61d | 35% → 47% |  |  |
| 61 | **Mecânica** |  |  |  | 53% → 54% | 7.55d → 11d |  |
| 77 | **PQ-F0009-0306-MB-M-00001** | 2026-06-10 A → 2026-06-11 A (+1d) |  | 14d → 13d | 50% → 71% | 13.55d → 17d |  |
| 78 | Emissão inicial | 2026-06-10 A → 2026-06-11 A (+1d) | 2026-06-12 A → 2026-06-15 A (+3d) |  |  |  |  |
| 79 | Análise Tecnored |  | 2026-06-24 A |  | 50% → 100% | 13.55d → none |  |
| 80 | Atendimento de comentários | 2026-06-25 A |  |  | 0% → 50% | 13.55d → 17d |  |
| 142 | **Tubulação/Utilidades** |  | 2026-07-03 → 2026-07-09 (+6d) | 20d → 24d | 36% → 37% | 9.55d → 9d |  |
| 183 | **FG-F0009-0306-MB-T-00001** |  | 2026-06-12 A → 2026-06-12 |  | 100% → 60% | none → 28d |  |
| 186 | Atendimento de comentários |  | 2026-06-11 A → 2026-06-11 |  | 100% → 50% | none → 28d |  |
| 187 | Aprovação | 2026-06-12 A → 2026-06-12 | 2026-06-12 A → 2026-06-12 |  | 100% → 0% | none → 28d |  |
| 193 | **AG-F0009-0306-MB-T-00001** |  |  |  | 36% → 50% | 11.55d → 15d |  |
| 194 | Emissão inicial |  | 2026-06-25 A |  | 85% → 100% | 11.55d → none |  |
| 195 | Análise Tecnored | 2026-06-26 A |  |  | 0% → 50% | 11.55d → 15d |  |
| 198 | **AG-F0009-0306-MB-T-00002** |  |  |  | 36% → 50% | 11.55d → 15d |  |
| 199 | Emissão inicial |  | 2026-06-25 A |  | 85% → 100% | 11.55d → none |  |
| 200 | Análise Tecnored | 2026-06-26 A |  |  | 0% → 50% | 11.55d → 15d |  |
| 203 | **AG-F0009-0306-MB-T-00003** |  |  |  | 36% → 50% | 11.55d → 15d |  |
| 204 | Emissão inicial |  | 2026-06-25 A |  | 85% → 100% | 11.55d → none |  |
| 205 | Análise Tecnored | 2026-06-26 A |  |  | 0% → 50% | 11.55d → 15d |  |
| 223 | **LK-F0009-0306-MB-T-00001** | 2026-06-24 → 2026-07-01 (+7d) | 2026-07-02 → 2026-07-09 (+7d) |  |  | 10.55d → 9d |  |
| 224 | Emissão inicial | 2026-06-24 → 2026-07-01 (+7d) | 2026-06-26 → 2026-07-03 (+7d) |  |  | 10.55d → 9d | constraint finish no earlier than 2026-06-26 → start no earlier than 2026-07-01 |
| 225 | Análise Tecnored | 2026-06-29 → 2026-07-06 (+7d) | 2026-06-29 → 2026-07-06 (+7d) |  |  | 10.55d → 9d |  |
| 226 | Atendimento de comentários | 2026-06-30 → 2026-07-07 (+7d) | 2026-07-01 → 2026-07-08 (+7d) |  |  | 10.55d → 9d |  |
| 227 | Aprovação | 2026-07-02 → 2026-07-09 (+7d) | 2026-07-02 → 2026-07-09 (+7d) |  |  | 10.55d → 9d |  |
| 233 | **Estrutura metálica** |  |  |  | 6% → 8% | 5.55d → 9d |  |
| 239 | **ML-F0009-0306-MB-S-00001** |  |  |  | 35% → 50% | 11.55d → 15d |  |
| 240 | Emissão inicial |  | 2026-06-26 A |  | 70% → 100% | 0d → none |  |
| 289 | **Elétrica** |  | 2026-07-17 → 2026-07-22 (+5d) | 34.55d → 38d | 16% → 22% |  |  |
| 295 | **ML-F0009-0306-MB-E-00001** | 2026-06-22 A → 2026-07-03 A (+11d) | 2026-07-07 → 2026-07-10 (+3d) | 11.55d → 6d |  |  |  |
| 296 | Emissão inicial | 2026-06-22 A → 2026-07-03 A (+11d) | 2026-07-02 → 2026-07-07 (+5d) |  |  |  |  |
| 297 | Análise Tecnored | 2026-07-02 → 2026-07-08 (+6d) | 2026-07-03 → 2026-07-08 (+5d) |  |  |  |  |
| 298 | Atendimento de comentários | 2026-07-03 → 2026-07-09 (+6d) | 2026-07-06 → 2026-07-09 (+3d) |  |  |  |  |
| 299 | Aprovação | 2026-07-06 → 2026-07-10 (+4d) | 2026-07-07 → 2026-07-10 (+3d) |  |  |  |  |
| 305 | **LE-F0009-0306-MB-E-00001** | 2026-06-25 → 2026-07-06 (+11d) | 2026-07-01 → 2026-07-10 (+9d) |  |  | 11.55d → 8d |  |
| 306 | Emissão inicial | 2026-06-25 → 2026-07-06 (+11d) | 2026-06-29 → 2026-07-08 (+9d) |  |  | 11.55d → 8d |  |
| 307 | Análise Tecnored | 2026-06-30 → 2026-07-09 (+9d) | 2026-06-30 → 2026-07-09 (+9d) |  |  | 11.55d → 8d |  |
| 308 | Atendimento de comentários | 2026-07-01 → 2026-07-10 (+9d) | 2026-07-01 → 2026-07-10 (+9d) |  |  | 11.55d → 8d |  |
| 309 | Aprovação | 2026-07-01 → 2026-07-10 (+9d) | 2026-07-01 → 2026-07-10 (+9d) |  |  | 11.55d → 8d |  |
| 310 | **LR-F0009-0306-MB-E-00001** |  | 2026-06-03 A → 2026-06-03 |  | 100% → 75% | none → 33d |  |
| 313 | Atendimento de comentários |  | 2026-06-03 A → 2026-06-03 |  | 100% → 50% | none → 33d |  |
| 314 | Aprovação | 2026-06-03 A → 2026-06-03 | 2026-06-03 A → 2026-06-03 |  | 100% → 0% | none → 33d |  |
| 315 | **LM-F0009-0306-MB-E-00001** | 2026-07-09 → 2026-07-15 (+6d) | 2026-07-14 → 2026-07-17 (+3d) |  |  |  |  |
| 316 | Emissão inicial | 2026-07-09 → 2026-07-15 (+6d) | 2026-07-10 → 2026-07-15 (+5d) |  |  |  |  |
| 317 | Análise Tecnored | 2026-07-10 → 2026-07-16 (+6d) | 2026-07-13 → 2026-07-16 (+3d) |  |  |  |  |
| 318 | Atendimento de comentários | 2026-07-13 → 2026-07-17 (+4d) | 2026-07-14 → 2026-07-17 (+3d) |  |  |  |  |
| 319 | Aprovação | 2026-07-13 → 2026-07-17 (+4d) | 2026-07-14 → 2026-07-17 (+3d) |  |  |  |  |
| 320 | **PQ-F0009-0306-MB-E-00001** | 2026-07-10 → 2026-07-16 (+6d) | 2026-07-17 → 2026-07-22 (+5d) |  |  |  |  |
| 321 | Emissão inicial | 2026-07-10 → 2026-07-16 (+6d) | 2026-07-15 → 2026-07-20 (+5d) |  |  |  |  |
| 322 | Análise Tecnored | 2026-07-15 → 2026-07-21 (+6d) | 2026-07-16 → 2026-07-21 (+5d) |  |  |  |  |
| 323 | Atendimento de comentários | 2026-07-16 → 2026-07-22 (+6d) | 2026-07-17 → 2026-07-22 (+5d) |  |  |  |  |
| 324 | Aprovação | 2026-07-16 → 2026-07-22 (+6d) | 2026-07-17 → 2026-07-22 (+5d) |  |  |  |  |
| 325 | **MD-F0009-0306-MB-E-00001** | 2026-07-10 → 2026-07-16 (+6d) | 2026-07-20 → 2026-07-23 (+3d) |  |  |  |  |
| 326 | Emissão inicial | 2026-07-10 → 2026-07-16 (+6d) | 2026-07-14 → 2026-07-17 (+3d) |  |  |  |  |
| 327 | Análise Tecnored | 2026-07-14 → 2026-07-20 (+6d) | 2026-07-15 → 2026-07-20 (+5d) |  |  |  |  |
| 328 | Atendimento de comentários | 2026-07-15 → 2026-07-21 (+6d) | 2026-07-17 → 2026-07-22 (+5d) |  |  |  |  |
| 329 | Aprovação | 2026-07-17 → 2026-07-23 (+6d) | 2026-07-20 → 2026-07-23 (+3d) |  |  |  |  |
| 330 | **MC-F0009-0306-MB-E-00001** | 2026-06-22 → 2026-07-01 A (+9d) | 2026-06-26 → 2026-07-07 (+11d) |  | 0% → 15% | 14.55d → 11d |  |
| 331 | Emissão inicial | 2026-06-22 → 2026-07-01 A (+9d) | 2026-06-24 → 2026-07-03 (+9d) |  | 0% → 30% | 14.55d → 11d | constraint finish no earlier than 2026-06-24 → start no earlier than 2026-07-01 |
| 332 | Análise Tecnored | 2026-06-25 → 2026-07-06 (+11d) | 2026-06-25 → 2026-07-06 (+11d) |  |  | 14.55d → 11d |  |
| 333 | Atendimento de comentários | 2026-06-26 → 2026-07-07 (+11d) | 2026-06-26 → 2026-07-07 (+11d) |  |  | 14.55d → 11d |  |
| 334 | Aprovação | 2026-06-26 → 2026-07-07 (+11d) | 2026-06-26 → 2026-07-07 (+11d) |  |  | 14.55d → 11d |  |
| 335 | **MC-F0009-0306-MB-E-00002** | 2026-06-22 → 2026-07-01 A (+9d) | 2026-06-26 → 2026-07-07 (+11d) |  | 0% → 15% | 14.55d → 11d |  |
| 336 | Emissão inicial | 2026-06-22 → 2026-07-01 A (+9d) | 2026-06-24 → 2026-07-03 (+9d) |  | 0% → 30% | 14.55d → 11d | constraint finish no earlier than 2026-06-24 → start no earlier than 2026-07-01 |
| 337 | Análise Tecnored | 2026-06-25 → 2026-07-06 (+11d) | 2026-06-25 → 2026-07-06 (+11d) |  |  | 14.55d → 11d |  |
| 338 | Atendimento de comentários | 2026-06-26 → 2026-07-07 (+11d) | 2026-06-26 → 2026-07-07 (+11d) |  |  | 14.55d → 11d |  |
| 339 | Aprovação | 2026-06-26 → 2026-07-07 (+11d) | 2026-06-26 → 2026-07-07 (+11d) |  |  | 14.55d → 11d |  |
| 340 | **AG-F0009-0306-MB-E-00001** | 2026-07-02 → 2026-07-08 (+6d) | 2026-07-10 → 2026-07-15 (+5d) |  |  |  |  |
| 341 | Emissão inicial | 2026-07-02 → 2026-07-08 (+6d) | 2026-07-08 → 2026-07-13 (+5d) |  |  |  |  |
| 342 | Análise Tecnored | 2026-07-08 → 2026-07-14 (+6d) | 2026-07-09 → 2026-07-14 (+5d) |  |  |  |  |

| ID | Task | Start | Finish | Duration | Complete | Total float | Other |
| --- | --- | --- | --- | --- | --- | --- | --- |
| 343 | Atendimento de comentários | 2026-07-09 → 2026-07-15 (+6d) | 2026-07-10 → 2026-07-15 (+5d) |  |  |  |  |
| 344 | Aprovação | 2026-07-09 → 2026-07-15 (+6d) | 2026-07-10 → 2026-07-15 (+5d) |  |  |  |  |
| 345 | **DU-F0009-0306-MB-E-00001** |  |  |  | 50% → 58% | 12.55d → 16d |  |
| 347 | Análise Tecnored | 2026-06-26 A |  |  | 0% → 50% | 12.55d → 16d |  |
| 365 | **AG-F0009-0306-MB-E-00002** | 2026-06-24 A |  |  | 0% → 17% | 11.55d → 15d |  |
| 366 | Emissão inicial | 2026-06-24 A |  |  | 0% → 30% | 11.55d → 15d |  |
| 370 | **AG-F0009-0306-MB-E-00003** | 2026-06-24 A |  |  | 0% → 17% | 11.55d → 15d |  |
| 371 | Emissão inicial | 2026-06-24 A |  |  | 0% → 30% | 11.55d → 15d |  |
| 375 | **FD-F0009-0306-MB-E-00001** |  |  |  | 57% → 64% | 13.55d → 17d |  |
| 377 | Análise Tecnored | 2026-06-26 A |  |  | 0% → 50% | 13.55d → 17d |  |
| 400 | **Automação e instrumentação** | 2026-05-29 A → 2026-06-09 A (+11d) | 2026-07-07 → 2026-07-08 (+1d) | 26d → 22d | 38% → 60% | 7.55d → 10d |  |
| 406 | **LI-F0009-0306-MB-J-00001** |  |  |  | 88% → 75% | 15.55d → 19d |  |
| 409 | Atendimento de comentários |  | 2026-06-24 A → 2026-06-24 |  | 100% → 50% | none → 19d |  |
| 411 | **LE-F0009-0306-MB-J-00001** |  |  |  | 63% → 56% | 16.55d → 20d |  |
| 413 | Análise Tecnored |  | 2026-06-19 A → 2026-06-19 |  | 100% → 50% | none → 20d |  |
| 421 | **LZ-F0009-0306-MB-J-00001** | 2026-06-16 → 2026-06-23 (+7d) | 2026-06-25 → 2026-07-02 (+7d) |  |  | 15.55d → 14d |  |
| 422 | Emissão inicial | 2026-06-16 → 2026-06-23 (+7d) | 2026-06-19 → 2026-06-26 (+7d) |  |  | 15.55d → 14d |  |
| 423 | Análise Tecnored | 2026-06-22 → 2026-06-29 (+7d) | 2026-06-22 → 2026-06-29 (+7d) |  |  | 15.55d → 14d |  |
| 424 | Atendimento de comentários | 2026-06-23 → 2026-06-30 (+7d) | 2026-06-24 → 2026-07-01 (+7d) |  |  | 15.55d → 14d |  |
| 425 | Aprovação | 2026-06-25 → 2026-07-02 (+7d) | 2026-06-25 → 2026-07-02 (+7d) |  |  | 15.55d → 14d |  |
| 426 | **LE-F0009-0306-MB-J-00002** | 2026-06-09 A → 2026-06-09 | 2026-06-17 A → 2026-06-17 |  | 100% → 0% | none → 25d |  |
| 427 | Emissão inicial | 2026-06-09 A → 2026-06-09 | 2026-06-12 A → 2026-06-12 |  | 100% → 0% | none → 25d |  |
| 428 | Análise Tecnored | 2026-06-15 A → 2026-06-15 | 2026-06-15 A → 2026-06-15 |  | 100% → 0% | none → 25d |  |
| 429 | Atendimento de comentários | 2026-06-16 A → 2026-06-16 | 2026-06-16 A → 2026-06-16 |  | 100% → 0% | none → 25d |  |
| 430 | Aprovação | 2026-06-17 A → 2026-06-17 | 2026-06-17 A → 2026-06-17 |  | 100% → 0% | none → 25d |  |
| 441 | **FG-F0009-0306-MB-J-00002** | 2026-05-29 → 2026-06-19 A (+21d) | 2026-06-15 → 2026-07-02 (+17d) |  | 0% → 60% | 23.55d → 14d |  |
| 442 | Emissão inicial | 2026-05-29 → 2026-06-19 A (+21d) | 2026-06-09 → 2026-06-26 A (+17d) |  | 0% → 100% | 23.55d → none |  |
| 443 | Análise Tecnored | 2026-06-10 → 2026-06-29 (+19d) | 2026-06-10 → 2026-06-29 (+19d) |  |  | 23.55d → 14d |  |
| 444 | Atendimento de comentários | 2026-06-11 → 2026-06-30 (+19d) | 2026-06-12 → 2026-07-01 (+19d) |  |  | 23.55d → 14d |  |
| 445 | Aprovação | 2026-06-15 → 2026-07-02 (+17d) | 2026-06-15 → 2026-07-02 (+17d) |  |  | 23.55d → 14d |  |
| 446 | **FG-F0009-0306-MB-J-00003** | 2026-06-03 → 2026-06-19 A (+16d) | 2026-06-18 → 2026-07-02 (+14d) |  | 0% → 60% | 20.55d → 14d |  |
| 447 | Emissão inicial | 2026-06-03 → 2026-06-19 A (+16d) | 2026-06-12 → 2026-06-26 A (+14d) |  | 0% → 100% | 20.55d → none |  |
| 448 | Análise Tecnored | 2026-06-15 → 2026-06-29 (+14d) | 2026-06-15 → 2026-06-29 (+14d) |  |  | 20.55d → 14d |  |
| 449 | Atendimento de comentários | 2026-06-16 → 2026-06-30 (+14d) | 2026-06-17 → 2026-07-01 (+14d) |  |  | 20.55d → 14d |  |
| 450 | Aprovação | 2026-06-18 → 2026-07-02 (+14d) | 2026-06-18 → 2026-07-02 (+14d) |  |  | 20.55d → 14d |  |
| 451 | **AG-F0009-0306-MB-J-00001** | 2026-06-22 A → 2026-06-23 A (+1d) | 2026-07-01 → 2026-07-02 (+1d) |  | 43% → 50% | 11.55d → 14d |  |
| 452 | Emissão inicial | 2026-06-22 A → 2026-06-23 A (+1d) | 2026-06-25 → 2026-06-26 A (+1d) |  | 85% → 100% | 11.55d → none |  |
| 453 | Análise Tecnored | 2026-06-26 → 2026-06-29 (+3d) | 2026-06-26 → 2026-06-29 (+3d) |  |  | 11.55d → 14d |  |
| 454 | Atendimento de comentários | 2026-06-29 → 2026-06-30 (+1d) | 2026-06-30 → 2026-07-01 (+1d) |  |  | 11.55d → 14d |  |
| 455 | Aprovação | 2026-07-01 → 2026-07-02 (+1d) | 2026-07-01 → 2026-07-02 (+1d) |  |  | 11.55d → 14d |  |
| 456 | **AG-F0009-0306-MB-J-00002** | 2026-06-22 A → 2026-06-23 A (+1d) | 2026-06-30 → 2026-07-02 (+2d) | 7d → 8d | 36% → 38% | 12.55d → 14d |  |
| 457 | Emissão inicial | 2026-06-22 A → 2026-06-23 A (+1d) | 2026-06-24 → 2026-06-26 (+2d) | 3d → 4d | 85% → 75% | 12.55d → 14d | constraint none → finish no earlier than 2026-06-26 |
| 458 | Análise Tecnored | 2026-06-25 → 2026-06-29 (+4d) | 2026-06-25 → 2026-06-29 (+4d) |  |  | 12.55d → 14d |  |
| 459 | Atendimento de comentários | 2026-06-26 → 2026-06-30 (+4d) | 2026-06-29 → 2026-07-01 (+2d) |  |  | 12.55d → 14d |  |
| 460 | Aprovação | 2026-06-30 → 2026-07-02 (+2d) | 2026-06-30 → 2026-07-02 (+2d) |  |  | 12.55d → 14d |  |
| 461 | **AG-F0009-0306-MB-J-00003** | 2026-06-22 A → 2026-06-23 A (+1d) | 2026-06-30 → 2026-07-02 (+2d) | 7d → 8d | 36% → 38% | 12.55d → 14d |  |
| 462 | Emissão inicial | 2026-06-22 A → 2026-06-23 A (+1d) | 2026-06-24 → 2026-06-26 (+2d) | 3d → 4d | 85% → 75% | 12.55d → 14d | constraint none → finish no earlier than 2026-06-26 |
| 463 | Análise Tecnored | 2026-06-25 → 2026-06-29 (+4d) | 2026-06-25 → 2026-06-29 (+4d) |  |  | 12.55d → 14d |  |
| 464 | Atendimento de comentários | 2026-06-26 → 2026-06-30 (+4d) | 2026-06-29 → 2026-07-01 (+2d) |  |  | 12.55d → 14d |  |
| 465 | Aprovação | 2026-06-30 → 2026-07-02 (+2d) | 2026-06-30 → 2026-07-02 (+2d) |  |  | 12.55d → 14d |  |
| 466 | **AG-F0009-0306-MB-J-00004** | 2026-06-22 A → 2026-06-22 |  |  | 28% → 0% | 13.55d → 17d |  |
| 467 | Emissão inicial | 2026-06-22 A → 2026-06-22 |  |  | 85% → 0% | 13.55d → 17d |  |
| 471 | **DI-F0009-0306-MB-J-00001** | 2026-06-17 A → 2026-06-24 A (+7d) | 2026-06-26 → 2026-07-03 (+7d) |  | 8% → 25% | 14.55d → 13d |  |
| 472 | Emissão inicial | 2026-06-17 A → 2026-06-24 A (+7d) | 2026-06-22 → 2026-06-29 (+7d) |  | 15% → 50% | 10.55d → 9d |  |
| 473 | Análise Tecnored | 2026-06-23 → 2026-06-30 (+7d) | 2026-06-23 → 2026-06-30 (+7d) |  |  | 14.55d → 13d |  |
| 474 | Atendimento de comentários | 2026-06-24 → 2026-07-01 (+7d) | 2026-06-25 → 2026-07-02 (+7d) |  |  | 14.55d → 13d |  |
| 475 | Aprovação | 2026-06-26 → 2026-07-03 (+7d) | 2026-06-26 → 2026-07-03 (+7d) |  |  | 14.55d → 13d |  |
| 496 | **FD-F0009-0306-MB-J-00001** | 2026-06-17 A → 2026-06-18 A (+1d) | 2026-06-30 → 2026-07-01 (+1d) |  | 35% → 70% | 12.55d → 15d |  |
| 497 | Emissão inicial | 2026-06-17 A → 2026-06-18 A (+1d) | 2026-06-25 → 2026-06-26 A (+1d) |  | 50% → 100% | 12.55d → none |  |
| 498 | Análise Tecnored | 2026-06-26 → 2026-06-29 (+3d) | 2026-06-26 → 2026-06-29 (+3d) |  |  | 12.55d → 15d |  |
| 499 | Atendimento de comentários | 2026-06-29 → 2026-06-30 (+1d) | 2026-06-29 → 2026-06-30 (+1d) |  |  | 12.55d → 15d |  |
| 500 | Aprovação | 2026-06-30 → 2026-07-01 (+1d) | 2026-06-30 → 2026-07-01 (+1d) |  |  | 12.55d → 15d |  |
| 501 | **FD-F0009-0306-MB-J-00002** | 2026-06-17 A → 2026-06-18 A (+1d) | 2026-06-30 → 2026-07-01 (+1d) |  | 35% → 75% | 12.55d → 15d |  |
| 502 | Emissão inicial | 2026-06-17 A → 2026-06-18 A (+1d) | 2026-06-25 → 2026-06-26 A (+1d) |  | 50% → 100% | 12.55d → none |  |
| 503 | Análise Tecnored | 2026-06-26 → 2026-06-29 A (+3d) | 2026-06-26 → 2026-06-29 (+3d) |  | 0% → 50% | 12.55d → 15d |  |
| 504 | Atendimento de comentários | 2026-06-29 → 2026-06-30 (+1d) | 2026-06-29 → 2026-06-30 (+1d) |  |  | 12.55d → 15d |  |
| 505 | Aprovação | 2026-06-30 → 2026-07-01 (+1d) | 2026-06-30 → 2026-07-01 (+1d) |  |  | 12.55d → 15d |  |
| 506 | **FD-F0009-0306-MB-J-00003** | 2026-06-16 A → 2026-06-18 A (+2d) | 2026-06-29 → 2026-07-01 (+2d) |  | 35% → 70% | 13.55d → 15d |  |
| 507 | Emissão inicial | 2026-06-16 A → 2026-06-18 A (+2d) | 2026-06-24 → 2026-06-26 A (+2d) |  | 50% → 100% | 13.55d → none |  |
| 508 | Análise Tecnored | 2026-06-25 → 2026-06-29 (+4d) | 2026-06-25 → 2026-06-29 (+4d) |  |  | 13.55d → 15d |  |

| ID | Task | Start | Finish | Complete | Total float | Predecessors |
| --- | --- | --- | --- | --- | --- | --- |
| 509 | Atendimento de comentários | 2026-06-26 → 2026-06-30 (+4d) | 2026-06-26 → 2026-06-30 (+4d) |  | 13.55d → 15d |  |
| 510 | Aprovação | 2026-06-29 → 2026-07-01 (+2d) | 2026-06-29 → 2026-07-01 (+2d) |  | 13.55d → 15d |  |
| 511 | **FD-F0009-0306-MB-J-00004** | 2026-06-17 A → 2026-06-18 A (+1d) | 2026-06-30 → 2026-07-01 (+1d) | 35% → 70% | 12.55d → 15d |  |
| 512 | Emissão inicial | 2026-06-17 A → 2026-06-18 A (+1d) | 2026-06-25 → 2026-06-26 A (+1d) | 50% → 100% | 12.55d → none |  |
| 513 | Análise Tecnored | 2026-06-26 → 2026-06-29 (+3d) | 2026-06-26 → 2026-06-29 (+3d) |  | 12.55d → 15d |  |
| 514 | Atendimento de comentários | 2026-06-29 → 2026-06-30 (+1d) | 2026-06-29 → 2026-06-30 (+1d) |  | 12.55d → 15d |  |
| 515 | Aprovação | 2026-06-30 → 2026-07-01 (+1d) | 2026-06-30 → 2026-07-01 (+1d) |  | 12.55d → 15d |  |
| 516 | **FD-F0009-0306-MB-J-00005** | 2026-06-17 A → 2026-06-18 A (+1d) | 2026-06-30 → 2026-07-01 (+1d) | 35% → 75% | 12.55d → 15d |  |
| 517 | Emissão inicial | 2026-06-17 A → 2026-06-18 A (+1d) | 2026-06-25 → 2026-06-26 A (+1d) | 50% → 100% | 12.55d → none |  |
| 518 | Análise Tecnored | 2026-06-26 → 2026-06-29 A (+3d) | 2026-06-26 → 2026-06-29 (+3d) | 0% → 50% | 12.55d → 15d |  |
| 519 | Atendimento de comentários | 2026-06-29 → 2026-06-30 (+1d) | 2026-06-29 → 2026-06-30 (+1d) |  | 12.55d → 15d |  |
| 520 | Aprovação | 2026-06-30 → 2026-07-01 (+1d) | 2026-06-30 → 2026-07-01 (+1d) |  | 12.55d → 15d |  |
| 521 | **FD-F0009-0306-MB-J-00006** | 2026-06-17 A → 2026-06-18 A (+1d) | 2026-06-30 → 2026-07-01 (+1d) | 35% → 75% | 12.55d → 15d |  |
| 522 | Emissão inicial | 2026-06-17 A → 2026-06-18 A (+1d) | 2026-06-25 → 2026-06-26 A (+1d) | 50% → 100% | 12.55d → none |  |
| 523 | Análise Tecnored | 2026-06-26 → 2026-06-29 A (+3d) | 2026-06-26 → 2026-06-29 (+3d) | 0% → 50% | 12.55d → 15d |  |
| 524 | Atendimento de comentários | 2026-06-29 → 2026-06-30 (+1d) | 2026-06-29 → 2026-06-30 (+1d) |  | 12.55d → 15d |  |
| 525 | Aprovação | 2026-06-30 → 2026-07-01 (+1d) | 2026-06-30 → 2026-07-01 (+1d) |  | 12.55d → 15d |  |
| 526 | **FD-F0009-0306-MB-J-00007** | 2026-06-17 A → 2026-06-18 A (+1d) | 2026-06-30 → 2026-07-01 (+1d) | 35% → 75% | 12.55d → 15d |  |
| 527 | Emissão inicial | 2026-06-17 A → 2026-06-18 A (+1d) | 2026-06-25 → 2026-06-26 A (+1d) | 50% → 100% | 12.55d → none |  |
| 528 | Análise Tecnored | 2026-06-26 → 2026-06-29 A (+3d) | 2026-06-26 → 2026-06-29 (+3d) | 0% → 50% | 12.55d → 15d |  |
| 529 | Atendimento de comentários | 2026-06-29 → 2026-06-30 (+1d) | 2026-06-29 → 2026-06-30 (+1d) |  | 12.55d → 15d |  |
| 530 | Aprovação | 2026-06-30 → 2026-07-01 (+1d) | 2026-06-30 → 2026-07-01 (+1d) |  | 12.55d → 15d |  |
| 531 | **FD-F0009-0306-MB-J-00008** | 2026-06-17 A → 2026-06-18 A (+1d) | 2026-06-30 → 2026-07-01 (+1d) | 35% → 75% | 12.55d → 15d |  |
| 532 | Emissão inicial | 2026-06-17 A → 2026-06-18 A (+1d) | 2026-06-25 → 2026-06-26 A (+1d) | 50% → 100% | 12.55d → none |  |
| 533 | Análise Tecnored | 2026-06-26 → 2026-06-29 A (+3d) | 2026-06-26 → 2026-06-29 (+3d) | 0% → 50% | 12.55d → 15d |  |
| 534 | Atendimento de comentários | 2026-06-29 → 2026-06-30 (+1d) | 2026-06-29 → 2026-06-30 (+1d) |  | 12.55d → 15d |  |
| 535 | Aprovação | 2026-06-30 → 2026-07-01 (+1d) | 2026-06-30 → 2026-07-01 (+1d) |  | 12.55d → 15d |  |
| 536 | **FD-F0009-0306-MB-J-00009** | 2026-06-17 A → 2026-06-18 A (+1d) | 2026-06-30 → 2026-07-01 (+1d) | 35% → 70% | 12.55d → 15d |  |
| 537 | Emissão inicial | 2026-06-17 A → 2026-06-18 A (+1d) | 2026-06-25 → 2026-06-26 A (+1d) | 50% → 100% | 12.55d → none |  |
| 538 | Análise Tecnored | 2026-06-26 → 2026-06-29 (+3d) | 2026-06-26 → 2026-06-29 (+3d) |  | 12.55d → 15d |  |
| 539 | Atendimento de comentários | 2026-06-29 → 2026-06-30 (+1d) | 2026-06-29 → 2026-06-30 (+1d) |  | 12.55d → 15d |  |
| 540 | Aprovação | 2026-06-30 → 2026-07-01 (+1d) | 2026-06-30 → 2026-07-01 (+1d) |  | 12.55d → 15d |  |
| 541 | **FD-F0009-0306-MB-J-00010** | 2026-06-17 A → 2026-06-18 A (+1d) | 2026-06-30 → 2026-07-01 (+1d) | 35% → 70% | 12.55d → 15d |  |
| 542 | Emissão inicial | 2026-06-17 A → 2026-06-18 A (+1d) | 2026-06-25 → 2026-06-26 A (+1d) | 50% → 100% | 12.55d → none |  |
| 543 | Análise Tecnored | 2026-06-26 → 2026-06-29 (+3d) | 2026-06-26 → 2026-06-29 (+3d) |  | 12.55d → 15d |  |
| 544 | Atendimento de comentários | 2026-06-29 → 2026-06-30 (+1d) | 2026-06-29 → 2026-06-30 (+1d) |  | 12.55d → 15d |  |
| 545 | Aprovação | 2026-06-30 → 2026-07-01 (+1d) | 2026-06-30 → 2026-07-01 (+1d) |  | 12.55d → 15d |  |
| 546 | **FD-F0009-0306-MB-J-00011** | 2026-06-17 A → 2026-06-18 A (+1d) | 2026-06-30 → 2026-07-01 (+1d) | 35% → 70% | 12.55d → 15d |  |
| 547 | Emissão inicial | 2026-06-17 A → 2026-06-18 A (+1d) | 2026-06-25 → 2026-06-26 A (+1d) | 50% → 100% | 12.55d → none |  |
| 548 | Análise Tecnored | 2026-06-26 → 2026-06-29 (+3d) | 2026-06-26 → 2026-06-29 (+3d) |  | 12.55d → 15d |  |
| 549 | Atendimento de comentários | 2026-06-29 → 2026-06-30 (+1d) | 2026-06-29 → 2026-06-30 (+1d) |  | 12.55d → 15d |  |
| 550 | Aprovação | 2026-06-30 → 2026-07-01 (+1d) | 2026-06-30 → 2026-07-01 (+1d) |  | 12.55d → 15d |  |
| 551 | **FD-F0009-0306-MB-J-00012** | 2026-06-17 A → 2026-06-18 A (+1d) | 2026-06-30 → 2026-07-01 (+1d) | 35% → 70% | 12.55d → 15d |  |
| 552 | Emissão inicial | 2026-06-17 A → 2026-06-18 A (+1d) | 2026-06-25 → 2026-06-26 A (+1d) | 50% → 100% | 12.55d → none |  |
| 553 | Análise Tecnored | 2026-06-26 → 2026-06-29 (+3d) | 2026-06-26 → 2026-06-29 (+3d) |  | 12.55d → 15d |  |
| 554 | Atendimento de comentários | 2026-06-29 → 2026-06-30 (+1d) | 2026-06-29 → 2026-06-30 (+1d) |  | 12.55d → 15d |  |
| 555 | Aprovação | 2026-06-30 → 2026-07-01 (+1d) | 2026-06-30 → 2026-07-01 (+1d) |  | 12.55d → 15d |  |
| 556 | **FD-F0009-0306-MB-J-00013** | 2026-06-17 A → 2026-06-18 A (+1d) | 2026-06-30 → 2026-07-01 (+1d) | 35% → 75% | 12.55d → 15d |  |
| 557 | Emissão inicial | 2026-06-17 A → 2026-06-18 A (+1d) | 2026-06-25 → 2026-06-26 A (+1d) | 50% → 100% | 12.55d → none |  |
| 558 | Análise Tecnored | 2026-06-26 → 2026-06-29 A (+3d) | 2026-06-26 → 2026-06-29 (+3d) | 0% → 50% | 12.55d → 15d |  |
| 559 | Atendimento de comentários | 2026-06-29 → 2026-06-30 (+1d) | 2026-06-29 → 2026-06-30 (+1d) |  | 12.55d → 15d |  |
| 560 | Aprovação | 2026-06-30 → 2026-07-01 (+1d) | 2026-06-30 → 2026-07-01 (+1d) |  | 12.55d → 15d |  |
| 561 | **FD-F0009-0306-MB-J-00014** | 2026-06-17 A → 2026-06-18 A (+1d) | 2026-06-30 → 2026-07-01 (+1d) | 35% → 70% | 12.55d → 15d |  |
| 562 | Emissão inicial | 2026-06-17 A → 2026-06-18 A (+1d) | 2026-06-25 → 2026-06-26 A (+1d) | 50% → 100% | 12.55d → none |  |
| 563 | Análise Tecnored | 2026-06-26 → 2026-06-29 (+3d) | 2026-06-26 → 2026-06-29 (+3d) |  | 12.55d → 15d |  |
| 564 | Atendimento de comentários | 2026-06-29 → 2026-06-30 (+1d) | 2026-06-29 → 2026-06-30 (+1d) |  | 12.55d → 15d |  |
| 565 | Aprovação | 2026-06-30 → 2026-07-01 (+1d) | 2026-06-30 → 2026-07-01 (+1d) |  | 12.55d → 15d |  |
| 566 | **FD-F0009-0306-MB-J-00015** | 2026-06-17 A → 2026-06-18 A (+1d) | 2026-06-30 → 2026-07-01 (+1d) | 35% → 75% | 12.55d → 15d |  |
| 567 | Emissão inicial | 2026-06-17 A → 2026-06-18 A (+1d) | 2026-06-25 → 2026-06-26 A (+1d) | 50% → 100% | 12.55d → none |  |
| 568 | Análise Tecnored | 2026-06-26 → 2026-06-29 A (+3d) | 2026-06-26 → 2026-06-29 (+3d) | 0% → 50% | 12.55d → 15d |  |
| 569 | Atendimento de comentários | 2026-06-29 → 2026-06-30 (+1d) | 2026-06-29 → 2026-06-30 (+1d) |  | 12.55d → 15d |  |
| 570 | Aprovação | 2026-06-30 → 2026-07-01 (+1d) | 2026-06-30 → 2026-07-01 (+1d) |  | 12.55d → 15d |  |
| 571 | **FD-F0009-0306-MB-J-00016** | 2026-06-17 A → 2026-06-18 A (+1d) | 2026-06-30 → 2026-07-01 (+1d) | 35% → 70% | 12.55d → 15d |  |
| 572 | Emissão inicial | 2026-06-17 A → 2026-06-18 A (+1d) | 2026-06-25 → 2026-06-26 A (+1d) | 50% → 100% | 12.55d → none |  |
| 573 | Análise Tecnored | 2026-06-26 → 2026-06-29 (+3d) | 2026-06-26 → 2026-06-29 (+3d) |  | 12.55d → 15d |  |
| 574 | Atendimento de comentários | 2026-06-29 → 2026-06-30 (+1d) | 2026-06-29 → 2026-06-30 (+1d) |  | 12.55d → 15d |  |
| 575 | Aprovação | 2026-06-30 → 2026-07-01 (+1d) | 2026-06-30 → 2026-07-01 (+1d) |  | 12.55d → 15d |  |
| 576 | **LB-F0009-0306-MB-J-00001** | 2026-06-22 → 2026-06-30 (+8d) | 2026-06-30 → 2026-07-08 (+8d) |  | 12.55d → 10d |  |
| 577 | Emissão inicial | 2026-06-22 → 2026-06-30 (+8d) | 2026-06-24 → 2026-07-02 (+8d) |  | 12.55d → 10d | none → 472 |
| 578 | Análise Tecnored | 2026-06-25 → 2026-07-03 (+8d) | 2026-06-25 → 2026-07-03 (+8d) |  | 12.55d → 10d |  |

| ID | Task | Start | Finish | Complete | Total float |
| --- | --- | --- | --- | --- | --- |
| 579 | Atendimento de comentários | 2026-06-26 → 2026-07-06 (+10d) | 2026-06-29 → 2026-07-07 (+8d) |  | 12.55d → 10d |
| 580 | Aprovação | 2026-06-30 → 2026-07-08 (+8d) | 2026-06-30 → 2026-07-08 (+8d) |  | 12.55d → 10d |
| 581 | **RE-F0009-0306-MB-J-00001** |  |  | 56% → 75% | 15.55d → 19d |
| 583 | Análise Tecnored |  | 2026-06-22 A | 50% → 100% | 15.55d → none |
| 584 | Atendimento de comentários | 2026-06-23 A |  | 0% → 50% | 15.55d → 19d |

## Version 12 (data date 2026-06-30, saved 2026-06-30, file CR-F0009-0306-MB-F-00001 30062026_C2.mpp)

Note of the change: Primeira versao dashboard

Last finish 2026-07-23 → 2026-07-16 (-7d). Complete tasks 92 → 105.

Added:

| ID | Task | Duration | Start | Finish | Predecessors | Constraint |
| --- | --- | --- | --- | --- | --- | --- |
| 572 | Emissão inicial | 7d | 2026-06-18 A | 2026-06-26 A | 497SS |  |
| 573 | Análise Tecnored | 1d | 2026-06-29 | 2026-06-29 | 572 | finish no earlier than 2026-06-26 |
| 574 | Atendimento de comentários | 1d | 2026-06-30 | 2026-06-30 | 573 | start no earlier than 2026-06-29 |
| 575 | Aprovação | 1d | 2026-07-01 | 2026-07-01 | 574 | finish no earlier than 2026-06-30 |
| 576 | **FD-F0009-0306-MB-J-00017** | 10d | 2026-06-19 A | 2026-07-02 |  |  |
| 577 | Emissão inicial | 7d | 2026-06-19 A | 2026-06-29 A | 497SS |  |
| 578 | Análise Tecnored | 1d | 2026-06-30 | 2026-06-30 | 577 | finish no earlier than 2026-06-26 |
| 579 | Atendimento de comentários | 1d | 2026-07-01 | 2026-07-01 | 578 | start no earlier than 2026-06-29 |
| 580 | Aprovação | 1d | 2026-07-02 | 2026-07-02 | 579 | finish no earlier than 2026-06-30 |
| 581 | **FD-F0009-0306-MB-J-00018** | 10d | 2026-06-19 A | 2026-07-02 |  |  |
| 582 | Emissão inicial | 7d | 2026-06-19 A | 2026-06-29 A | 497SS |  |
| 583 | Análise Tecnored | 1d | 2026-06-30 | 2026-06-30 | 582 | finish no earlier than 2026-06-26 |
| 584 | Atendimento de comentários | 1d | 2026-07-01 | 2026-07-01 | 583 | start no earlier than 2026-06-29 |
| 585 | Aprovação | 1d | 2026-07-02 | 2026-07-02 | 584 | finish no earlier than 2026-06-30 |
| 586 | **FD-F0009-0306-MB-J-00019** | 10d | 2026-06-19 A | 2026-07-02 |  |  |
| 587 | Emissão inicial | 7d | 2026-06-19 A | 2026-06-29 A | 497SS |  |
| 588 | Análise Tecnored | 1d | 2026-06-30 | 2026-06-30 | 587 | finish no earlier than 2026-06-26 |
| 589 | Atendimento de comentários | 1d | 2026-07-01 | 2026-07-01 | 588 | start no earlier than 2026-06-29 |
| 590 | Aprovação | 1d | 2026-07-02 | 2026-07-02 | 589 | finish no earlier than 2026-06-30 |
| 591 | **FD-F0009-0306-MB-J-00020** | 10d | 2026-06-19 A | 2026-07-02 |  |  |
| 592 | Emissão inicial | 7d | 2026-06-19 A | 2026-06-29 A | 497SS |  |
| 593 | Análise Tecnored | 1d | 2026-06-30 | 2026-06-30 | 592 | finish no earlier than 2026-06-26 |
| 594 | Atendimento de comentários | 1d | 2026-07-01 | 2026-07-01 | 593 | start no earlier than 2026-06-29 |
| 595 | Aprovação | 1d | 2026-07-02 | 2026-07-02 | 594 | finish no earlier than 2026-06-30 |
| 596 | **FD-F0009-0306-MB-J-00021** | 10d | 2026-06-19 A | 2026-07-02 |  |  |
| 597 | Emissão inicial | 7d | 2026-06-19 A | 2026-06-29 A | 497SS |  |
| 598 | Análise Tecnored | 1d | 2026-06-30 | 2026-06-30 | 597 | finish no earlier than 2026-06-26 |
| 599 | Atendimento de comentários | 1d | 2026-07-01 | 2026-07-01 | 598 | start no earlier than 2026-06-29 |
| 600 | Aprovação | 1d | 2026-07-02 | 2026-07-02 | 599 | finish no earlier than 2026-06-30 |
| 601 | **FD-F0009-0306-MB-J-00022** | 10d | 2026-06-19 A | 2026-07-02 |  |  |
| 602 | Emissão inicial | 7d | 2026-06-19 A | 2026-06-29 A | 497SS |  |
| 603 | Análise Tecnored | 1d | 2026-06-30 | 2026-06-30 | 602 | finish no earlier than 2026-06-26 |
| 604 | Atendimento de comentários | 1d | 2026-07-01 | 2026-07-01 | 603 | start no earlier than 2026-06-29 |
| 605 | Aprovação | 1d | 2026-07-02 | 2026-07-02 | 604 | finish no earlier than 2026-06-30 |
| 606 | **FD-F0009-0306-MB-J-00023** | 10d | 2026-06-19 A | 2026-07-02 |  |  |

Changed:

| ID | Task | Start | Finish | Duration | Complete | Total float | Predecessors | Other |
| --- | --- | --- | --- | --- | --- | --- | --- | --- |
| 1 | **F0009 - Programa Marabá** |  | 2026-07-22 → 2026-07-13 (-9d) | 61d → 54d | 47% → 53% |  |  |  |
| 2 | **Área 0306 - Sopradores** |  | 2026-07-22 → 2026-07-13 (-9d) | 61d → 54d | 47% → 53% |  |  |  |
| 60 | Aprovação |  |  |  |  |  |  | was named 0 |
| 61 | **Mecânica** |  | 2026-07-07 → 2026-07-09 (+2d) | 29d → 31d |  | 11d → 2d |  |  |
| 82 | **AG-F0009-0306-MB-L-00001** | 2026-06-29 → 2026-07-01 (+2d) | 2026-07-07 → 2026-07-09 (+2d) |  |  | 11d → 2d |  |  |
| 83 | Emissão inicial | 2026-06-29 → 2026-07-01 (+2d) | 2026-07-02 → 2026-07-06 (+4d) |  |  | 11d → 2d |  |  |
| 84 | Análise Tecnored | 2026-07-03 → 2026-07-07 (+4d) | 2026-07-03 → 2026-07-07 (+4d) |  |  | 11d → 2d |  |  |
| 85 | Atendimento de comentários | 2026-07-06 → 2026-07-08 (+2d) | 2026-07-06 → 2026-07-08 (+2d) |  |  | 11d → 2d |  |  |
| 86 | Aprovação | 2026-07-07 → 2026-07-09 (+2d) | 2026-07-07 → 2026-07-09 (+2d) |  |  | 11d → 2d |  |  |
| 87 | **AG-F0009-0306-MB-L-00002** | 2026-06-29 → 2026-07-01 (+2d) | 2026-07-07 → 2026-07-09 (+2d) |  |  | 11d → 2d |  |  |
| 88 | Emissão inicial | 2026-06-29 → 2026-07-01 (+2d) | 2026-07-02 → 2026-07-06 (+4d) |  |  | 11d → 2d |  |  |
| 89 | Análise Tecnored | 2026-07-03 → 2026-07-07 (+4d) | 2026-07-03 → 2026-07-07 (+4d) |  |  | 11d → 2d |  |  |
| 90 | Atendimento de comentários | 2026-07-06 → 2026-07-08 (+2d) | 2026-07-06 → 2026-07-08 (+2d) |  |  | 11d → 2d |  |  |
| 91 | Aprovação | 2026-07-07 → 2026-07-09 (+2d) | 2026-07-07 → 2026-07-09 (+2d) |  |  | 11d → 2d |  |  |
| 92 | **AG-F0009-0306-MB-L-00003** | 2026-06-29 → 2026-07-01 (+2d) | 2026-07-07 → 2026-07-09 (+2d) |  |  | 11d → 2d |  |  |
| 93 | Emissão inicial | 2026-06-29 → 2026-07-01 (+2d) | 2026-07-02 → 2026-07-06 (+4d) |  |  | 11d → 2d |  |  |
| 94 | Análise Tecnored | 2026-07-03 → 2026-07-07 (+4d) | 2026-07-03 → 2026-07-07 (+4d) |  |  | 11d → 2d |  |  |
| 95 | Atendimento de comentários | 2026-07-06 → 2026-07-08 (+2d) | 2026-07-06 → 2026-07-08 (+2d) |  |  | 11d → 2d |  |  |
| 96 | Aprovação | 2026-07-07 → 2026-07-09 (+2d) | 2026-07-07 → 2026-07-09 (+2d) |  |  | 11d → 2d |  |  |
| 97 | **AG-F0009-0306-MB-L-00004** | 2026-06-29 → 2026-07-01 (+2d) | 2026-07-07 → 2026-07-09 (+2d) |  |  | 11d → 2d |  |  |
| 98 | Emissão inicial | 2026-06-29 → 2026-07-01 (+2d) | 2026-07-02 → 2026-07-06 (+4d) |  |  | 11d → 2d |  |  |
| 99 | Análise Tecnored | 2026-07-03 → 2026-07-07 (+4d) | 2026-07-03 → 2026-07-07 (+4d) |  |  | 11d → 2d |  |  |
| 100 | Atendimento de comentários | 2026-07-06 → 2026-07-08 (+2d) | 2026-07-06 → 2026-07-08 (+2d) |  |  | 11d → 2d |  |  |
| 101 | Aprovação | 2026-07-07 → 2026-07-09 (+2d) | 2026-07-07 → 2026-07-09 (+2d) |  |  | 11d → 2d |  |  |
| 233 | **Estrutura metálica** | 2026-06-18 A → 2026-06-16 A (-2d) | 2026-07-09 → 2026-07-03 (-6d) | 16d → 14d | 8% → 54% | 9d → 6d |  |  |
| 239 | **ML-F0009-0306-MB-S-00001** | 2026-06-24 A → 2026-06-26 A (+2d) | 2026-07-01 → 2026-07-03 (+2d) |  |  | 15d → 6d |  |  |
| 240 | Emissão inicial | 2026-06-24 A → 2026-06-26 A (+2d) | 2026-06-26 A → 2026-06-30 A (+4d) |  |  |  |  |  |
| 241 | Análise Tecnored | 2026-06-29 → 2026-07-01 (+2d) | 2026-06-29 → 2026-07-01 (+2d) |  |  | 3.45d → 1.45d |  |  |
| 242 | Atendimento de comentários | 2026-06-30 → 2026-07-02 (+2d) | 2026-06-30 → 2026-07-02 (+2d) |  |  | 15d → 6d |  |  |
| 243 | Aprovação | 2026-07-01 → 2026-07-03 (+2d) | 2026-07-01 → 2026-07-03 (+2d) |  |  | 15d → 6d |  |  |
| 244 | **PQ-F0009-0306-MB-S-00001** | 2026-07-02 → 2026-06-26 A (-6d) | 2026-07-09 → 2026-07-03 (-6d) |  | 0% → 50% | 9d → 6d |  |  |
| 245 | Emissão inicial | 2026-07-02 → 2026-06-26 A (-6d) | 2026-07-06 → 2026-06-30 A (-6d) |  | 0% → 100% | 9d → none |  | constraint none → finish no earlier than 2026-06-30 |
| 246 | Análise Tecnored | 2026-07-07 → 2026-07-01 (-6d) | 2026-07-07 → 2026-07-01 (-6d) |  |  | 9d → 6d |  |  |
| 247 | Atendimento de comentários | 2026-07-08 → 2026-07-02 (-6d) | 2026-07-08 → 2026-07-02 (-6d) |  |  | 9d → 6d |  |  |
| 248 | Aprovação | 2026-07-09 → 2026-07-03 (-6d) | 2026-07-09 → 2026-07-03 (-6d) |  |  | 9d → 6d |  |  |
| 249 | **LM-F0009-0306-MB-S-00001** | 2026-06-29 → 2026-07-01 (+2d) | 2026-07-06 → 2026-07-08 (+2d) |  |  | 9d → 3d |  |  |
| 250 | Emissão inicial | 2026-06-29 → 2026-07-01 (+2d) | 2026-07-01 → 2026-07-03 (+2d) |  |  | 9d → 3d |  |  |
| 251 | Análise Tecnored | 2026-07-02 → 2026-07-06 (+4d) | 2026-07-02 → 2026-07-06 (+4d) |  |  | 12d → 3d |  |  |
| 252 | Atendimento de comentários | 2026-07-03 → 2026-07-07 (+4d) | 2026-07-03 → 2026-07-07 (+4d) |  |  | 12d → 3d |  |  |
| 253 | Aprovação | 2026-07-06 → 2026-07-08 (+2d) | 2026-07-06 → 2026-07-08 (+2d) |  |  | 12d → 3d |  |  |
| 259 | **AG-F0009-0306-MB-S-00001** | 2026-06-29 → 2026-06-25 A (-4d) | 2026-07-07 → 2026-07-03 (-4d) |  | 0% → 57% | 11d → 6d |  |  |
| 260 | Emissão inicial | 2026-06-29 → 2026-06-25 A (-4d) | 2026-07-02 → 2026-06-30 A (-2d) |  | 0% → 100% | 11d → none |  |  |
| 261 | Análise Tecnored | 2026-07-03 → 2026-07-01 (-2d) | 2026-07-03 → 2026-07-01 (-2d) |  |  | 11d → 6d |  |  |
| 262 | Atendimento de comentários | 2026-07-06 → 2026-07-02 (-4d) | 2026-07-06 → 2026-07-02 (-4d) |  |  | 11d → 6d |  |  |
| 263 | Aprovação | 2026-07-07 → 2026-07-03 (-4d) | 2026-07-07 → 2026-07-03 (-4d) |  |  | 11d → 6d |  |  |
| 264 | **AG-F0009-0306-MB-S-00002** | 2026-06-29 → 2026-06-25 A (-4d) | 2026-07-07 → 2026-07-03 (-4d) |  | 0% → 57% | 11d → 6d |  |  |
| 265 | Emissão inicial | 2026-06-29 → 2026-06-25 A (-4d) | 2026-07-02 → 2026-06-30 A (-2d) |  | 0% → 100% | 11d → none |  |  |
| 266 | Análise Tecnored | 2026-07-03 → 2026-07-01 (-2d) | 2026-07-03 → 2026-07-01 (-2d) |  |  | 11d → 6d |  |  |
| 267 | Atendimento de comentários | 2026-07-06 → 2026-07-02 (-4d) | 2026-07-06 → 2026-07-02 (-4d) |  |  | 11d → 6d |  |  |
| 268 | Aprovação | 2026-07-07 → 2026-07-03 (-4d) | 2026-07-07 → 2026-07-03 (-4d) |  |  | 11d → 6d |  |  |
| 269 | **AG-F0009-0306-MB-S-00003** | 2026-06-29 → 2026-06-25 A (-4d) | 2026-07-07 → 2026-07-03 (-4d) |  | 0% → 57% | 11d → 6d |  |  |
| 270 | Emissão inicial | 2026-06-29 → 2026-06-25 A (-4d) | 2026-07-02 → 2026-06-30 A (-2d) |  | 0% → 100% | 11d → none |  |  |
| 271 | Análise Tecnored | 2026-07-03 → 2026-07-01 (-2d) | 2026-07-03 → 2026-07-01 (-2d) |  |  | 11d → 6d |  |  |
| 272 | Atendimento de comentários | 2026-07-06 → 2026-07-02 (-4d) | 2026-07-06 → 2026-07-02 (-4d) |  |  | 11d → 6d |  |  |
| 273 | Aprovação | 2026-07-07 → 2026-07-03 (-4d) | 2026-07-07 → 2026-07-03 (-4d) |  |  | 11d → 6d |  |  |
| 274 | **AG-F0009-0306-MB-S-00004** | 2026-06-29 → 2026-06-25 A (-4d) | 2026-07-07 → 2026-07-03 (-4d) |  | 0% → 57% | 11d → 6d |  |  |
| 275 | Emissão inicial | 2026-06-29 → 2026-06-25 A (-4d) | 2026-07-02 → 2026-06-30 A (-2d) |  | 0% → 100% | 11d → none |  |  |
| 276 | Análise Tecnored | 2026-07-03 → 2026-07-01 (-2d) | 2026-07-03 → 2026-07-01 (-2d) |  |  | 11d → 6d |  |  |
| 277 | Atendimento de comentários | 2026-07-06 → 2026-07-02 (-4d) | 2026-07-06 → 2026-07-02 (-4d) |  |  | 11d → 6d |  |  |
| 278 | Aprovação | 2026-07-07 → 2026-07-03 (-4d) | 2026-07-07 → 2026-07-03 (-4d) |  |  | 11d → 6d |  |  |
| 279 | **AG-F0009-0306-MB-S-00005** | 2026-06-29 → 2026-07-01 (+2d) | 2026-07-07 → 2026-07-09 (+2d) |  |  | 11d → 2d |  |  |
| 280 | Emissão inicial | 2026-06-29 → 2026-07-01 (+2d) | 2026-07-02 → 2026-07-06 (+4d) |  |  | 11d → 2d |  |  |
| 281 | Análise Tecnored | 2026-07-03 → 2026-07-07 (+4d) | 2026-07-03 → 2026-07-07 (+4d) |  |  | 11d → 2d |  |  |
| 282 | Atendimento de comentários | 2026-07-06 → 2026-07-08 (+2d) | 2026-07-06 → 2026-07-08 (+2d) |  |  | 11d → 2d |  |  |
| 283 | Aprovação | 2026-07-07 → 2026-07-09 (+2d) | 2026-07-07 → 2026-07-09 (+2d) |  |  | 11d → 2d |  |  |
| 284 | **PL-F0009-0306-MB-S-00001** | 2026-06-29 → 2026-06-16 A (-13d) | 2026-07-07 → 2026-06-24 (-13d) |  | 0% → 57% | 11d → 13d |  |  |
| 285 | Emissão inicial | 2026-06-29 → 2026-06-16 A (-13d) | 2026-07-02 → 2026-06-19 A (-13d) |  | 0% → 100% | 11d → none | 240 → 255FF | constraint none → start no earlier than 2026-06-16 |
| 286 | Análise Tecnored | 2026-07-03 → 2026-06-22 (-11d) | 2026-07-03 → 2026-06-22 (-11d) |  |  | 11d → 13d |  |  |
| 287 | Atendimento de comentários | 2026-07-06 → 2026-06-23 (-13d) | 2026-07-06 → 2026-06-23 (-13d) |  |  | 11d → 13d |  |  |
| 288 | Aprovação | 2026-07-07 → 2026-06-24 (-13d) | 2026-07-07 → 2026-06-24 (-13d) |  |  | 11d → 13d |  |  |

| ID | Task | Start | Finish | Duration | Complete | Total float | Predecessors | Other |
| --- | --- | --- | --- | --- | --- | --- | --- | --- |
| 289 | **Elétrica** |  | 2026-07-22 → 2026-07-13 (-9d) | 38d → 31d |  |  |  |  |
| 315 | **LM-F0009-0306-MB-E-00001** | 2026-07-15 → 2026-07-06 (-9d) | 2026-07-17 → 2026-07-08 (-9d) |  |  |  |  |  |
| 316 | Emissão inicial | 2026-07-15 → 2026-07-06 (-9d) | 2026-07-15 → 2026-07-06 (-9d) |  |  |  |  |  |
| 317 | Análise Tecnored | 2026-07-16 → 2026-07-07 (-9d) | 2026-07-16 → 2026-07-07 (-9d) |  |  |  |  |  |
| 318 | Atendimento de comentários | 2026-07-17 → 2026-07-08 (-9d) | 2026-07-17 → 2026-07-08 (-9d) |  |  |  |  |  |
| 319 | Aprovação | 2026-07-17 → 2026-07-08 (-9d) | 2026-07-17 → 2026-07-08 (-9d) |  |  |  |  |  |
| 320 | **PQ-F0009-0306-MB-E-00001** | 2026-07-16 → 2026-07-07 (-9d) | 2026-07-22 → 2026-07-13 (-9d) |  |  |  |  |  |
| 321 | Emissão inicial | 2026-07-16 → 2026-07-07 (-9d) | 2026-07-20 → 2026-07-09 (-11d) |  |  |  |  |  |
| 322 | Análise Tecnored | 2026-07-21 → 2026-07-10 (-11d) | 2026-07-21 → 2026-07-10 (-11d) |  |  |  |  |  |
| 323 | Atendimento de comentários | 2026-07-22 → 2026-07-13 (-9d) | 2026-07-22 → 2026-07-13 (-9d) |  |  |  |  |  |
| 324 | Aprovação | 2026-07-22 → 2026-07-13 (-9d) | 2026-07-22 → 2026-07-13 (-9d) |  |  |  |  |  |
| 325 | **MD-F0009-0306-MB-E-00001** | 2026-07-16 → 2026-07-07 (-9d) | 2026-07-23 → 2026-07-14 (-9d) |  |  |  |  |  |
| 326 | Emissão inicial | 2026-07-16 → 2026-07-07 (-9d) | 2026-07-17 → 2026-07-08 (-9d) |  |  |  |  |  |
| 327 | Análise Tecnored | 2026-07-20 → 2026-07-09 (-11d) | 2026-07-20 → 2026-07-09 (-11d) |  |  |  |  |  |
| 328 | Atendimento de comentários | 2026-07-21 → 2026-07-10 (-11d) | 2026-07-22 → 2026-07-13 (-9d) |  |  |  |  |  |
| 329 | Aprovação | 2026-07-23 → 2026-07-14 (-9d) | 2026-07-23 → 2026-07-14 (-9d) |  |  |  |  |  |
| 340 | **AG-F0009-0306-MB-E-00001** | 2026-07-08 → 2026-06-29 (-9d) | 2026-07-15 → 2026-07-06 (-9d) |  |  |  |  |  |
| 341 | Emissão inicial | 2026-07-08 → 2026-06-29 (-9d) | 2026-07-13 → 2026-07-02 (-11d) |  |  |  | 296 → none | constraint none → start no earlier than 2026-06-29 |
| 342 | Análise Tecnored | 2026-07-14 → 2026-07-03 (-11d) | 2026-07-14 → 2026-07-03 (-11d) |  |  |  |  |  |
| 343 | Atendimento de comentários | 2026-07-15 → 2026-07-06 (-9d) | 2026-07-15 → 2026-07-06 (-9d) |  |  |  |  |  |
| 344 | Aprovação | 2026-07-15 → 2026-07-06 (-9d) | 2026-07-15 → 2026-07-06 (-9d) |  |  |  |  |  |
| 365 | **AG-F0009-0306-MB-E-00002** | 2026-06-24 A → 2026-06-29 A (+5d) | 2026-07-01 → 2026-07-06 (+5d) |  |  | 15d → 5d |  |  |
| 366 | Emissão inicial | 2026-06-24 A → 2026-06-29 A (+5d) | 2026-06-29 → 2026-07-02 (+3d) |  |  | 15d → 5d |  |  |
| 367 | Análise Tecnored | 2026-06-30 → 2026-07-03 (+3d) | 2026-06-30 → 2026-07-03 (+3d) |  |  | 15d → 5d |  |  |
| 368 | Atendimento de comentários | 2026-07-01 → 2026-07-06 (+5d) | 2026-07-01 → 2026-07-06 (+5d) |  |  | 15d → 5d |  |  |
| 369 | Aprovação | 2026-07-01 → 2026-07-06 (+5d) | 2026-07-01 → 2026-07-06 (+5d) |  |  | 15d → 5d |  |  |
| 370 | **AG-F0009-0306-MB-E-00003** | 2026-06-24 A → 2026-06-29 A (+5d) | 2026-07-01 → 2026-07-06 (+5d) |  |  | 15d → 5d |  |  |
| 371 | Emissão inicial | 2026-06-24 A → 2026-06-29 A (+5d) | 2026-06-29 → 2026-07-02 (+3d) |  |  | 15d → 5d |  |  |
| 372 | Análise Tecnored | 2026-06-30 → 2026-07-03 (+3d) | 2026-06-30 → 2026-07-03 (+3d) |  |  | 15d → 5d |  |  |
| 373 | Atendimento de comentários | 2026-07-01 → 2026-07-06 (+5d) | 2026-07-01 → 2026-07-06 (+5d) |  |  | 15d → 5d |  |  |
| 374 | Aprovação | 2026-07-01 → 2026-07-06 (+5d) | 2026-07-01 → 2026-07-06 (+5d) |  |  | 15d → 5d |  |  |
| 400 | **Automação e instrumentação** |  |  |  | 60% → 62% | 10d → 3d |  |  |
| 607 | Emissão inicial | 2026-06-18 A → 2026-06-19 A (+1d) | 2026-06-26 A → 2026-06-29 A (+3d) |  |  |  |  |  |
| 608 | Análise Tecnored | 2026-06-29 → 2026-06-30 (+1d) | 2026-06-29 → 2026-06-30 (+1d) |  |  | 15d → 7d |  |  |
| 609 | Atendimento de comentários | 2026-06-30 → 2026-07-01 (+1d) | 2026-06-30 → 2026-07-01 (+1d) |  |  | 15d → 7d |  |  |
| 610 | Aprovação | 2026-07-01 → 2026-07-02 (+1d) | 2026-07-01 → 2026-07-02 (+1d) |  |  | 15d → 7d |  |  |
| 626 | **Civil** | 2026-06-22 → 2026-06-29 (+7d) | 2026-07-02 → 2026-07-09 (+7d) |  |  | 14d → 2d |  |  |
| 627 | **MC-F0009-0306-MB-C-00001** | 2026-06-22 → 2026-06-29 (+7d) | 2026-07-01 → 2026-07-08 (+7d) |  |  | 14d → 2d |  |  |
| 628 | Emissão inicial | 2026-06-22 → 2026-06-29 (+7d) | 2026-06-26 → 2026-07-03 (+7d) |  |  | 14d → 2d |  | constraint start no earlier than 2026-06-22 → start no earlier than 2026-06-29 |
| 629 | Análise Tecnored | 2026-06-29 → 2026-07-06 (+7d) | 2026-06-29 → 2026-07-06 (+7d) |  |  | 15d → 3d |  |  |
| 630 | Atendimento de comentários | 2026-06-30 → 2026-07-07 (+7d) | 2026-06-30 → 2026-07-07 (+7d) |  |  | 15d → 3d |  |  |
| 631 | Aprovação | 2026-07-01 → 2026-07-08 (+7d) | 2026-07-01 → 2026-07-08 (+7d) |  |  | 15d → 3d |  |  |
| 632 | **PQ-F0009-0306-MB-C-00001** | 2026-06-29 → 2026-07-06 (+7d) | 2026-07-02 → 2026-07-09 (+7d) |  |  | 14d → 2d |  |  |
| 633 | Emissão inicial | 2026-06-29 → 2026-07-06 (+7d) | 2026-06-29 → 2026-07-06 (+7d) |  |  | 14d → 2d |  |  |
| 634 | Análise Tecnored | 2026-06-30 → 2026-07-07 (+7d) | 2026-06-30 → 2026-07-07 (+7d) |  |  | 14d → 2d |  |  |
| 635 | Atendimento de comentários | 2026-07-01 → 2026-07-08 (+7d) | 2026-07-01 → 2026-07-08 (+7d) |  |  | 14d → 2d |  |  |
| 636 | Aprovação | 2026-07-02 → 2026-07-09 (+7d) | 2026-07-02 → 2026-07-09 (+7d) |  |  | 14d → 2d |  |  |
