# CR-F0008-0000-GE-F-00001 23042026

How a schedule from MS Project changed from version to version. A marks actual dates.

## Version 1 (data date 2026-06-16, saved 2026-06-18, file CR-F0009-0000-GE-F-00001_REV01 16062026.mpp)

Note of the change: Primeira versao dashboard

| ID | WBS | Task | Duration | Start | Finish | Predecessors | Complete | Total float | Constraint |
| --- | --- | --- | --- | --- | --- | --- | --- | --- | --- |
| 1 | 1 | **F0009 - COM 0023 - CECAL** | 135.88d? | 2026-03-31 A | 2026-10-06 |  | 3% | 0d |  |
| 2 |  | MARCOS 309 | 113d | 2026-03-31 A | 2026-09-03 | 3SS | 33% |  |  |
| 3 | 1.2 | **MARCOS 309** | 113d? | 2026-03-31 A | 2026-09-03 |  | 50% | 22.88d |  |
| 4 |  | Reunião de kick-off | 1d | 2026-03-31 A | 2026-03-31 A |  | 100% |  | start no earlier than 2026-03-31 |
| 5 |  | Reunião Design Review 1 | 1d? | 2026-05-01 A | 2026-05-01 A | 4FS+30ed | 100% |  |  |
| 6 |  | Reunião Design Review 2 | 1d? | 2026-06-01 A | 2026-06-01 A | 5FS+30ed | 100% |  |  |
| 7 |  | Reunião Design Review 3 | 1d? | 2026-07-02 | 2026-07-02 | 6FS+30ed |  | 21d |  |
| 8 |  | Reunião Design Review 4 | 1d? | 2026-08-03 | 2026-08-03 | 7FS+30ed |  | 21.88d |  |
| 9 |  | Reunião Design Review 5 | 1d? | 2026-09-03 | 2026-09-03 | 8FS+30ed |  | 21.88d |  |
| 10 |  | PENDÊNCIAS 309 | 60.88d | 2026-03-31 A | 2026-06-23 | 11SS | 52% |  |  |
| 11 | 1.4 | **PENDÊNCIAS 309** | 65.88d? | 2026-03-31 A | 2026-06-30 |  | 29% | 39d |  |
| 12 |  | LD dos documentos Multitec | 1d? | 2026-04-23 A | 2026-04-23 A |  | 100% |  |  |
| 13 |  | Revisão do cronograma nas tarefas da Engenharia Básica | 1d? | 2026-04-23 A | 2026-04-23 A |  | 100% |  |  |
| 14 |  | Definição do comprimento do forno | 65.88d? | 2026-03-31 A | 2026-06-30 |  | 56% | 39d | finish no earlier than 2026-06-30 |
| 15 |  | Avaliação do aumento largura da cuba de BAR e cadinho | 49.88d? | 2026-04-22 A | 2026-06-30 |  | 36% | 39d | finish no earlier than 2026-06-30 |
| 16 |  | Avaliação de compatibilidade com carregamento, utilidades e instrumentação | 41.88d? | 2026-05-04 A | 2026-06-30 |  | 21% | 39d | finish no earlier than 2026-06-30 |
| 17 |  | Avaliação de novas tecnologias (ventaneira lateral, injeção de gás V1 e V2, passagem de gás pela cuba) | 34.88d? | 2026-05-13 A | 2026-06-30 |  | 6% | 39d | finish no earlier than 2026-06-30 |
| 18 |  | Incorporação das novas tecnologias no modelo | 29.88d? | 2026-05-20 | 2026-06-30 |  |  | 39d | finish no earlier than 2026-06-30 |
| 19 |  | Aprovação da geometria básica | 9.88d? | 2026-06-17 | 2026-06-30 |  |  | 0d | finish no earlier than 2026-06-30 |
| 20 |  | GERAL/ COORDENAÇÃO 309 | 66d | 2026-06-24 | 2026-09-23 | 21SS |  |  |  |
| 21 | 1.6 | **GERAL/ COORDENAÇÃO 309** | 66d | 2026-07-01 | 2026-10-01 | 11FS+1d |  | 3d |  |
| 22 | 1.6.1 | **3DT-F0009-0309-MB-G-00001** | 15d | 2026-09-10 | 2026-10-01 |  |  | 3d |  |
| 23 |  | Emissão inicial | 5d | 2026-09-10 | 2026-09-17 | 410 |  | 3d |  |
| 24 |  | Avaliação do Cliente | 5d | 2026-09-17 | 2026-09-24 | 23 |  | 3d |  |
| 25 |  | Atendimento de Comentário | 3d | 2026-09-24 | 2026-09-29 | 24 |  | 3d |  |
| 26 |  | Aprovação | 2d | 2026-09-29 | 2026-10-01 | 25 |  | 3d |  |
| 27 | 1.6.2 | **3DT-F0009-0309-MB-G-00002** | 15d | 2026-09-10 | 2026-10-01 |  |  | 3d |  |
| 28 |  | Emissão inicial | 5d | 2026-09-10 | 2026-09-17 | 410 |  | 3d |  |
| 29 |  | Avaliação do Cliente | 5d | 2026-09-17 | 2026-09-24 | 28 |  | 3d |  |
| 30 |  | Atendimento de Comentário | 3d | 2026-09-24 | 2026-09-29 | 29 |  | 3d |  |
| 31 |  | Aprovação | 2d | 2026-09-29 | 2026-10-01 | 30 |  | 3d |  |
| 32 | 1.6.3 | **3DT-F0009-0309-MB-G-00003** | 15d | 2026-09-10 | 2026-10-01 |  |  | 3d |  |
| 33 |  | Emissão inicial | 5d | 2026-09-10 | 2026-09-17 | 410 |  | 3d |  |
| 34 |  | Avaliação do Cliente | 5d | 2026-09-17 | 2026-09-24 | 33 |  | 3d |  |
| 35 |  | Atendimento de Comentário | 3d | 2026-09-24 | 2026-09-29 | 34 |  | 3d |  |
| 36 |  | Aprovação | 2d | 2026-09-29 | 2026-10-01 | 35 |  | 3d |  |
| 37 | 1.6.4 | **BK-F0009-0300-MB-G-00001** | 30d | 2026-07-01 | 2026-08-12 |  |  | 39d |  |
| 38 |  | Emissão inicial | 15d | 2026-07-01 | 2026-07-22 |  |  | 39d |  |
| 39 |  | Avaliação do Cliente | 5d | 2026-07-22 | 2026-07-29 | 38 |  | 39d |  |
| 40 |  | Atendimento de Comentário | 5d | 2026-07-29 | 2026-08-05 | 39 |  | 39d |  |
| 41 |  | Aprovação | 5d | 2026-08-05 | 2026-08-12 | 40 |  | 39d |  |
| 42 | 1.6.5 | **EG-F0009-0309-MB-G-00001** | 30d | 2026-08-20 | 2026-10-01 |  |  | 3d |  |
| 43 |  | Emissão inicial | 15d | 2026-08-20 | 2026-09-10 | 23SF |  | 3d |  |
| 44 |  | Avaliação do Cliente | 5d | 2026-09-10 | 2026-09-17 | 43 |  | 3d |  |
| 45 |  | Atendimento de Comentário | 5d | 2026-09-17 | 2026-09-24 | 44 |  | 3d |  |
| 46 |  | Aprovação | 5d | 2026-09-24 | 2026-10-01 | 45 |  | 3d |  |
| 47 |  | MECÂNICA / ARRANJOS 309 | 69.88d | 2026-06-24 | 2026-09-29 | 48SS |  |  |  |
| 48 | 1.8 | **MECÂNICA / ARRANJOS 309** | 70d | 2026-06-30 | 2026-10-06 |  |  | 0d |  |
| 49 | 1.8.1 | **AG-F0009-0302-MB-L-00001** | 23d | 2026-06-30 | 2026-07-31 |  |  | 2d | start no earlier than 2026-06-24 |
| 50 |  | Emissão inicial | 10d | 2026-06-30 | 2026-07-14 | 19 |  | 2d | start no earlier than 2026-06-24 |
| 51 |  | Avaliação do Cliente | 5d | 2026-07-14 | 2026-07-21 | 50 |  | 47d | finish no earlier than 2026-07-07 |
| 52 |  | Atendimento de Comentário | 3d | 2026-07-21 | 2026-07-24 | 51 |  | 47d | finish no earlier than 2026-07-07 |
| 53 |  | Aprovação | 5d | 2026-07-24 | 2026-07-31 | 52 |  | 47d | finish no earlier than 2026-07-07 |
| 54 | 1.8.2 | **AG-F0009-0302-MB-L-00002** | 20d | 2026-07-14 | 2026-08-11 |  |  | 40d |  |
| 55 |  | Emissão inicial | 10d | 2026-07-14 | 2026-07-28 | 50 |  | 40d | finish no earlier than 2026-07-21 |
| 56 |  | Avaliação do Cliente | 5d | 2026-07-28 | 2026-08-04 | 55 |  | 40d | finish no earlier than 2026-07-21 |
| 57 |  | Atendimento de Comentário | 3d | 2026-08-04 | 2026-08-07 | 56 |  | 40d | finish no earlier than 2026-07-21 |
| 58 |  | Aprovação | 2d | 2026-08-07 | 2026-08-11 | 57 |  | 40d | finish no earlier than 2026-07-21 |
| 59 | 1.8.3 | **AG-F0009-0302-MB-L-00003** | 16d | 2026-07-14 | 2026-08-05 |  |  | 44d |  |
| 60 |  | Emissão inicial | 10d | 2026-07-14 | 2026-07-28 | 50 |  | 44d | finish no earlier than 2026-07-21 |
| 61 |  | Avaliação do Cliente | 1d | 2026-07-28 | 2026-07-29 | 60 |  | 44d | finish no earlier than 2026-07-21 |
| 62 |  | Atendimento de Comentário | 3d | 2026-07-29 | 2026-08-03 | 61 |  | 44d | finish no earlier than 2026-07-21 |
| 63 |  | Aprovação | 2d | 2026-08-03 | 2026-08-05 | 62 |  | 44d | finish no earlier than 2026-07-21 |
| 64 | 1.8.4 | **AG-F0009-0302-MB-L-00004** | 20d | 2026-07-14 | 2026-08-11 |  |  | 40d |  |
| 65 |  | Emissão inicial | 10d | 2026-07-14 | 2026-07-28 | 50 |  | 40d | finish no earlier than 2026-07-21 |
| 66 |  | Avaliação do Cliente | 5d | 2026-07-28 | 2026-08-04 | 65 |  | 40d | finish no earlier than 2026-07-21 |
| 67 |  | Atendimento de Comentário | 3d | 2026-08-04 | 2026-08-07 | 66 |  | 40d | finish no earlier than 2026-07-21 |
| 68 |  | Aprovação | 2d | 2026-08-07 | 2026-08-11 | 67 |  | 40d | finish no earlier than 2026-07-21 |
| 69 | 1.8.5 | **AG-F0009-0302-MB-L-00005** | 20d | 2026-07-14 | 2026-08-11 |  |  | 40d |  |
| 70 |  | Emissão inicial | 10d | 2026-07-14 | 2026-07-28 | 50 |  | 40d | finish no earlier than 2026-07-21 |

| ID | WBS | Task | Duration | Start | Finish | Predecessors | Total float | Constraint |
| --- | --- | --- | --- | --- | --- | --- | --- | --- |
| 71 |  | Avaliação do Cliente | 5d | 2026-07-28 | 2026-08-04 | 70 | 40d | finish no earlier than 2026-07-21 |
| 72 |  | Atendimento de Comentário | 3d | 2026-08-04 | 2026-08-07 | 71 | 40d | finish no earlier than 2026-07-21 |
| 73 |  | Aprovação | 2d | 2026-08-07 | 2026-08-11 | 72 | 40d | finish no earlier than 2026-07-21 |
| 74 | 1.8.6 | **AG-F0009-0302-MB-L-00006** | 23d | 2026-07-14 | 2026-08-14 |  | 37d |  |
| 75 |  | Emissão inicial | 10d | 2026-07-14 | 2026-07-28 | 50 | 37d | finish no earlier than 2026-07-21 |
| 76 |  | Avaliação do Cliente | 5d | 2026-07-28 | 2026-08-04 | 75 | 37d | finish no earlier than 2026-07-21 |
| 77 |  | Atendimento de Comentário | 3d | 2026-08-04 | 2026-08-07 | 76 | 37d | finish no earlier than 2026-07-21 |
| 78 |  | Aprovação | 5d | 2026-08-07 | 2026-08-14 | 77 | 37d | finish no earlier than 2026-07-21 |
| 79 | 1.8.7 | **AG-F0009-0302-MB-L-00007** | 20d | 2026-07-14 | 2026-08-11 |  | 40d |  |
| 80 |  | Emissão inicial | 10d | 2026-07-14 | 2026-07-28 | 50 | 40d | finish no earlier than 2026-07-21 |
| 81 |  | Avaliação do Cliente | 5d | 2026-07-28 | 2026-08-04 | 80 | 40d | finish no earlier than 2026-07-21 |
| 82 |  | Atendimento de Comentário | 3d | 2026-08-04 | 2026-08-07 | 81 | 40d | finish no earlier than 2026-07-21 |
| 83 |  | Aprovação | 2d | 2026-08-07 | 2026-08-11 | 82 | 40d | finish no earlier than 2026-07-21 |
| 84 | 1.8.8 | **AG-F0009-0302-MB-L-00008** | 20d | 2026-07-14 | 2026-08-11 |  | 40d |  |
| 85 |  | Emissão inicial | 10d | 2026-07-14 | 2026-07-28 | 50 | 40d | finish no earlier than 2026-07-21 |
| 86 |  | Avaliação do Cliente | 5d | 2026-07-28 | 2026-08-04 | 85 | 40d | finish no earlier than 2026-07-21 |
| 87 |  | Atendimento de Comentário | 3d | 2026-08-04 | 2026-08-07 | 86 | 40d | finish no earlier than 2026-07-21 |
| 88 |  | Aprovação | 2d | 2026-08-07 | 2026-08-11 | 87 | 40d | finish no earlier than 2026-07-21 |
| 89 | 1.8.9 | **AG-F0009-0302-MB-L-00009** | 20d | 2026-07-14 | 2026-08-11 |  | 40d |  |
| 90 |  | Emissão inicial | 10d | 2026-07-14 | 2026-07-28 | 50 | 40d | finish no earlier than 2026-07-21 |
| 91 |  | Avaliação do Cliente | 5d | 2026-07-28 | 2026-08-04 | 90 | 40d | finish no earlier than 2026-07-21 |
| 92 |  | Atendimento de Comentário | 3d | 2026-08-04 | 2026-08-07 | 91 | 40d | finish no earlier than 2026-07-21 |
| 93 |  | Aprovação | 2d | 2026-08-07 | 2026-08-11 | 92 | 40d | finish no earlier than 2026-07-21 |
| 94 | 1.8.10 | **AG-F0009-0302-MB-L-00010** | 20d | 2026-07-14 | 2026-08-11 |  | 2d |  |
| 95 |  | Emissão inicial | 10d | 2026-07-14 | 2026-07-28 | 50 | 2d | finish no earlier than 2026-07-21 |
| 96 |  | Avaliação do Cliente | 5d | 2026-07-28 | 2026-08-04 | 95 | 40d | finish no earlier than 2026-07-21 |
| 97 |  | Atendimento de Comentário | 3d | 2026-08-04 | 2026-08-07 | 96 | 40d | finish no earlier than 2026-07-21 |
| 98 |  | Aprovação | 2d | 2026-08-07 | 2026-08-11 | 97 | 40d | finish no earlier than 2026-07-21 |
| 99 | 1.8.11 | **DT-F0009-0302-MB-L-00001** | 20d | 2026-07-14 | 2026-08-11 |  | 10d |  |
| 100 |  | Emissão inicial | 10d | 2026-07-14 | 2026-07-28 | 50 | 10d |  |
| 101 |  | Avaliação do Cliente | 5d | 2026-07-28 | 2026-08-04 | 100 | 10d |  |
| 102 |  | Atendimento de Comentário | 3d | 2026-08-04 | 2026-08-07 | 101 | 40d |  |
| 103 |  | Aprovação | 2d | 2026-08-07 | 2026-08-11 | 102 | 40d |  |
| 104 | 1.8.12 | **DT-F0009-0302-MB-L-00002** | 20d | 2026-07-14 | 2026-08-11 |  | 40d |  |
| 105 |  | Emissão inicial | 10d | 2026-07-14 | 2026-07-28 | 50 | 40d |  |
| 106 |  | Avaliação do Cliente | 5d | 2026-07-28 | 2026-08-04 | 105 | 40d |  |
| 107 |  | Atendimento de Comentário | 3d | 2026-08-04 | 2026-08-07 | 106 | 40d |  |
| 108 |  | Aprovação | 2d | 2026-08-07 | 2026-08-11 | 107 | 40d |  |
| 109 | 1.8.13 | **DT-F0009-0302-MB-L-00003** | 20d | 2026-07-14 | 2026-08-11 |  | 40d |  |
| 110 |  | Emissão inicial | 10d | 2026-07-14 | 2026-07-28 | 50 | 40d |  |
| 111 |  | Avaliação do Cliente | 5d | 2026-07-28 | 2026-08-04 | 110 | 40d |  |
| 112 |  | Atendimento de Comentário | 3d | 2026-08-04 | 2026-08-07 | 111 | 40d |  |
| 113 |  | Aprovação | 2d | 2026-08-07 | 2026-08-11 | 112 | 40d |  |
| 114 | 1.8.14 | **DT-F0009-0302-MB-L-00004** | 20d | 2026-07-14 | 2026-08-11 |  | 40d |  |
| 115 |  | Emissão inicial | 10d | 2026-07-14 | 2026-07-28 | 50 | 40d |  |
| 116 |  | Avaliação do Cliente | 5d | 2026-07-28 | 2026-08-04 | 115 | 40d |  |
| 117 |  | Atendimento de Comentário | 3d | 2026-08-04 | 2026-08-07 | 116 | 40d |  |
| 118 |  | Aprovação | 2d | 2026-08-07 | 2026-08-11 | 117 | 40d |  |
| 119 | 1.8.15 | **DT-F0009-0302-MB-L-00005** | 20d | 2026-07-14 | 2026-08-11 |  | 40d |  |
| 120 |  | Emissão inicial | 10d | 2026-07-14 | 2026-07-28 | 50 | 40d |  |
| 121 |  | Avaliação do Cliente | 5d | 2026-07-28 | 2026-08-04 | 120 | 40d |  |
| 122 |  | Atendimento de Comentário | 3d | 2026-08-04 | 2026-08-07 | 121 | 40d |  |
| 123 |  | Aprovação | 2d | 2026-08-07 | 2026-08-11 | 122 | 40d |  |
| 124 | 1.8.16 | **DT-F0009-0302-MB-L-00006** | 20d | 2026-07-14 | 2026-08-11 |  | 5d |  |
| 125 |  | Emissão inicial | 10d | 2026-07-14 | 2026-07-28 | 50 | 5d |  |
| 126 |  | Avaliação do Cliente | 5d | 2026-07-28 | 2026-08-04 | 125 | 40d |  |
| 127 |  | Atendimento de Comentário | 3d | 2026-08-04 | 2026-08-07 | 126 | 40d |  |
| 128 |  | Aprovação | 2d | 2026-08-07 | 2026-08-11 | 127 | 40d |  |
| 129 | 1.8.17 | **DT-F0009-0302-MB-L-00007** | 20d | 2026-07-28 | 2026-08-25 |  | 30d |  |
| 130 |  | Emissão inicial | 10d | 2026-07-28 | 2026-08-11 | 125 | 30d |  |
| 131 |  | Avaliação do Cliente | 5d | 2026-08-11 | 2026-08-18 | 130 | 30d |  |
| 132 |  | Atendimento de Comentário | 3d | 2026-08-18 | 2026-08-21 | 131 | 30d |  |
| 133 |  | Aprovação | 2d | 2026-08-21 | 2026-08-25 | 132 | 30d |  |
| 134 | 1.8.18 | **DT-F0009-0302-MB-L-00008** | 20d | 2026-07-28 | 2026-08-25 |  | 30d |  |
| 135 |  | Emissão inicial | 10d | 2026-07-28 | 2026-08-11 | 125 | 30d |  |
| 136 |  | Avaliação do Cliente | 5d | 2026-08-11 | 2026-08-18 | 135 | 30d |  |
| 137 |  | Atendimento de Comentário | 3d | 2026-08-18 | 2026-08-21 | 136 | 30d |  |
| 138 |  | Aprovação | 2d | 2026-08-21 | 2026-08-25 | 137 | 30d |  |
| 139 | 1.8.19 | **DT-F0009-0302-MB-L-00009** | 20d | 2026-07-28 | 2026-08-25 |  | 30d |  |
| 140 |  | Emissão inicial | 10d | 2026-07-28 | 2026-08-11 | 125 | 30d |  |

| ID | WBS | Task | Duration | Start | Finish | Predecessors | Total float |
| --- | --- | --- | --- | --- | --- | --- | --- |
| 141 |  | Avaliação do Cliente | 5d | 2026-08-11 | 2026-08-18 | 140 | 30d |
| 142 |  | Atendimento de Comentário | 3d | 2026-08-18 | 2026-08-21 | 141 | 30d |
| 143 |  | Aprovação | 2d | 2026-08-21 | 2026-08-25 | 142 | 30d |
| 144 | 1.8.20 | **DT-F0009-0302-MB-L-00010** | 20d | 2026-07-28 | 2026-08-25 |  | 30d |
| 145 |  | Emissão inicial | 10d | 2026-07-28 | 2026-08-11 | 125 | 30d |
| 146 |  | Avaliação do Cliente | 5d | 2026-08-11 | 2026-08-18 | 145 | 30d |
| 147 |  | Atendimento de Comentário | 3d | 2026-08-18 | 2026-08-21 | 146 | 30d |
| 148 |  | Aprovação | 2d | 2026-08-21 | 2026-08-25 | 147 | 30d |
| 149 | 1.8.21 | **DT-F0009-0302-MB-L-00011** | 25d | 2026-07-28 | 2026-09-01 |  | 5d |
| 150 |  | Emissão inicial | 10d | 2026-07-28 | 2026-08-11 | 125 | 5d |
| 151 |  | Avaliação do Cliente | 5d | 2026-08-11 | 2026-08-18 | 150 | 25d |
| 152 |  | Atendimento de Comentário | 5d | 2026-08-18 | 2026-08-25 | 151 | 25d |
| 153 |  | Aprovação | 5d | 2026-08-25 | 2026-09-01 | 152 | 25d |
| 154 | 1.8.22 | **DT-F0009-0302-MB-L-00012** | 20d | 2026-08-11 | 2026-09-08 |  | 5d |
| 155 |  | Emissão inicial | 10d | 2026-08-11 | 2026-08-25 | 150 | 5d |
| 156 |  | Avaliação do Cliente | 5d | 2026-08-25 | 2026-09-01 | 155 | 20d |
| 157 |  | Atendimento de Comentário | 3d | 2026-09-01 | 2026-09-04 | 156 | 20d |
| 158 |  | Aprovação | 2d | 2026-09-04 | 2026-09-08 | 157 | 20d |
| 159 | 1.8.23 | **DT-F0009-0302-MB-L-00013** | 20d | 2026-08-11 | 2026-09-08 |  | 20d |
| 160 |  | Emissão inicial | 10d | 2026-08-11 | 2026-08-25 | 150 | 20d |
| 161 |  | Avaliação do Cliente | 5d | 2026-08-25 | 2026-09-01 | 160 | 20d |
| 162 |  | Atendimento de Comentário | 3d | 2026-09-01 | 2026-09-04 | 161 | 20d |
| 163 |  | Aprovação | 2d | 2026-09-04 | 2026-09-08 | 162 | 20d |
| 164 | 1.8.24 | **DT-F0009-0302-MB-L-00014** | 20d | 2026-08-11 | 2026-09-08 |  | 20d |
| 165 |  | Emissão inicial | 10d | 2026-08-11 | 2026-08-25 | 150 | 20d |
| 166 |  | Avaliação do Cliente | 5d | 2026-08-25 | 2026-09-01 | 165 | 20d |
| 167 |  | Atendimento de Comentário | 3d | 2026-09-01 | 2026-09-04 | 166 | 20d |
| 168 |  | Aprovação | 2d | 2026-09-04 | 2026-09-08 | 167 | 20d |
| 169 | 1.8.25 | **DT-F0009-0302-MB-L-00015** | 20d | 2026-08-11 | 2026-09-08 |  | 20d |
| 170 |  | Emissão inicial | 10d | 2026-08-11 | 2026-08-25 | 150 | 20d |
| 171 |  | Avaliação do Cliente | 5d | 2026-08-25 | 2026-09-01 | 170 | 20d |
| 172 |  | Atendimento de Comentário | 3d | 2026-09-01 | 2026-09-04 | 171 | 20d |
| 173 |  | Aprovação | 2d | 2026-09-04 | 2026-09-08 | 172 | 20d |
| 174 | 1.8.26 | **DT-F0009-0302-MB-L-00016** | 20d | 2026-08-11 | 2026-09-08 |  | 20d |
| 175 |  | Emissão inicial | 10d | 2026-08-11 | 2026-08-25 | 150 | 20d |
| 176 |  | Avaliação do Cliente | 5d | 2026-08-25 | 2026-09-01 | 175 | 20d |
| 177 |  | Atendimento de Comentário | 3d | 2026-09-01 | 2026-09-04 | 176 | 20d |
| 178 |  | Aprovação | 2d | 2026-09-04 | 2026-09-08 | 177 | 20d |
| 179 | 1.8.27 | **DT-F0009-0302-MB-L-00017** | 20d | 2026-08-11 | 2026-09-08 |  | 20d |
| 180 |  | Emissão inicial | 10d | 2026-08-11 | 2026-08-25 | 150 | 20d |
| 181 |  | Avaliação do Cliente | 5d | 2026-08-25 | 2026-09-01 | 180 | 20d |
| 182 |  | Atendimento de Comentário | 3d | 2026-09-01 | 2026-09-04 | 181 | 20d |
| 183 |  | Aprovação | 2d | 2026-09-04 | 2026-09-08 | 182 | 20d |
| 184 | 1.8.28 | **DT-F0009-0302-MB-L-00018** | 20d | 2026-08-11 | 2026-09-08 |  | 20d |
| 185 |  | Emissão inicial | 10d | 2026-08-11 | 2026-08-25 | 150 | 20d |
| 186 |  | Avaliação do Cliente | 5d | 2026-08-25 | 2026-09-01 | 185 | 20d |
| 187 |  | Atendimento de Comentário | 3d | 2026-09-01 | 2026-09-04 | 186 | 20d |
| 188 |  | Aprovação | 2d | 2026-09-04 | 2026-09-08 | 187 | 20d |
| 189 | 1.8.29 | **DT-F0009-0302-MB-L-00019** | 20d | 2026-08-11 | 2026-09-08 |  | 20d |
| 190 |  | Emissão inicial | 10d | 2026-08-11 | 2026-08-25 | 150 | 20d |
| 191 |  | Avaliação do Cliente | 5d | 2026-08-25 | 2026-09-01 | 190 | 20d |
| 192 |  | Atendimento de Comentário | 3d | 2026-09-01 | 2026-09-04 | 191 | 20d |
| 193 |  | Aprovação | 2d | 2026-09-04 | 2026-09-08 | 192 | 20d |
| 194 | 1.8.30 | **DT-F0009-0302-MB-L-00020** | 20d | 2026-08-11 | 2026-09-08 |  | 10d |
| 195 |  | Emissão inicial | 10d | 2026-08-11 | 2026-08-25 | 150 | 10d |
| 196 |  | Avaliação do Cliente | 5d | 2026-08-25 | 2026-09-01 | 195 | 20d |
| 197 |  | Atendimento de Comentário | 3d | 2026-09-01 | 2026-09-04 | 196 | 20d |
| 198 |  | Aprovação | 2d | 2026-09-04 | 2026-09-08 | 197 | 20d |
| 199 | 1.8.31 | **DT-F0009-0302-MB-L-00021** | 20d | 2026-08-11 | 2026-09-08 |  | 20d |
| 200 |  | Emissão inicial | 10d | 2026-08-11 | 2026-08-25 | 150 | 20d |
| 201 |  | Avaliação do Cliente | 5d | 2026-08-25 | 2026-09-01 | 200 | 20d |
| 202 |  | Atendimento de Comentário | 3d | 2026-09-01 | 2026-09-04 | 201 | 20d |
| 203 |  | Aprovação | 2d | 2026-09-04 | 2026-09-08 | 202 | 20d |
| 204 | 1.8.32 | **DT-F0009-0302-MB-L-00022** | 20d | 2026-08-25 | 2026-09-22 |  | 10d |
| 205 |  | Emissão inicial | 10d | 2026-08-25 | 2026-09-08 | 195 | 10d |
| 206 |  | Avaliação do Cliente | 5d | 2026-09-08 | 2026-09-15 | 205 | 10d |
| 207 |  | Atendimento de Comentário | 3d | 2026-09-15 | 2026-09-18 | 206 | 10d |
| 208 |  | Aprovação | 2d | 2026-09-18 | 2026-09-22 | 207 | 10d |
| 209 | 1.8.33 | **DT-F0009-0302-MB-L-00023** | 20d | 2026-08-25 | 2026-09-22 |  | 10d |
| 210 |  | Emissão inicial | 10d | 2026-08-25 | 2026-09-08 | 195 | 10d |

| ID | WBS | Task | Duration | Start | Finish | Predecessors | Total float | Constraint |
| --- | --- | --- | --- | --- | --- | --- | --- | --- |
| 211 |  | Avaliação do Cliente | 5d | 2026-09-08 | 2026-09-15 | 210 | 10d |  |
| 212 |  | Atendimento de Comentário | 3d | 2026-09-15 | 2026-09-18 | 211 | 10d |  |
| 213 |  | Aprovação | 2d | 2026-09-18 | 2026-09-22 | 212 | 10d |  |
| 214 | 1.8.34 | **DT-F0009-0302-MB-L-00024** | 20d | 2026-08-25 | 2026-09-22 |  | 10d |  |
| 215 |  | Emissão inicial | 10d | 2026-08-25 | 2026-09-08 | 195 | 10d |  |
| 216 |  | Avaliação do Cliente | 5d | 2026-09-08 | 2026-09-15 | 215 | 10d |  |
| 217 |  | Atendimento de Comentário | 3d | 2026-09-15 | 2026-09-18 | 216 | 10d |  |
| 218 |  | Aprovação | 2d | 2026-09-18 | 2026-09-22 | 217 | 10d |  |
| 219 | 1.8.35 | **DT-F0009-0302-MB-L-00025** | 20d | 2026-08-25 | 2026-09-22 |  | 10d |  |
| 220 |  | Emissão inicial | 10d | 2026-08-25 | 2026-09-08 | 195 | 10d |  |
| 221 |  | Avaliação do Cliente | 5d | 2026-09-08 | 2026-09-15 | 220 | 10d |  |
| 222 |  | Atendimento de Comentário | 3d | 2026-09-15 | 2026-09-18 | 221 | 10d |  |
| 223 |  | Aprovação | 2d | 2026-09-18 | 2026-09-22 | 222 | 10d |  |
| 224 | 1.8.36 | **DT-F0009-0302-MB-L-00026** | 20d | 2026-08-25 | 2026-09-22 |  | 10d |  |
| 225 |  | Emissão inicial | 10d | 2026-08-25 | 2026-09-08 | 195 | 10d |  |
| 226 |  | Avaliação do Cliente | 5d | 2026-09-08 | 2026-09-15 | 225 | 10d |  |
| 227 |  | Atendimento de Comentário | 3d | 2026-09-15 | 2026-09-18 | 226 | 10d |  |
| 228 |  | Aprovação | 2d | 2026-09-18 | 2026-09-22 | 227 | 10d |  |
| 229 | 1.8.37 | **DT-F0009-0302-MB-L-00027** | 20d | 2026-08-25 | 2026-09-22 |  | 10d |  |
| 230 |  | Emissão inicial | 10d | 2026-08-25 | 2026-09-08 | 195 | 10d |  |
| 231 |  | Avaliação do Cliente | 5d | 2026-09-08 | 2026-09-15 | 230 | 10d |  |
| 232 |  | Atendimento de Comentário | 3d | 2026-09-15 | 2026-09-18 | 231 | 10d |  |
| 233 |  | Aprovação | 2d | 2026-09-18 | 2026-09-22 | 232 | 10d |  |
| 234 | 1.8.38 | **DT-F0009-0302-MB-L-00028** | 20d | 2026-08-25 | 2026-09-22 |  | 10d |  |
| 235 |  | Emissão inicial | 10d | 2026-08-25 | 2026-09-08 | 195 | 10d |  |
| 236 |  | Avaliação do Cliente | 5d | 2026-09-08 | 2026-09-15 | 235 | 10d |  |
| 237 |  | Atendimento de Comentário | 3d | 2026-09-15 | 2026-09-18 | 236 | 10d |  |
| 238 |  | Aprovação | 2d | 2026-09-18 | 2026-09-22 | 237 | 10d |  |
| 239 | 1.8.39 | **DT-F0009-0302-MB-L-00029** | 20d | 2026-08-25 | 2026-09-22 |  | 10d |  |
| 240 |  | Emissão inicial | 10d | 2026-08-25 | 2026-09-08 | 195 | 10d |  |
| 241 |  | Avaliação do Cliente | 5d | 2026-09-08 | 2026-09-15 | 240 | 10d |  |
| 242 |  | Atendimento de Comentário | 3d | 2026-09-15 | 2026-09-18 | 241 | 10d |  |
| 243 |  | Aprovação | 2d | 2026-09-18 | 2026-09-22 | 242 | 10d |  |
| 244 | 1.8.40 | **DT-F0009-0302-MB-L-00030** | 20d | 2026-08-25 | 2026-09-22 |  | 10d |  |
| 245 |  | Emissão inicial | 10d | 2026-08-25 | 2026-09-08 | 195 | 10d |  |
| 246 |  | Avaliação do Cliente | 5d | 2026-09-08 | 2026-09-15 | 245 | 10d |  |
| 247 |  | Atendimento de Comentário | 3d | 2026-09-15 | 2026-09-18 | 246 | 10d |  |
| 248 |  | Aprovação | 2d | 2026-09-18 | 2026-09-22 | 247 | 10d |  |
| 249 | 1.8.41 | **DT-F0009-0302-MB-L-00031** | 20d | 2026-08-25 | 2026-09-22 |  | 10d |  |
| 250 |  | Emissão inicial | 10d | 2026-08-25 | 2026-09-08 | 195 | 10d |  |
| 251 |  | Avaliação do Cliente | 5d | 2026-09-08 | 2026-09-15 | 250 | 10d |  |
| 252 |  | Atendimento de Comentário | 3d | 2026-09-15 | 2026-09-18 | 251 | 10d |  |
| 253 |  | Aprovação | 2d | 2026-09-18 | 2026-09-22 | 252 | 10d |  |
| 254 | 1.8.42 | **AG-F0009-0309-MB-L-00001** | 20d | 2026-07-30 | 2026-08-27 | 19 | 28d |  |
| 255 |  | Emissão inicial | 10d | 2026-07-30 | 2026-08-13 | 908 | 28d | finish no earlier than 2026-07-07 |
| 256 |  | Avaliação do Cliente | 5d | 2026-08-13 | 2026-08-20 | 255 | 28d | finish no earlier than 2026-07-07 |
| 257 |  | Atendimento de Comentário | 3d | 2026-08-20 | 2026-08-25 | 256 | 28d | finish no earlier than 2026-07-07 |
| 258 |  | Aprovação | 2d | 2026-08-25 | 2026-08-27 | 257 | 28d | finish no earlier than 2026-07-07 |
| 259 | 1.8.43 | **AG-F0009-0309-MB-L-00002** | 20d | 2026-07-16 | 2026-08-13 |  | 38d |  |
| 260 |  | Emissão inicial | 10d | 2026-07-16 | 2026-07-30 | 255SF | 38d | finish no earlier than 2026-07-21 |
| 261 |  | Avaliação do Cliente | 5d | 2026-07-30 | 2026-08-06 | 260 | 38d | finish no earlier than 2026-07-21 |
| 262 |  | Atendimento de Comentário | 3d | 2026-08-06 | 2026-08-11 | 261 | 38d | finish no earlier than 2026-07-21 |
| 263 |  | Aprovação | 2d | 2026-08-11 | 2026-08-13 | 262 | 38d | finish no earlier than 2026-07-21 |
| 264 | 1.8.44 | **AG-F0009-0309-MB-L-00003** | 20d | 2026-07-16 | 2026-08-13 |  | 38d |  |
| 265 |  | Emissão inicial | 10d | 2026-07-16 | 2026-07-30 | 255SF | 38d | finish no earlier than 2026-07-21 |
| 266 |  | Avaliação do Cliente | 5d | 2026-07-30 | 2026-08-06 | 265 | 38d | finish no earlier than 2026-07-21 |
| 267 |  | Atendimento de Comentário | 3d | 2026-08-06 | 2026-08-11 | 266 | 38d | finish no earlier than 2026-07-21 |
| 268 |  | Aprovação | 2d | 2026-08-11 | 2026-08-13 | 267 | 38d | finish no earlier than 2026-07-21 |
| 269 | 1.8.45 | **AG-F0009-0309-MB-L-00004** | 20d | 2026-07-16 | 2026-08-13 |  | 38d |  |
| 270 |  | Emissão inicial | 10d | 2026-07-16 | 2026-07-30 | 255SF | 38d | finish no earlier than 2026-07-21 |
| 271 |  | Avaliação do Cliente | 5d | 2026-07-30 | 2026-08-06 | 270 | 38d | finish no earlier than 2026-07-21 |
| 272 |  | Atendimento de Comentário | 3d | 2026-08-06 | 2026-08-11 | 271 | 38d | finish no earlier than 2026-07-21 |
| 273 |  | Aprovação | 2d | 2026-08-11 | 2026-08-13 | 272 | 38d | finish no earlier than 2026-07-21 |
| 274 | 1.8.46 | **AG-F0009-0309-MB-L-00005** | 20d | 2026-07-16 | 2026-08-13 |  | 38d |  |
| 275 |  | Emissão inicial | 10d | 2026-07-16 | 2026-07-30 | 255SF | 38d | finish no earlier than 2026-07-21 |
| 276 |  | Avaliação do Cliente | 5d | 2026-07-30 | 2026-08-06 | 275 | 38d | finish no earlier than 2026-07-21 |
| 277 |  | Atendimento de Comentário | 3d | 2026-08-06 | 2026-08-11 | 276 | 38d | finish no earlier than 2026-07-21 |
| 278 |  | Aprovação | 2d | 2026-08-11 | 2026-08-13 | 277 | 38d | finish no earlier than 2026-07-21 |
| 279 | 1.8.47 | **AG-F0009-0309-MB-L-00006** | 20d | 2026-07-16 | 2026-08-13 |  | 38d |  |
| 280 |  | Emissão inicial | 10d | 2026-07-16 | 2026-07-30 | 255SF | 38d | finish no earlier than 2026-07-21 |

| ID | WBS | Task | Duration | Start | Finish | Predecessors | Total float | Constraint |
| --- | --- | --- | --- | --- | --- | --- | --- | --- |
| 281 |  | Avaliação do Cliente | 5d | 2026-07-30 | 2026-08-06 | 280 | 38d | finish no earlier than 2026-07-21 |
| 282 |  | Atendimento de Comentário | 3d | 2026-08-06 | 2026-08-11 | 281 | 38d | finish no earlier than 2026-07-21 |
| 283 |  | Aprovação | 2d | 2026-08-11 | 2026-08-13 | 282 | 38d | finish no earlier than 2026-07-21 |
| 284 | 1.8.48 | **AG-F0009-0309-MB-L-00007** | 20d | 2026-07-16 | 2026-08-13 |  | 38d |  |
| 285 |  | Emissão inicial | 10d | 2026-07-16 | 2026-07-30 | 255SF | 38d | finish no earlier than 2026-07-21 |
| 286 |  | Avaliação do Cliente | 5d | 2026-07-30 | 2026-08-06 | 285 | 38d | finish no earlier than 2026-07-21 |
| 287 |  | Atendimento de Comentário | 3d | 2026-08-06 | 2026-08-11 | 286 | 38d | finish no earlier than 2026-07-21 |
| 288 |  | Aprovação | 2d | 2026-08-11 | 2026-08-13 | 287 | 38d | finish no earlier than 2026-07-21 |
| 289 | 1.8.49 | **AG-F0009-0309-MB-L-00008** | 20d | 2026-07-16 | 2026-08-13 |  | 0d |  |
| 290 |  | Emissão inicial | 10d | 2026-07-16 | 2026-07-30 | 255SF | 0d | finish no earlier than 2026-07-21 |
| 291 |  | Avaliação do Cliente | 5d | 2026-07-30 | 2026-08-06 | 290 | 38d | finish no earlier than 2026-07-21 |
| 292 |  | Atendimento de Comentário | 3d | 2026-08-06 | 2026-08-11 | 291 | 38d | finish no earlier than 2026-07-21 |
| 293 |  | Aprovação | 2d | 2026-08-11 | 2026-08-13 | 292 | 38d | finish no earlier than 2026-07-21 |
| 294 | 1.8.50 | **DT-F0009-0309-MB-L-00001** | 20d | 2026-07-30 | 2026-08-27 |  | 28d |  |
| 295 |  | Emissão inicial | 10d | 2026-07-30 | 2026-08-13 | 290 | 28d |  |
| 296 |  | Avaliação do Cliente | 5d | 2026-08-13 | 2026-08-20 | 295 | 28d |  |
| 297 |  | Atendimento de Comentário | 3d | 2026-08-20 | 2026-08-25 | 296 | 28d |  |
| 298 |  | Aprovação | 2d | 2026-08-25 | 2026-08-27 | 297 | 28d |  |
| 299 | 1.8.51 | **DT-F0009-0309-MB-L-00002** | 20d | 2026-07-30 | 2026-08-27 |  | 28d |  |
| 300 |  | Emissão inicial | 10d | 2026-07-30 | 2026-08-13 | 290 | 28d |  |
| 301 |  | Avaliação do Cliente | 5d | 2026-08-13 | 2026-08-20 | 300 | 28d |  |
| 302 |  | Atendimento de Comentário | 3d | 2026-08-20 | 2026-08-25 | 301 | 28d |  |
| 303 |  | Aprovação | 2d | 2026-08-25 | 2026-08-27 | 302 | 28d |  |
| 304 | 1.8.52 | **DT-F0009-0309-MB-L-00003** | 20d | 2026-07-30 | 2026-08-27 |  | 28d |  |
| 305 |  | Emissão inicial | 10d | 2026-07-30 | 2026-08-13 | 290 | 28d |  |
| 306 |  | Avaliação do Cliente | 5d | 2026-08-13 | 2026-08-20 | 305 | 28d |  |
| 307 |  | Atendimento de Comentário | 3d | 2026-08-20 | 2026-08-25 | 306 | 28d |  |
| 308 |  | Aprovação | 2d | 2026-08-25 | 2026-08-27 | 307 | 28d |  |
| 309 | 1.8.53 | **DT-F0009-0309-MB-L-00004** | 20d | 2026-07-30 | 2026-08-27 |  | 0d |  |
| 310 |  | Emissão inicial | 10d | 2026-07-30 | 2026-08-13 | 290 | 0d |  |
| 311 |  | Avaliação do Cliente | 5d | 2026-08-13 | 2026-08-20 | 310 | 28d |  |
| 312 |  | Atendimento de Comentário | 3d | 2026-08-20 | 2026-08-25 | 311 | 28d |  |
| 313 |  | Aprovação | 2d | 2026-08-25 | 2026-08-27 | 312 | 28d |  |
| 314 | 1.8.54 | **DT-F0009-0309-MB-L-00005** | 20d | 2026-08-13 | 2026-09-10 |  | 18d |  |
| 315 |  | Emissão inicial | 10d | 2026-08-13 | 2026-08-27 | 310 | 18d |  |
| 316 |  | Avaliação do Cliente | 5d | 2026-08-27 | 2026-09-03 | 315 | 18d |  |
| 317 |  | Atendimento de Comentário | 3d | 2026-09-03 | 2026-09-08 | 316 | 18d |  |
| 318 |  | Aprovação | 2d | 2026-09-08 | 2026-09-10 | 317 | 18d |  |
| 319 | 1.8.55 | **DT-F0009-0309-MB-L-00006** | 20d | 2026-08-13 | 2026-09-10 |  | 18d |  |
| 320 |  | Emissão inicial | 10d | 2026-08-13 | 2026-08-27 | 310 | 18d |  |
| 321 |  | Avaliação do Cliente | 5d | 2026-08-27 | 2026-09-03 | 320 | 18d |  |
| 322 |  | Atendimento de Comentário | 3d | 2026-09-03 | 2026-09-08 | 321 | 18d |  |
| 323 |  | Aprovação | 2d | 2026-09-08 | 2026-09-10 | 322 | 18d |  |
| 324 | 1.8.56 | **DT-F0009-0309-MB-L-00007** | 20d | 2026-08-13 | 2026-09-10 |  | 1d |  |
| 325 |  | Emissão inicial | 10d | 2026-08-13 | 2026-08-27 | 310 | 1d |  |
| 326 |  | Avaliação do Cliente | 5d | 2026-08-27 | 2026-09-03 | 325 | 1d |  |
| 327 |  | Atendimento de Comentário | 3d | 2026-09-03 | 2026-09-08 | 326 | 1d |  |
| 328 |  | Aprovação | 2d | 2026-09-08 | 2026-09-10 | 327 | 1d |  |
| 329 | 1.8.57 | **DT-F0009-0309-MB-L-00008** | 20d | 2026-08-13 | 2026-09-10 |  | 18d |  |
| 330 |  | Emissão inicial | 10d | 2026-08-13 | 2026-08-27 | 310 | 18d |  |
| 331 |  | Avaliação do Cliente | 5d | 2026-08-27 | 2026-09-03 | 330 | 18d |  |
| 332 |  | Atendimento de Comentário | 3d | 2026-09-03 | 2026-09-08 | 331 | 18d |  |
| 333 |  | Aprovação | 2d | 2026-09-08 | 2026-09-10 | 332 | 18d |  |
| 334 | 1.8.58 | **DT-F0009-0309-MB-L-00009** | 20d | 2026-08-13 | 2026-09-10 |  | 18d |  |
| 335 |  | Emissão inicial | 10d | 2026-08-13 | 2026-08-27 | 310 | 18d |  |
| 336 |  | Avaliação do Cliente | 5d | 2026-08-27 | 2026-09-03 | 335 | 18d |  |
| 337 |  | Atendimento de Comentário | 3d | 2026-09-03 | 2026-09-08 | 336 | 18d |  |
| 338 |  | Aprovação | 2d | 2026-09-08 | 2026-09-10 | 337 | 18d |  |
| 339 | 1.8.59 | **DT-F0009-0309-MB-L-00010** | 20d | 2026-08-13 | 2026-09-10 |  | 18d |  |
| 340 |  | Emissão inicial | 10d | 2026-08-13 | 2026-08-27 | 310 | 18d |  |
| 341 |  | Avaliação do Cliente | 5d | 2026-08-27 | 2026-09-03 | 340 | 18d |  |
| 342 |  | Atendimento de Comentário | 3d | 2026-09-03 | 2026-09-08 | 341 | 18d |  |
| 343 |  | Aprovação | 2d | 2026-09-08 | 2026-09-10 | 342 | 18d |  |
| 344 | 1.8.60 | **DT-F0009-0309-MB-L-00011** | 20d | 2026-08-13 | 2026-09-10 |  | 18d |  |
| 345 |  | Emissão inicial | 10d | 2026-08-13 | 2026-08-27 | 310 | 18d |  |
| 346 |  | Avaliação do Cliente | 5d | 2026-08-27 | 2026-09-03 | 345 | 18d |  |
| 347 |  | Atendimento de Comentário | 3d | 2026-09-03 | 2026-09-08 | 346 | 18d |  |
| 348 |  | Aprovação | 2d | 2026-09-08 | 2026-09-10 | 347 | 18d |  |
| 349 | 1.8.61 | **DT-F0009-0309-MB-L-00012** | 20d | 2026-08-13 | 2026-09-10 |  | 18d |  |
| 350 |  | Emissão inicial | 10d | 2026-08-13 | 2026-08-27 | 310 | 18d |  |

| ID | WBS | Task | Duration | Start | Finish | Predecessors | Total float |
| --- | --- | --- | --- | --- | --- | --- | --- |
| 351 |  | Avaliação do Cliente | 5d | 2026-08-27 | 2026-09-03 | 350 | 18d |
| 352 |  | Atendimento de Comentário | 3d | 2026-09-03 | 2026-09-08 | 351 | 18d |
| 353 |  | Aprovação | 2d | 2026-09-08 | 2026-09-10 | 352 | 18d |
| 354 | 1.8.62 | **DT-F0009-0309-MB-L-00013** | 20d | 2026-08-13 | 2026-09-10 |  | 18d |
| 355 |  | Emissão inicial | 10d | 2026-08-13 | 2026-08-27 | 310 | 18d |
| 356 |  | Avaliação do Cliente | 5d | 2026-08-27 | 2026-09-03 | 355 | 18d |
| 357 |  | Atendimento de Comentário | 3d | 2026-09-03 | 2026-09-08 | 356 | 18d |
| 358 |  | Aprovação | 2d | 2026-09-08 | 2026-09-10 | 357 | 18d |
| 359 | 1.8.63 | **DT-F0009-0309-MB-L-00014** | 20d | 2026-08-13 | 2026-09-10 |  | 18d |
| 360 |  | Emissão inicial | 10d | 2026-08-13 | 2026-08-27 | 310 | 18d |
| 361 |  | Avaliação do Cliente | 5d | 2026-08-27 | 2026-09-03 | 360 | 18d |
| 362 |  | Atendimento de Comentário | 3d | 2026-09-03 | 2026-09-08 | 361 | 18d |
| 363 |  | Aprovação | 2d | 2026-09-08 | 2026-09-10 | 362 | 18d |
| 364 | 1.8.64 | **DT-F0009-0309-MB-L-00015** | 20d | 2026-08-13 | 2026-09-10 |  | 0d |
| 365 |  | Emissão inicial | 10d | 2026-08-13 | 2026-08-27 | 310 | 0d |
| 366 |  | Avaliação do Cliente | 5d | 2026-08-27 | 2026-09-03 | 365 | 18d |
| 367 |  | Atendimento de Comentário | 3d | 2026-09-03 | 2026-09-08 | 366 | 18d |
| 368 |  | Aprovação | 2d | 2026-09-08 | 2026-09-10 | 367 | 18d |
| 369 | 1.8.65 | **DT-F0009-0309-MB-L-00016** | 20d | 2026-08-27 | 2026-09-24 |  | 8d |
| 370 |  | Emissão inicial | 10d | 2026-08-27 | 2026-09-10 | 365 | 8d |
| 371 |  | Avaliação do Cliente | 5d | 2026-09-10 | 2026-09-17 | 370 | 8d |
| 372 |  | Atendimento de Comentário | 3d | 2026-09-17 | 2026-09-22 | 371 | 8d |
| 373 |  | Aprovação | 2d | 2026-09-22 | 2026-09-24 | 372 | 8d |
| 374 | 1.8.66 | **DT-F0009-0309-MB-L-00017** | 20d | 2026-08-27 | 2026-09-24 |  | 8d |
| 375 |  | Emissão inicial | 10d | 2026-08-27 | 2026-09-10 | 365 | 8d |
| 376 |  | Avaliação do Cliente | 5d | 2026-09-10 | 2026-09-17 | 375 | 8d |
| 377 |  | Atendimento de Comentário | 3d | 2026-09-17 | 2026-09-22 | 376 | 8d |
| 378 |  | Aprovação | 2d | 2026-09-22 | 2026-09-24 | 377 | 8d |
| 379 | 1.8.67 | **DT-F0009-0309-MB-L-00018** | 20d | 2026-08-27 | 2026-09-24 |  | 8d |
| 380 |  | Emissão inicial | 10d | 2026-08-27 | 2026-09-10 | 365 | 8d |
| 381 |  | Avaliação do Cliente | 5d | 2026-09-10 | 2026-09-17 | 380 | 8d |
| 382 |  | Atendimento de Comentário | 3d | 2026-09-17 | 2026-09-22 | 381 | 8d |
| 383 |  | Aprovação | 2d | 2026-09-22 | 2026-09-24 | 382 | 8d |
| 384 | 1.8.68 | **DT-F0009-0309-MB-L-00019** | 20d | 2026-08-27 | 2026-09-24 |  | 8d |
| 385 |  | Emissão inicial | 10d | 2026-08-27 | 2026-09-10 | 365 | 8d |
| 386 |  | Avaliação do Cliente | 5d | 2026-09-10 | 2026-09-17 | 385 | 8d |
| 387 |  | Atendimento de Comentário | 3d | 2026-09-17 | 2026-09-22 | 386 | 8d |
| 388 |  | Aprovação | 2d | 2026-09-22 | 2026-09-24 | 387 | 8d |
| 389 | 1.8.69 | **DT-F0009-0309-MB-L-00020** | 20d | 2026-08-27 | 2026-09-24 |  | 8d |
| 390 |  | Emissão inicial | 10d | 2026-08-27 | 2026-09-10 | 365 | 8d |
| 391 |  | Avaliação do Cliente | 5d | 2026-09-10 | 2026-09-17 | 390 | 8d |
| 392 |  | Atendimento de Comentário | 3d | 2026-09-17 | 2026-09-22 | 391 | 8d |
| 393 |  | Aprovação | 2d | 2026-09-22 | 2026-09-24 | 392 | 8d |
| 394 | 1.8.70 | **DT-F0009-0309-MB-L-00021** | 20d | 2026-08-27 | 2026-09-24 |  | 8d |
| 395 |  | Emissão inicial | 10d | 2026-08-27 | 2026-09-10 | 365 | 8d |
| 396 |  | Avaliação do Cliente | 5d | 2026-09-10 | 2026-09-17 | 395 | 8d |
| 397 |  | Atendimento de Comentário | 3d | 2026-09-17 | 2026-09-22 | 396 | 8d |
| 398 |  | Aprovação | 2d | 2026-09-22 | 2026-09-24 | 397 | 8d |
| 399 | 1.8.71 | **DT-F0009-0309-MB-L-00022** | 20d | 2026-08-27 | 2026-09-24 |  | 8d |
| 400 |  | Emissão inicial | 10d | 2026-08-27 | 2026-09-10 | 365 | 8d |
| 401 |  | Avaliação do Cliente | 5d | 2026-09-10 | 2026-09-17 | 400 | 8d |
| 402 |  | Atendimento de Comentário | 3d | 2026-09-17 | 2026-09-22 | 401 | 8d |
| 403 |  | Aprovação | 2d | 2026-09-22 | 2026-09-24 | 402 | 8d |
| 404 | 1.8.72 | **DT-F0009-0309-MB-L-00023** | 20d | 2026-08-27 | 2026-09-24 |  | 8d |
| 405 |  | Emissão inicial | 10d | 2026-08-27 | 2026-09-10 | 365 | 8d |
| 406 |  | Avaliação do Cliente | 5d | 2026-09-10 | 2026-09-17 | 405 | 8d |
| 407 |  | Atendimento de Comentário | 3d | 2026-09-17 | 2026-09-22 | 406 | 8d |
| 408 |  | Aprovação | 2d | 2026-09-22 | 2026-09-24 | 407 | 8d |
| 409 | 1.8.73 | **DT-F0009-0309-MB-L-00024** | 20d | 2026-08-27 | 2026-09-24 |  | 0d |
| 410 |  | Emissão inicial | 10d | 2026-08-27 | 2026-09-10 | 365 | 0d |
| 411 |  | Avaliação do Cliente | 5d | 2026-09-10 | 2026-09-17 | 410 | 8d |
| 412 |  | Atendimento de Comentário | 3d | 2026-09-17 | 2026-09-22 | 411 | 8d |
| 413 |  | Aprovação | 2d | 2026-09-22 | 2026-09-24 | 412 | 8d |
| 414 | 1.8.74 | **RT-F0009-0309-MB-L-00001** | 18d | 2026-09-10 | 2026-10-06 |  | 0d |
| 415 |  | Emissão inicial | 8d | 2026-09-10 | 2026-09-22 | 410 | 0d |
| 416 |  | Avaliação do Cliente | 5d | 2026-09-22 | 2026-09-29 | 415 | 0d |
| 417 |  | Atendimento de Comentário | 3d | 2026-09-29 | 2026-10-02 | 416 | 0d |
| 418 |  | Aprovação | 2d | 2026-10-02 | 2026-10-06 | 417 | 0d |
| 419 |  | MECÂNICA / EQUIPAMENTOS 309 | 70d | 2026-06-23 | 2026-09-28 | 420SS |  |
| 420 | 1.10 | **MECÂNICA / EQUIPAMENTOS 309** | 70d | 2026-06-30 | 2026-10-06 |  | 0d |

| ID | WBS | Task | Duration | Start | Finish | Predecessors | Total float |
| --- | --- | --- | --- | --- | --- | --- | --- |
| 421 | 1.10.1 | **CP-F0009-0309-MB-M-00001** | 15d | 2026-06-30 | 2026-07-21 |  | 30d |
| 422 |  | Emissão inicial | 5d | 2026-06-30 | 2026-07-07 | 19 | 30d |
| 423 |  | Avaliação do Cliente | 5d | 2026-07-07 | 2026-07-14 | 422 | 30d |
| 424 |  | Atendimento de Comentário | 3d | 2026-07-14 | 2026-07-17 | 423 | 30d |
| 425 |  | Aprovação | 2d | 2026-07-17 | 2026-07-21 | 424 | 30d |
| 426 | 1.10.2 | **ET-F0009-0309-MB-M-00001** | 17d | 2026-09-10 | 2026-10-05 | 421 | 1d |
| 427 |  | Emissão inicial | 7d | 2026-09-10 | 2026-09-21 | 324 | 1d |
| 428 |  | Avaliação do Cliente | 5d | 2026-09-21 | 2026-09-28 | 427 | 1d |
| 429 |  | Atendimento de Comentário | 3d | 2026-09-28 | 2026-10-01 | 428 | 1d |
| 430 |  | Aprovação | 2d | 2026-10-01 | 2026-10-05 | 429 | 1d |
| 431 | 1.10.3 | **ET-F0009-0309-MB-M-00002** | 17d | 2026-09-10 | 2026-10-05 | 421 | 1d |
| 432 |  | Emissão inicial | 7d | 2026-09-10 | 2026-09-21 | 324 | 1d |
| 433 |  | Avaliação do Cliente | 5d | 2026-09-21 | 2026-09-28 | 432 | 1d |
| 434 |  | Atendimento de Comentário | 3d | 2026-09-28 | 2026-10-01 | 433 | 1d |
| 435 |  | Aprovação | 2d | 2026-10-01 | 2026-10-05 | 434 | 1d |
| 436 | 1.10.4 | **ET-F0009-0309-MB-M-00003** | 17d | 2026-09-10 | 2026-10-05 | 421 | 1d |
| 437 |  | Emissão inicial | 7d | 2026-09-10 | 2026-09-21 | 324 | 1d |
| 438 |  | Avaliação do Cliente | 5d | 2026-09-21 | 2026-09-28 | 437 | 1d |
| 439 |  | Atendimento de Comentário | 3d | 2026-09-28 | 2026-10-01 | 438 | 1d |
| 440 |  | Aprovação | 2d | 2026-10-01 | 2026-10-05 | 439 | 1d |
| 441 | 1.10.5 | **ET-F0009-0309-MB-M-00004** | 17d | 2026-09-10 | 2026-10-05 | 421 | 1d |
| 442 |  | Emissão inicial | 7d | 2026-09-10 | 2026-09-21 | 324 | 1d |
| 443 |  | Avaliação do Cliente | 5d | 2026-09-21 | 2026-09-28 | 442 | 1d |
| 444 |  | Atendimento de Comentário | 3d | 2026-09-28 | 2026-10-01 | 443 | 1d |
| 445 |  | Aprovação | 2d | 2026-10-01 | 2026-10-05 | 444 | 1d |
| 446 | 1.10.6 | **FD-F0009-0309-MB-M-00001** | 27d | 2026-08-11 | 2026-09-17 |  | 13d |
| 447 |  | Emissão inicial | 15d | 2026-08-11 | 2026-09-01 | 1018, 19 | 13d |
| 448 |  | Avaliação do Cliente | 5d | 2026-09-01 | 2026-09-08 | 447 | 13d |
| 449 |  | Atendimento de Comentário | 5d | 2026-09-08 | 2026-09-15 | 448 | 13d |
| 450 |  | Aprovação | 2d | 2026-09-15 | 2026-09-17 | 449 | 13d |
| 451 | 1.10.7 | **FD-F0009-0309-MB-M-00002** | 20d | 2026-09-08 | 2026-10-06 |  | 0d |
| 452 |  | Emissão inicial | 10d | 2026-09-08 | 2026-09-22 | 1064 | 0d |
| 453 |  | Avaliação do Cliente | 5d | 2026-09-22 | 2026-09-29 | 452 | 0d |
| 454 |  | Atendimento de Comentário | 3d | 2026-09-29 | 2026-10-02 | 453 | 0d |
| 455 |  | Aprovação | 2d | 2026-10-02 | 2026-10-06 | 454 | 0d |
| 456 | 1.10.8 | **FD-F0009-0309-MB-M-00003** | 25d | 2026-08-18 | 2026-09-22 |  | 10d |
| 457 |  | Emissão inicial | 15d | 2026-08-18 | 2026-09-08 | 452SF | 10d |
| 458 |  | Avaliação do Cliente | 5d | 2026-09-08 | 2026-09-15 | 457 | 10d |
| 459 |  | Atendimento de Comentário | 3d | 2026-09-15 | 2026-09-18 | 458 | 10d |
| 460 |  | Aprovação | 2d | 2026-09-18 | 2026-09-22 | 459 | 10d |
| 461 | 1.10.9 | **FD-F0009-0309-MB-M-00004** | 27d | 2026-08-18 | 2026-09-24 |  | 8d |
| 462 |  | Emissão inicial | 15d | 2026-08-18 | 2026-09-08 | 452SF | 8d |
| 463 |  | Avaliação do Cliente | 5d | 2026-09-08 | 2026-09-15 | 462 | 8d |
| 464 |  | Atendimento de Comentário | 5d | 2026-09-15 | 2026-09-22 | 463 | 8d |
| 465 |  | Aprovação | 2d | 2026-09-22 | 2026-09-24 | 464 | 8d |
| 466 | 1.10.10 | **FD-F0009-0309-MB-M-00005** | 25d | 2026-08-18 | 2026-09-22 |  | 10d |
| 467 |  | Emissão inicial | 15d | 2026-08-18 | 2026-09-08 | 452SF | 10d |
| 468 |  | Avaliação do Cliente | 5d | 2026-09-08 | 2026-09-15 | 467 | 10d |
| 469 |  | Atendimento de Comentário | 3d | 2026-09-15 | 2026-09-18 | 468 | 10d |
| 470 |  | Aprovação | 2d | 2026-09-18 | 2026-09-22 | 469 | 10d |
| 471 | 1.10.11 | **FD-F0009-0309-MB-M-00006** | 25d | 2026-08-18 | 2026-09-22 |  | 10d |
| 472 |  | Emissão inicial | 15d | 2026-08-18 | 2026-09-08 | 452SF | 10d |
| 473 |  | Avaliação do Cliente | 5d | 2026-09-08 | 2026-09-15 | 472 | 10d |
| 474 |  | Atendimento de Comentário | 3d | 2026-09-15 | 2026-09-18 | 473 | 10d |
| 475 |  | Aprovação | 2d | 2026-09-18 | 2026-09-22 | 474 | 10d |
| 476 | 1.10.12 | **FD-F0009-0309-MB-M-00007** | 25d | 2026-08-18 | 2026-09-22 |  | 10d |
| 477 |  | Emissão inicial | 15d | 2026-08-18 | 2026-09-08 | 452SF | 10d |
| 478 |  | Avaliação do Cliente | 5d | 2026-09-08 | 2026-09-15 | 477 | 10d |
| 479 |  | Atendimento de Comentário | 3d | 2026-09-15 | 2026-09-18 | 478 | 10d |
| 480 |  | Aprovação | 2d | 2026-09-18 | 2026-09-22 | 479 | 10d |
| 481 | 1.10.13 | **FD-F0009-0309-MB-M-00008** | 25d | 2026-08-18 | 2026-09-22 |  | 10d |
| 482 |  | Emissão inicial | 15d | 2026-08-18 | 2026-09-08 | 452SF | 10d |
| 483 |  | Avaliação do Cliente | 5d | 2026-09-08 | 2026-09-15 | 482 | 10d |
| 484 |  | Atendimento de Comentário | 3d | 2026-09-15 | 2026-09-18 | 483 | 10d |
| 485 |  | Aprovação | 2d | 2026-09-18 | 2026-09-22 | 484 | 10d |
| 486 | 1.10.14 | **FD-F0009-0309-MB-M-00009** | 25d | 2026-08-18 | 2026-09-22 |  | 10d |
| 487 |  | Emissão inicial | 15d | 2026-08-18 | 2026-09-08 | 452SF | 10d |
| 488 |  | Avaliação do Cliente | 5d | 2026-09-08 | 2026-09-15 | 487 | 10d |
| 489 |  | Atendimento de Comentário | 3d | 2026-09-15 | 2026-09-18 | 488 | 10d |
| 490 |  | Aprovação | 2d | 2026-09-18 | 2026-09-22 | 489 | 10d |

| ID | WBS | Task | Duration | Start | Finish | Predecessors | Total float |
| --- | --- | --- | --- | --- | --- | --- | --- |
| 491 | 1.10.15 | **FD-F0009-0309-MB-M-00010** | 25d | 2026-08-18 | 2026-09-22 |  | 10d |
| 492 |  | Emissão inicial | 15d | 2026-08-18 | 2026-09-08 | 452SF | 10d |
| 493 |  | Avaliação do Cliente | 5d | 2026-09-08 | 2026-09-15 | 492 | 10d |
| 494 |  | Atendimento de Comentário | 3d | 2026-09-15 | 2026-09-18 | 493 | 10d |
| 495 |  | Aprovação | 2d | 2026-09-18 | 2026-09-22 | 494 | 10d |
| 496 | 1.10.16 | **FD-F0009-0309-MB-M-00011** | 25d | 2026-08-18 | 2026-09-22 |  | 10d |
| 497 |  | Emissão inicial | 15d | 2026-08-18 | 2026-09-08 | 452SF | 10d |
| 498 |  | Avaliação do Cliente | 5d | 2026-09-08 | 2026-09-15 | 497 | 10d |
| 499 |  | Atendimento de Comentário | 3d | 2026-09-15 | 2026-09-18 | 498 | 10d |
| 500 |  | Aprovação | 2d | 2026-09-18 | 2026-09-22 | 499 | 10d |
| 501 | 1.10.17 | **LE-F0009-0309-MB-M-00001** | 25d | 2026-08-18 | 2026-09-22 |  | 10d |
| 502 |  | Emissão inicial | 15d | 2026-08-18 | 2026-09-08 | 452SF | 10d |
| 503 |  | Avaliação do Cliente | 5d | 2026-09-08 | 2026-09-15 | 502 | 10d |
| 504 |  | Atendimento de Comentário | 3d | 2026-09-15 | 2026-09-18 | 503 | 10d |
| 505 |  | Aprovação | 2d | 2026-09-18 | 2026-09-22 | 504 | 10d |
| 506 | 1.10.18 | **LM-F0009-0309-MB-M-00001** | 25d | 2026-08-18 | 2026-09-22 |  | 10d |
| 507 |  | Emissão inicial | 15d | 2026-08-18 | 2026-09-08 | 452SF | 10d |
| 508 |  | Avaliação do Cliente | 5d | 2026-09-08 | 2026-09-15 | 507 | 10d |
| 509 |  | Atendimento de Comentário | 3d | 2026-09-15 | 2026-09-18 | 508 | 10d |
| 510 |  | Aprovação | 2d | 2026-09-18 | 2026-09-22 | 509 | 10d |
| 511 | 1.10.19 | **PQ-F0009-0309-MB-M-00001** | 25d | 2026-08-18 | 2026-09-22 |  | 10d |
| 512 |  | Emissão inicial | 15d | 2026-08-18 | 2026-09-08 | 452SF | 10d |
| 513 |  | Avaliação do Cliente | 5d | 2026-09-08 | 2026-09-15 | 512 | 10d |
| 514 |  | Atendimento de Comentário | 3d | 2026-09-15 | 2026-09-18 | 513 | 10d |
| 515 |  | Aprovação | 2d | 2026-09-18 | 2026-09-22 | 514 | 10d |
| 516 | 1.10.20 | **PQ-F0009-0309-MB-M-00002** | 25d | 2026-08-18 | 2026-09-22 | 421 | 10d |
| 517 |  | Emissão inicial | 15d | 2026-08-18 | 2026-09-08 | 513SF | 10d |
| 518 |  | Avaliação do Cliente | 5d | 2026-09-08 | 2026-09-15 | 517 | 10d |
| 519 |  | Atendimento de Comentário | 3d | 2026-09-15 | 2026-09-18 | 518 | 10d |
| 520 |  | Aprovação | 2d | 2026-09-18 | 2026-09-22 | 519 | 10d |
| 521 | 1.10.21 | **PQ-F0009-0309-MB-M-00003** | 25d | 2026-08-18 | 2026-09-22 | 421 | 10d |
| 522 |  | Emissão inicial | 15d | 2026-08-18 | 2026-09-08 | 513SF | 10d |
| 523 |  | Avaliação do Cliente | 5d | 2026-09-08 | 2026-09-15 | 522 | 10d |
| 524 |  | Atendimento de Comentário | 3d | 2026-09-15 | 2026-09-18 | 523 | 10d |
| 525 |  | Aprovação | 2d | 2026-09-18 | 2026-09-22 | 524 | 10d |
| 526 | 1.10.22 | **PQ-F0009-0309-MB-M-00004** | 25d | 2026-08-18 | 2026-09-22 | 421 | 10d |
| 527 |  | Emissão inicial | 15d | 2026-08-18 | 2026-09-08 | 513SF | 10d |
| 528 |  | Avaliação do Cliente | 5d | 2026-09-08 | 2026-09-15 | 527 | 10d |
| 529 |  | Atendimento de Comentário | 3d | 2026-09-15 | 2026-09-18 | 528 | 10d |
| 530 |  | Aprovação | 2d | 2026-09-18 | 2026-09-22 | 529 | 10d |
| 531 | 1.10.23 | **RT-F0009-0309-MB-M-00001** | 18d | 2026-09-10 | 2026-10-06 |  | 0d |
| 532 |  | Emissão inicial | 8d | 2026-09-10 | 2026-09-22 | 410 | 0d |
| 533 |  | Avaliação do Cliente | 5d | 2026-09-22 | 2026-09-29 | 532 | 0d |
| 534 |  | Atendimento de Comentário | 3d | 2026-09-29 | 2026-10-02 | 533 | 0d |
| 535 |  | Aprovação | 2d | 2026-10-02 | 2026-10-06 | 534 | 0d |
| 536 |  | TUBULAÇÃO E SISTEMAS 309 | 30d | 2026-08-04 | 2026-09-14 | 537SS |  |
| 537 | 1.12 | **TUBULAÇÃO E SISTEMAS 309** | 30d | 2026-08-11 | 2026-09-22 |  | 10d |
| 538 | 1.12.1 | **AG-F0009-0309-MB-T-00001** | 25d | 2026-08-18 | 2026-09-22 |  | 10d |
| 539 |  | Emissão inicial | 10d | 2026-08-18 | 2026-09-01 | 1024 | 10d |
| 540 |  | Avaliação do Cliente | 5d | 2026-09-01 | 2026-09-08 | 539 | 10d |
| 541 |  | Atendimento de Comentário | 5d | 2026-09-08 | 2026-09-15 | 540 | 10d |
| 542 |  | Aprovação | 5d | 2026-09-15 | 2026-09-22 | 541 | 10d |
| 543 | 1.12.2 | **AG-F0009-0309-MB-T-00002** | 25d | 2026-08-18 | 2026-09-22 |  | 10d |
| 544 |  | Emissão inicial | 10d | 2026-08-18 | 2026-09-01 | 540SF | 10d |
| 545 |  | Avaliação do Cliente | 5d | 2026-09-01 | 2026-09-08 | 544 | 10d |
| 546 |  | Atendimento de Comentário | 5d | 2026-09-08 | 2026-09-15 | 545 | 10d |
| 547 |  | Aprovação | 5d | 2026-09-15 | 2026-09-22 | 546 | 10d |
| 548 | 1.12.3 | **AG-F0009-0309-MB-T-00003** | 25d | 2026-08-18 | 2026-09-22 |  | 10d |
| 549 |  | Emissão inicial | 10d | 2026-08-18 | 2026-09-01 | 540SF | 10d |
| 550 |  | Avaliação do Cliente | 5d | 2026-09-01 | 2026-09-08 | 549 | 10d |
| 551 |  | Atendimento de Comentário | 5d | 2026-09-08 | 2026-09-15 | 550 | 10d |
| 552 |  | Aprovação | 5d | 2026-09-15 | 2026-09-22 | 551 | 10d |
| 553 | 1.12.4 | **AG-F0009-0309-MB-T-00004** | 25d | 2026-08-18 | 2026-09-22 |  | 10d |
| 554 |  | Emissão inicial | 10d | 2026-08-18 | 2026-09-01 | 540SF | 10d |
| 555 |  | Avaliação do Cliente | 5d | 2026-09-01 | 2026-09-08 | 554 | 10d |
| 556 |  | Atendimento de Comentário | 5d | 2026-09-08 | 2026-09-15 | 555 | 10d |
| 557 |  | Aprovação | 5d | 2026-09-15 | 2026-09-22 | 556 | 10d |
| 558 | 1.12.5 | **AG-F0009-0309-MB-T-00005** | 25d | 2026-08-18 | 2026-09-22 |  | 10d |
| 559 |  | Emissão inicial | 10d | 2026-08-18 | 2026-09-01 | 540SF | 10d |
| 560 |  | Avaliação do Cliente | 5d | 2026-09-01 | 2026-09-08 | 559 | 10d |

| ID | WBS | Task | Duration | Start | Finish | Predecessors | Total float | Constraint |
| --- | --- | --- | --- | --- | --- | --- | --- | --- |
| 561 |  | Atendimento de Comentário | 5d | 2026-09-08 | 2026-09-15 | 560 | 10d |  |
| 562 |  | Aprovação | 5d | 2026-09-15 | 2026-09-22 | 561 | 10d |  |
| 563 | 1.12.6 | **LK-F0009-0309-MB-T-00001** | 20d | 2026-08-25 | 2026-09-22 |  | 10d |  |
| 564 |  | Emissão inicial | 5d | 2026-08-25 | 2026-09-01 | 540SF | 10d |  |
| 565 |  | Avaliação do Cliente | 5d | 2026-09-01 | 2026-09-08 | 564 | 10d |  |
| 566 |  | Atendimento de Comentário | 5d | 2026-09-08 | 2026-09-15 | 565 | 10d |  |
| 567 |  | Aprovação | 5d | 2026-09-15 | 2026-09-22 | 566 | 10d |  |
| 568 | 1.12.7 | **LM-F0009-0309-MB-T-00001** | 30d | 2026-08-11 | 2026-09-22 |  | 10d |  |
| 569 |  | Emissão inicial | 15d | 2026-08-11 | 2026-09-01 | 540SF | 10d |  |
| 570 |  | Avaliação do Cliente | 5d | 2026-09-01 | 2026-09-08 | 569 | 10d |  |
| 571 |  | Atendimento de Comentário | 5d | 2026-09-08 | 2026-09-15 | 570 | 10d |  |
| 572 |  | Aprovação | 5d | 2026-09-15 | 2026-09-22 | 571 | 10d |  |
| 573 | 1.12.8 | **LS-F0009-0309-MB-T-00001** | 25d | 2026-08-18 | 2026-09-22 |  | 10d |  |
| 574 |  | Emissão inicial | 10d | 2026-08-18 | 2026-09-01 | 540SF | 10d |  |
| 575 |  | Avaliação do Cliente | 5d | 2026-09-01 | 2026-09-08 | 574 | 10d |  |
| 576 |  | Atendimento de Comentário | 5d | 2026-09-08 | 2026-09-15 | 575 | 10d |  |
| 577 |  | Aprovação | 5d | 2026-09-15 | 2026-09-22 | 576 | 10d |  |
| 578 | 1.12.9 | **MD-F0009-0309-MB-T-00001** | 30d | 2026-08-11 | 2026-09-22 |  | 10d |  |
| 579 |  | Emissão inicial | 15d | 2026-08-11 | 2026-09-01 | 540SF | 10d |  |
| 580 |  | Avaliação do Cliente | 5d | 2026-09-01 | 2026-09-08 | 579 | 10d |  |
| 581 |  | Atendimento de Comentário | 5d | 2026-09-08 | 2026-09-15 | 580 | 10d |  |
| 582 |  | Aprovação | 5d | 2026-09-15 | 2026-09-22 | 581 | 10d |  |
| 583 | 1.12.10 | **MD-F0009-0309-MB-T-00002** | 30d | 2026-08-11 | 2026-09-22 |  | 10d |  |
| 584 |  | Emissão inicial | 15d | 2026-08-11 | 2026-09-01 | 540SF | 10d |  |
| 585 |  | Avaliação do Cliente | 5d | 2026-09-01 | 2026-09-08 | 584 | 10d |  |
| 586 |  | Atendimento de Comentário | 5d | 2026-09-08 | 2026-09-15 | 585 | 10d |  |
| 587 |  | Aprovação | 5d | 2026-09-15 | 2026-09-22 | 586 | 10d |  |
| 588 |  | ARQUITETURA 309 | 35d | 2026-07-29 | 2026-09-15 | 589SS |  |  |
| 589 | 1.14 | **ARQUITETURA 309** | 35d | 2026-08-04 | 2026-09-22 |  | 10d |  |
| 590 | 1.14.1 | **AG-F0009-0309-MB-A-00001** | 25d | 2026-08-04 | 2026-09-08 |  | 10d |  |
| 591 |  | Emissão inicial | 10d | 2026-08-04 | 2026-08-18 | 101, 290 | 10d |  |
| 592 |  | Avaliação do Cliente | 5d | 2026-08-18 | 2026-08-25 | 591 | 20d |  |
| 593 |  | Atendimento de Comentário | 5d | 2026-08-25 | 2026-09-01 | 592 | 20d |  |
| 594 |  | Aprovação | 5d | 2026-09-01 | 2026-09-08 | 593 | 20d |  |
| 595 | 1.14.2 | **AG-F0009-0309-MB-A-00002** | 25d | 2026-08-18 | 2026-09-22 |  | 10d |  |
| 596 |  | Emissão inicial | 10d | 2026-08-18 | 2026-09-01 | 591 | 10d |  |
| 597 |  | Avaliação do Cliente | 5d | 2026-09-01 | 2026-09-08 | 596 | 10d |  |
| 598 |  | Atendimento de Comentário | 5d | 2026-09-08 | 2026-09-15 | 597 | 10d |  |
| 599 |  | Aprovação | 5d | 2026-09-15 | 2026-09-22 | 598 | 10d |  |
| 600 | 1.14.3 | **AG-F0009-0309-MB-A-00003** | 25d | 2026-08-18 | 2026-09-22 |  | 10d |  |
| 601 |  | Emissão inicial | 10d | 2026-08-18 | 2026-09-01 | 597SF | 10d |  |
| 602 |  | Avaliação do Cliente | 5d | 2026-09-01 | 2026-09-08 | 601 | 10d |  |
| 603 |  | Atendimento de Comentário | 5d | 2026-09-08 | 2026-09-15 | 602 | 10d |  |
| 604 |  | Aprovação | 5d | 2026-09-15 | 2026-09-22 | 603 | 10d |  |
| 605 | 1.14.4 | **AG-F0009-0309-MB-A-00004** | 25d | 2026-08-18 | 2026-09-22 |  | 10d |  |
| 606 |  | Emissão inicial | 10d | 2026-08-18 | 2026-09-01 | 597SF | 10d |  |
| 607 |  | Avaliação do Cliente | 5d | 2026-09-01 | 2026-09-08 | 606 | 10d |  |
| 608 |  | Atendimento de Comentário | 5d | 2026-09-08 | 2026-09-15 | 607 | 10d |  |
| 609 |  | Aprovação | 5d | 2026-09-15 | 2026-09-22 | 608 | 10d |  |
| 610 | 1.14.5 | **MD-F0009-0309-MB-A-00001** | 30d | 2026-08-11 | 2026-09-22 |  | 10d |  |
| 611 |  | Emissão inicial | 15d | 2026-08-11 | 2026-09-01 | 597SF | 10d |  |
| 612 |  | Avaliação do Cliente | 5d | 2026-09-01 | 2026-09-08 | 611 | 10d |  |
| 613 |  | Atendimento de Comentário | 5d | 2026-09-08 | 2026-09-15 | 612 | 10d |  |
| 614 |  | Aprovação | 5d | 2026-09-15 | 2026-09-22 | 613 | 10d |  |
| 615 | 1.14.6 | **PQ-F0009-0309-MB-A-00001** | 29d | 2026-08-12 | 2026-09-22 |  | 10d |  |
| 616 |  | Emissão inicial | 14d | 2026-08-12 | 2026-09-01 | 597SF | 10d | start no earlier than 2026-07-29 |
| 617 |  | Avaliação do Cliente | 5d | 2026-09-01 | 2026-09-08 | 616 | 10d |  |
| 618 |  | Atendimento de Comentário | 5d | 2026-09-08 | 2026-09-15 | 617 | 10d |  |
| 619 |  | Aprovação | 5d | 2026-09-15 | 2026-09-22 | 618 | 10d | start no earlier than 2026-08-18 |
| 620 |  | CIVIL / INFRAESTRUTURA 309 | 25d | 2026-07-29 | 2026-09-01 | 621SS |  |  |
| 621 | 1.16 | **CIVIL / INFRAESTRUTURA 309** | 25d | 2026-08-04 | 2026-09-08 |  | 20d |  |
| 622 | 1.16.1 | **AG-F0009-0309-MB-B-00001** | 25d | 2026-08-04 | 2026-09-08 |  | 20d |  |
| 623 |  | Emissão inicial | 10d | 2026-08-04 | 2026-08-18 | 101, 290 | 20d |  |
| 624 |  | Avaliação do Cliente | 5d | 2026-08-18 | 2026-08-25 | 623 | 20d |  |
| 625 |  | Atendimento de Comentário | 5d | 2026-08-25 | 2026-09-01 | 624 | 20d |  |
| 626 |  | Aprovação | 5d | 2026-09-01 | 2026-09-08 | 625 | 20d |  |
| 627 |  | ELÉTRICA 309 | 62.13d | 2026-06-23 | 2026-09-17 | 628SS |  |  |
| 628 | 1.18 | **ELÉTRICA 309** | 61d | 2026-06-30 | 2026-09-23 |  | 9d |  |
| 629 | 1.18.1 | **CP-F0009-0309-MB-E-00001** | 20d | 2026-06-30 | 2026-07-28 |  | 50d |  |
| 630 |  | Emissão inicial | 10d | 2026-06-30 | 2026-07-14 | 19 | 50d |  |

| ID | WBS | Task | Duration | Start | Finish | Predecessors | Total float | Constraint |
| --- | --- | --- | --- | --- | --- | --- | --- | --- |
| 631 |  | Avaliação do Cliente | 5d | 2026-07-14 | 2026-07-21 | 630 | 50d |  |
| 632 |  | Atendimento de Comentário | 3d | 2026-07-21 | 2026-07-24 | 631 | 50d |  |
| 633 |  | Aprovação | 2d | 2026-07-24 | 2026-07-28 | 632 | 50d |  |
| 634 | 1.18.2 | **AG-F0009-0309-MB-E-00001** | 20d | 2026-07-30 | 2026-08-27 |  | 9d |  |
| 635 |  | Emissão inicial | 10d | 2026-07-30 | 2026-08-13 | 95, 290, 1019 | 9d |  |
| 636 |  | Avaliação do Cliente | 5d | 2026-08-13 | 2026-08-20 | 635 | 9d |  |
| 637 |  | Atendimento de Comentário | 3d | 2026-08-20 | 2026-08-25 | 636 | 28d |  |
| 638 |  | Aprovação | 2d | 2026-08-25 | 2026-08-27 | 637 | 28d |  |
| 639 | 1.18.3 | **AG-F0009-0309-MB-E-00002** | 20d | 2026-07-30 | 2026-08-27 |  | 28d |  |
| 640 |  | Emissão inicial | 10d | 2026-07-30 | 2026-08-13 | 636SF | 28d |  |
| 641 |  | Avaliação do Cliente | 5d | 2026-08-13 | 2026-08-20 | 640 | 28d |  |
| 642 |  | Atendimento de Comentário | 3d | 2026-08-20 | 2026-08-25 | 641 | 28d |  |
| 643 |  | Aprovação | 2d | 2026-08-25 | 2026-08-27 | 642 | 28d |  |
| 644 | 1.18.4 | **AG-F0009-0309-MB-E-00003** | 22d | 2026-07-30 | 2026-08-31 |  | 26d |  |
| 645 |  | Emissão inicial | 10d | 2026-07-30 | 2026-08-13 | 636SF | 26d |  |
| 646 |  | Avaliação do Cliente | 5d | 2026-08-13 | 2026-08-20 | 645 | 26d |  |
| 647 |  | Atendimento de Comentário | 5d | 2026-08-20 | 2026-08-27 | 646 | 26d |  |
| 648 |  | Aprovação | 2d | 2026-08-27 | 2026-08-31 | 647 | 26d |  |
| 649 | 1.18.5 | **AG-F0009-0309-MB-E-00004** | 20d | 2026-07-30 | 2026-08-27 |  | 28d |  |
| 650 |  | Emissão inicial | 10d | 2026-07-30 | 2026-08-13 | 636SF | 28d |  |
| 651 |  | Avaliação do Cliente | 5d | 2026-08-13 | 2026-08-20 | 650 | 28d |  |
| 652 |  | Atendimento de Comentário | 3d | 2026-08-20 | 2026-08-25 | 651 | 28d |  |
| 653 |  | Aprovação | 2d | 2026-08-25 | 2026-08-27 | 652 | 28d |  |
| 654 | 1.18.6 | **AG-F0009-0309-MB-E-00005** | 20d | 2026-07-30 | 2026-08-27 |  | 9d |  |
| 655 |  | Emissão inicial | 10d | 2026-07-30 | 2026-08-13 | 636SF | 9d |  |
| 656 |  | Avaliação do Cliente | 5d | 2026-08-13 | 2026-08-20 | 655 | 28d |  |
| 657 |  | Atendimento de Comentário | 3d | 2026-08-20 | 2026-08-25 | 656 | 28d |  |
| 658 |  | Aprovação | 2d | 2026-08-25 | 2026-08-27 | 657 | 28d |  |
| 659 | 1.18.7 | **AG-F0009-0309-MB-E-00006** | 16d | 2026-07-30 | 2026-08-21 |  | 32d |  |
| 660 |  | Emissão inicial | 10d | 2026-07-30 | 2026-08-13 | 636SF | 32d |  |
| 661 |  | Avaliação do Cliente | 1d | 2026-08-13 | 2026-08-14 | 660 | 32d |  |
| 662 |  | Atendimento de Comentário | 3d | 2026-08-14 | 2026-08-19 | 661 | 32d |  |
| 663 |  | Aprovação | 2d | 2026-08-19 | 2026-08-21 | 662 | 32d |  |
| 664 | 1.18.8 | **AG-F0009-0309-MB-E-00007** | 20d | 2026-07-30 | 2026-08-27 |  | 28d |  |
| 665 |  | Emissão inicial | 10d | 2026-07-30 | 2026-08-13 | 636SF | 28d |  |
| 666 |  | Avaliação do Cliente | 5d | 2026-08-13 | 2026-08-20 | 665 | 28d |  |
| 667 |  | Atendimento de Comentário | 3d | 2026-08-20 | 2026-08-25 | 666 | 28d |  |
| 668 |  | Aprovação | 2d | 2026-08-25 | 2026-08-27 | 667 | 28d |  |
| 669 | 1.18.9 | **AG-F0009-0309-MB-E-00008** | 20d | 2026-07-30 | 2026-08-27 |  | 28d |  |
| 670 |  | Emissão inicial | 10d | 2026-07-30 | 2026-08-13 | 636SF | 28d |  |
| 671 |  | Avaliação do Cliente | 5d | 2026-08-13 | 2026-08-20 | 670 | 28d |  |
| 672 |  | Atendimento de Comentário | 3d | 2026-08-20 | 2026-08-25 | 671 | 28d |  |
| 673 |  | Aprovação | 2d | 2026-08-25 | 2026-08-27 | 672 | 28d |  |
| 674 | 1.18.10 | **CC-F0009-0309-MB-E-00001** | 25d | 2026-08-13 | 2026-09-17 |  | 9d |  |
| 675 |  | Emissão inicial | 15d | 2026-08-13 | 2026-09-03 | 655 | 9d |  |
| 676 |  | Avaliação do Cliente | 5d | 2026-09-03 | 2026-09-10 | 675 | 9d |  |
| 677 |  | Atendimento de Comentário | 3d | 2026-09-10 | 2026-09-15 | 676 | 13d |  |
| 678 |  | Aprovação | 2d | 2026-09-15 | 2026-09-17 | 677 | 13d |  |
| 679 | 1.18.11 | **DU-F0009-0309-MB-E-00001** | 25d | 2026-08-13 | 2026-09-17 |  | 13d |  |
| 680 |  | Emissão inicial | 15d | 2026-08-13 | 2026-09-03 | 676SF | 13d |  |
| 681 |  | Avaliação do Cliente | 5d | 2026-09-03 | 2026-09-10 | 680 | 13d |  |
| 682 |  | Atendimento de Comentário | 3d | 2026-09-10 | 2026-09-15 | 681 | 13d |  |
| 683 |  | Aprovação | 2d | 2026-09-15 | 2026-09-17 | 682 | 13d |  |
| 684 | 1.18.12 | **DU-F0009-0309-MB-E-00002** | 27d | 2026-08-13 | 2026-09-21 |  | 11d |  |
| 685 |  | Emissão inicial | 15d | 2026-08-13 | 2026-09-03 | 676SF | 11d |  |
| 686 |  | Avaliação do Cliente | 5d | 2026-09-03 | 2026-09-10 | 685 | 11d |  |
| 687 |  | Atendimento de Comentário | 5d | 2026-09-10 | 2026-09-17 | 686 | 11d |  |
| 688 |  | Aprovação | 2d | 2026-09-17 | 2026-09-21 | 687 | 11d |  |
| 689 | 1.18.13 | **DU-F0009-0309-MB-E-00003** | 25d | 2026-08-13 | 2026-09-17 |  | 13d |  |
| 690 |  | Emissão inicial | 15d | 2026-08-13 | 2026-09-03 | 676SF | 13d |  |
| 691 |  | Avaliação do Cliente | 5d | 2026-09-03 | 2026-09-10 | 690 | 13d |  |
| 692 |  | Atendimento de Comentário | 3d | 2026-09-10 | 2026-09-15 | 691 | 13d |  |
| 693 |  | Aprovação | 2d | 2026-09-15 | 2026-09-17 | 692 | 13d |  |
| 694 | 1.18.14 | **ET-F0009-0309-MB-E-00001** | 27d | 2026-08-17 | 2026-09-23 |  | 9d |  |
| 695 |  | Emissão inicial | 15d | 2026-08-17 | 2026-09-07 | 676SF+2d | 9d | start no earlier than 2026-08-12 |
| 696 |  | Avaliação do Cliente | 5d | 2026-09-07 | 2026-09-14 | 695 | 9d |  |
| 697 |  | Atendimento de Comentário | 5d | 2026-09-14 | 2026-09-21 | 696 | 9d |  |
| 698 |  | Aprovação | 2d | 2026-09-21 | 2026-09-23 | 697 | 9d |  |
| 699 | 1.18.15 | **LB-F0009-0309-MB-E-00001** | 25d | 2026-08-17 | 2026-09-21 |  | 11d |  |
| 700 |  | Emissão inicial | 15d | 2026-08-17 | 2026-09-07 | 676SF+2d | 11d |  |

| ID | WBS | Task | Duration | Start | Finish | Predecessors | Total float |
| --- | --- | --- | --- | --- | --- | --- | --- |
| 701 |  | Avaliação do Cliente | 5d | 2026-09-07 | 2026-09-14 | 700 | 11d |
| 702 |  | Atendimento de Comentário | 3d | 2026-09-14 | 2026-09-17 | 701 | 11d |
| 703 |  | Aprovação | 2d | 2026-09-17 | 2026-09-21 | 702 | 11d |
| 704 | 1.18.16 | **LM-F0009-0309-MB-E-00001** | 25d | 2026-08-17 | 2026-09-21 |  | 11d |
| 705 |  | Emissão inicial | 15d | 2026-08-17 | 2026-09-07 | 701SF | 11d |
| 706 |  | Avaliação do Cliente | 5d | 2026-09-07 | 2026-09-14 | 705 | 11d |
| 707 |  | Atendimento de Comentário | 3d | 2026-09-14 | 2026-09-17 | 706 | 11d |
| 708 |  | Aprovação | 2d | 2026-09-17 | 2026-09-21 | 707 | 11d |
| 709 | 1.18.17 | **LR-F0009-0309-MB-E-00001** | 25d | 2026-08-17 | 2026-09-21 |  | 11d |
| 710 |  | Emissão inicial | 15d | 2026-08-17 | 2026-09-07 | 701SF | 11d |
| 711 |  | Avaliação do Cliente | 5d | 2026-09-07 | 2026-09-14 | 710 | 11d |
| 712 |  | Atendimento de Comentário | 3d | 2026-09-14 | 2026-09-17 | 711 | 11d |
| 713 |  | Aprovação | 2d | 2026-09-17 | 2026-09-21 | 712 | 11d |
| 714 | 1.18.18 | **MD-F0009-0309-MB-E-00001** | 25d | 2026-08-17 | 2026-09-21 |  | 11d |
| 715 |  | Emissão inicial | 15d | 2026-08-17 | 2026-09-07 | 701SF | 11d |
| 716 |  | Avaliação do Cliente | 5d | 2026-09-07 | 2026-09-14 | 715 | 11d |
| 717 |  | Atendimento de Comentário | 3d | 2026-09-14 | 2026-09-17 | 716 | 11d |
| 718 |  | Aprovação | 2d | 2026-09-17 | 2026-09-21 | 717 | 11d |
| 719 | 1.18.19 | **OI-F0009-0309-MB-E-00001** | 25d | 2026-08-17 | 2026-09-21 |  | 11d |
| 720 |  | Emissão inicial | 15d | 2026-08-17 | 2026-09-07 | 701SF | 11d |
| 721 |  | Avaliação do Cliente | 5d | 2026-09-07 | 2026-09-14 | 720 | 11d |
| 722 |  | Atendimento de Comentário | 3d | 2026-09-14 | 2026-09-17 | 721 | 11d |
| 723 |  | Aprovação | 2d | 2026-09-17 | 2026-09-21 | 722 | 11d |
| 724 |  | AUTOMAÇÃO 309 | 70d | 2026-06-23 | 2026-09-28 | 725SS |  |
| 725 | 1.20 | **AUTOMAÇÃO 309** | 70d | 2026-06-30 | 2026-10-06 |  | 0d |
| 726 | 1.20.1 | **CP-F0009-0309-MB-J-00001** | 25d | 2026-06-30 | 2026-08-04 |  | 45d |
| 727 |  | Emissão inicial | 15d | 2026-06-30 | 2026-07-21 | 19 | 45d |
| 728 |  | Avaliação do Cliente | 5d | 2026-07-21 | 2026-07-28 | 727 | 45d |
| 729 |  | Atendimento de Comentário | 3d | 2026-07-28 | 2026-07-31 | 728 | 45d |
| 730 |  | Aprovação | 2d | 2026-07-31 | 2026-08-04 | 729 | 45d |
| 731 | 1.20.2 | **CP-F0009-0309-MB-J-00002** | 25d | 2026-06-30 | 2026-08-04 | 19 | 45d |
| 732 |  | Emissão inicial | 15d | 2026-06-30 | 2026-07-21 | 19 | 45d |
| 733 |  | Avaliação do Cliente | 5d | 2026-07-21 | 2026-07-28 | 732 | 45d |
| 734 |  | Atendimento de Comentário | 3d | 2026-07-28 | 2026-07-31 | 733 | 45d |
| 735 |  | Aprovação | 2d | 2026-07-31 | 2026-08-04 | 734 | 45d |
| 736 | 1.20.3 | **AG-F0009-0309-MB-J-00001** | 20d | 2026-07-30 | 2026-08-27 |  | 0d |
| 737 |  | Emissão inicial | 10d | 2026-07-30 | 2026-08-13 | 95, 290, 19 | 0d |
| 738 |  | Avaliação do Cliente | 5d | 2026-08-13 | 2026-08-20 | 737 | 28d |
| 739 |  | Atendimento de Comentário | 3d | 2026-08-20 | 2026-08-25 | 738 | 28d |
| 740 |  | Aprovação | 2d | 2026-08-25 | 2026-08-27 | 739 | 28d |
| 741 | 1.20.4 | **AG-F0009-0309-MB-J-00002** | 23d | 2026-07-16 | 2026-08-18 |  | 35d |
| 742 |  | Emissão inicial | 10d | 2026-07-16 | 2026-07-30 | 737SF | 35d |
| 743 |  | Avaliação do Cliente | 5d | 2026-07-30 | 2026-08-06 | 742 | 35d |
| 744 |  | Atendimento de Comentário | 3d | 2026-08-06 | 2026-08-11 | 743 | 35d |
| 745 |  | Aprovação | 5d | 2026-08-11 | 2026-08-18 | 744 | 35d |
| 746 | 1.20.5 | **AG-F0009-0309-MB-J-00003** | 20d | 2026-07-16 | 2026-08-13 |  | 38d |
| 747 |  | Emissão inicial | 10d | 2026-07-16 | 2026-07-30 | 737SF | 38d |
| 748 |  | Avaliação do Cliente | 5d | 2026-07-30 | 2026-08-06 | 747 | 38d |
| 749 |  | Atendimento de Comentário | 3d | 2026-08-06 | 2026-08-11 | 748 | 38d |
| 750 |  | Aprovação | 2d | 2026-08-11 | 2026-08-13 | 749 | 38d |
| 751 | 1.20.6 | **AG-F0009-0309-MB-J-00004** | 20d | 2026-07-16 | 2026-08-13 |  | 0d |
| 752 |  | Emissão inicial | 10d | 2026-07-16 | 2026-07-30 | 737SF | 0d |
| 753 |  | Avaliação do Cliente | 5d | 2026-07-30 | 2026-08-06 | 752 | 38d |
| 754 |  | Atendimento de Comentário | 3d | 2026-08-06 | 2026-08-11 | 753 | 38d |
| 755 |  | Aprovação | 2d | 2026-08-11 | 2026-08-13 | 754 | 38d |
| 756 | 1.20.7 | **AG-F0009-0309-MB-J-00005** | 22d | 2026-07-30 | 2026-08-31 |  | 0d |
| 757 |  | Emissão inicial | 10d | 2026-07-30 | 2026-08-13 | 752 | 0d |
| 758 |  | Avaliação do Cliente | 5d | 2026-08-13 | 2026-08-20 | 757 | 0d |
| 759 |  | Atendimento de Comentário | 5d | 2026-08-20 | 2026-08-27 | 758 | 26d |
| 760 |  | Aprovação | 2d | 2026-08-27 | 2026-08-31 | 759 | 26d |
| 761 | 1.20.8 | **AG-F0009-0309-MB-J-00006** | 20d | 2026-07-30 | 2026-08-27 |  | 28d |
| 762 |  | Emissão inicial | 10d | 2026-07-30 | 2026-08-13 | 758SF | 28d |
| 763 |  | Avaliação do Cliente | 5d | 2026-08-13 | 2026-08-20 | 762 | 28d |
| 764 |  | Atendimento de Comentário | 3d | 2026-08-20 | 2026-08-25 | 763 | 28d |
| 765 |  | Aprovação | 2d | 2026-08-25 | 2026-08-27 | 764 | 28d |
| 766 | 1.20.9 | **AG-F0009-0309-MB-J-00007** | 22d | 2026-07-30 | 2026-08-31 |  | 26d |
| 767 |  | Emissão inicial | 10d | 2026-07-30 | 2026-08-13 | 758SF | 26d |
| 768 |  | Avaliação do Cliente | 5d | 2026-08-13 | 2026-08-20 | 767 | 26d |
| 769 |  | Atendimento de Comentário | 5d | 2026-08-20 | 2026-08-27 | 768 | 26d |
| 770 |  | Aprovação | 2d | 2026-08-27 | 2026-08-31 | 769 | 26d |

| ID | WBS | Task | Duration | Start | Finish | Predecessors | Total float |
| --- | --- | --- | --- | --- | --- | --- | --- |
| 771 | 1.20.10 | **AG-F0009-0309-MB-J-00008** | 20d | 2026-07-30 | 2026-08-27 |  | 28d |
| 772 |  | Emissão inicial | 10d | 2026-07-30 | 2026-08-13 | 758SF | 28d |
| 773 |  | Avaliação do Cliente | 5d | 2026-08-13 | 2026-08-20 | 772 | 28d |
| 774 |  | Atendimento de Comentário | 3d | 2026-08-20 | 2026-08-25 | 773 | 28d |
| 775 |  | Aprovação | 2d | 2026-08-25 | 2026-08-27 | 774 | 28d |
| 776 | 1.20.11 | **AG-F0009-0309-MB-J-00009** | 20d | 2026-07-30 | 2026-08-27 |  | 0d |
| 777 |  | Emissão inicial | 10d | 2026-07-30 | 2026-08-13 | 758SF | 0d |
| 778 |  | Avaliação do Cliente | 5d | 2026-08-13 | 2026-08-20 | 777 | 28d |
| 779 |  | Atendimento de Comentário | 3d | 2026-08-20 | 2026-08-25 | 778 | 28d |
| 780 |  | Aprovação | 2d | 2026-08-25 | 2026-08-27 | 779 | 28d |
| 781 | 1.20.12 | **LB-F0009-0309-MB-J-00001** | 27d | 2026-08-13 | 2026-09-21 |  | 0d |
| 782 |  | Emissão inicial | 15d | 2026-08-13 | 2026-09-03 | 1009, 777 | 0d |
| 783 |  | Avaliação do Cliente | 5d | 2026-09-03 | 2026-09-10 | 782 | 0d |
| 784 |  | Atendimento de Comentário | 5d | 2026-09-10 | 2026-09-17 | 783 | 11d |
| 785 |  | Aprovação | 2d | 2026-09-17 | 2026-09-21 | 784 | 11d |
| 786 | 1.20.13 | **LI-F0009-0300-MB-J-00001** | 25d | 2026-08-13 | 2026-09-17 |  | 13d |
| 787 |  | Emissão inicial | 15d | 2026-08-13 | 2026-09-03 | 783SF | 13d |
| 788 |  | Avaliação do Cliente | 5d | 2026-09-03 | 2026-09-10 | 787 | 13d |
| 789 |  | Atendimento de Comentário | 3d | 2026-09-10 | 2026-09-15 | 788 | 13d |
| 790 |  | Aprovação | 2d | 2026-09-15 | 2026-09-17 | 789 | 13d |
| 791 | 1.20.14 | **LI-F0009-0302-MB-J-00001** | 25d | 2026-08-13 | 2026-09-17 |  | 13d |
| 792 |  | Emissão inicial | 15d | 2026-08-13 | 2026-09-03 | 783SF | 13d |
| 793 |  | Avaliação do Cliente | 5d | 2026-09-03 | 2026-09-10 | 792 | 13d |
| 794 |  | Atendimento de Comentário | 3d | 2026-09-10 | 2026-09-15 | 793 | 13d |
| 795 |  | Aprovação | 2d | 2026-09-15 | 2026-09-17 | 794 | 13d |
| 796 | 1.20.15 | **LI-F0009-0302-MB-J-00002** | 25d | 2026-08-13 | 2026-09-17 |  | 13d |
| 797 |  | Emissão inicial | 15d | 2026-08-13 | 2026-09-03 | 783SF | 13d |
| 798 |  | Avaliação do Cliente | 5d | 2026-09-03 | 2026-09-10 | 797 | 13d |
| 799 |  | Atendimento de Comentário | 3d | 2026-09-10 | 2026-09-15 | 798 | 13d |
| 800 |  | Aprovação | 2d | 2026-09-15 | 2026-09-17 | 799 | 13d |
| 801 | 1.20.16 | **LI-F0009-0302-MB-J-00003** | 27d | 2026-08-13 | 2026-09-21 |  | 11d |
| 802 |  | Emissão inicial | 15d | 2026-08-13 | 2026-09-03 | 783SF | 11d |
| 803 |  | Avaliação do Cliente | 5d | 2026-09-03 | 2026-09-10 | 802 | 11d |
| 804 |  | Atendimento de Comentário | 5d | 2026-09-10 | 2026-09-17 | 803 | 11d |
| 805 |  | Aprovação | 2d | 2026-09-17 | 2026-09-21 | 804 | 11d |
| 806 | 1.20.17 | **LI-F0009-0302-MB-J-00004** | 25d | 2026-08-13 | 2026-09-17 |  | 13d |
| 807 |  | Emissão inicial | 15d | 2026-08-13 | 2026-09-03 | 783SF | 13d |
| 808 |  | Avaliação do Cliente | 5d | 2026-09-03 | 2026-09-10 | 807 | 13d |
| 809 |  | Atendimento de Comentário | 3d | 2026-09-10 | 2026-09-15 | 808 | 13d |
| 810 |  | Aprovação | 2d | 2026-09-15 | 2026-09-17 | 809 | 13d |
| 811 | 1.20.18 | **LI-F0009-0302-MB-J-00005** | 27d | 2026-08-13 | 2026-09-21 |  | 11d |
| 812 |  | Emissão inicial | 15d | 2026-08-13 | 2026-09-03 | 783SF | 11d |
| 813 |  | Avaliação do Cliente | 5d | 2026-09-03 | 2026-09-10 | 812 | 11d |
| 814 |  | Atendimento de Comentário | 5d | 2026-09-10 | 2026-09-17 | 813 | 11d |
| 815 |  | Aprovação | 2d | 2026-09-17 | 2026-09-21 | 814 | 11d |
| 816 | 1.20.19 | **LI-F0009-0302-MB-J-00006** | 25d | 2026-08-13 | 2026-09-17 |  | 13d |
| 817 |  | Emissão inicial | 15d | 2026-08-13 | 2026-09-03 | 783SF | 13d |
| 818 |  | Avaliação do Cliente | 5d | 2026-09-03 | 2026-09-10 | 817 | 13d |
| 819 |  | Atendimento de Comentário | 3d | 2026-09-10 | 2026-09-15 | 818 | 13d |
| 820 |  | Aprovação | 2d | 2026-09-15 | 2026-09-17 | 819 | 13d |
| 821 | 1.20.20 | **LI-F0009-0307-MB-J-00001** | 27d | 2026-08-13 | 2026-09-21 |  | 11d |
| 822 |  | Emissão inicial | 15d | 2026-08-13 | 2026-09-03 | 783SF | 11d |
| 823 |  | Avaliação do Cliente | 5d | 2026-09-03 | 2026-09-10 | 822 | 11d |
| 824 |  | Atendimento de Comentário | 5d | 2026-09-10 | 2026-09-17 | 823 | 11d |
| 825 |  | Aprovação | 2d | 2026-09-17 | 2026-09-21 | 824 | 11d |
| 826 | 1.20.21 | **LI-F0009-0309-MB-J-00001** | 25d | 2026-08-13 | 2026-09-17 |  | 13d |
| 827 |  | Emissão inicial | 15d | 2026-08-13 | 2026-09-03 | 783SF | 13d |
| 828 |  | Avaliação do Cliente | 5d | 2026-09-03 | 2026-09-10 | 827 | 13d |
| 829 |  | Atendimento de Comentário | 3d | 2026-09-10 | 2026-09-15 | 828 | 13d |
| 830 |  | Aprovação | 2d | 2026-09-15 | 2026-09-17 | 829 | 13d |
| 831 | 1.20.22 | **LI-F0009-0309-MB-J-00002** | 25d | 2026-08-13 | 2026-09-17 |  | 13d |
| 832 |  | Emissão inicial | 15d | 2026-08-13 | 2026-09-03 | 783SF | 13d |
| 833 |  | Avaliação do Cliente | 5d | 2026-09-03 | 2026-09-10 | 832 | 13d |
| 834 |  | Atendimento de Comentário | 3d | 2026-09-10 | 2026-09-15 | 833 | 13d |
| 835 |  | Aprovação | 2d | 2026-09-15 | 2026-09-17 | 834 | 13d |
| 836 | 1.20.23 | **LI-F0009-0309-MB-J-00003** | 25d | 2026-08-13 | 2026-09-17 |  | 13d |
| 837 |  | Emissão inicial | 15d | 2026-08-13 | 2026-09-03 | 783SF | 13d |
| 838 |  | Avaliação do Cliente | 5d | 2026-09-03 | 2026-09-10 | 837 | 13d |
| 839 |  | Atendimento de Comentário | 3d | 2026-09-10 | 2026-09-15 | 838 | 13d |
| 840 |  | Aprovação | 2d | 2026-09-15 | 2026-09-17 | 839 | 13d |

| ID | WBS | Task | Duration | Start | Finish | Predecessors | Total float |
| --- | --- | --- | --- | --- | --- | --- | --- |
| 841 | 1.20.24 | **LI-F0009-0309-MB-J-00004** | 25d | 2026-08-13 | 2026-09-17 |  | 13d |
| 842 |  | Emissão inicial | 15d | 2026-08-13 | 2026-09-03 | 783SF | 13d |
| 843 |  | Avaliação do Cliente | 5d | 2026-09-03 | 2026-09-10 | 842 | 13d |
| 844 |  | Atendimento de Comentário | 3d | 2026-09-10 | 2026-09-15 | 843 | 13d |
| 845 |  | Aprovação | 2d | 2026-09-15 | 2026-09-17 | 844 | 13d |
| 846 | 1.20.25 | **LI-F0009-0309-MB-J-00005** | 25d | 2026-08-13 | 2026-09-17 |  | 13d |
| 847 |  | Emissão inicial | 15d | 2026-08-13 | 2026-09-03 | 783SF | 13d |
| 848 |  | Avaliação do Cliente | 5d | 2026-09-03 | 2026-09-10 | 847 | 13d |
| 849 |  | Atendimento de Comentário | 3d | 2026-09-10 | 2026-09-15 | 848 | 13d |
| 850 |  | Aprovação | 2d | 2026-09-15 | 2026-09-17 | 849 | 13d |
| 851 | 1.20.26 | **LI-F0009-0309-MB-J-00006** | 27d | 2026-08-13 | 2026-09-21 |  | 11d |
| 852 |  | Emissão inicial | 15d | 2026-08-13 | 2026-09-03 | 783SF | 11d |
| 853 |  | Avaliação do Cliente | 5d | 2026-09-03 | 2026-09-10 | 852 | 11d |
| 854 |  | Atendimento de Comentário | 5d | 2026-09-10 | 2026-09-17 | 853 | 11d |
| 855 |  | Aprovação | 2d | 2026-09-17 | 2026-09-21 | 854 | 11d |
| 856 | 1.20.27 | **LI-F0009-0309-MB-J-00007** | 25d | 2026-08-13 | 2026-09-17 |  | 13d |
| 857 |  | Emissão inicial | 15d | 2026-08-13 | 2026-09-03 | 783SF | 13d |
| 858 |  | Avaliação do Cliente | 5d | 2026-09-03 | 2026-09-10 | 857 | 13d |
| 859 |  | Atendimento de Comentário | 3d | 2026-09-10 | 2026-09-15 | 858 | 13d |
| 860 |  | Aprovação | 2d | 2026-09-15 | 2026-09-17 | 859 | 13d |
| 861 | 1.20.28 | **LI-F0009-0309-MB-J-00008** | 27d | 2026-08-13 | 2026-09-21 |  | 11d |
| 862 |  | Emissão inicial | 15d | 2026-08-13 | 2026-09-03 | 783SF | 11d |
| 863 |  | Avaliação do Cliente | 5d | 2026-09-03 | 2026-09-10 | 862 | 11d |
| 864 |  | Atendimento de Comentário | 5d | 2026-09-10 | 2026-09-17 | 863 | 11d |
| 865 |  | Aprovação | 2d | 2026-09-17 | 2026-09-21 | 864 | 11d |
| 866 | 1.20.29 | **LI-F0009-0309-MB-J-00009** | 25d | 2026-08-13 | 2026-09-17 |  | 0d |
| 867 |  | Emissão inicial | 15d | 2026-08-13 | 2026-09-03 | 783SF | 0d |
| 868 |  | Avaliação do Cliente | 5d | 2026-09-03 | 2026-09-10 | 867 | 13d |
| 869 |  | Atendimento de Comentário | 3d | 2026-09-10 | 2026-09-15 | 868 | 13d |
| 870 |  | Aprovação | 2d | 2026-09-15 | 2026-09-17 | 869 | 13d |
| 871 | 1.20.30 | **LM-F0009-0309-MB-J-00001** | 21d | 2026-09-03 | 2026-10-02 |  | 2d |
| 872 |  | Emissão inicial | 11d | 2026-09-03 | 2026-09-18 | 867 | 2d |
| 873 |  | Avaliação do Cliente | 5d | 2026-09-18 | 2026-09-25 | 872 | 2d |
| 874 |  | Atendimento de Comentário | 3d | 2026-09-25 | 2026-09-30 | 873 | 2d |
| 875 |  | Aprovação | 2d | 2026-09-30 | 2026-10-02 | 874 | 2d |
| 876 | 1.20.31 | **MD-F0009-0309-MB-J-00001** | 23d | 2026-09-03 | 2026-10-06 |  | 0d |
| 877 |  | Emissão inicial | 13d | 2026-09-03 | 2026-09-22 | 867 | 0d |
| 878 |  | Avaliação do Cliente | 5d | 2026-09-22 | 2026-09-29 | 877 | 0d |
| 879 |  | Atendimento de Comentário | 3d | 2026-09-29 | 2026-10-02 | 878 | 0d |
| 880 |  | Aprovação | 2d | 2026-10-02 | 2026-10-06 | 879 | 0d |
| 881 | 1.20.32 | **ET-F0009-0309-MB-J-00001** | 25d | 2026-08-13 | 2026-09-17 |  | 13d |
| 882 |  | Emissão inicial | 15d | 2026-08-13 | 2026-09-03 | 877SF | 13d |
| 883 |  | Avaliação do Cliente | 5d | 2026-09-03 | 2026-09-10 | 882 | 13d |
| 884 |  | Atendimento de Comentário | 3d | 2026-09-10 | 2026-09-15 | 883 | 13d |
| 885 |  | Aprovação | 2d | 2026-09-15 | 2026-09-17 | 884 | 13d |
| 886 | 1.20.33 | **PQ-F0009-0309-MB-J-00001** | 25d | 2026-08-13 | 2026-09-17 |  | 13d |
| 887 |  | Emissão inicial | 15d | 2026-08-13 | 2026-09-03 | 877SF | 13d |
| 888 |  | Avaliação do Cliente | 5d | 2026-09-03 | 2026-09-10 | 887 | 13d |
| 889 |  | Atendimento de Comentário | 3d | 2026-09-10 | 2026-09-15 | 888 | 13d |
| 890 |  | Aprovação | 2d | 2026-09-15 | 2026-09-17 | 889 | 13d |
| 891 |  | PROCESSO GUSA 309 | 65.13d | 2026-06-23 | 2026-09-22 | 892SS |  |
| 892 | 1.22 | **PROCESSO GUSA 309** | 65d | 2026-06-30 | 2026-09-29 |  | 0d |
| 893 | 1.22.1 | **CP-F0009-0309-MB-P-00001** | 25d | 2026-06-30 | 2026-08-04 |  | 25d |
| 894 |  | Emissão inicial | 15d | 2026-06-30 | 2026-07-21 | 19 | 25d |
| 895 |  | Avaliação do Cliente | 5d | 2026-07-21 | 2026-07-28 | 894 | 25d |
| 896 |  | Atendimento de Comentário | 3d | 2026-07-28 | 2026-07-31 | 895 | 25d |
| 897 |  | Aprovação | 2d | 2026-07-31 | 2026-08-04 | 896 | 25d |
| 898 | 1.22.2 | **FG-F0009-0300-MB-P-00001** | 20d | 2026-06-30 | 2026-07-28 |  | 28d |
| 899 |  | Emissão inicial | 10d | 2026-06-30 | 2026-07-14 | 19 | 28d |
| 900 |  | Avaliação do Cliente | 5d | 2026-07-14 | 2026-07-21 | 899 | 28d |
| 901 |  | Atendimento de Comentário | 3d | 2026-07-21 | 2026-07-24 | 900 | 50d |
| 902 |  | Aprovação | 2d | 2026-07-24 | 2026-07-28 | 901 | 50d |
| 903 | 1.22.3 | **FG-F0009-0300-MB-P-00002** | 20d | 2026-06-30 | 2026-07-28 |  | 50d |
| 904 |  | Emissão inicial | 10d | 2026-06-30 | 2026-07-14 | 900SF | 50d |
| 905 |  | Avaliação do Cliente | 5d | 2026-07-14 | 2026-07-21 | 904 | 50d |
| 906 |  | Atendimento de Comentário | 3d | 2026-07-21 | 2026-07-24 | 905 | 50d |
| 907 |  | Aprovação | 2d | 2026-07-24 | 2026-07-28 | 906 | 50d |
| 908 | 1.22.4 | **FG-F0009-0302-MB-P-00001** | 22d | 2026-06-30 | 2026-07-30 |  | 28d |
| 909 |  | Emissão inicial | 10d | 2026-06-30 | 2026-07-14 | 900SF | 28d |
| 910 |  | Avaliação do Cliente | 5d | 2026-07-14 | 2026-07-21 | 909 | 28d |

| ID | WBS | Task | Duration | Start | Finish | Predecessors | Total float |
| --- | --- | --- | --- | --- | --- | --- | --- |
| 911 |  | Atendimento de Comentário | 5d | 2026-07-21 | 2026-07-28 | 910 | 28d |
| 912 |  | Aprovação | 2d | 2026-07-28 | 2026-07-30 | 911 | 28d |
| 913 | 1.22.5 | **FG-F0009-0302-MB-P-00002** | 20d | 2026-06-30 | 2026-07-28 |  | 50d |
| 914 |  | Emissão inicial | 10d | 2026-06-30 | 2026-07-14 | 900SF | 50d |
| 915 |  | Avaliação do Cliente | 5d | 2026-07-14 | 2026-07-21 | 914 | 50d |
| 916 |  | Atendimento de Comentário | 3d | 2026-07-21 | 2026-07-24 | 915 | 50d |
| 917 |  | Aprovação | 2d | 2026-07-24 | 2026-07-28 | 916 | 50d |
| 918 | 1.22.6 | **FG-F0009-0302-MB-P-00003** | 22d | 2026-07-14 | 2026-08-13 |  | 28d |
| 919 |  | Emissão inicial | 10d | 2026-07-14 | 2026-07-28 | 899 | 28d |
| 920 |  | Avaliação do Cliente | 5d | 2026-07-28 | 2026-08-04 | 919 | 28d |
| 921 |  | Atendimento de Comentário | 5d | 2026-08-04 | 2026-08-11 | 920 | 38d |
| 922 |  | Aprovação | 2d | 2026-08-11 | 2026-08-13 | 921 | 38d |
| 923 | 1.22.7 | **FG-F0009-0302-MB-P-00004** | 20d | 2026-07-14 | 2026-08-11 |  | 40d |
| 924 |  | Emissão inicial | 10d | 2026-07-14 | 2026-07-28 | 920SF | 40d |
| 925 |  | Avaliação do Cliente | 5d | 2026-07-28 | 2026-08-04 | 924 | 40d |
| 926 |  | Atendimento de Comentário | 3d | 2026-08-04 | 2026-08-07 | 925 | 40d |
| 927 |  | Aprovação | 2d | 2026-08-07 | 2026-08-11 | 926 | 40d |
| 928 | 1.22.8 | **FG-F0009-0302-MB-P-00005** | 20d | 2026-07-14 | 2026-08-11 |  | 40d |
| 929 |  | Emissão inicial | 10d | 2026-07-14 | 2026-07-28 | 920SF | 40d |
| 930 |  | Avaliação do Cliente | 5d | 2026-07-28 | 2026-08-04 | 929 | 40d |
| 931 |  | Atendimento de Comentário | 3d | 2026-08-04 | 2026-08-07 | 930 | 40d |
| 932 |  | Aprovação | 2d | 2026-08-07 | 2026-08-11 | 931 | 40d |
| 933 | 1.22.9 | **FG-F0009-0302-MB-P-00006** | 22d | 2026-07-14 | 2026-08-13 |  | 28d |
| 934 |  | Emissão inicial | 10d | 2026-07-14 | 2026-07-28 | 920SF | 28d |
| 935 |  | Avaliação do Cliente | 5d | 2026-07-28 | 2026-08-04 | 934 | 38d |
| 936 |  | Atendimento de Comentário | 5d | 2026-08-04 | 2026-08-11 | 935 | 38d |
| 937 |  | Aprovação | 2d | 2026-08-11 | 2026-08-13 | 936 | 38d |
| 938 | 1.22.10 | **FG-F0009-0302-MB-P-00007** | 20d | 2026-07-28 | 2026-08-25 |  | 28d |
| 939 |  | Emissão inicial | 10d | 2026-07-28 | 2026-08-11 | 934 | 28d |
| 940 |  | Avaliação do Cliente | 5d | 2026-08-11 | 2026-08-18 | 939 | 28d |
| 941 |  | Atendimento de Comentário | 3d | 2026-08-18 | 2026-08-21 | 940 | 30d |
| 942 |  | Aprovação | 2d | 2026-08-21 | 2026-08-25 | 941 | 30d |
| 943 | 1.22.11 | **FG-F0009-0302-MB-P-00008** | 20d | 2026-07-28 | 2026-08-25 |  | 30d |
| 944 |  | Emissão inicial | 10d | 2026-07-28 | 2026-08-11 | 940SF | 30d |
| 945 |  | Avaliação do Cliente | 5d | 2026-08-11 | 2026-08-18 | 944 | 30d |
| 946 |  | Atendimento de Comentário | 3d | 2026-08-18 | 2026-08-21 | 945 | 30d |
| 947 |  | Aprovação | 2d | 2026-08-21 | 2026-08-25 | 946 | 30d |
| 948 | 1.22.12 | **FG-F0009-0302-MB-P-00009** | 20d | 2026-07-28 | 2026-08-25 |  | 30d |
| 949 |  | Emissão inicial | 10d | 2026-07-28 | 2026-08-11 | 940SF | 30d |
| 950 |  | Avaliação do Cliente | 5d | 2026-08-11 | 2026-08-18 | 949 | 30d |
| 951 |  | Atendimento de Comentário | 3d | 2026-08-18 | 2026-08-21 | 950 | 30d |
| 952 |  | Aprovação | 2d | 2026-08-21 | 2026-08-25 | 951 | 30d |
| 953 | 1.22.13 | **FG-F0009-0302-MB-P-00010** | 22d | 2026-07-28 | 2026-08-27 |  | 28d |
| 954 |  | Emissão inicial | 10d | 2026-07-28 | 2026-08-11 | 940SF | 28d |
| 955 |  | Avaliação do Cliente | 5d | 2026-08-11 | 2026-08-18 | 954 | 28d |
| 956 |  | Atendimento de Comentário | 5d | 2026-08-18 | 2026-08-25 | 955 | 28d |
| 957 |  | Aprovação | 2d | 2026-08-25 | 2026-08-27 | 956 | 28d |
| 958 | 1.22.14 | **FG-F0009-0302-MB-P-00011** | 20d | 2026-07-28 | 2026-08-25 |  | 30d |
| 959 |  | Emissão inicial | 10d | 2026-07-28 | 2026-08-11 | 940SF | 30d |
| 960 |  | Avaliação do Cliente | 5d | 2026-08-11 | 2026-08-18 | 959 | 30d |
| 961 |  | Atendimento de Comentário | 3d | 2026-08-18 | 2026-08-21 | 960 | 30d |
| 962 |  | Aprovação | 2d | 2026-08-21 | 2026-08-25 | 961 | 30d |
| 963 | 1.22.15 | **FG-F0009-0307-MB-P-00001** | 20d | 2026-06-30 | 2026-07-28 |  | 0d |
| 964 |  | Emissão inicial | 10d | 2026-06-30 | 2026-07-14 | 19 | 0d |
| 965 |  | Avaliação do Cliente | 5d | 2026-07-14 | 2026-07-21 | 964 | 0d |
| 966 |  | Atendimento de Comentário | 3d | 2026-07-21 | 2026-07-24 | 965 | 50d |
| 967 |  | Aprovação | 2d | 2026-07-24 | 2026-07-28 | 966 | 50d |
| 968 | 1.22.16 | **FG-F0009-0307-MB-P-00002** | 20d | 2026-06-30 | 2026-07-28 |  | 50d |
| 969 |  | Emissão inicial | 10d | 2026-06-30 | 2026-07-14 | 965SF | 50d |
| 970 |  | Avaliação do Cliente | 5d | 2026-07-14 | 2026-07-21 | 969 | 50d |
| 971 |  | Atendimento de Comentário | 3d | 2026-07-21 | 2026-07-24 | 970 | 50d |
| 972 |  | Aprovação | 2d | 2026-07-24 | 2026-07-28 | 971 | 50d |
| 973 | 1.22.17 | **FG-F0009-0309-MB-P-00001** | 22d | 2026-06-30 | 2026-07-30 |  | 48d |
| 974 |  | Emissão inicial | 10d | 2026-06-30 | 2026-07-14 | 965SF | 48d |
| 975 |  | Avaliação do Cliente | 5d | 2026-07-14 | 2026-07-21 | 974 | 48d |
| 976 |  | Atendimento de Comentário | 5d | 2026-07-21 | 2026-07-28 | 975 | 48d |
| 977 |  | Aprovação | 2d | 2026-07-28 | 2026-07-30 | 976 | 48d |
| 978 | 1.22.18 | **FG-F0009-0309-MB-P-00002** | 20d | 2026-06-30 | 2026-07-28 |  | 50d |
| 979 |  | Emissão inicial | 10d | 2026-06-30 | 2026-07-14 | 965SF | 50d |
| 980 |  | Avaliação do Cliente | 5d | 2026-07-14 | 2026-07-21 | 979 | 50d |

| ID | WBS | Task | Duration | Start | Finish | Predecessors | Total float |
| --- | --- | --- | --- | --- | --- | --- | --- |
| 981 |  | Atendimento de Comentário | 3d | 2026-07-21 | 2026-07-24 | 980 | 50d |
| 982 |  | Aprovação | 2d | 2026-07-24 | 2026-07-28 | 981 | 50d |
| 983 | 1.22.19 | **FG-F0009-0309-MB-P-00003** | 20d | 2026-06-30 | 2026-07-28 |  | 50d |
| 984 |  | Emissão inicial | 10d | 2026-06-30 | 2026-07-14 | 965SF | 50d |
| 985 |  | Avaliação do Cliente | 5d | 2026-07-14 | 2026-07-21 | 984 | 50d |
| 986 |  | Atendimento de Comentário | 3d | 2026-07-21 | 2026-07-24 | 985 | 50d |
| 987 |  | Aprovação | 2d | 2026-07-24 | 2026-07-28 | 986 | 50d |
| 988 | 1.22.20 | **FG-F0009-0309-MB-P-00004** | 20d | 2026-06-30 | 2026-07-28 |  | 0d |
| 989 |  | Emissão inicial | 10d | 2026-06-30 | 2026-07-14 | 965SF | 0d |
| 990 |  | Avaliação do Cliente | 5d | 2026-07-14 | 2026-07-21 | 989 | 50d |
| 991 |  | Atendimento de Comentário | 3d | 2026-07-21 | 2026-07-24 | 990 | 50d |
| 992 |  | Aprovação | 2d | 2026-07-24 | 2026-07-28 | 991 | 50d |
| 993 | 1.22.21 | **FG-F0009-0309-MB-P-00005** | 20d | 2026-07-14 | 2026-08-11 |  | 0d |
| 994 |  | Emissão inicial | 10d | 2026-07-14 | 2026-07-28 | 989 | 0d |
| 995 |  | Avaliação do Cliente | 5d | 2026-07-28 | 2026-08-04 | 994 | 0d |
| 996 |  | Atendimento de Comentário | 3d | 2026-08-04 | 2026-08-07 | 995 | 40d |
| 997 |  | Aprovação | 2d | 2026-08-07 | 2026-08-11 | 996 | 40d |
| 998 | 1.22.22 | **FG-F0009-0309-MB-P-00006** | 20d | 2026-07-14 | 2026-08-11 |  | 40d |
| 999 |  | Emissão inicial | 10d | 2026-07-14 | 2026-07-28 | 995SF | 40d |
| 1000 |  | Avaliação do Cliente | 5d | 2026-07-28 | 2026-08-04 | 999 | 40d |
| 1001 |  | Atendimento de Comentário | 3d | 2026-08-04 | 2026-08-07 | 1000 | 40d |
| 1002 |  | Aprovação | 2d | 2026-08-07 | 2026-08-11 | 1001 | 40d |
| 1003 | 1.22.23 | **FG-F0009-0309-MB-P-00007** | 20d | 2026-07-14 | 2026-08-11 |  | 40d |
| 1004 |  | Emissão inicial | 10d | 2026-07-14 | 2026-07-28 | 995SF | 40d |
| 1005 |  | Avaliação do Cliente | 5d | 2026-07-28 | 2026-08-04 | 1004 | 40d |
| 1006 |  | Atendimento de Comentário | 3d | 2026-08-04 | 2026-08-07 | 1005 | 40d |
| 1007 |  | Aprovação | 2d | 2026-08-07 | 2026-08-11 | 1006 | 40d |
| 1008 | 1.22.24 | **FG-F0009-0309-MB-P-00008** | 20d | 2026-07-14 | 2026-08-11 |  | 12d |
| 1009 |  | Emissão inicial | 10d | 2026-07-14 | 2026-07-28 | 995SF | 12d |
| 1010 |  | Avaliação do Cliente | 5d | 2026-07-28 | 2026-08-04 | 1009 | 40d |
| 1011 |  | Atendimento de Comentário | 3d | 2026-08-04 | 2026-08-07 | 1010 | 40d |
| 1012 |  | Aprovação | 2d | 2026-08-07 | 2026-08-11 | 1011 | 40d |
| 1013 | 1.22.25 | **FG-F0009-0309-MB-P-00009** | 20d | 2026-07-14 | 2026-08-11 |  | 40d |
| 1014 |  | Emissão inicial | 10d | 2026-07-14 | 2026-07-28 | 995SF | 40d |
| 1015 |  | Avaliação do Cliente | 5d | 2026-07-28 | 2026-08-04 | 1014 | 40d |
| 1016 |  | Atendimento de Comentário | 3d | 2026-08-04 | 2026-08-07 | 1015 | 40d |
| 1017 |  | Aprovação | 2d | 2026-08-07 | 2026-08-11 | 1016 | 40d |
| 1018 | 1.22.26 | **FG-F0009-0309-MB-P-00010** | 20d | 2026-07-14 | 2026-08-11 |  | 0d |
| 1019 |  | Emissão inicial | 10d | 2026-07-14 | 2026-07-28 | 995SF | 0d |
| 1020 |  | Avaliação do Cliente | 5d | 2026-07-28 | 2026-08-04 | 1019 | 13d |
| 1021 |  | Atendimento de Comentário | 3d | 2026-08-04 | 2026-08-07 | 1020 | 13d |
| 1022 |  | Aprovação | 2d | 2026-08-07 | 2026-08-11 | 1021 | 13d |
| 1023 | 1.22.27 | **LL-F0009-0309-MB-P-00001** | 25d | 2026-07-28 | 2026-09-01 |  | 10d |
| 1024 |  | Emissão inicial | 15d | 2026-07-28 | 2026-08-18 | 1019 | 10d |
| 1025 |  | Avaliação do Cliente | 5d | 2026-08-18 | 2026-08-25 | 1024 | 25d |
| 1026 |  | Atendimento de Comentário | 3d | 2026-08-25 | 2026-08-28 | 1025 | 25d |
| 1027 |  | Aprovação | 2d | 2026-08-28 | 2026-09-01 | 1026 | 25d |
| 1028 | 1.22.28 | **MC-F0009-0302-MB-P-00001** | 25d | 2026-07-28 | 2026-09-01 |  | 25d |
| 1029 |  | Emissão inicial | 15d | 2026-07-28 | 2026-08-18 | 1019 | 25d |
| 1030 |  | Avaliação do Cliente | 5d | 2026-08-18 | 2026-08-25 | 1029 | 25d |
| 1031 |  | Atendimento de Comentário | 3d | 2026-08-25 | 2026-08-28 | 1030 | 25d |
| 1032 |  | Aprovação | 2d | 2026-08-28 | 2026-09-01 | 1031 | 25d |
| 1033 | 1.22.29 | **MC-F0009-0309-MB-P-00001** | 28d | 2026-07-28 | 2026-09-04 |  | 22d |
| 1034 |  | Emissão inicial | 15d | 2026-07-28 | 2026-08-18 | 1019 | 22d |
| 1035 |  | Avaliação do Cliente | 5d | 2026-08-18 | 2026-08-25 | 1034 | 22d |
| 1036 |  | Atendimento de Comentário | 3d | 2026-08-25 | 2026-08-28 | 1035 | 22d |
| 1037 |  | Aprovação | 5d | 2026-08-28 | 2026-09-04 | 1036 | 22d |
| 1038 | 1.22.30 | **MC-F0009-0309-MB-P-00002** | 25d | 2026-07-28 | 2026-09-01 |  | 25d |
| 1039 |  | Emissão inicial | 15d | 2026-07-28 | 2026-08-18 | 1019 | 25d |
| 1040 |  | Avaliação do Cliente | 5d | 2026-08-18 | 2026-08-25 | 1039 | 25d |
| 1041 |  | Atendimento de Comentário | 3d | 2026-08-25 | 2026-08-28 | 1040 | 25d |
| 1042 |  | Aprovação | 2d | 2026-08-28 | 2026-09-01 | 1041 | 25d |
| 1043 | 1.22.31 | **MC-F0009-0309-MB-P-00003** | 25d | 2026-07-28 | 2026-09-01 |  | 25d |
| 1044 |  | Emissão inicial | 15d | 2026-07-28 | 2026-08-18 | 1019 | 25d |
| 1045 |  | Avaliação do Cliente | 5d | 2026-08-18 | 2026-08-25 | 1044 | 25d |
| 1046 |  | Atendimento de Comentário | 3d | 2026-08-25 | 2026-08-28 | 1045 | 25d |
| 1047 |  | Aprovação | 2d | 2026-08-28 | 2026-09-01 | 1046 | 25d |
| 1048 | 1.22.32 | **MC-F0009-0309-MB-P-00004** | 25d | 2026-07-28 | 2026-09-01 |  | 0d |
| 1049 |  | Emissão inicial | 15d | 2026-07-28 | 2026-08-18 | 1019 | 0d |
| 1050 |  | Avaliação do Cliente | 5d | 2026-08-18 | 2026-08-25 | 1049 | 25d |

| ID | WBS | Task | Duration | Start | Finish | Predecessors | Complete | Total float |
| --- | --- | --- | --- | --- | --- | --- | --- | --- |
| 1051 |  | Atendimento de Comentário | 3d | 2026-08-25 | 2026-08-28 | 1050 |  | 25d |
| 1052 |  | Aprovação | 2d | 2026-08-28 | 2026-09-01 | 1051 |  | 25d |
| 1053 | 1.22.33 | **MC-F0009-0309-MB-P-00005** | 25d | 2026-08-18 | 2026-09-22 |  |  | 10d |
| 1054 |  | Emissão inicial | 15d | 2026-08-18 | 2026-09-08 | 1049 |  | 10d |
| 1055 |  | Avaliação do Cliente | 5d | 2026-09-08 | 2026-09-15 | 1054 |  | 10d |
| 1056 |  | Atendimento de Comentário | 3d | 2026-09-15 | 2026-09-18 | 1055 |  | 10d |
| 1057 |  | Aprovação | 2d | 2026-09-18 | 2026-09-22 | 1056 |  | 10d |
| 1058 | 1.22.34 | **MC-F0009-0309-MB-P-00006** | 25d | 2026-08-18 | 2026-09-22 |  |  | 10d |
| 1059 |  | Emissão inicial | 15d | 2026-08-18 | 2026-09-08 | 1049 |  | 10d |
| 1060 |  | Avaliação do Cliente | 5d | 2026-09-08 | 2026-09-15 | 1059 |  | 10d |
| 1061 |  | Atendimento de Comentário | 3d | 2026-09-15 | 2026-09-18 | 1060 |  | 10d |
| 1062 |  | Aprovação | 2d | 2026-09-18 | 2026-09-22 | 1061 |  | 10d |
| 1063 | 1.22.35 | **MC-F0009-0309-MB-P-00007** | 28d | 2026-08-18 | 2026-09-25 |  |  | 0d |
| 1064 |  | Emissão inicial | 15d | 2026-08-18 | 2026-09-08 | 1049 |  | 0d |
| 1065 |  | Avaliação do Cliente | 5d | 2026-09-08 | 2026-09-15 | 1064 |  | 7d |
| 1066 |  | Atendimento de Comentário | 3d | 2026-09-15 | 2026-09-18 | 1065 |  | 7d |
| 1067 |  | Aprovação | 5d | 2026-09-18 | 2026-09-25 | 1066 |  | 7d |
| 1068 | 1.22.36 | **MD-F0009-0302-MB-P-00001** | 25d | 2026-08-25 | 2026-09-29 |  |  | 5d |
| 1069 |  | Emissão inicial | 15d | 2026-08-25 | 2026-09-15 | 155 |  | 5d |
| 1070 |  | Avaliação do Cliente | 5d | 2026-09-15 | 2026-09-22 | 1069 |  | 5d |
| 1071 |  | Atendimento de Comentário | 3d | 2026-09-22 | 2026-09-25 | 1070 |  | 5d |
| 1072 |  | Aprovação | 2d | 2026-09-25 | 2026-09-29 | 1071 |  | 5d |
| 1073 | 1.22.37 | **MD-F0009-0309-MB-P-00001** | 25d | 2026-08-25 | 2026-09-29 |  |  | 5d |
| 1074 |  | Emissão inicial | 15d | 2026-08-25 | 2026-09-15 | 155 |  | 5d |
| 1075 |  | Avaliação do Cliente | 5d | 2026-09-15 | 2026-09-22 | 1074 |  | 5d |
| 1076 |  | Atendimento de Comentário | 3d | 2026-09-22 | 2026-09-25 | 1075 |  | 5d |
| 1077 |  | Aprovação | 2d | 2026-09-25 | 2026-09-29 | 1076 |  | 5d |
| 1078 | 1.22.38 | **MD-F0009-0309-MB-P-00002** | 25d | 2026-08-25 | 2026-09-29 |  |  | 5d |
| 1079 |  | Emissão inicial | 15d | 2026-08-25 | 2026-09-15 | 155 |  | 5d |
| 1080 |  | Avaliação do Cliente | 5d | 2026-09-15 | 2026-09-22 | 1079 |  | 5d |
| 1081 |  | Atendimento de Comentário | 3d | 2026-09-22 | 2026-09-25 | 1080 |  | 5d |
| 1082 |  | Aprovação | 2d | 2026-09-25 | 2026-09-29 | 1081 |  | 5d |
| 1083 | 1.22.39 | **RT-F0009-0309-MB-P-00001** | 20d | 2026-08-25 | 2026-09-22 | 893 |  | 10d |
| 1084 |  | Emissão inicial | 10d | 2026-08-25 | 2026-09-08 | 155 |  | 10d |
| 1085 |  | Avaliação do Cliente | 5d | 2026-09-08 | 2026-09-15 | 1084 |  | 10d |
| 1086 |  | Atendimento de Comentário | 3d | 2026-09-15 | 2026-09-18 | 1085 |  | 10d |
| 1087 |  | Aprovação | 2d | 2026-09-18 | 2026-09-22 | 1086 |  | 10d |
| 1088 |  | DOCUMENTOS QUE NÃO SERÃO REVISADOS | 1d | 2026-04-23 A | 2026-04-23 A | 1089SS | 100% |  |
| 1089 | 1.24 | **DOCUMENTOS QUE NÃO SERÃO REVISADOS** | 1d? | 2026-04-23 A | 2026-04-23 A |  | 100% |  |
| 1090 |  | AG-F0005-0309-MB-A-00003 | 1d? | 2026-04-23 A | 2026-04-23 A |  | 100% |  |
| 1091 |  | AG-F0005-0309-MB-A-00004 | 1d? | 2026-04-23 A | 2026-04-23 A |  | 100% |  |
| 1092 |  | AG-F0005-0309-MB-A-00005 | 1d? | 2026-04-23 A | 2026-04-23 A |  | 100% |  |
| 1093 |  | MC-F0005-0309-MB-C-00001 | 1d? | 2026-04-23 A | 2026-04-23 A |  | 100% |  |
| 1094 |  | MC-F0005-0309-MB-C-00002 | 1d? | 2026-04-23 A | 2026-04-23 A |  | 100% |  |
| 1095 |  | MC-F0005-0309-MB-C-00003 | 1d? | 2026-04-23 A | 2026-04-23 A |  | 100% |  |
| 1096 |  | MC-F0005-0309-MB-C-00004 | 1d? | 2026-04-23 A | 2026-04-23 A |  | 100% |  |
| 1097 |  | MC-F0005-0309-MB-C-00005 | 1d? | 2026-04-23 A | 2026-04-23 A |  | 100% |  |
| 1098 |  | OI-F0005-0309-MB-G-00001 | 1d? | 2026-04-23 A | 2026-04-23 A |  | 100% |  |
| 1099 |  | OI-F0005-0309-MB-G-00002 | 1d? | 2026-04-23 A | 2026-04-23 A |  | 100% |  |
| 1100 |  | PX-F0005-0309-MB-G-00001 | 1d? | 2026-04-23 A | 2026-04-23 A |  | 100% |  |
| 1101 |  | MD-F0005-0309-MB-G-00001 | 1d? | 2026-04-23 A | 2026-04-23 A |  | 100% |  |
| 1102 |  | FD-F0005-0309-MB-J-00001 | 1d? | 2026-04-23 A | 2026-04-23 A |  | 100% |  |
| 1103 |  | FD-F0005-0309-MB-J-00010 | 1d? | 2026-04-23 A | 2026-04-23 A |  | 100% |  |
| 1104 |  | FD-F0005-0309-MB-J-00011 | 1d? | 2026-04-23 A | 2026-04-23 A |  | 100% |  |
| 1105 |  | FD-F0005-0309-MB-J-00014 | 1d? | 2026-04-23 A | 2026-04-23 A |  | 100% |  |
| 1106 |  | FD-F0005-0309-MB-J-00015 | 1d? | 2026-04-23 A | 2026-04-23 A |  | 100% |  |
| 1107 |  | FD-F0005-0309-MB-J-00017 | 1d? | 2026-04-23 A | 2026-04-23 A |  | 100% |  |
| 1108 |  | FD-F0005-0309-MB-J-00022 | 1d? | 2026-04-23 A | 2026-04-23 A |  | 100% |  |
| 1109 |  | FD-F0005-0309-MB-J-00023 | 1d? | 2026-04-23 A | 2026-04-23 A |  | 100% |  |
| 1110 |  | FD-F0005-0309-MB-J-00024 | 1d? | 2026-04-23 A | 2026-04-23 A |  | 100% |  |
| 1111 |  | ET-F0005-0309-MB-J-00001 | 1d? | 2026-04-23 A | 2026-04-23 A |  | 100% |  |
| 1112 |  | ET-F0005-0309-MB-J-00002 | 1d? | 2026-04-23 A | 2026-04-23 A |  | 100% |  |
| 1113 |  | AC-F0005-0309-MB-J-00001 | 1d? | 2026-04-23 A | 2026-04-23 A |  | 100% |  |
| 1114 |  | FD-F0005-0300-MB-J-00001 | 1d? | 2026-04-23 A | 2026-04-23 A |  | 100% |  |
| 1115 |  | FD-F0005-0300-MB-J-00002 | 1d? | 2026-04-23 A | 2026-04-23 A |  | 100% |  |
| 1116 |  | FD-F0005-0300-MB-J-00003 | 1d? | 2026-04-23 A | 2026-04-23 A |  | 100% |  |
| 1117 |  | FD-F0005-0300-MB-J-00004 | 1d? | 2026-04-23 A | 2026-04-23 A |  | 100% |  |
| 1118 |  | FD-F0005-0300-MB-J-00005 | 1d? | 2026-04-23 A | 2026-04-23 A |  | 100% |  |
| 1119 |  | FD-F0005-0300-MB-J-00006 | 1d? | 2026-04-23 A | 2026-04-23 A |  | 100% |  |
| 1120 |  | FD-F0005-0300-MB-J-00007 | 1d? | 2026-04-23 A | 2026-04-23 A |  | 100% |  |

| ID | Task | Duration | Start | Finish | Complete |
| --- | --- | --- | --- | --- | --- |
| 1121 | FD-F0005-0300-MB-J-00008 | 1d? | 2026-04-23 A | 2026-04-23 A | 100% |
| 1122 | FD-F0005-0300-MB-J-00009 | 1d? | 2026-04-23 A | 2026-04-23 A | 100% |
| 1123 | AG-F0005-0309-MB-G-00001 | 1d? | 2026-04-23 A | 2026-04-23 A | 100% |
| 1124 | AG-F0005-0309-MB-G-00002 | 1d? | 2026-04-23 A | 2026-04-23 A | 100% |
| 1125 | AG-F0005-0309-MB-G-00003 | 1d? | 2026-04-23 A | 2026-04-23 A | 100% |
| 1126 | RT-F0005-0302-MB-L-00002 | 1d? | 2026-04-23 A | 2026-04-23 A | 100% |
| 1127 | RT-F0005-0302-MB-L-00003 | 1d? | 2026-04-23 A | 2026-04-23 A | 100% |
| 1128 | RT-F0005-0302-MB-L-00004 | 1d? | 2026-04-23 A | 2026-04-23 A | 100% |
| 1129 | RT-F0005-0302-MB-L-00005 | 1d? | 2026-04-23 A | 2026-04-23 A | 100% |
| 1130 | RT-F0005-0302-MB-L-00006 | 1d? | 2026-04-23 A | 2026-04-23 A | 100% |
| 1131 | RT-F0005-0302-MB-L-00007 | 1d? | 2026-04-23 A | 2026-04-23 A | 100% |
| 1132 | DT-F0005-0309-MB-L-00020 | 1d? | 2026-04-23 A | 2026-04-23 A | 100% |
| 1133 | OI-F0005-0309-MB-M-00001 | 1d? | 2026-04-23 A | 2026-04-23 A | 100% |
| 1134 | RT-F0005-0309-MB-P-00002 | 1d? | 2026-04-23 A | 2026-04-23 A | 100% |
| 1135 | RT-F0005-0309-MB-P-00003 | 1d? | 2026-04-23 A | 2026-04-23 A | 100% |
| 1136 | MC-F0005-0309-MB-S-00001 | 1d? | 2026-04-23 A | 2026-04-23 A | 100% |
| 1137 | MC-F0005-0309-MB-S-00002 | 1d? | 2026-04-23 A | 2026-04-23 A | 100% |
| 1138 | FD-F0005-0309-MB-T-00001 | 1d? | 2026-04-23 A | 2026-04-23 A | 100% |
| 1139 | FD-F0005-0309-MB-T-00002 | 1d? | 2026-04-23 A | 2026-04-23 A | 100% |
| 1140 | CP-F0005-0309-MB-S-00001 | 1d? | 2026-04-23 A | 2026-04-23 A | 100% |
| 1141 | DT-F0005-0309-MB-E-00001 | 1d? | 2026-04-23 A | 2026-04-23 A | 100% |
| 1142 | LE-F0009-0309-MB-M-00002 | 1d? | 2026-04-23 A | 2026-04-23 A | 100% |
| 1143 | MC-F0009-0309-MB-E-00001 | 1d? | 2026-04-23 A | 2026-04-23 A | 100% |
| 1144 | MC-F0009-0309-MB-E-00002 | 1d? | 2026-04-23 A | 2026-04-23 A | 100% |
| 1145 | MC-F0009-0309-MB-E-00003 | 1d? | 2026-04-23 A | 2026-04-23 A | 100% |
| 1146 | MC-F0009-0309-MB-S-00001 | 1d? | 2026-04-23 A | 2026-04-23 A | 100% |
| 1147 | PL-F0009-0309-MB-S-00001 | 1d? | 2026-04-23 A | 2026-04-23 A | 100% |
| 1148 | PQ-F0009-0309-MB-J-00001 | 1d? | 2026-04-23 A | 2026-04-23 A | 100% |
| 1149 | RT-F0005-0309-MB-T-00001 | 1d? | 2026-04-23 A | 2026-04-23 A | 100% |
| 1150 | RT-F0005-0309-MB-T-00002 | 1d? | 2026-04-23 A | 2026-04-23 A | 100% |

## Version 2 (data date 2026-06-23, saved 2026-07-02, file CR-F0009-0000-GE-F-00001_REV01 23062026.mpp)

Note of the change: Primeira versao dashboard

Last finish stays 2026-10-06.

Added:

| ID | Task | Duration | Start | Finish | Predecessors |
| --- | --- | --- | --- | --- | --- |
| 3 | MARCOS 309 | 113d | 2026-03-31 A | 2026-09-03 | 4SS |
| 12 | PENDÊNCIAS 309 | 65d | 2026-03-31 A | 2026-06-29 | 13SS |
| 50 | GERAL/ COORDENAÇÃO 309 | 67d | 2026-07-01 | 2026-10-01 | 52SS |
| 51 | MECÂNICA / ARRANJOS 309 | 69.88d | 2026-06-30 | 2026-10-06 | 52SS |
| 424 | MECÂNICA / EQUIPAMENTOS 309 | 70d | 2026-06-30 | 2026-10-06 | 425SS |
| 542 | TUBULAÇÃO E SISTEMAS 309 | 30d | 2026-08-11 | 2026-09-22 | 543SS |
| 595 | ARQUITETURA 309 | 35d | 2026-08-04 | 2026-09-22 | 596SS |
| 628 | CIVIL / INFRAESTRUTURA 309 | 25d | 2026-08-04 | 2026-09-08 | 629SS |
| 636 | ELÉTRICA 309 | 61d | 2026-06-30 | 2026-09-23 | 637SS |
| 734 | AUTOMAÇÃO 309 | 70d | 2026-06-30 | 2026-10-06 | 735SS |
| 902 | PROCESSO GUSA 309 | 65d | 2026-06-30 | 2026-09-29 | 903SS |
| 1100 | DOCUMENTOS QUE NÃO SERÃO REVISADOS | 1d | 2026-04-23 | 2026-04-23 | 1101SS |

Changed:

| ID | Task | Start | Finish | Duration | Complete |
| --- | --- | --- | --- | --- | --- |
| 1 | **F0009 - COM 0023 - CECAL** |  |  |  | 3% → 6% |
| 4 | **MARCOS 309** |  |  |  | 50% → 93% |
| 5 | Reunião de kick-off |  | 2026-03-31 A → 2026-05-27 A (+57d) | 1d → 36d |  |
| 13 | **PENDÊNCIAS 309** |  |  |  | 29% → 78% |
| 16 | Definição do comprimento do forno |  |  |  | 56% → 90% |
| 17 | Avaliação do aumento largura da cuba de BAR e cadinho |  |  |  | 36% → 90% |
| 18 | Avaliação de compatibilidade com carregamento, utilidades e instrumentação |  |  |  | 21% → 76% |
| 19 | Avaliação de novas tecnologias (ventaneira lateral, injeção de gás V1 e V2, passagem de gás pela cuba) |  |  |  | 6% → 71% |
| 20 | Incorporação das novas tecnologias no modelo | 2026-05-20 A |  |  | 0% → 67% |
| 49 | MECÂNICA / ARRANJOS 309 | 2026-06-24 → 2026-06-30 (+6d) | 2026-09-29 → 2026-10-06 (+7d) |  |  |

## Version 3 (data date 2026-07-07, saved 2026-07-15, file CR-F0009-0000-GE-F-00001_REV01 14072026 - Atualização Multitec.mpp)

Note of the change: Atualizacao dados para apresentacao

Last finish 2026-10-06 → 2026-10-30 (+24d).

Removed: 2 MARCOS 309; 3 MARCOS 309; 11 PENDÊNCIAS 309; 12 PENDÊNCIAS 309; 22 GERAL/ COORDENAÇÃO 309; 49 MECÂNICA / ARRANJOS 309; 50 GERAL/ COORDENAÇÃO 309; 51 MECÂNICA / ARRANJOS 309; 423 MECÂNICA / EQUIPAMENTOS 309; 424 MECÂNICA / EQUIPAMENTOS 309; 541 TUBULAÇÃO E SISTEMAS 309; 542 TUBULAÇÃO E SISTEMAS 309; 594 ARQUITETURA 309; 595 ARQUITETURA 309; 627 CIVIL / INFRAESTRUTURA 309; 628 CIVIL / INFRAESTRUTURA 309; 635 ELÉTRICA 309; 636 ELÉTRICA 309; 733 AUTOMAÇÃO 309; 734 AUTOMAÇÃO 309; 901 PROCESSO GUSA 309; 902 PROCESSO GUSA 309; 1099 DOCUMENTOS QUE NÃO SERÃO REVISADOS; 1100 DOCUMENTOS QUE NÃO SERÃO REVISADOS

Changed:

| ID | Task | Start | Finish | Duration | Complete | Total float | Other |
| --- | --- | --- | --- | --- | --- | --- | --- |
| 1 | **F0008 - COM 0023 - CECAL** |  | 2026-10-06 → 2026-10-30 (+24d) | 135.88d? → 153.88d? |  |  | was named F0009 - COM 0023 - CECAL |
| 2 | **MARCOS 309** |  |  |  | 93% → 95% | 22.88d → 40.88d |  |
| 6 | Reunião Design Review 3 | 2026-07-02 A | 2026-07-02 A |  | 0% → 100% | 23d → none |  |
| 9 | **PENDÊNCIAS 309** |  |  |  | 78% → 93% | 39d → 57d |  |
| 12 | Definição do comprimento do forno |  | 2026-06-30 A |  | 90% → 100% | 39d → none |  |
| 13 | Avaliação do aumento largura da cuba de BAR e cadinho |  | 2026-06-30 A |  | 90% → 100% | 39d → none |  |
| 14 | Avaliação de compatibilidade com carregamento, utilidades e instrumentação |  |  |  | 76% → 90% | 39d → 57d |  |
| 15 | Avaliação de novas tecnologias (ventaneira lateral, injeção de gás V1 e V2, passagem de gás pela cuba) |  |  |  | 71% → 85% | 39d → 57d |  |
| 16 | Incorporação das novas tecnologias no modelo |  |  |  | 67% → 85% | 39d → 57d |  |
| 17 | Aprovação da geometria básica | 2026-06-17 A |  |  | 0% → 75% | 0d → 18d |  |
| 18 | **GERAL/ COORDENAÇÃO 309** |  | 2026-10-01 → 2026-09-25 (-6d) | 66d → 62d |  | 3d → 25d |  |
| 19 | **3DT-F0008-0309-MB-G-00001** | 2026-09-10 → 2026-09-04 (-6d) | 2026-10-01 → 2026-09-25 (-6d) |  |  | 3d → 25d | was named 3DT-F0009-0309-MB-G-00001 |
| 20 | Emissão inicial | 2026-09-10 → 2026-09-04 (-6d) | 2026-09-17 → 2026-09-11 (-6d) |  |  | 3d → 25d |  |
| 21 | Avaliação do Cliente | 2026-09-17 → 2026-09-11 (-6d) | 2026-09-24 → 2026-09-18 (-6d) |  |  | 3d → 25d |  |
| 22 | Atendimento de Comentário | 2026-09-24 → 2026-09-18 (-6d) | 2026-09-29 → 2026-09-23 (-6d) |  |  | 3d → 25d |  |
| 23 | Aprovação | 2026-09-29 → 2026-09-23 (-6d) | 2026-10-01 → 2026-09-25 (-6d) |  |  | 3d → 25d |  |
| 24 | **3DT-F0008-0309-MB-G-00002** | 2026-09-10 → 2026-09-04 (-6d) | 2026-10-01 → 2026-09-25 (-6d) |  |  | 3d → 25d | was named 3DT-F0009-0309-MB-G-00002 |
| 25 | Emissão inicial | 2026-09-10 → 2026-09-04 (-6d) | 2026-09-17 → 2026-09-11 (-6d) |  |  | 3d → 25d |  |
| 26 | Avaliação do Cliente | 2026-09-17 → 2026-09-11 (-6d) | 2026-09-24 → 2026-09-18 (-6d) |  |  | 3d → 25d |  |
| 27 | Atendimento de Comentário | 2026-09-24 → 2026-09-18 (-6d) | 2026-09-29 → 2026-09-23 (-6d) |  |  | 3d → 25d |  |
| 28 | Aprovação | 2026-09-29 → 2026-09-23 (-6d) | 2026-10-01 → 2026-09-25 (-6d) |  |  | 3d → 25d |  |
| 29 | **3DT-F0008-0309-MB-G-00003** | 2026-09-10 → 2026-09-04 (-6d) | 2026-10-01 → 2026-09-25 (-6d) |  |  | 3d → 25d | was named 3DT-F0009-0309-MB-G-00003 |
| 30 | Emissão inicial | 2026-09-10 → 2026-09-04 (-6d) | 2026-09-17 → 2026-09-11 (-6d) |  |  | 3d → 25d |  |
| 31 | Avaliação do Cliente | 2026-09-17 → 2026-09-11 (-6d) | 2026-09-24 → 2026-09-18 (-6d) |  |  | 3d → 25d |  |
| 32 | Atendimento de Comentário | 2026-09-24 → 2026-09-18 (-6d) | 2026-09-29 → 2026-09-23 (-6d) |  |  | 3d → 25d |  |
| 33 | Aprovação | 2026-09-29 → 2026-09-23 (-6d) | 2026-10-01 → 2026-09-25 (-6d) |  |  | 3d → 25d |  |
| 34 | **BK-F0008-0300-MB-G-00001** |  |  |  |  | 39d → 57d | was named BK-F0009-0300-MB-G-00001 |
| 39 | **EG-F0008-0309-MB-G-00001** | 2026-08-20 → 2026-08-14 (-6d) | 2026-10-01 → 2026-09-25 (-6d) |  |  | 3d → 25d | was named EG-F0009-0309-MB-G-00001 |
| 40 | Emissão inicial | 2026-08-20 → 2026-08-14 (-6d) | 2026-09-10 → 2026-09-04 (-6d) |  |  | 3d → 25d |  |
| 41 | Avaliação do Cliente | 2026-09-10 → 2026-09-04 (-6d) | 2026-09-17 → 2026-09-11 (-6d) |  |  | 3d → 25d |  |
| 42 | Atendimento de Comentário | 2026-09-17 → 2026-09-11 (-6d) | 2026-09-24 → 2026-09-18 (-6d) |  |  | 3d → 25d |  |
| 43 | Aprovação | 2026-09-24 → 2026-09-18 (-6d) | 2026-10-01 → 2026-09-25 (-6d) |  |  | 3d → 25d |  |
| 44 | **MECÂNICA / ARRANJOS 309** |  | 2026-10-06 → 2026-10-07 (+1d) | 70d → 71d |  | 0d → none |  |
| 45 | **AG-F0008-0302-MB-L-00001** |  |  |  |  | 2d → 20d | was named AG-F0009-0302-MB-L-00001 |
| 50 | **AG-F0008-0302-MB-L-00002** |  |  |  |  | 40d → 58d | was named AG-F0009-0302-MB-L-00002 |
| 55 | **AG-F0008-0302-MB-L-00003** |  |  |  |  | 44d → 62d | was named AG-F0009-0302-MB-L-00003 |
| 60 | **AG-F0008-0302-MB-L-00004** |  |  |  |  | 40d → 58d | was named AG-F0009-0302-MB-L-00004 |
| 65 | **AG-F0008-0302-MB-L-00005** |  |  |  |  | 40d → 58d | was named AG-F0009-0302-MB-L-00005 |
| 70 | **AG-F0008-0302-MB-L-00006** |  |  |  |  | 37d → 55d | was named AG-F0009-0302-MB-L-00006 |
| 75 | **AG-F0008-0302-MB-L-00007** |  |  |  |  | 40d → 58d | was named AG-F0009-0302-MB-L-00007 |
| 80 | **AG-F0008-0302-MB-L-00008** |  |  |  |  | 40d → 58d | was named AG-F0009-0302-MB-L-00008 |
| 85 | **AG-F0008-0302-MB-L-00009** |  |  |  |  | 40d → 58d | was named AG-F0009-0302-MB-L-00009 |
| 90 | **AG-F0008-0302-MB-L-00010** |  |  |  |  | 2d → 20d | was named AG-F0009-0302-MB-L-00010 |
| 95 | **DT-F0008-0302-MB-L-00001** |  |  |  |  | 10d → 28d | was named DT-F0009-0302-MB-L-00001 |
| 100 | **DT-F0008-0302-MB-L-00002** |  |  |  |  | 40d → 58d | was named DT-F0009-0302-MB-L-00002 |
| 105 | **DT-F0008-0302-MB-L-00003** |  |  |  |  | 40d → 58d | was named DT-F0009-0302-MB-L-00003 |
| 110 | **DT-F0008-0302-MB-L-00004** |  |  |  |  | 40d → 58d | was named DT-F0009-0302-MB-L-00004 |
| 115 | **DT-F0008-0302-MB-L-00005** |  |  |  |  | 40d → 58d | was named DT-F0009-0302-MB-L-00005 |
| 120 | **DT-F0008-0302-MB-L-00006** |  |  |  |  | 5d → 23d | was named DT-F0009-0302-MB-L-00006 |
| 125 | **DT-F0008-0302-MB-L-00007** |  |  |  |  | 30d → 48d | was named DT-F0009-0302-MB-L-00007 |
| 130 | **DT-F0008-0302-MB-L-00008** |  |  |  |  | 30d → 48d | was named DT-F0009-0302-MB-L-00008 |
| 135 | **DT-F0008-0302-MB-L-00009** |  |  |  |  | 30d → 48d | was named DT-F0009-0302-MB-L-00009 |
| 140 | **DT-F0008-0302-MB-L-00010** |  |  |  |  | 30d → 48d | was named DT-F0009-0302-MB-L-00010 |
| 145 | **DT-F0008-0302-MB-L-00011** |  |  |  |  | 5d → 23d | was named DT-F0009-0302-MB-L-00011 |
| 150 | **DT-F0008-0302-MB-L-00012** |  |  |  |  | 5d → 23d | was named DT-F0009-0302-MB-L-00012 |
| 155 | **DT-F0008-0302-MB-L-00013** |  |  |  |  | 20d → 38d | was named DT-F0009-0302-MB-L-00013 |
| 160 | **DT-F0008-0302-MB-L-00014** |  |  |  |  | 20d → 38d | was named DT-F0009-0302-MB-L-00014 |
| 165 | **DT-F0008-0302-MB-L-00015** |  |  |  |  | 20d → 38d | was named DT-F0009-0302-MB-L-00015 |
| 170 | **DT-F0008-0302-MB-L-00016** |  |  |  |  | 20d → 38d | was named DT-F0009-0302-MB-L-00016 |
| 175 | **DT-F0008-0302-MB-L-00017** |  |  |  |  | 20d → 38d | was named DT-F0009-0302-MB-L-00017 |
| 180 | **DT-F0008-0302-MB-L-00018** |  |  |  |  | 20d → 38d | was named DT-F0009-0302-MB-L-00018 |
| 185 | **DT-F0008-0302-MB-L-00019** |  |  |  |  | 20d → 38d | was named DT-F0009-0302-MB-L-00019 |
| 190 | **DT-F0008-0302-MB-L-00020** |  |  |  |  | 10d → 28d | was named DT-F0009-0302-MB-L-00020 |
| 195 | **DT-F0008-0302-MB-L-00021** |  |  |  |  | 20d → 38d | was named DT-F0009-0302-MB-L-00021 |
| 200 | **DT-F0008-0302-MB-L-00022** |  |  |  |  | 10d → 28d | was named DT-F0009-0302-MB-L-00022 |
| 205 | **DT-F0008-0302-MB-L-00023** |  |  |  |  | 10d → 28d | was named DT-F0009-0302-MB-L-00023 |
| 210 | **DT-F0008-0302-MB-L-00024** |  |  |  |  | 10d → 28d | was named DT-F0009-0302-MB-L-00024 |
| 215 | **DT-F0008-0302-MB-L-00025** |  |  |  |  | 10d → 28d | was named DT-F0009-0302-MB-L-00025 |
| 220 | **DT-F0008-0302-MB-L-00026** |  |  |  |  | 10d → 28d | was named DT-F0009-0302-MB-L-00026 |
| 225 | **DT-F0008-0302-MB-L-00027** |  |  |  |  | 10d → 28d | was named DT-F0009-0302-MB-L-00027 |

| ID | Task | Start | Finish | Total float | Other |
| --- | --- | --- | --- | --- | --- |
| 230 | **DT-F0008-0302-MB-L-00028** |  |  | 10d → 28d | was named DT-F0009-0302-MB-L-00028 |
| 235 | **DT-F0008-0302-MB-L-00029** |  |  | 10d → 28d | was named DT-F0009-0302-MB-L-00029 |
| 240 | **DT-F0008-0302-MB-L-00030** |  |  | 10d → 28d | was named DT-F0009-0302-MB-L-00030 |
| 245 | **DT-F0008-0302-MB-L-00031** |  |  | 10d → 28d | was named DT-F0009-0302-MB-L-00031 |
| 250 | **AG-F0008-0309-MB-L-00001** | 2026-07-30 → 2026-07-24 (-6d) | 2026-08-27 → 2026-08-21 (-6d) | 28d → 50d | was named AG-F0009-0309-MB-L-00001 |
| 251 | Emissão inicial | 2026-07-30 → 2026-07-24 (-6d) | 2026-08-13 → 2026-08-07 (-6d) | 28d → 50d |  |
| 252 | Avaliação do Cliente | 2026-08-13 → 2026-08-07 (-6d) | 2026-08-20 → 2026-08-14 (-6d) | 28d → 50d |  |
| 253 | Atendimento de Comentário | 2026-08-20 → 2026-08-14 (-6d) | 2026-08-25 → 2026-08-19 (-6d) | 28d → 50d |  |
| 254 | Aprovação | 2026-08-25 → 2026-08-19 (-6d) | 2026-08-27 → 2026-08-21 (-6d) | 28d → 50d |  |
| 255 | **AG-F0008-0309-MB-L-00002** | 2026-07-16 → 2026-07-10 (-6d) | 2026-08-13 → 2026-08-07 (-6d) | 38d → 60d | was named AG-F0009-0309-MB-L-00002 |
| 256 | Emissão inicial | 2026-07-16 → 2026-07-10 (-6d) | 2026-07-30 → 2026-07-24 (-6d) | 38d → 60d |  |
| 257 | Avaliação do Cliente | 2026-07-30 → 2026-07-24 (-6d) | 2026-08-06 → 2026-07-31 (-6d) | 38d → 60d |  |
| 258 | Atendimento de Comentário | 2026-08-06 → 2026-07-31 (-6d) | 2026-08-11 → 2026-08-05 (-6d) | 38d → 60d |  |
| 259 | Aprovação | 2026-08-11 → 2026-08-05 (-6d) | 2026-08-13 → 2026-08-07 (-6d) | 38d → 60d |  |
| 260 | **AG-F0008-0309-MB-L-00003** | 2026-07-16 → 2026-07-10 (-6d) | 2026-08-13 → 2026-08-07 (-6d) | 38d → 60d | was named AG-F0009-0309-MB-L-00003 |
| 261 | Emissão inicial | 2026-07-16 → 2026-07-10 (-6d) | 2026-07-30 → 2026-07-24 (-6d) | 38d → 60d |  |
| 262 | Avaliação do Cliente | 2026-07-30 → 2026-07-24 (-6d) | 2026-08-06 → 2026-07-31 (-6d) | 38d → 60d |  |
| 263 | Atendimento de Comentário | 2026-08-06 → 2026-07-31 (-6d) | 2026-08-11 → 2026-08-05 (-6d) | 38d → 60d |  |
| 264 | Aprovação | 2026-08-11 → 2026-08-05 (-6d) | 2026-08-13 → 2026-08-07 (-6d) | 38d → 60d |  |
| 265 | **AG-F0008-0309-MB-L-00004** | 2026-07-16 → 2026-07-10 (-6d) | 2026-08-13 → 2026-08-07 (-6d) | 38d → 60d | was named AG-F0009-0309-MB-L-00004 |
| 266 | Emissão inicial | 2026-07-16 → 2026-07-10 (-6d) | 2026-07-30 → 2026-07-24 (-6d) | 38d → 60d |  |
| 267 | Avaliação do Cliente | 2026-07-30 → 2026-07-24 (-6d) | 2026-08-06 → 2026-07-31 (-6d) | 38d → 60d |  |
| 268 | Atendimento de Comentário | 2026-08-06 → 2026-07-31 (-6d) | 2026-08-11 → 2026-08-05 (-6d) | 38d → 60d |  |
| 269 | Aprovação | 2026-08-11 → 2026-08-05 (-6d) | 2026-08-13 → 2026-08-07 (-6d) | 38d → 60d |  |
| 270 | **AG-F0008-0309-MB-L-00005** | 2026-07-16 → 2026-07-10 (-6d) | 2026-08-13 → 2026-08-07 (-6d) | 38d → 60d | was named AG-F0009-0309-MB-L-00005 |
| 271 | Emissão inicial | 2026-07-16 → 2026-07-10 (-6d) | 2026-07-30 → 2026-07-24 (-6d) | 38d → 60d |  |
| 272 | Avaliação do Cliente | 2026-07-30 → 2026-07-24 (-6d) | 2026-08-06 → 2026-07-31 (-6d) | 38d → 60d |  |
| 273 | Atendimento de Comentário | 2026-08-06 → 2026-07-31 (-6d) | 2026-08-11 → 2026-08-05 (-6d) | 38d → 60d |  |
| 274 | Aprovação | 2026-08-11 → 2026-08-05 (-6d) | 2026-08-13 → 2026-08-07 (-6d) | 38d → 60d |  |
| 275 | **AG-F0008-0309-MB-L-00006** | 2026-07-16 → 2026-07-10 (-6d) | 2026-08-13 → 2026-08-07 (-6d) | 38d → 60d | was named AG-F0009-0309-MB-L-00006 |
| 276 | Emissão inicial | 2026-07-16 → 2026-07-10 (-6d) | 2026-07-30 → 2026-07-24 (-6d) | 38d → 60d |  |
| 277 | Avaliação do Cliente | 2026-07-30 → 2026-07-24 (-6d) | 2026-08-06 → 2026-07-31 (-6d) | 38d → 60d |  |
| 278 | Atendimento de Comentário | 2026-08-06 → 2026-07-31 (-6d) | 2026-08-11 → 2026-08-05 (-6d) | 38d → 60d |  |
| 279 | Aprovação | 2026-08-11 → 2026-08-05 (-6d) | 2026-08-13 → 2026-08-07 (-6d) | 38d → 60d |  |
| 280 | **AG-F0008-0309-MB-L-00007** | 2026-07-16 → 2026-07-10 (-6d) | 2026-08-13 → 2026-08-07 (-6d) | 38d → 60d | was named AG-F0009-0309-MB-L-00007 |
| 281 | Emissão inicial | 2026-07-16 → 2026-07-10 (-6d) | 2026-07-30 → 2026-07-24 (-6d) | 38d → 60d |  |
| 282 | Avaliação do Cliente | 2026-07-30 → 2026-07-24 (-6d) | 2026-08-06 → 2026-07-31 (-6d) | 38d → 60d |  |
| 283 | Atendimento de Comentário | 2026-08-06 → 2026-07-31 (-6d) | 2026-08-11 → 2026-08-05 (-6d) | 38d → 60d |  |
| 284 | Aprovação | 2026-08-11 → 2026-08-05 (-6d) | 2026-08-13 → 2026-08-07 (-6d) | 38d → 60d |  |
| 285 | **AG-F0008-0309-MB-L-00008** | 2026-07-16 → 2026-07-10 (-6d) | 2026-08-13 → 2026-08-07 (-6d) | 0d → 22d | was named AG-F0009-0309-MB-L-00008 |
| 286 | Emissão inicial | 2026-07-16 → 2026-07-10 (-6d) | 2026-07-30 → 2026-07-24 (-6d) | 0d → 22d |  |
| 287 | Avaliação do Cliente | 2026-07-30 → 2026-07-24 (-6d) | 2026-08-06 → 2026-07-31 (-6d) | 38d → 60d |  |
| 288 | Atendimento de Comentário | 2026-08-06 → 2026-07-31 (-6d) | 2026-08-11 → 2026-08-05 (-6d) | 38d → 60d |  |
| 289 | Aprovação | 2026-08-11 → 2026-08-05 (-6d) | 2026-08-13 → 2026-08-07 (-6d) | 38d → 60d |  |
| 290 | **DT-F0008-0309-MB-L-00001** | 2026-07-30 → 2026-07-24 (-6d) | 2026-08-27 → 2026-08-21 (-6d) | 28d → 50d | was named DT-F0009-0309-MB-L-00001 |
| 291 | Emissão inicial | 2026-07-30 → 2026-07-24 (-6d) | 2026-08-13 → 2026-08-07 (-6d) | 28d → 50d |  |
| 292 | Avaliação do Cliente | 2026-08-13 → 2026-08-07 (-6d) | 2026-08-20 → 2026-08-14 (-6d) | 28d → 50d |  |
| 293 | Atendimento de Comentário | 2026-08-20 → 2026-08-14 (-6d) | 2026-08-25 → 2026-08-19 (-6d) | 28d → 50d |  |
| 294 | Aprovação | 2026-08-25 → 2026-08-19 (-6d) | 2026-08-27 → 2026-08-21 (-6d) | 28d → 50d |  |
| 295 | **DT-F0008-0309-MB-L-00002** | 2026-07-30 → 2026-07-24 (-6d) | 2026-08-27 → 2026-08-21 (-6d) | 28d → 50d | was named DT-F0009-0309-MB-L-00002 |
| 296 | Emissão inicial | 2026-07-30 → 2026-07-24 (-6d) | 2026-08-13 → 2026-08-07 (-6d) | 28d → 50d |  |
| 297 | Avaliação do Cliente | 2026-08-13 → 2026-08-07 (-6d) | 2026-08-20 → 2026-08-14 (-6d) | 28d → 50d |  |
| 298 | Atendimento de Comentário | 2026-08-20 → 2026-08-14 (-6d) | 2026-08-25 → 2026-08-19 (-6d) | 28d → 50d |  |
| 299 | Aprovação | 2026-08-25 → 2026-08-19 (-6d) | 2026-08-27 → 2026-08-21 (-6d) | 28d → 50d |  |
| 300 | **DT-F0008-0309-MB-L-00003** | 2026-07-30 → 2026-07-24 (-6d) | 2026-08-27 → 2026-08-21 (-6d) | 28d → 50d | was named DT-F0009-0309-MB-L-00003 |
| 301 | Emissão inicial | 2026-07-30 → 2026-07-24 (-6d) | 2026-08-13 → 2026-08-07 (-6d) | 28d → 50d |  |
| 302 | Avaliação do Cliente | 2026-08-13 → 2026-08-07 (-6d) | 2026-08-20 → 2026-08-14 (-6d) | 28d → 50d |  |
| 303 | Atendimento de Comentário | 2026-08-20 → 2026-08-14 (-6d) | 2026-08-25 → 2026-08-19 (-6d) | 28d → 50d |  |
| 304 | Aprovação | 2026-08-25 → 2026-08-19 (-6d) | 2026-08-27 → 2026-08-21 (-6d) | 28d → 50d |  |
| 305 | **DT-F0008-0309-MB-L-00004** | 2026-07-30 → 2026-07-24 (-6d) | 2026-08-27 → 2026-08-21 (-6d) | 0d → 22d | was named DT-F0009-0309-MB-L-00004 |
| 306 | Emissão inicial | 2026-07-30 → 2026-07-24 (-6d) | 2026-08-13 → 2026-08-07 (-6d) | 0d → 22d |  |
| 307 | Avaliação do Cliente | 2026-08-13 → 2026-08-07 (-6d) | 2026-08-20 → 2026-08-14 (-6d) | 28d → 50d |  |
| 308 | Atendimento de Comentário | 2026-08-20 → 2026-08-14 (-6d) | 2026-08-25 → 2026-08-19 (-6d) | 28d → 50d |  |
| 309 | Aprovação | 2026-08-25 → 2026-08-19 (-6d) | 2026-08-27 → 2026-08-21 (-6d) | 28d → 50d |  |
| 310 | **DT-F0008-0309-MB-L-00005** | 2026-08-13 → 2026-08-07 (-6d) | 2026-09-10 → 2026-09-04 (-6d) | 18d → 40d | was named DT-F0009-0309-MB-L-00005 |
| 311 | Emissão inicial | 2026-08-13 → 2026-08-07 (-6d) | 2026-08-27 → 2026-08-21 (-6d) | 18d → 40d |  |
| 312 | Avaliação do Cliente | 2026-08-27 → 2026-08-21 (-6d) | 2026-09-03 → 2026-08-28 (-6d) | 18d → 40d |  |
| 313 | Atendimento de Comentário | 2026-09-03 → 2026-08-28 (-6d) | 2026-09-08 → 2026-09-02 (-6d) | 18d → 40d |  |
| 314 | Aprovação | 2026-09-08 → 2026-09-02 (-6d) | 2026-09-10 → 2026-09-04 (-6d) | 18d → 40d |  |
| 315 | **DT-F0008-0309-MB-L-00006** | 2026-08-13 → 2026-08-07 (-6d) | 2026-09-10 → 2026-09-04 (-6d) | 18d → 40d | was named DT-F0009-0309-MB-L-00006 |

| ID | Task | Start | Finish | Total float | Other |
| --- | --- | --- | --- | --- | --- |
| 316 | Emissão inicial | 2026-08-13 → 2026-08-07 (-6d) | 2026-08-27 → 2026-08-21 (-6d) | 18d → 40d |  |
| 317 | Avaliação do Cliente | 2026-08-27 → 2026-08-21 (-6d) | 2026-09-03 → 2026-08-28 (-6d) | 18d → 40d |  |
| 318 | Atendimento de Comentário | 2026-09-03 → 2026-08-28 (-6d) | 2026-09-08 → 2026-09-02 (-6d) | 18d → 40d |  |
| 319 | Aprovação | 2026-09-08 → 2026-09-02 (-6d) | 2026-09-10 → 2026-09-04 (-6d) | 18d → 40d |  |
| 320 | **DT-F0008-0309-MB-L-00007** | 2026-08-13 → 2026-08-07 (-6d) | 2026-09-10 → 2026-09-04 (-6d) | 1d → 23d | was named DT-F0009-0309-MB-L-00007 |
| 321 | Emissão inicial | 2026-08-13 → 2026-08-07 (-6d) | 2026-08-27 → 2026-08-21 (-6d) | 1d → 23d |  |
| 322 | Avaliação do Cliente | 2026-08-27 → 2026-08-21 (-6d) | 2026-09-03 → 2026-08-28 (-6d) | 1d → 23d |  |
| 323 | Atendimento de Comentário | 2026-09-03 → 2026-08-28 (-6d) | 2026-09-08 → 2026-09-02 (-6d) | 1d → 23d |  |
| 324 | Aprovação | 2026-09-08 → 2026-09-02 (-6d) | 2026-09-10 → 2026-09-04 (-6d) | 1d → 23d |  |
| 325 | **DT-F0008-0309-MB-L-00008** | 2026-08-13 → 2026-08-07 (-6d) | 2026-09-10 → 2026-09-04 (-6d) | 18d → 40d | was named DT-F0009-0309-MB-L-00008 |
| 326 | Emissão inicial | 2026-08-13 → 2026-08-07 (-6d) | 2026-08-27 → 2026-08-21 (-6d) | 18d → 40d |  |
| 327 | Avaliação do Cliente | 2026-08-27 → 2026-08-21 (-6d) | 2026-09-03 → 2026-08-28 (-6d) | 18d → 40d |  |
| 328 | Atendimento de Comentário | 2026-09-03 → 2026-08-28 (-6d) | 2026-09-08 → 2026-09-02 (-6d) | 18d → 40d |  |
| 329 | Aprovação | 2026-09-08 → 2026-09-02 (-6d) | 2026-09-10 → 2026-09-04 (-6d) | 18d → 40d |  |
| 330 | **DT-F0008-0309-MB-L-00009** | 2026-08-13 → 2026-08-07 (-6d) | 2026-09-10 → 2026-09-04 (-6d) | 18d → 40d | was named DT-F0009-0309-MB-L-00009 |
| 331 | Emissão inicial | 2026-08-13 → 2026-08-07 (-6d) | 2026-08-27 → 2026-08-21 (-6d) | 18d → 40d |  |
| 332 | Avaliação do Cliente | 2026-08-27 → 2026-08-21 (-6d) | 2026-09-03 → 2026-08-28 (-6d) | 18d → 40d |  |
| 333 | Atendimento de Comentário | 2026-09-03 → 2026-08-28 (-6d) | 2026-09-08 → 2026-09-02 (-6d) | 18d → 40d |  |
| 334 | Aprovação | 2026-09-08 → 2026-09-02 (-6d) | 2026-09-10 → 2026-09-04 (-6d) | 18d → 40d |  |
| 335 | **DT-F0008-0309-MB-L-00010** | 2026-08-13 → 2026-08-07 (-6d) | 2026-09-10 → 2026-09-04 (-6d) | 18d → 40d | was named DT-F0009-0309-MB-L-00010 |
| 336 | Emissão inicial | 2026-08-13 → 2026-08-07 (-6d) | 2026-08-27 → 2026-08-21 (-6d) | 18d → 40d |  |
| 337 | Avaliação do Cliente | 2026-08-27 → 2026-08-21 (-6d) | 2026-09-03 → 2026-08-28 (-6d) | 18d → 40d |  |
| 338 | Atendimento de Comentário | 2026-09-03 → 2026-08-28 (-6d) | 2026-09-08 → 2026-09-02 (-6d) | 18d → 40d |  |
| 339 | Aprovação | 2026-09-08 → 2026-09-02 (-6d) | 2026-09-10 → 2026-09-04 (-6d) | 18d → 40d |  |
| 340 | **DT-F0008-0309-MB-L-00011** | 2026-08-13 → 2026-08-07 (-6d) | 2026-09-10 → 2026-09-04 (-6d) | 18d → 40d | was named DT-F0009-0309-MB-L-00011 |
| 341 | Emissão inicial | 2026-08-13 → 2026-08-07 (-6d) | 2026-08-27 → 2026-08-21 (-6d) | 18d → 40d |  |
| 342 | Avaliação do Cliente | 2026-08-27 → 2026-08-21 (-6d) | 2026-09-03 → 2026-08-28 (-6d) | 18d → 40d |  |
| 343 | Atendimento de Comentário | 2026-09-03 → 2026-08-28 (-6d) | 2026-09-08 → 2026-09-02 (-6d) | 18d → 40d |  |
| 344 | Aprovação | 2026-09-08 → 2026-09-02 (-6d) | 2026-09-10 → 2026-09-04 (-6d) | 18d → 40d |  |
| 345 | **DT-F0008-0309-MB-L-00012** | 2026-08-13 → 2026-08-07 (-6d) | 2026-09-10 → 2026-09-04 (-6d) | 18d → 40d | was named DT-F0009-0309-MB-L-00012 |
| 346 | Emissão inicial | 2026-08-13 → 2026-08-07 (-6d) | 2026-08-27 → 2026-08-21 (-6d) | 18d → 40d |  |
| 347 | Avaliação do Cliente | 2026-08-27 → 2026-08-21 (-6d) | 2026-09-03 → 2026-08-28 (-6d) | 18d → 40d |  |
| 348 | Atendimento de Comentário | 2026-09-03 → 2026-08-28 (-6d) | 2026-09-08 → 2026-09-02 (-6d) | 18d → 40d |  |
| 349 | Aprovação | 2026-09-08 → 2026-09-02 (-6d) | 2026-09-10 → 2026-09-04 (-6d) | 18d → 40d |  |
| 350 | **DT-F0008-0309-MB-L-00013** | 2026-08-13 → 2026-08-07 (-6d) | 2026-09-10 → 2026-09-04 (-6d) | 18d → 40d | was named DT-F0009-0309-MB-L-00013 |
| 351 | Emissão inicial | 2026-08-13 → 2026-08-07 (-6d) | 2026-08-27 → 2026-08-21 (-6d) | 18d → 40d |  |
| 352 | Avaliação do Cliente | 2026-08-27 → 2026-08-21 (-6d) | 2026-09-03 → 2026-08-28 (-6d) | 18d → 40d |  |
| 353 | Atendimento de Comentário | 2026-09-03 → 2026-08-28 (-6d) | 2026-09-08 → 2026-09-02 (-6d) | 18d → 40d |  |
| 354 | Aprovação | 2026-09-08 → 2026-09-02 (-6d) | 2026-09-10 → 2026-09-04 (-6d) | 18d → 40d |  |
| 355 | **DT-F0008-0309-MB-L-00014** | 2026-08-13 → 2026-08-07 (-6d) | 2026-09-10 → 2026-09-04 (-6d) | 18d → 40d | was named DT-F0009-0309-MB-L-00014 |
| 356 | Emissão inicial | 2026-08-13 → 2026-08-07 (-6d) | 2026-08-27 → 2026-08-21 (-6d) | 18d → 40d |  |
| 357 | Avaliação do Cliente | 2026-08-27 → 2026-08-21 (-6d) | 2026-09-03 → 2026-08-28 (-6d) | 18d → 40d |  |
| 358 | Atendimento de Comentário | 2026-09-03 → 2026-08-28 (-6d) | 2026-09-08 → 2026-09-02 (-6d) | 18d → 40d |  |
| 359 | Aprovação | 2026-09-08 → 2026-09-02 (-6d) | 2026-09-10 → 2026-09-04 (-6d) | 18d → 40d |  |
| 360 | **DT-F0008-0309-MB-L-00015** | 2026-08-13 → 2026-08-07 (-6d) | 2026-09-10 → 2026-09-04 (-6d) | 0d → 22d | was named DT-F0009-0309-MB-L-00015 |
| 361 | Emissão inicial | 2026-08-13 → 2026-08-07 (-6d) | 2026-08-27 → 2026-08-21 (-6d) | 0d → 22d |  |
| 362 | Avaliação do Cliente | 2026-08-27 → 2026-08-21 (-6d) | 2026-09-03 → 2026-08-28 (-6d) | 18d → 40d |  |
| 363 | Atendimento de Comentário | 2026-09-03 → 2026-08-28 (-6d) | 2026-09-08 → 2026-09-02 (-6d) | 18d → 40d |  |
| 364 | Aprovação | 2026-09-08 → 2026-09-02 (-6d) | 2026-09-10 → 2026-09-04 (-6d) | 18d → 40d |  |
| 365 | **DT-F0008-0309-MB-L-00016** | 2026-08-27 → 2026-08-21 (-6d) | 2026-09-24 → 2026-09-18 (-6d) | 8d → 30d | was named DT-F0009-0309-MB-L-00016 |
| 366 | Emissão inicial | 2026-08-27 → 2026-08-21 (-6d) | 2026-09-10 → 2026-09-04 (-6d) | 8d → 30d |  |
| 367 | Avaliação do Cliente | 2026-09-10 → 2026-09-04 (-6d) | 2026-09-17 → 2026-09-11 (-6d) | 8d → 30d |  |
| 368 | Atendimento de Comentário | 2026-09-17 → 2026-09-11 (-6d) | 2026-09-22 → 2026-09-16 (-6d) | 8d → 30d |  |
| 369 | Aprovação | 2026-09-22 → 2026-09-16 (-6d) | 2026-09-24 → 2026-09-18 (-6d) | 8d → 30d |  |
| 370 | **DT-F0008-0309-MB-L-00017** | 2026-08-27 → 2026-08-21 (-6d) | 2026-09-24 → 2026-09-18 (-6d) | 8d → 30d | was named DT-F0009-0309-MB-L-00017 |
| 371 | Emissão inicial | 2026-08-27 → 2026-08-21 (-6d) | 2026-09-10 → 2026-09-04 (-6d) | 8d → 30d |  |
| 372 | Avaliação do Cliente | 2026-09-10 → 2026-09-04 (-6d) | 2026-09-17 → 2026-09-11 (-6d) | 8d → 30d |  |
| 373 | Atendimento de Comentário | 2026-09-17 → 2026-09-11 (-6d) | 2026-09-22 → 2026-09-16 (-6d) | 8d → 30d |  |
| 374 | Aprovação | 2026-09-22 → 2026-09-16 (-6d) | 2026-09-24 → 2026-09-18 (-6d) | 8d → 30d |  |
| 375 | **DT-F0008-0309-MB-L-00018** | 2026-08-27 → 2026-08-21 (-6d) | 2026-09-24 → 2026-09-18 (-6d) | 8d → 30d | was named DT-F0009-0309-MB-L-00018 |
| 376 | Emissão inicial | 2026-08-27 → 2026-08-21 (-6d) | 2026-09-10 → 2026-09-04 (-6d) | 8d → 30d |  |
| 377 | Avaliação do Cliente | 2026-09-10 → 2026-09-04 (-6d) | 2026-09-17 → 2026-09-11 (-6d) | 8d → 30d |  |
| 378 | Atendimento de Comentário | 2026-09-17 → 2026-09-11 (-6d) | 2026-09-22 → 2026-09-16 (-6d) | 8d → 30d |  |
| 379 | Aprovação | 2026-09-22 → 2026-09-16 (-6d) | 2026-09-24 → 2026-09-18 (-6d) | 8d → 30d |  |
| 380 | **DT-F0008-0309-MB-L-00019** | 2026-08-27 → 2026-08-21 (-6d) | 2026-09-24 → 2026-09-18 (-6d) | 8d → 30d | was named DT-F0009-0309-MB-L-00019 |
| 381 | Emissão inicial | 2026-08-27 → 2026-08-21 (-6d) | 2026-09-10 → 2026-09-04 (-6d) | 8d → 30d |  |
| 382 | Avaliação do Cliente | 2026-09-10 → 2026-09-04 (-6d) | 2026-09-17 → 2026-09-11 (-6d) | 8d → 30d |  |
| 383 | Atendimento de Comentário | 2026-09-17 → 2026-09-11 (-6d) | 2026-09-22 → 2026-09-16 (-6d) | 8d → 30d |  |
| 384 | Aprovação | 2026-09-22 → 2026-09-16 (-6d) | 2026-09-24 → 2026-09-18 (-6d) | 8d → 30d |  |
| 385 | **DT-F0008-0309-MB-L-00020** | 2026-08-27 → 2026-08-21 (-6d) | 2026-09-24 → 2026-09-18 (-6d) | 8d → 30d | was named DT-F0009-0309-MB-L-00020 |

| ID | Task | Start | Finish | Duration | Total float | Other |
| --- | --- | --- | --- | --- | --- | --- |
| 386 | Emissão inicial | 2026-08-27 → 2026-08-21 (-6d) | 2026-09-10 → 2026-09-04 (-6d) |  | 8d → 30d |  |
| 387 | Avaliação do Cliente | 2026-09-10 → 2026-09-04 (-6d) | 2026-09-17 → 2026-09-11 (-6d) |  | 8d → 30d |  |
| 388 | Atendimento de Comentário | 2026-09-17 → 2026-09-11 (-6d) | 2026-09-22 → 2026-09-16 (-6d) |  | 8d → 30d |  |
| 389 | Aprovação | 2026-09-22 → 2026-09-16 (-6d) | 2026-09-24 → 2026-09-18 (-6d) |  | 8d → 30d |  |
| 390 | **DT-F0008-0309-MB-L-00021** | 2026-08-27 → 2026-08-21 (-6d) | 2026-09-24 → 2026-09-18 (-6d) |  | 8d → 30d | was named DT-F0009-0309-MB-L-00021 |
| 391 | Emissão inicial | 2026-08-27 → 2026-08-21 (-6d) | 2026-09-10 → 2026-09-04 (-6d) |  | 8d → 30d |  |
| 392 | Avaliação do Cliente | 2026-09-10 → 2026-09-04 (-6d) | 2026-09-17 → 2026-09-11 (-6d) |  | 8d → 30d |  |
| 393 | Atendimento de Comentário | 2026-09-17 → 2026-09-11 (-6d) | 2026-09-22 → 2026-09-16 (-6d) |  | 8d → 30d |  |
| 394 | Aprovação | 2026-09-22 → 2026-09-16 (-6d) | 2026-09-24 → 2026-09-18 (-6d) |  | 8d → 30d |  |
| 395 | **DT-F0008-0309-MB-L-00022** | 2026-08-27 → 2026-08-21 (-6d) | 2026-09-24 → 2026-09-18 (-6d) |  | 8d → 30d | was named DT-F0009-0309-MB-L-00022 |
| 396 | Emissão inicial | 2026-08-27 → 2026-08-21 (-6d) | 2026-09-10 → 2026-09-04 (-6d) |  | 8d → 30d |  |
| 397 | Avaliação do Cliente | 2026-09-10 → 2026-09-04 (-6d) | 2026-09-17 → 2026-09-11 (-6d) |  | 8d → 30d |  |
| 398 | Atendimento de Comentário | 2026-09-17 → 2026-09-11 (-6d) | 2026-09-22 → 2026-09-16 (-6d) |  | 8d → 30d |  |
| 399 | Aprovação | 2026-09-22 → 2026-09-16 (-6d) | 2026-09-24 → 2026-09-18 (-6d) |  | 8d → 30d |  |
| 400 | **DT-F0008-0309-MB-L-00023** | 2026-08-27 → 2026-08-21 (-6d) | 2026-09-24 → 2026-09-18 (-6d) |  | 8d → 30d | was named DT-F0009-0309-MB-L-00023 |
| 401 | Emissão inicial | 2026-08-27 → 2026-08-21 (-6d) | 2026-09-10 → 2026-09-04 (-6d) |  | 8d → 30d |  |
| 402 | Avaliação do Cliente | 2026-09-10 → 2026-09-04 (-6d) | 2026-09-17 → 2026-09-11 (-6d) |  | 8d → 30d |  |
| 403 | Atendimento de Comentário | 2026-09-17 → 2026-09-11 (-6d) | 2026-09-22 → 2026-09-16 (-6d) |  | 8d → 30d |  |
| 404 | Aprovação | 2026-09-22 → 2026-09-16 (-6d) | 2026-09-24 → 2026-09-18 (-6d) |  | 8d → 30d |  |
| 405 | **DT-F0008-0309-MB-L-00024** | 2026-08-27 → 2026-08-21 (-6d) | 2026-09-24 → 2026-09-18 (-6d) |  | 0d → 22d | was named DT-F0009-0309-MB-L-00024 |
| 406 | Emissão inicial | 2026-08-27 → 2026-08-21 (-6d) | 2026-09-10 → 2026-09-04 (-6d) |  | 0d → 22d |  |
| 407 | Avaliação do Cliente | 2026-09-10 → 2026-09-04 (-6d) | 2026-09-17 → 2026-09-11 (-6d) |  | 8d → 30d |  |
| 408 | Atendimento de Comentário | 2026-09-17 → 2026-09-11 (-6d) | 2026-09-22 → 2026-09-16 (-6d) |  | 8d → 30d |  |
| 409 | Aprovação | 2026-09-22 → 2026-09-16 (-6d) | 2026-09-24 → 2026-09-18 (-6d) |  | 8d → 30d |  |
| 410 | **RT-F0008-0309-MB-L-00001** | 2026-09-10 → 2026-09-04 (-6d) | 2026-10-06 → 2026-09-30 (-6d) |  | 0d → 22d | was named RT-F0009-0309-MB-L-00001 |
| 411 | Emissão inicial | 2026-09-10 → 2026-09-04 (-6d) | 2026-09-22 → 2026-09-16 (-6d) |  | 0d → 22d |  |
| 412 | Avaliação do Cliente | 2026-09-22 → 2026-09-16 (-6d) | 2026-09-29 → 2026-09-23 (-6d) |  | 0d → 22d |  |
| 413 | Atendimento de Comentário | 2026-09-29 → 2026-09-23 (-6d) | 2026-10-02 → 2026-09-28 (-4d) |  | 0d → 22d |  |
| 414 | Aprovação | 2026-10-02 → 2026-09-28 (-4d) | 2026-10-06 → 2026-09-30 (-6d) |  | 0d → 22d |  |
| 415 | **MECÂNICA / EQUIPAMENTOS 309** |  | 2026-10-06 → 2026-10-07 (+1d) | 70d → 71d | 0d → none |  |
| 416 | **CP-F0008-0309-MB-M-00001** |  | 2026-07-21 → 2026-09-24 (+65d) | 15d → 62d | 30d → none | was named CP-F0009-0309-MB-M-00001 |
| 421 | **ET-F0008-0309-MB-M-00001** | 2026-09-10 → 2026-09-24 (+14d) | 2026-10-05 → 2026-10-19 (+14d) |  | 1d → 9d | was named ET-F0009-0309-MB-M-00001 |
| 422 | Emissão inicial | 2026-09-10 → 2026-09-24 (+14d) | 2026-09-21 → 2026-10-05 (+14d) |  | 1d → 9d |  |
| 423 | Avaliação do Cliente | 2026-09-21 → 2026-10-05 (+14d) | 2026-09-28 → 2026-10-12 (+14d) |  | 1d → 9d |  |
| 424 | Atendimento de Comentário | 2026-09-28 → 2026-10-12 (+14d) | 2026-10-01 → 2026-10-15 (+14d) |  | 1d → 9d |  |
| 425 | Aprovação | 2026-10-01 → 2026-10-15 (+14d) | 2026-10-05 → 2026-10-19 (+14d) |  | 1d → 9d |  |
| 426 | **ET-F0008-0309-MB-M-00002** | 2026-09-10 → 2026-09-24 (+14d) | 2026-10-05 → 2026-10-19 (+14d) |  | 1d → 9d | was named ET-F0009-0309-MB-M-00002 |
| 427 | Emissão inicial | 2026-09-10 → 2026-09-24 (+14d) | 2026-09-21 → 2026-10-05 (+14d) |  | 1d → 9d |  |
| 428 | Avaliação do Cliente | 2026-09-21 → 2026-10-05 (+14d) | 2026-09-28 → 2026-10-12 (+14d) |  | 1d → 9d |  |
| 429 | Atendimento de Comentário | 2026-09-28 → 2026-10-12 (+14d) | 2026-10-01 → 2026-10-15 (+14d) |  | 1d → 9d |  |
| 430 | Aprovação | 2026-10-01 → 2026-10-15 (+14d) | 2026-10-05 → 2026-10-19 (+14d) |  | 1d → 9d |  |
| 431 | **ET-F0008-0309-MB-M-00003** | 2026-09-10 → 2026-09-24 (+14d) | 2026-10-05 → 2026-10-19 (+14d) |  | 1d → 9d | was named ET-F0009-0309-MB-M-00003 |
| 432 | Emissão inicial | 2026-09-10 → 2026-09-24 (+14d) | 2026-09-21 → 2026-10-05 (+14d) |  | 1d → 9d |  |
| 433 | Avaliação do Cliente | 2026-09-21 → 2026-10-05 (+14d) | 2026-09-28 → 2026-10-12 (+14d) |  | 1d → 9d |  |
| 434 | Atendimento de Comentário | 2026-09-28 → 2026-10-12 (+14d) | 2026-10-01 → 2026-10-15 (+14d) |  | 1d → 9d |  |
| 435 | Aprovação | 2026-10-01 → 2026-10-15 (+14d) | 2026-10-05 → 2026-10-19 (+14d) |  | 1d → 9d |  |
| 436 | **ET-F0008-0309-MB-M-00004** | 2026-09-10 → 2026-09-24 (+14d) | 2026-10-05 → 2026-10-19 (+14d) |  | 1d → 9d | was named ET-F0009-0309-MB-M-00004 |
| 437 | Emissão inicial | 2026-09-10 → 2026-09-24 (+14d) | 2026-09-21 → 2026-10-05 (+14d) |  | 1d → 9d |  |
| 438 | Avaliação do Cliente | 2026-09-21 → 2026-10-05 (+14d) | 2026-09-28 → 2026-10-12 (+14d) |  | 1d → 9d |  |
| 439 | Atendimento de Comentário | 2026-09-28 → 2026-10-12 (+14d) | 2026-10-01 → 2026-10-15 (+14d) |  | 1d → 9d |  |
| 440 | Aprovação | 2026-10-01 → 2026-10-15 (+14d) | 2026-10-05 → 2026-10-19 (+14d) |  | 1d → 9d |  |
| 441 | **FD-F0008-0309-MB-M-00001** | 2026-08-11 → 2026-07-30 (-12d) | 2026-09-17 → 2026-08-20 (-28d) | 27d → 15d | 13d → none | was named FD-F0009-0309-MB-M-00001 |
| 442 | Emissão inicial | 2026-08-11 → 2026-07-30 (-12d) | 2026-09-01 → 2026-08-20 (-12d) |  | 13d → 39d |  |
| 443 | Avaliação do Cliente | 2026-09-01 → 2026-08-20 (-12d) | 2026-09-08 → 2026-08-27 (-12d) |  | 13d → 39d |  |
| 444 | Atendimento de Comentário | 2026-09-08 → 2026-08-27 (-12d) | 2026-09-15 → 2026-09-03 (-12d) |  | 13d → 39d |  |
| 445 | Aprovação | 2026-09-15 → 2026-09-03 (-12d) | 2026-09-17 → 2026-09-07 (-10d) |  | 13d → 39d |  |
| 446 | **FD-F0008-0309-MB-M-00002** | 2026-09-08 → 2026-08-25 (-14d) | 2026-10-06 → 2026-08-25 (-42d) | 20d → 0d | 0d → none | was named FD-F0009-0309-MB-M-00002 |
| 451 | **FD-F0008-0309-MB-M-00003** |  | 2026-09-22 → 2026-08-27 (-26d) | 25d → 7d | 10d → none | was named FD-F0009-0309-MB-M-00003 |
| 456 | **FD-F0008-0309-MB-M-00004** |  |  |  | 8d → 26d | was named FD-F0009-0309-MB-M-00004 |
| 461 | **FD-F0008-0309-MB-M-00005** |  | 2026-09-22 → 2026-08-31 (-22d) | 25d → 9d | 10d → none | was named FD-F0009-0309-MB-M-00005 |
| 466 | **FD-F0008-0309-MB-M-00006** |  | 2026-09-22 → 2026-09-02 (-20d) | 25d → 11d | 10d → none | was named FD-F0009-0309-MB-M-00006 |
| 471 | **FD-F0008-0309-MB-M-00007** |  | 2026-09-22 → 2026-09-04 (-18d) | 25d → 13d | 10d → none | was named FD-F0009-0309-MB-M-00007 |
| 476 | **FD-F0008-0309-MB-M-00008** |  | 2026-09-22 → 2026-09-09 (-13d) | 25d → 16d | 10d → none | was named FD-F0009-0309-MB-M-00008 |
| 481 | **FD-F0008-0309-MB-M-00009** |  | 2026-09-22 → 2026-09-11 (-11d) | 25d → 18d | 10d → none | was named FD-F0009-0309-MB-M-00009 |
| 486 | **FD-F0008-0309-MB-M-00010** |  | 2026-09-22 → 2026-09-15 (-7d) | 25d → 20d | 10d → none | was named FD-F0009-0309-MB-M-00010 |
| 491 | **FD-F0008-0309-MB-M-00011** |  | 2026-09-22 → 2026-09-17 (-5d) | 25d → 22d | 10d → none | was named FD-F0009-0309-MB-M-00011 |
| 496 | **LE-F0008-0309-MB-M-00001** |  | 2026-09-22 → 2026-09-25 (+3d) | 25d → 28d | 10d → none | was named LE-F0009-0309-MB-M-00001 |
| 501 | **LM-F0008-0309-MB-M-00001** |  |  |  | 10d → 28d | was named LM-F0009-0309-MB-M-00001 |
| 506 | **PQ-F0008-0309-MB-M-00001** |  |  |  | 10d → 28d | was named PQ-F0009-0309-MB-M-00001 |
| 511 | **PQ-F0008-0309-MB-M-00002** | 2026-08-18 → 2026-09-24 (+37d) | 2026-09-22 → 2026-10-29 (+37d) |  | 10d → 1d | was named PQ-F0009-0309-MB-M-00002 |

| ID | Task | Start | Finish | Duration | Total float | Other |
| --- | --- | --- | --- | --- | --- | --- |
| 512 | Emissão inicial | 2026-08-18 → 2026-09-24 (+37d) | 2026-09-08 → 2026-10-15 (+37d) |  | 10d → 1d |  |
| 513 | Avaliação do Cliente | 2026-09-08 → 2026-10-15 (+37d) | 2026-09-15 → 2026-10-22 (+37d) |  | 10d → 1d |  |
| 514 | Atendimento de Comentário | 2026-09-15 → 2026-10-22 (+37d) | 2026-09-18 → 2026-10-27 (+39d) |  | 10d → 1d |  |
| 515 | Aprovação | 2026-09-18 → 2026-10-27 (+39d) | 2026-09-22 → 2026-10-29 (+37d) |  | 10d → 1d |  |
| 516 | **PQ-F0008-0309-MB-M-00003** | 2026-08-18 → 2026-09-24 (+37d) | 2026-09-22 → 2026-10-29 (+37d) |  | 10d → 1d | was named PQ-F0009-0309-MB-M-00003 |
| 517 | Emissão inicial | 2026-08-18 → 2026-09-24 (+37d) | 2026-09-08 → 2026-10-15 (+37d) |  | 10d → 1d |  |
| 518 | Avaliação do Cliente | 2026-09-08 → 2026-10-15 (+37d) | 2026-09-15 → 2026-10-22 (+37d) |  | 10d → 1d |  |
| 519 | Atendimento de Comentário | 2026-09-15 → 2026-10-22 (+37d) | 2026-09-18 → 2026-10-27 (+39d) |  | 10d → 1d |  |
| 520 | Aprovação | 2026-09-18 → 2026-10-27 (+39d) | 2026-09-22 → 2026-10-29 (+37d) |  | 10d → 1d |  |
| 521 | **PQ-F0008-0309-MB-M-00004** | 2026-08-18 → 2026-09-24 (+37d) | 2026-09-22 → 2026-10-29 (+37d) |  | 10d → 1d | was named PQ-F0009-0309-MB-M-00004 |
| 522 | Emissão inicial | 2026-08-18 → 2026-09-24 (+37d) | 2026-09-08 → 2026-10-15 (+37d) |  | 10d → 1d |  |
| 523 | Avaliação do Cliente | 2026-09-08 → 2026-10-15 (+37d) | 2026-09-15 → 2026-10-22 (+37d) |  | 10d → 1d |  |
| 524 | Atendimento de Comentário | 2026-09-15 → 2026-10-22 (+37d) | 2026-09-18 → 2026-10-27 (+39d) |  | 10d → 1d |  |
| 525 | Aprovação | 2026-09-18 → 2026-10-27 (+39d) | 2026-09-22 → 2026-10-29 (+37d) |  | 10d → 1d |  |
| 526 | **RT-F0008-0309-MB-M-00001** | 2026-09-10 → 2026-09-04 (-6d) | 2026-10-06 → 2026-09-30 (-6d) |  | 0d → 22d | was named RT-F0009-0309-MB-M-00001 |
| 527 | Emissão inicial | 2026-09-10 → 2026-09-04 (-6d) | 2026-09-22 → 2026-09-16 (-6d) |  | 0d → 22d |  |
| 528 | Avaliação do Cliente | 2026-09-22 → 2026-09-16 (-6d) | 2026-09-29 → 2026-09-23 (-6d) |  | 0d → 22d |  |
| 529 | Atendimento de Comentário | 2026-09-29 → 2026-09-23 (-6d) | 2026-10-02 → 2026-09-28 (-4d) |  | 0d → 22d |  |
| 530 | Aprovação | 2026-10-02 → 2026-09-28 (-4d) | 2026-10-06 → 2026-09-30 (-6d) |  | 0d → 22d |  |
| 531 | **TUBULAÇÃO E SISTEMAS 309** |  | 2026-09-22 → 2026-10-19 (+27d) | 30d → 49d | 10d → none |  |
| 532 | **AG-F0008-0309-MB-T-00001** |  | 2026-09-22 → 2026-09-10 (-12d) | 25d → 17d | 10d → none | was named AG-F0009-0309-MB-T-00001 |
| 537 | **AG-F0008-0309-MB-T-00002** |  | 2026-09-22 → 2026-09-11 (-11d) | 25d → 18d | 10d → none | was named AG-F0009-0309-MB-T-00002 |
| 542 | **AG-F0008-0309-MB-T-00003** |  | 2026-09-22 → 2026-09-14 (-8d) | 25d → 19d | 10d → none | was named AG-F0009-0309-MB-T-00003 |
| 547 | **AG-F0008-0309-MB-T-00004** |  | 2026-09-22 → 2026-09-15 (-7d) | 25d → 20d | 10d → none | was named AG-F0009-0309-MB-T-00004 |
| 552 | **AG-F0008-0309-MB-T-00005** |  |  |  | 10d → 28d | was named AG-F0009-0309-MB-T-00005 |
| 557 | **LK-F0008-0309-MB-T-00001** |  | 2026-09-22 → 2026-09-23 (+1d) | 20d → 21d | 10d → none | was named LK-F0009-0309-MB-T-00001 |
| 562 | **LM-F0008-0309-MB-T-00001** |  | 2026-09-22 → 2026-10-01 (+9d) | 30d → 37d | 10d → none | was named LM-F0009-0309-MB-T-00001 |
| 567 | **LS-F0008-0309-MB-T-00001** |  | 2026-09-22 → 2026-09-30 (+8d) | 25d → 31d | 10d → none | was named LS-F0009-0309-MB-T-00001 |
| 572 | **MD-F0008-0309-MB-T-00001** |  | 2026-09-22 → 2026-10-05 (+13d) | 30d → 39d | 10d → none | was named MD-F0009-0309-MB-T-00001 |
| 577 | **MD-F0008-0309-MB-T-00002** |  |  |  | 10d → 28d | was named MD-F0009-0309-MB-T-00002 |
| 582 | **ARQUITETURA 309** |  | 2026-09-22 → 2026-10-21 (+29d) | 35d → 56d | 10d → none |  |
| 583 | **AG-F0008-0309-MB-A-00001** |  |  |  | 10d → 28d | was named AG-F0009-0309-MB-A-00001 |
| 588 | **AG-F0008-0309-MB-A-00002** |  |  |  | 10d → 28d | was named AG-F0009-0309-MB-A-00002 |
| 593 | **AG-F0008-0309-MB-A-00003** |  | 2026-09-22 → 2026-09-18 (-4d) | 25d → 23d | 10d → none | was named AG-F0009-0309-MB-A-00003 |
| 598 | **AG-F0008-0309-MB-A-00004** |  |  |  | 10d → 28d | was named AG-F0009-0309-MB-A-00004 |
| 603 | **MD-F0008-0309-MB-A-00001** |  | 2026-09-22 → 2026-10-07 (+15d) | 30d → 41d | 10d → none | was named MD-F0009-0309-MB-A-00001 |
| 608 | **PQ-F0008-0309-MB-A-00001** |  | 2026-09-22 → 2026-10-05 (+13d) | 29d → 38d | 10d → none | was named PQ-F0009-0309-MB-A-00001 |
| 613 | **CIVIL / INFRAESTRUTURA 309** |  | 2026-09-08 → 2026-10-21 (+43d) | 25d → 56d | 20d → none |  |
| 614 | **AG-F0008-0309-MB-B-00001** |  | 2026-09-08 → 2026-08-31 (-8d) | 25d → 19d | 20d → none | was named AG-F0009-0309-MB-B-00001 |
| 619 | **ELÉTRICA 309** |  | 2026-09-23 → 2026-10-21 (+28d) | 61d → 81d | 9d → none |  |
| 620 | **CP-F0008-0309-MB-E-00001** |  |  |  | 50d → 68d | was named CP-F0009-0309-MB-E-00001 |
| 625 | **AG-F0008-0309-MB-E-00001** | 2026-07-30 → 2026-07-28 (-2d) | 2026-08-27 → 2026-09-10 (+14d) | 20d → 32d | 9d → none | was named AG-F0009-0309-MB-E-00001 |
| 626 | Emissão inicial | 2026-07-30 → 2026-07-28 (-2d) | 2026-08-13 → 2026-08-11 (-2d) |  | 9d → 29d |  |
| 627 | Avaliação do Cliente | 2026-08-13 → 2026-08-11 (-2d) | 2026-08-20 → 2026-08-18 (-2d) |  | 9d → 29d |  |
| 628 | Atendimento de Comentário | 2026-08-20 → 2026-08-18 (-2d) | 2026-08-25 → 2026-08-21 (-4d) |  | 28d → 48d |  |
| 629 | Aprovação | 2026-08-25 → 2026-08-21 (-4d) | 2026-08-27 → 2026-08-25 (-2d) |  | 28d → 48d |  |
| 630 | **AG-F0008-0309-MB-E-00002** | 2026-07-30 → 2026-07-28 (-2d) | 2026-08-27 → 2026-09-03 (+7d) | 20d → 27d | 28d → none | was named AG-F0009-0309-MB-E-00002 |
| 631 | Emissão inicial | 2026-07-30 → 2026-07-28 (-2d) | 2026-08-13 → 2026-08-11 (-2d) |  | 28d → 48d |  |
| 632 | Avaliação do Cliente | 2026-08-13 → 2026-08-11 (-2d) | 2026-08-20 → 2026-08-18 (-2d) |  | 28d → 48d |  |
| 633 | Atendimento de Comentário | 2026-08-20 → 2026-08-18 (-2d) | 2026-08-25 → 2026-08-21 (-4d) |  | 28d → 48d |  |
| 634 | Aprovação | 2026-08-25 → 2026-08-21 (-4d) | 2026-08-27 → 2026-08-25 (-2d) |  | 28d → 48d |  |
| 635 | **AG-F0008-0309-MB-E-00003** | 2026-07-30 → 2026-07-28 (-2d) | 2026-08-31 → 2026-08-27 (-4d) |  | 26d → 46d | was named AG-F0009-0309-MB-E-00003 |
| 636 | Emissão inicial | 2026-07-30 → 2026-07-28 (-2d) | 2026-08-13 → 2026-08-11 (-2d) |  | 26d → 46d |  |
| 637 | Avaliação do Cliente | 2026-08-13 → 2026-08-11 (-2d) | 2026-08-20 → 2026-08-18 (-2d) |  | 26d → 46d |  |
| 638 | Atendimento de Comentário | 2026-08-20 → 2026-08-18 (-2d) | 2026-08-27 → 2026-08-25 (-2d) |  | 26d → 46d |  |
| 639 | Aprovação | 2026-08-27 → 2026-08-25 (-2d) | 2026-08-31 → 2026-08-27 (-4d) |  | 26d → 46d |  |
| 640 | **AG-F0008-0309-MB-E-00004** | 2026-07-30 → 2026-07-28 (-2d) | 2026-08-27 → 2026-09-14 (+18d) | 20d → 34d | 28d → none | was named AG-F0009-0309-MB-E-00004 |
| 641 | Emissão inicial | 2026-07-30 → 2026-07-28 (-2d) | 2026-08-13 → 2026-08-11 (-2d) |  | 28d → 48d |  |
| 642 | Avaliação do Cliente | 2026-08-13 → 2026-08-11 (-2d) | 2026-08-20 → 2026-08-18 (-2d) |  | 28d → 48d |  |
| 643 | Atendimento de Comentário | 2026-08-20 → 2026-08-18 (-2d) | 2026-08-25 → 2026-08-21 (-4d) |  | 28d → 48d |  |
| 644 | Aprovação | 2026-08-25 → 2026-08-21 (-4d) | 2026-08-27 → 2026-08-25 (-2d) |  | 28d → 48d |  |
| 645 | **AG-F0008-0309-MB-E-00005** | 2026-07-30 → 2026-07-28 (-2d) | 2026-08-27 → 2026-08-25 (-2d) |  | 9d → 29d | was named AG-F0009-0309-MB-E-00005 |
| 646 | Emissão inicial | 2026-07-30 → 2026-07-28 (-2d) | 2026-08-13 → 2026-08-11 (-2d) |  | 9d → 29d |  |
| 647 | Avaliação do Cliente | 2026-08-13 → 2026-08-11 (-2d) | 2026-08-20 → 2026-08-18 (-2d) |  | 28d → 48d |  |
| 648 | Atendimento de Comentário | 2026-08-20 → 2026-08-18 (-2d) | 2026-08-25 → 2026-08-21 (-4d) |  | 28d → 48d |  |
| 649 | Aprovação | 2026-08-25 → 2026-08-21 (-4d) | 2026-08-27 → 2026-08-25 (-2d) |  | 28d → 48d |  |
| 650 | **AG-F0008-0309-MB-E-00006** | 2026-07-30 → 2026-07-28 (-2d) | 2026-08-21 → 2026-09-21 (+31d) | 16d → 39d | 32d → none | was named AG-F0009-0309-MB-E-00006 |
| 651 | Emissão inicial | 2026-07-30 → 2026-07-28 (-2d) | 2026-08-13 → 2026-08-11 (-2d) |  | 32d → 52d |  |
| 652 | Avaliação do Cliente | 2026-08-13 → 2026-08-11 (-2d) | 2026-08-14 → 2026-08-12 (-2d) |  | 32d → 52d |  |
| 653 | Atendimento de Comentário | 2026-08-14 → 2026-08-12 (-2d) | 2026-08-19 → 2026-08-17 (-2d) |  | 32d → 52d |  |

| ID | Task | Start | Finish | Duration | Total float | Other |
| --- | --- | --- | --- | --- | --- | --- |
| 654 | Aprovação | 2026-08-19 → 2026-08-17 (-2d) | 2026-08-21 → 2026-08-19 (-2d) |  | 32d → 52d |  |
| 655 | **AG-F0008-0309-MB-E-00007** | 2026-07-30 → 2026-07-28 (-2d) | 2026-08-27 → 2026-08-25 (-2d) |  | 28d → 48d | was named AG-F0009-0309-MB-E-00007 |
| 656 | Emissão inicial | 2026-07-30 → 2026-07-28 (-2d) | 2026-08-13 → 2026-08-11 (-2d) |  | 28d → 48d |  |
| 657 | Avaliação do Cliente | 2026-08-13 → 2026-08-11 (-2d) | 2026-08-20 → 2026-08-18 (-2d) |  | 28d → 48d |  |
| 658 | Atendimento de Comentário | 2026-08-20 → 2026-08-18 (-2d) | 2026-08-25 → 2026-08-21 (-4d) |  | 28d → 48d |  |
| 659 | Aprovação | 2026-08-25 → 2026-08-21 (-4d) | 2026-08-27 → 2026-08-25 (-2d) |  | 28d → 48d |  |
| 660 | **AG-F0008-0309-MB-E-00008** | 2026-07-30 → 2026-07-28 (-2d) | 2026-08-27 → 2026-08-25 (-2d) |  | 28d → 48d | was named AG-F0009-0309-MB-E-00008 |
| 661 | Emissão inicial | 2026-07-30 → 2026-07-28 (-2d) | 2026-08-13 → 2026-08-11 (-2d) |  | 28d → 48d |  |
| 662 | Avaliação do Cliente | 2026-08-13 → 2026-08-11 (-2d) | 2026-08-20 → 2026-08-18 (-2d) |  | 28d → 48d |  |
| 663 | Atendimento de Comentário | 2026-08-20 → 2026-08-18 (-2d) | 2026-08-25 → 2026-08-21 (-4d) |  | 28d → 48d |  |
| 664 | Aprovação | 2026-08-25 → 2026-08-21 (-4d) | 2026-08-27 → 2026-08-25 (-2d) |  | 28d → 48d |  |
| 665 | **CC-F0008-0309-MB-E-00001** | 2026-08-13 → 2026-08-11 (-2d) | 2026-09-17 → 2026-09-15 (-2d) |  | 9d → 29d | was named CC-F0009-0309-MB-E-00001 |
| 666 | Emissão inicial | 2026-08-13 → 2026-08-11 (-2d) | 2026-09-03 → 2026-09-01 (-2d) |  | 9d → 29d |  |
| 667 | Avaliação do Cliente | 2026-09-03 → 2026-09-01 (-2d) | 2026-09-10 → 2026-09-08 (-2d) |  | 9d → 29d |  |
| 668 | Atendimento de Comentário | 2026-09-10 → 2026-09-08 (-2d) | 2026-09-15 → 2026-09-11 (-4d) |  | 13d → 33d |  |
| 669 | Aprovação | 2026-09-15 → 2026-09-11 (-4d) | 2026-09-17 → 2026-09-15 (-2d) |  | 13d → 33d |  |
| 670 | **DU-F0008-0309-MB-E-00001** | 2026-08-13 → 2026-08-11 (-2d) | 2026-09-17 → 2026-09-08 (-9d) | 25d → 20d | 13d → none | was named DU-F0009-0309-MB-E-00001 |
| 671 | Emissão inicial | 2026-08-13 → 2026-08-11 (-2d) | 2026-09-03 → 2026-09-01 (-2d) |  | 13d → 33d |  |
| 672 | Avaliação do Cliente | 2026-09-03 → 2026-09-01 (-2d) | 2026-09-10 → 2026-09-08 (-2d) |  | 13d → 33d |  |
| 673 | Atendimento de Comentário | 2026-09-10 → 2026-09-08 (-2d) | 2026-09-15 → 2026-09-11 (-4d) |  | 13d → 33d |  |
| 674 | Aprovação | 2026-09-15 → 2026-09-11 (-4d) | 2026-09-17 → 2026-09-15 (-2d) |  | 13d → 33d |  |
| 675 | **DU-F0008-0309-MB-E-00002** | 2026-08-13 → 2026-08-11 (-2d) | 2026-09-21 → 2026-09-17 (-4d) |  | 11d → 31d | was named DU-F0009-0309-MB-E-00002 |
| 676 | Emissão inicial | 2026-08-13 → 2026-08-11 (-2d) | 2026-09-03 → 2026-09-01 (-2d) |  | 11d → 31d |  |
| 677 | Avaliação do Cliente | 2026-09-03 → 2026-09-01 (-2d) | 2026-09-10 → 2026-09-08 (-2d) |  | 11d → 31d |  |
| 678 | Atendimento de Comentário | 2026-09-10 → 2026-09-08 (-2d) | 2026-09-17 → 2026-09-15 (-2d) |  | 11d → 31d |  |
| 679 | Aprovação | 2026-09-17 → 2026-09-15 (-2d) | 2026-09-21 → 2026-09-17 (-4d) |  | 11d → 31d |  |
| 680 | **DU-F0008-0309-MB-E-00003** | 2026-08-13 → 2026-08-11 (-2d) | 2026-09-17 → 2026-09-15 (-2d) |  | 13d → 33d | was named DU-F0009-0309-MB-E-00003 |
| 681 | Emissão inicial | 2026-08-13 → 2026-08-11 (-2d) | 2026-09-03 → 2026-09-01 (-2d) |  | 13d → 33d |  |
| 682 | Avaliação do Cliente | 2026-09-03 → 2026-09-01 (-2d) | 2026-09-10 → 2026-09-08 (-2d) |  | 13d → 33d |  |
| 683 | Atendimento de Comentário | 2026-09-10 → 2026-09-08 (-2d) | 2026-09-15 → 2026-09-11 (-4d) |  | 13d → 33d |  |
| 684 | Aprovação | 2026-09-15 → 2026-09-11 (-4d) | 2026-09-17 → 2026-09-15 (-2d) |  | 13d → 33d |  |
| 685 | **ET-F0008-0309-MB-E-00001** | 2026-08-17 → 2026-08-13 (-4d) | 2026-09-23 → 2026-09-21 (-2d) |  | 9d → 29d | was named ET-F0009-0309-MB-E-00001 |
| 686 | Emissão inicial | 2026-08-17 → 2026-08-13 (-4d) | 2026-09-07 → 2026-09-03 (-4d) |  | 9d → 29d |  |
| 687 | Avaliação do Cliente | 2026-09-07 → 2026-09-03 (-4d) | 2026-09-14 → 2026-09-10 (-4d) |  | 9d → 29d |  |
| 688 | Atendimento de Comentário | 2026-09-14 → 2026-09-10 (-4d) | 2026-09-21 → 2026-09-17 (-4d) |  | 9d → 29d |  |
| 689 | Aprovação | 2026-09-21 → 2026-09-17 (-4d) | 2026-09-23 → 2026-09-21 (-2d) |  | 9d → 29d |  |
| 690 | **LB-F0008-0309-MB-E-00001** | 2026-08-17 → 2026-08-13 (-4d) | 2026-09-21 → 2026-10-05 (+14d) | 25d → 37d | 11d → none | was named LB-F0009-0309-MB-E-00001 |
| 691 | Emissão inicial | 2026-08-17 → 2026-08-13 (-4d) | 2026-09-07 → 2026-09-03 (-4d) |  | 11d → 31d |  |
| 692 | Avaliação do Cliente | 2026-09-07 → 2026-09-03 (-4d) | 2026-09-14 → 2026-09-10 (-4d) |  | 11d → 31d |  |
| 693 | Atendimento de Comentário | 2026-09-14 → 2026-09-10 (-4d) | 2026-09-17 → 2026-09-15 (-2d) |  | 11d → 31d |  |
| 694 | Aprovação | 2026-09-17 → 2026-09-15 (-2d) | 2026-09-21 → 2026-09-17 (-4d) |  | 11d → 31d |  |
| 695 | **LM-F0008-0309-MB-E-00001** | 2026-08-17 → 2026-08-13 (-4d) | 2026-09-21 → 2026-10-05 (+14d) | 25d → 37d | 11d → none | was named LM-F0009-0309-MB-E-00001 |
| 696 | Emissão inicial | 2026-08-17 → 2026-08-13 (-4d) | 2026-09-07 → 2026-09-03 (-4d) |  | 11d → 31d |  |
| 697 | Avaliação do Cliente | 2026-09-07 → 2026-09-03 (-4d) | 2026-09-14 → 2026-09-10 (-4d) |  | 11d → 31d |  |
| 698 | Atendimento de Comentário | 2026-09-14 → 2026-09-10 (-4d) | 2026-09-17 → 2026-09-15 (-2d) |  | 11d → 31d |  |
| 699 | Aprovação | 2026-09-17 → 2026-09-15 (-2d) | 2026-09-21 → 2026-09-17 (-4d) |  | 11d → 31d |  |
| 700 | **LR-F0008-0309-MB-E-00001** | 2026-08-17 → 2026-08-13 (-4d) | 2026-09-21 → 2026-09-17 (-4d) |  | 11d → 31d | was named LR-F0009-0309-MB-E-00001 |
| 701 | Emissão inicial | 2026-08-17 → 2026-08-13 (-4d) | 2026-09-07 → 2026-09-03 (-4d) |  | 11d → 31d |  |
| 702 | Avaliação do Cliente | 2026-09-07 → 2026-09-03 (-4d) | 2026-09-14 → 2026-09-10 (-4d) |  | 11d → 31d |  |
| 703 | Atendimento de Comentário | 2026-09-14 → 2026-09-10 (-4d) | 2026-09-17 → 2026-09-15 (-2d) |  | 11d → 31d |  |
| 704 | Aprovação | 2026-09-17 → 2026-09-15 (-2d) | 2026-09-21 → 2026-09-17 (-4d) |  | 11d → 31d |  |
| 705 | **MD-F0008-0309-MB-E-00001** | 2026-08-17 → 2026-08-13 (-4d) | 2026-09-21 → 2026-10-07 (+16d) | 25d → 39d | 11d → none | was named MD-F0009-0309-MB-E-00001 |
| 706 | Emissão inicial | 2026-08-17 → 2026-08-13 (-4d) | 2026-09-07 → 2026-09-03 (-4d) |  | 11d → 31d |  |
| 707 | Avaliação do Cliente | 2026-09-07 → 2026-09-03 (-4d) | 2026-09-14 → 2026-09-10 (-4d) |  | 11d → 31d |  |
| 708 | Atendimento de Comentário | 2026-09-14 → 2026-09-10 (-4d) | 2026-09-17 → 2026-09-15 (-2d) |  | 11d → 31d |  |
| 709 | Aprovação | 2026-09-17 → 2026-09-15 (-2d) | 2026-09-21 → 2026-09-17 (-4d) |  | 11d → 31d |  |
| 710 | **OI-F0008-0309-MB-E-00001** | 2026-08-17 → 2026-08-13 (-4d) | 2026-09-21 → 2026-09-17 (-4d) |  | 11d → 31d | was named OI-F0009-0309-MB-E-00001 |
| 711 | Emissão inicial | 2026-08-17 → 2026-08-13 (-4d) | 2026-09-07 → 2026-09-03 (-4d) |  | 11d → 31d |  |
| 712 | Avaliação do Cliente | 2026-09-07 → 2026-09-03 (-4d) | 2026-09-14 → 2026-09-10 (-4d) |  | 11d → 31d |  |
| 713 | Atendimento de Comentário | 2026-09-14 → 2026-09-10 (-4d) | 2026-09-17 → 2026-09-15 (-2d) |  | 11d → 31d |  |
| 714 | Aprovação | 2026-09-17 → 2026-09-15 (-2d) | 2026-09-21 → 2026-09-17 (-4d) |  | 11d → 31d |  |
| 715 | **AUTOMAÇÃO 309** |  | 2026-10-06 → 2026-10-21 (+15d) | 70d → 81d | 0d → none |  |
| 716 | **CP-F0008-0309-MB-J-00001** |  |  |  | 45d → 63d | was named CP-F0009-0309-MB-J-00001 |
| 721 | **CP-F0008-0309-MB-J-00002** |  |  |  | 45d → 63d | was named CP-F0009-0309-MB-J-00002 |
| 726 | **AG-F0008-0309-MB-J-00001** | 2026-07-30 → 2026-07-28 (-2d) | 2026-08-27 → 2026-10-02 (+36d) | 20d → 48d | 0d → none | was named AG-F0009-0309-MB-J-00001 |
| 727 | Emissão inicial | 2026-07-30 → 2026-07-28 (-2d) | 2026-08-13 → 2026-08-11 (-2d) |  | 0d → 20d |  |
| 728 | Avaliação do Cliente | 2026-08-13 → 2026-08-11 (-2d) | 2026-08-20 → 2026-08-18 (-2d) |  | 28d → 48d |  |
| 729 | Atendimento de Comentário | 2026-08-20 → 2026-08-18 (-2d) | 2026-08-25 → 2026-08-21 (-4d) |  | 28d → 48d |  |
| 730 | Aprovação | 2026-08-25 → 2026-08-21 (-4d) | 2026-08-27 → 2026-08-25 (-2d) |  | 28d → 48d |  |
| 731 | **AG-F0008-0309-MB-J-00002** | 2026-07-16 → 2026-07-14 (-2d) | 2026-08-18 → 2026-08-14 (-4d) |  | 35d → 55d | was named AG-F0009-0309-MB-J-00002 |

| ID | Task | Start | Finish | Duration | Total float | Other |
| --- | --- | --- | --- | --- | --- | --- |
| 732 | Emissão inicial | 2026-07-16 → 2026-07-14 (-2d) | 2026-07-30 → 2026-07-28 (-2d) |  | 35d → 55d |  |
| 733 | Avaliação do Cliente | 2026-07-30 → 2026-07-28 (-2d) | 2026-08-06 → 2026-08-04 (-2d) |  | 35d → 55d |  |
| 734 | Atendimento de Comentário | 2026-08-06 → 2026-08-04 (-2d) | 2026-08-11 → 2026-08-07 (-4d) |  | 35d → 55d |  |
| 735 | Aprovação | 2026-08-11 → 2026-08-07 (-4d) | 2026-08-18 → 2026-08-14 (-4d) |  | 35d → 55d |  |
| 736 | **AG-F0008-0309-MB-J-00003** | 2026-07-16 → 2026-07-14 (-2d) | 2026-08-13 → 2026-08-11 (-2d) |  | 38d → 58d | was named AG-F0009-0309-MB-J-00003 |
| 737 | Emissão inicial | 2026-07-16 → 2026-07-14 (-2d) | 2026-07-30 → 2026-07-28 (-2d) |  | 38d → 58d |  |
| 738 | Avaliação do Cliente | 2026-07-30 → 2026-07-28 (-2d) | 2026-08-06 → 2026-08-04 (-2d) |  | 38d → 58d |  |
| 739 | Atendimento de Comentário | 2026-08-06 → 2026-08-04 (-2d) | 2026-08-11 → 2026-08-07 (-4d) |  | 38d → 58d |  |
| 740 | Aprovação | 2026-08-11 → 2026-08-07 (-4d) | 2026-08-13 → 2026-08-11 (-2d) |  | 38d → 58d |  |
| 741 | **AG-F0008-0309-MB-J-00004** | 2026-07-16 → 2026-07-14 (-2d) | 2026-08-13 → 2026-08-11 (-2d) |  | 0d → 20d | was named AG-F0009-0309-MB-J-00004 |
| 742 | Emissão inicial | 2026-07-16 → 2026-07-14 (-2d) | 2026-07-30 → 2026-07-28 (-2d) |  | 0d → 20d |  |
| 743 | Avaliação do Cliente | 2026-07-30 → 2026-07-28 (-2d) | 2026-08-06 → 2026-08-04 (-2d) |  | 38d → 58d |  |
| 744 | Atendimento de Comentário | 2026-08-06 → 2026-08-04 (-2d) | 2026-08-11 → 2026-08-07 (-4d) |  | 38d → 58d |  |
| 745 | Aprovação | 2026-08-11 → 2026-08-07 (-4d) | 2026-08-13 → 2026-08-11 (-2d) |  | 38d → 58d |  |
| 746 | **AG-F0008-0309-MB-J-00005** | 2026-07-30 → 2026-07-28 (-2d) | 2026-08-31 → 2026-08-27 (-4d) |  | 0d → 20d | was named AG-F0009-0309-MB-J-00005 |
| 747 | Emissão inicial | 2026-07-30 → 2026-07-28 (-2d) | 2026-08-13 → 2026-08-11 (-2d) |  | 0d → 20d |  |
| 748 | Avaliação do Cliente | 2026-08-13 → 2026-08-11 (-2d) | 2026-08-20 → 2026-08-18 (-2d) |  | 0d → 20d |  |
| 749 | Atendimento de Comentário | 2026-08-20 → 2026-08-18 (-2d) | 2026-08-27 → 2026-08-25 (-2d) |  | 26d → 46d |  |
| 750 | Aprovação | 2026-08-27 → 2026-08-25 (-2d) | 2026-08-31 → 2026-08-27 (-4d) |  | 26d → 46d |  |
| 751 | **AG-F0008-0309-MB-J-00006** | 2026-07-30 → 2026-07-28 (-2d) | 2026-08-27 → 2026-08-25 (-2d) |  | 28d → 48d | was named AG-F0009-0309-MB-J-00006 |
| 752 | Emissão inicial | 2026-07-30 → 2026-07-28 (-2d) | 2026-08-13 → 2026-08-11 (-2d) |  | 28d → 48d |  |
| 753 | Avaliação do Cliente | 2026-08-13 → 2026-08-11 (-2d) | 2026-08-20 → 2026-08-18 (-2d) |  | 28d → 48d |  |
| 754 | Atendimento de Comentário | 2026-08-20 → 2026-08-18 (-2d) | 2026-08-25 → 2026-08-21 (-4d) |  | 28d → 48d |  |
| 755 | Aprovação | 2026-08-25 → 2026-08-21 (-4d) | 2026-08-27 → 2026-08-25 (-2d) |  | 28d → 48d |  |
| 756 | **AG-F0008-0309-MB-J-00007** | 2026-07-30 → 2026-07-28 (-2d) | 2026-08-31 → 2026-08-27 (-4d) |  | 26d → 46d | was named AG-F0009-0309-MB-J-00007 |
| 757 | Emissão inicial | 2026-07-30 → 2026-07-28 (-2d) | 2026-08-13 → 2026-08-11 (-2d) |  | 26d → 46d |  |
| 758 | Avaliação do Cliente | 2026-08-13 → 2026-08-11 (-2d) | 2026-08-20 → 2026-08-18 (-2d) |  | 26d → 46d |  |
| 759 | Atendimento de Comentário | 2026-08-20 → 2026-08-18 (-2d) | 2026-08-27 → 2026-08-25 (-2d) |  | 26d → 46d |  |
| 760 | Aprovação | 2026-08-27 → 2026-08-25 (-2d) | 2026-08-31 → 2026-08-27 (-4d) |  | 26d → 46d |  |
| 761 | **AG-F0008-0309-MB-J-00008** | 2026-07-30 → 2026-07-28 (-2d) | 2026-08-27 → 2026-08-25 (-2d) |  | 28d → 48d | was named AG-F0009-0309-MB-J-00008 |
| 762 | Emissão inicial | 2026-07-30 → 2026-07-28 (-2d) | 2026-08-13 → 2026-08-11 (-2d) |  | 28d → 48d |  |
| 763 | Avaliação do Cliente | 2026-08-13 → 2026-08-11 (-2d) | 2026-08-20 → 2026-08-18 (-2d) |  | 28d → 48d |  |
| 764 | Atendimento de Comentário | 2026-08-20 → 2026-08-18 (-2d) | 2026-08-25 → 2026-08-21 (-4d) |  | 28d → 48d |  |
| 765 | Aprovação | 2026-08-25 → 2026-08-21 (-4d) | 2026-08-27 → 2026-08-25 (-2d) |  | 28d → 48d |  |
| 766 | **AG-F0008-0309-MB-J-00009** | 2026-07-30 → 2026-07-28 (-2d) | 2026-08-27 → 2026-08-25 (-2d) |  | 0d → 20d | was named AG-F0009-0309-MB-J-00009 |
| 767 | Emissão inicial | 2026-07-30 → 2026-07-28 (-2d) | 2026-08-13 → 2026-08-11 (-2d) |  | 0d → 20d |  |
| 768 | Avaliação do Cliente | 2026-08-13 → 2026-08-11 (-2d) | 2026-08-20 → 2026-08-18 (-2d) |  | 28d → 48d |  |
| 769 | Atendimento de Comentário | 2026-08-20 → 2026-08-18 (-2d) | 2026-08-25 → 2026-08-21 (-4d) |  | 28d → 48d |  |
| 770 | Aprovação | 2026-08-25 → 2026-08-21 (-4d) | 2026-08-27 → 2026-08-25 (-2d) |  | 28d → 48d |  |
| 771 | **LB-F0008-0309-MB-J-00001** | 2026-08-13 → 2026-08-11 (-2d) | 2026-09-21 → 2026-10-05 (+14d) | 27d → 39d | 0d → none | was named LB-F0009-0309-MB-J-00001 |
| 772 | Emissão inicial | 2026-08-13 → 2026-08-11 (-2d) | 2026-09-03 → 2026-09-01 (-2d) |  | 0d → 20d |  |
| 773 | Avaliação do Cliente | 2026-09-03 → 2026-09-01 (-2d) | 2026-09-10 → 2026-09-08 (-2d) |  | 0d → 20d |  |
| 774 | Atendimento de Comentário | 2026-09-10 → 2026-09-08 (-2d) | 2026-09-17 → 2026-09-15 (-2d) |  | 11d → 31d |  |
| 775 | Aprovação | 2026-09-17 → 2026-09-15 (-2d) | 2026-09-21 → 2026-09-17 (-4d) |  | 11d → 31d |  |
| 776 | **LI-F0008-0300-MB-J-00001** | 2026-08-13 → 2026-08-11 (-2d) | 2026-09-17 → 2026-09-24 (+7d) | 25d → 32d | 13d → none | was named LI-F0009-0300-MB-J-00001 |
| 777 | Emissão inicial | 2026-08-13 → 2026-08-11 (-2d) | 2026-09-03 → 2026-09-01 (-2d) |  | 13d → 33d |  |
| 778 | Avaliação do Cliente | 2026-09-03 → 2026-09-01 (-2d) | 2026-09-10 → 2026-09-08 (-2d) |  | 13d → 33d |  |
| 779 | Atendimento de Comentário | 2026-09-10 → 2026-09-08 (-2d) | 2026-09-15 → 2026-09-11 (-4d) |  | 13d → 33d |  |
| 780 | Aprovação | 2026-09-15 → 2026-09-11 (-4d) | 2026-09-17 → 2026-09-15 (-2d) |  | 13d → 33d |  |
| 781 | **LI-F0008-0302-MB-J-00001** | 2026-08-13 → 2026-08-11 (-2d) | 2026-09-17 → 2026-09-23 (+6d) | 25d → 31d | 13d → none | was named LI-F0009-0302-MB-J-00001 |
| 782 | Emissão inicial | 2026-08-13 → 2026-08-11 (-2d) | 2026-09-03 → 2026-09-01 (-2d) |  | 13d → 33d |  |
| 783 | Avaliação do Cliente | 2026-09-03 → 2026-09-01 (-2d) | 2026-09-10 → 2026-09-08 (-2d) |  | 13d → 33d |  |
| 784 | Atendimento de Comentário | 2026-09-10 → 2026-09-08 (-2d) | 2026-09-15 → 2026-09-11 (-4d) |  | 13d → 33d |  |
| 785 | Aprovação | 2026-09-15 → 2026-09-11 (-4d) | 2026-09-17 → 2026-09-15 (-2d) |  | 13d → 33d |  |
| 786 | **LI-F0008-0302-MB-J-00002** | 2026-08-13 → 2026-08-11 (-2d) | 2026-09-17 → 2026-09-15 (-2d) |  | 13d → 33d | was named LI-F0009-0302-MB-J-00002 |
| 787 | Emissão inicial | 2026-08-13 → 2026-08-11 (-2d) | 2026-09-03 → 2026-09-01 (-2d) |  | 13d → 33d |  |
| 788 | Avaliação do Cliente | 2026-09-03 → 2026-09-01 (-2d) | 2026-09-10 → 2026-09-08 (-2d) |  | 13d → 33d |  |
| 789 | Atendimento de Comentário | 2026-09-10 → 2026-09-08 (-2d) | 2026-09-15 → 2026-09-11 (-4d) |  | 13d → 33d |  |
| 790 | Aprovação | 2026-09-15 → 2026-09-11 (-4d) | 2026-09-17 → 2026-09-15 (-2d) |  | 13d → 33d |  |
| 791 | **LI-F0008-0302-MB-J-00003** | 2026-08-13 → 2026-08-11 (-2d) | 2026-09-21 → 2026-09-17 (-4d) |  | 11d → 31d | was named LI-F0009-0302-MB-J-00003 |
| 792 | Emissão inicial | 2026-08-13 → 2026-08-11 (-2d) | 2026-09-03 → 2026-09-01 (-2d) |  | 11d → 31d |  |
| 793 | Avaliação do Cliente | 2026-09-03 → 2026-09-01 (-2d) | 2026-09-10 → 2026-09-08 (-2d) |  | 11d → 31d |  |
| 794 | Atendimento de Comentário | 2026-09-10 → 2026-09-08 (-2d) | 2026-09-17 → 2026-09-15 (-2d) |  | 11d → 31d |  |
| 795 | Aprovação | 2026-09-17 → 2026-09-15 (-2d) | 2026-09-21 → 2026-09-17 (-4d) |  | 11d → 31d |  |
| 796 | **LI-F0008-0302-MB-J-00004** | 2026-08-13 → 2026-08-11 (-2d) | 2026-09-17 → 2026-09-15 (-2d) |  | 13d → 33d | was named LI-F0009-0302-MB-J-00004 |
| 797 | Emissão inicial | 2026-08-13 → 2026-08-11 (-2d) | 2026-09-03 → 2026-09-01 (-2d) |  | 13d → 33d |  |
| 798 | Avaliação do Cliente | 2026-09-03 → 2026-09-01 (-2d) | 2026-09-10 → 2026-09-08 (-2d) |  | 13d → 33d |  |
| 799 | Atendimento de Comentário | 2026-09-10 → 2026-09-08 (-2d) | 2026-09-15 → 2026-09-11 (-4d) |  | 13d → 33d |  |
| 800 | Aprovação | 2026-09-15 → 2026-09-11 (-4d) | 2026-09-17 → 2026-09-15 (-2d) |  | 13d → 33d |  |
| 801 | **LI-F0008-0302-MB-J-00005** | 2026-08-13 → 2026-08-11 (-2d) | 2026-09-21 → 2026-09-17 (-4d) |  | 11d → 31d | was named LI-F0009-0302-MB-J-00005 |

| ID | Task | Start | Finish | Duration | Total float | Other |
| --- | --- | --- | --- | --- | --- | --- |
| 802 | Emissão inicial | 2026-08-13 → 2026-08-11 (-2d) | 2026-09-03 → 2026-09-01 (-2d) |  | 11d → 31d |  |
| 803 | Avaliação do Cliente | 2026-09-03 → 2026-09-01 (-2d) | 2026-09-10 → 2026-09-08 (-2d) |  | 11d → 31d |  |
| 804 | Atendimento de Comentário | 2026-09-10 → 2026-09-08 (-2d) | 2026-09-17 → 2026-09-15 (-2d) |  | 11d → 31d |  |
| 805 | Aprovação | 2026-09-17 → 2026-09-15 (-2d) | 2026-09-21 → 2026-09-17 (-4d) |  | 11d → 31d |  |
| 806 | **LI-F0008-0302-MB-J-00006** | 2026-08-13 → 2026-08-11 (-2d) | 2026-09-17 → 2026-09-15 (-2d) |  | 13d → 33d | was named LI-F0009-0302-MB-J-00006 |
| 807 | Emissão inicial | 2026-08-13 → 2026-08-11 (-2d) | 2026-09-03 → 2026-09-01 (-2d) |  | 13d → 33d |  |
| 808 | Avaliação do Cliente | 2026-09-03 → 2026-09-01 (-2d) | 2026-09-10 → 2026-09-08 (-2d) |  | 13d → 33d |  |
| 809 | Atendimento de Comentário | 2026-09-10 → 2026-09-08 (-2d) | 2026-09-15 → 2026-09-11 (-4d) |  | 13d → 33d |  |
| 810 | Aprovação | 2026-09-15 → 2026-09-11 (-4d) | 2026-09-17 → 2026-09-15 (-2d) |  | 13d → 33d |  |
| 811 | **LI-F0008-0307-MB-J-00001** | 2026-08-13 → 2026-08-11 (-2d) | 2026-09-21 → 2026-09-25 (+4d) | 27d → 33d | 11d → none | was named LI-F0009-0307-MB-J-00001 |
| 812 | Emissão inicial | 2026-08-13 → 2026-08-11 (-2d) | 2026-09-03 → 2026-09-01 (-2d) |  | 11d → 31d |  |
| 813 | Avaliação do Cliente | 2026-09-03 → 2026-09-01 (-2d) | 2026-09-10 → 2026-09-08 (-2d) |  | 11d → 31d |  |
| 814 | Atendimento de Comentário | 2026-09-10 → 2026-09-08 (-2d) | 2026-09-17 → 2026-09-15 (-2d) |  | 11d → 31d |  |
| 815 | Aprovação | 2026-09-17 → 2026-09-15 (-2d) | 2026-09-21 → 2026-09-17 (-4d) |  | 11d → 31d |  |
| 816 | **LI-F0008-0309-MB-J-00001** | 2026-08-13 → 2026-08-11 (-2d) | 2026-09-17 → 2026-09-15 (-2d) |  | 13d → 33d | was named LI-F0009-0309-MB-J-00001 |
| 817 | Emissão inicial | 2026-08-13 → 2026-08-11 (-2d) | 2026-09-03 → 2026-09-01 (-2d) |  | 13d → 33d |  |
| 818 | Avaliação do Cliente | 2026-09-03 → 2026-09-01 (-2d) | 2026-09-10 → 2026-09-08 (-2d) |  | 13d → 33d |  |
| 819 | Atendimento de Comentário | 2026-09-10 → 2026-09-08 (-2d) | 2026-09-15 → 2026-09-11 (-4d) |  | 13d → 33d |  |
| 820 | Aprovação | 2026-09-15 → 2026-09-11 (-4d) | 2026-09-17 → 2026-09-15 (-2d) |  | 13d → 33d |  |
| 821 | **LI-F0008-0309-MB-J-00002** | 2026-08-13 → 2026-08-11 (-2d) | 2026-09-17 → 2026-09-15 (-2d) |  | 13d → 33d | was named LI-F0009-0309-MB-J-00002 |
| 822 | Emissão inicial | 2026-08-13 → 2026-08-11 (-2d) | 2026-09-03 → 2026-09-01 (-2d) |  | 13d → 33d |  |
| 823 | Avaliação do Cliente | 2026-09-03 → 2026-09-01 (-2d) | 2026-09-10 → 2026-09-08 (-2d) |  | 13d → 33d |  |
| 824 | Atendimento de Comentário | 2026-09-10 → 2026-09-08 (-2d) | 2026-09-15 → 2026-09-11 (-4d) |  | 13d → 33d |  |
| 825 | Aprovação | 2026-09-15 → 2026-09-11 (-4d) | 2026-09-17 → 2026-09-15 (-2d) |  | 13d → 33d |  |
| 826 | **LI-F0008-0309-MB-J-00003** | 2026-08-13 → 2026-08-11 (-2d) | 2026-09-17 → 2026-09-15 (-2d) |  | 13d → 33d | was named LI-F0009-0309-MB-J-00003 |
| 827 | Emissão inicial | 2026-08-13 → 2026-08-11 (-2d) | 2026-09-03 → 2026-09-01 (-2d) |  | 13d → 33d |  |
| 828 | Avaliação do Cliente | 2026-09-03 → 2026-09-01 (-2d) | 2026-09-10 → 2026-09-08 (-2d) |  | 13d → 33d |  |
| 829 | Atendimento de Comentário | 2026-09-10 → 2026-09-08 (-2d) | 2026-09-15 → 2026-09-11 (-4d) |  | 13d → 33d |  |
| 830 | Aprovação | 2026-09-15 → 2026-09-11 (-4d) | 2026-09-17 → 2026-09-15 (-2d) |  | 13d → 33d |  |
| 831 | **LI-F0008-0309-MB-J-00004** | 2026-08-13 → 2026-08-11 (-2d) | 2026-09-17 → 2026-09-15 (-2d) |  | 13d → 33d | was named LI-F0009-0309-MB-J-00004 |
| 832 | Emissão inicial | 2026-08-13 → 2026-08-11 (-2d) | 2026-09-03 → 2026-09-01 (-2d) |  | 13d → 33d |  |
| 833 | Avaliação do Cliente | 2026-09-03 → 2026-09-01 (-2d) | 2026-09-10 → 2026-09-08 (-2d) |  | 13d → 33d |  |
| 834 | Atendimento de Comentário | 2026-09-10 → 2026-09-08 (-2d) | 2026-09-15 → 2026-09-11 (-4d) |  | 13d → 33d |  |
| 835 | Aprovação | 2026-09-15 → 2026-09-11 (-4d) | 2026-09-17 → 2026-09-15 (-2d) |  | 13d → 33d |  |
| 836 | **LI-F0008-0309-MB-J-00005** | 2026-08-13 → 2026-08-11 (-2d) | 2026-09-17 → 2026-09-15 (-2d) |  | 13d → 33d | was named LI-F0009-0309-MB-J-00005 |
| 837 | Emissão inicial | 2026-08-13 → 2026-08-11 (-2d) | 2026-09-03 → 2026-09-01 (-2d) |  | 13d → 33d |  |
| 838 | Avaliação do Cliente | 2026-09-03 → 2026-09-01 (-2d) | 2026-09-10 → 2026-09-08 (-2d) |  | 13d → 33d |  |
| 839 | Atendimento de Comentário | 2026-09-10 → 2026-09-08 (-2d) | 2026-09-15 → 2026-09-11 (-4d) |  | 13d → 33d |  |
| 840 | Aprovação | 2026-09-15 → 2026-09-11 (-4d) | 2026-09-17 → 2026-09-15 (-2d) |  | 13d → 33d |  |
| 841 | **LI-F0008-0309-MB-J-00006** | 2026-08-13 → 2026-08-11 (-2d) | 2026-09-21 → 2026-09-17 (-4d) |  | 11d → 31d | was named LI-F0009-0309-MB-J-00006 |
| 842 | Emissão inicial | 2026-08-13 → 2026-08-11 (-2d) | 2026-09-03 → 2026-09-01 (-2d) |  | 11d → 31d |  |
| 843 | Avaliação do Cliente | 2026-09-03 → 2026-09-01 (-2d) | 2026-09-10 → 2026-09-08 (-2d) |  | 11d → 31d |  |
| 844 | Atendimento de Comentário | 2026-09-10 → 2026-09-08 (-2d) | 2026-09-17 → 2026-09-15 (-2d) |  | 11d → 31d |  |
| 845 | Aprovação | 2026-09-17 → 2026-09-15 (-2d) | 2026-09-21 → 2026-09-17 (-4d) |  | 11d → 31d |  |
| 846 | **LI-F0008-0309-MB-J-00007** | 2026-08-13 → 2026-08-11 (-2d) | 2026-09-17 → 2026-09-15 (-2d) |  | 13d → 33d | was named LI-F0009-0309-MB-J-00007 |
| 847 | Emissão inicial | 2026-08-13 → 2026-08-11 (-2d) | 2026-09-03 → 2026-09-01 (-2d) |  | 13d → 33d |  |
| 848 | Avaliação do Cliente | 2026-09-03 → 2026-09-01 (-2d) | 2026-09-10 → 2026-09-08 (-2d) |  | 13d → 33d |  |
| 849 | Atendimento de Comentário | 2026-09-10 → 2026-09-08 (-2d) | 2026-09-15 → 2026-09-11 (-4d) |  | 13d → 33d |  |
| 850 | Aprovação | 2026-09-15 → 2026-09-11 (-4d) | 2026-09-17 → 2026-09-15 (-2d) |  | 13d → 33d |  |
| 851 | **LI-F0008-0309-MB-J-00008** | 2026-08-13 → 2026-08-11 (-2d) | 2026-09-21 → 2026-09-17 (-4d) |  | 11d → 31d | was named LI-F0009-0309-MB-J-00008 |
| 852 | Emissão inicial | 2026-08-13 → 2026-08-11 (-2d) | 2026-09-03 → 2026-09-01 (-2d) |  | 11d → 31d |  |
| 853 | Avaliação do Cliente | 2026-09-03 → 2026-09-01 (-2d) | 2026-09-10 → 2026-09-08 (-2d) |  | 11d → 31d |  |
| 854 | Atendimento de Comentário | 2026-09-10 → 2026-09-08 (-2d) | 2026-09-17 → 2026-09-15 (-2d) |  | 11d → 31d |  |
| 855 | Aprovação | 2026-09-17 → 2026-09-15 (-2d) | 2026-09-21 → 2026-09-17 (-4d) |  | 11d → 31d |  |
| 856 | **LI-F0008-0309-MB-J-00009** | 2026-08-13 → 2026-08-11 (-2d) | 2026-09-17 → 2026-09-15 (-2d) |  | 0d → 20d | was named LI-F0009-0309-MB-J-00009 |
| 857 | Emissão inicial | 2026-08-13 → 2026-08-11 (-2d) | 2026-09-03 → 2026-09-01 (-2d) |  | 0d → 20d |  |
| 858 | Avaliação do Cliente | 2026-09-03 → 2026-09-01 (-2d) | 2026-09-10 → 2026-09-08 (-2d) |  | 13d → 33d |  |
| 859 | Atendimento de Comentário | 2026-09-10 → 2026-09-08 (-2d) | 2026-09-15 → 2026-09-11 (-4d) |  | 13d → 33d |  |
| 860 | Aprovação | 2026-09-15 → 2026-09-11 (-4d) | 2026-09-17 → 2026-09-15 (-2d) |  | 13d → 33d |  |
| 861 | **LM-F0008-0309-MB-J-00001** | 2026-09-03 → 2026-09-01 (-2d) | 2026-10-02 → 2026-10-19 (+17d) | 21d → 34d | 2d → none | was named LM-F0009-0309-MB-J-00001 |
| 862 | Emissão inicial | 2026-09-03 → 2026-09-01 (-2d) | 2026-09-18 → 2026-09-16 (-2d) |  | 2d → 22d |  |
| 863 | Avaliação do Cliente | 2026-09-18 → 2026-09-16 (-2d) | 2026-09-25 → 2026-09-23 (-2d) |  | 2d → 22d |  |
| 864 | Atendimento de Comentário | 2026-09-25 → 2026-09-23 (-2d) | 2026-09-30 → 2026-09-28 (-2d) |  | 2d → 22d |  |
| 865 | Aprovação | 2026-09-30 → 2026-09-28 (-2d) | 2026-10-02 → 2026-09-30 (-2d) |  | 2d → 22d |  |
| 866 | **MD-F0008-0309-MB-J-00001** | 2026-09-03 → 2026-09-01 (-2d) | 2026-10-06 → 2026-10-19 (+13d) | 23d → 34d | 0d → none | was named MD-F0009-0309-MB-J-00001 |
| 867 | Emissão inicial | 2026-09-03 → 2026-09-01 (-2d) | 2026-09-22 → 2026-09-18 (-4d) |  | 0d → 20d |  |
| 868 | Avaliação do Cliente | 2026-09-22 → 2026-09-18 (-4d) | 2026-09-29 → 2026-09-25 (-4d) |  | 0d → 20d |  |
| 869 | Atendimento de Comentário | 2026-09-29 → 2026-09-25 (-4d) | 2026-10-02 → 2026-09-30 (-2d) |  | 0d → 20d |  |
| 870 | Aprovação | 2026-10-02 → 2026-09-30 (-2d) | 2026-10-06 → 2026-10-02 (-4d) |  | 0d → 20d |  |
| 871 | **ET-F0008-0309-MB-J-00001** | 2026-08-13 → 2026-08-11 (-2d) | 2026-09-17 → 2026-10-02 (+15d) | 25d → 38d | 13d → none | was named ET-F0009-0309-MB-J-00001 |

| ID | Task | Start | Finish | Duration | Complete | Total float | Other |
| --- | --- | --- | --- | --- | --- | --- | --- |
| 872 | Emissão inicial | 2026-08-13 → 2026-08-11 (-2d) | 2026-09-03 → 2026-09-01 (-2d) |  |  | 13d → 33d |  |
| 873 | Avaliação do Cliente | 2026-09-03 → 2026-09-01 (-2d) | 2026-09-10 → 2026-09-08 (-2d) |  |  | 13d → 33d |  |
| 874 | Atendimento de Comentário | 2026-09-10 → 2026-09-08 (-2d) | 2026-09-15 → 2026-09-11 (-4d) |  |  | 13d → 33d |  |
| 875 | Aprovação | 2026-09-15 → 2026-09-11 (-4d) | 2026-09-17 → 2026-09-15 (-2d) |  |  | 13d → 33d |  |
| 876 | **PQ-F0008-0309-MB-J-00001** | 2026-08-13 → 2026-08-11 (-2d) | 2026-09-17 → 2026-09-15 (-2d) |  |  | 13d → 33d | was named PQ-F0009-0309-MB-J-00001 |
| 877 | Emissão inicial | 2026-08-13 → 2026-08-11 (-2d) | 2026-09-03 → 2026-09-01 (-2d) |  |  | 13d → 33d |  |
| 878 | Avaliação do Cliente | 2026-09-03 → 2026-09-01 (-2d) | 2026-09-10 → 2026-09-08 (-2d) |  |  | 13d → 33d |  |
| 879 | Atendimento de Comentário | 2026-09-10 → 2026-09-08 (-2d) | 2026-09-15 → 2026-09-11 (-4d) |  |  | 13d → 33d |  |
| 880 | Aprovação | 2026-09-15 → 2026-09-11 (-4d) | 2026-09-17 → 2026-09-15 (-2d) |  |  | 13d → 33d |  |
| 881 | **PROCESSO GUSA 309** |  | 2026-09-29 → 2026-10-15 (+16d) | 65d → 77d |  | 0d → none |  |
| 882 | **CP-F0008-0309-MB-P-00001** |  | 2026-08-04 → 2026-10-02 (+59d) | 25d → 68d |  | 25d → none | was named CP-F0009-0309-MB-P-00001 |
| 887 | **FG-F0008-0300-MB-P-00001** |  | 2026-07-28 → 2026-07-22 (-6d) | 20d → 16d |  | 28d → none | was named FG-F0009-0300-MB-P-00001 |
| 892 | **FG-F0008-0300-MB-P-00002** |  | 2026-07-28 → 2026-07-24 (-4d) | 20d → 18d |  | 50d → none | was named FG-F0009-0300-MB-P-00002 |
| 897 | **FG-F0008-0302-MB-P-00001** |  | 2026-07-30 → 2026-07-24 (-6d) | 22d → 18d |  | 28d → none | was named FG-F0009-0302-MB-P-00001 |
| 902 | **FG-F0008-0302-MB-P-00002** |  | 2026-07-28 → 2026-07-27 (-1d) | 20d → 19d |  | 50d → none | was named FG-F0009-0302-MB-P-00002 |
| 907 | **FG-F0008-0302-MB-P-00003** |  | 2026-08-13 → 2026-07-28 (-16d) | 22d → 10d |  | 28d → none | was named FG-F0009-0302-MB-P-00003 |
| 912 | **FG-F0008-0302-MB-P-00004** |  | 2026-08-11 → 2026-07-29 (-13d) | 20d → 11d |  | 40d → none | was named FG-F0009-0302-MB-P-00004 |
| 917 | **FG-F0008-0302-MB-P-00005** |  | 2026-08-11 → 2026-07-30 (-12d) | 20d → 12d |  | 40d → none | was named FG-F0009-0302-MB-P-00005 |
| 922 | **FG-F0008-0302-MB-P-00006** |  | 2026-08-13 → 2026-07-31 (-13d) | 22d → 13d |  | 28d → none | was named FG-F0009-0302-MB-P-00006 |
| 927 | **FG-F0008-0302-MB-P-00007** |  | 2026-08-25 → 2026-08-03 (-22d) | 20d → 4d |  | 28d → none | was named FG-F0009-0302-MB-P-00007 |
| 932 | **FG-F0008-0302-MB-P-00008** |  |  |  |  | 30d → 48d | was named FG-F0009-0302-MB-P-00008 |
| 937 | **FG-F0008-0302-MB-P-00009** |  |  |  |  | 30d → 48d | was named FG-F0009-0302-MB-P-00009 |
| 942 | **FG-F0008-0302-MB-P-00010** |  |  |  |  | 28d → 46d | was named FG-F0009-0302-MB-P-00010 |
| 947 | **FG-F0008-0302-MB-P-00011** |  |  |  |  | 30d → 48d | was named FG-F0009-0302-MB-P-00011 |
| 952 | **FG-F0008-0307-MB-P-00001** |  | 2026-07-28 → 2026-08-03 (+6d) | 20d → 24d |  | 0d → none | was named FG-F0009-0307-MB-P-00001 |
| 957 | **FG-F0008-0307-MB-P-00002** |  |  |  |  | 50d → 68d | was named FG-F0009-0307-MB-P-00002 |
| 962 | **FG-F0008-0309-MB-P-00001** |  | 2026-07-30 → 2026-07-22 (-8d) | 22d → 16d |  | 48d → none | was named FG-F0009-0309-MB-P-00001 |
| 967 | **FG-F0008-0309-MB-P-00002** |  | 2026-07-28 → 2026-08-04 (+7d) | 20d → 25d |  | 50d → none | was named FG-F0009-0309-MB-P-00002 |
| 972 | **FG-F0008-0309-MB-P-00003** |  | 2026-07-28 → 2026-08-05 (+8d) | 20d → 26d |  | 50d → none | was named FG-F0009-0309-MB-P-00003 |
| 977 | **FG-F0008-0309-MB-P-00004** |  | 2026-07-28 → 2026-08-06 (+9d) | 20d → 27d |  | 0d → none | was named FG-F0009-0309-MB-P-00004 |
| 982 | **FG-F0008-0309-MB-P-00005** |  | 2026-08-11 → 2026-08-07 (-4d) | 20d → 18d |  | 0d → none | was named FG-F0009-0309-MB-P-00005 |
| 987 | **FG-F0008-0309-MB-P-00006** |  | 2026-08-11 → 2026-08-10 (-1d) | 20d → 19d |  | 40d → none | was named FG-F0009-0309-MB-P-00006 |
| 992 | **FG-F0008-0309-MB-P-00007** |  |  |  |  | 40d → 58d | was named FG-F0009-0309-MB-P-00007 |
| 997 | **FG-F0008-0309-MB-P-00008** |  | 2026-08-11 → 2026-08-12 (+1d) | 20d → 21d |  | 12d → none | was named FG-F0009-0309-MB-P-00008 |
| 1002 | **FG-F0008-0309-MB-P-00009** |  | 2026-08-11 → 2026-08-13 (+2d) | 20d → 22d |  | 40d → none | was named FG-F0009-0309-MB-P-00009 |
| 1007 | **FG-F0008-0309-MB-P-00010** |  | 2026-08-11 → 2026-07-30 (-12d) | 20d → 12d |  | 0d → none | was named FG-F0009-0309-MB-P-00010 |
| 1012 | **LL-F0008-0309-MB-P-00001** |  | 2026-09-01 → 2026-10-05 (+34d) | 25d → 49d |  | 10d → none | was named LL-F0009-0309-MB-P-00001 |
| 1017 | **MC-F0008-0302-MB-P-00001** |  |  |  |  | 25d → 43d | was named MC-F0009-0302-MB-P-00001 |
| 1022 | **MC-F0008-0309-MB-P-00001** |  | 2026-09-04 → 2026-07-31 (-35d) | 28d → 3d |  | 22d → none | was named MC-F0009-0309-MB-P-00001 |
| 1027 | **MC-F0008-0309-MB-P-00002** |  | 2026-09-01 → 2026-08-14 (-18d) | 25d → 13d |  | 25d → none | was named MC-F0009-0309-MB-P-00002 |
| 1032 | **MC-F0008-0309-MB-P-00003** |  | 2026-09-01 → 2026-08-19 (-13d) | 25d → 16d |  | 25d → none | was named MC-F0009-0309-MB-P-00003 |
| 1037 | **MC-F0008-0309-MB-P-00004** |  | 2026-09-01 → 2026-08-28 (-4d) | 25d → 23d |  | 0d → none | was named MC-F0009-0309-MB-P-00004 |
| 1042 | **MC-F0008-0309-MB-P-00005** |  | 2026-09-22 → 2026-09-01 (-21d) | 25d → 10d |  | 10d → none | was named MC-F0009-0309-MB-P-00005 |
| 1047 | **MC-F0008-0309-MB-P-00006** |  | 2026-09-22 → 2026-09-03 (-19d) | 25d → 12d |  | 10d → none | was named MC-F0009-0309-MB-P-00006 |
| 1052 | **MC-F0008-0309-MB-P-00007** |  | 2026-09-25 → 2026-09-11 (-14d) | 28d → 18d |  | 0d → none | was named MC-F0009-0309-MB-P-00007 |
| 1057 | **MD-F0008-0302-MB-P-00001** |  |  |  |  | 5d → 23d | was named MD-F0009-0302-MB-P-00001 |
| 1062 | **MD-F0008-0309-MB-P-00001** |  | 2026-09-29 → 2026-09-28 (-1d) | 25d → 24d |  | 5d → none | was named MD-F0009-0309-MB-P-00001 |
| 1067 | **MD-F0008-0309-MB-P-00002** |  |  |  |  | 5d → 23d | was named MD-F0009-0309-MB-P-00002 |
| 1072 | **RT-F0008-0309-MB-P-00001** | 2026-08-25 → 2026-10-02 (+38d) | 2026-09-22 → 2026-10-30 (+38d) |  |  | 10d → 0d | was named RT-F0009-0309-MB-P-00001 |
| 1073 | Emissão inicial | 2026-08-25 → 2026-10-02 (+38d) | 2026-09-08 → 2026-10-16 (+38d) |  |  | 10d → 0d |  |
| 1074 | Avaliação do Cliente | 2026-09-08 → 2026-10-16 (+38d) | 2026-09-15 → 2026-10-23 (+38d) |  |  | 10d → 0d |  |
| 1075 | Atendimento de Comentário | 2026-09-15 → 2026-10-23 (+38d) | 2026-09-18 → 2026-10-28 (+40d) |  |  | 10d → 0d |  |
| 1076 | Aprovação | 2026-09-18 → 2026-10-28 (+40d) | 2026-09-22 → 2026-10-30 (+38d) |  |  | 10d → 0d |  |
| 1077 | **DOCUMENTOS QUE NÃO SERÃO REVISADOS** |  | 2026-04-23 A → 2026-10-19 (+179d) | 1d? → 127.88d? | 100% → 21% | none → 9d |  |
| 1129 | DT-F0005-0309-MB-E-00001 |  | 2026-04-23 A → 2026-09-23 (+153d) | 1d? → 109.88d? | 100% → 1% | none → 27d | constraint none → finish no earlier than 2026-09-23 |
| 1130 | LE-F0008-0309-MB-M-00002 |  |  |  |  |  | was named LE-F0009-0309-MB-M-00002 |
| 1131 | MC-F0008-0309-MB-E-00001 |  |  |  |  |  | was named MC-F0009-0309-MB-E-00001 |
| 1132 | MC-F0008-0309-MB-E-00002 |  |  |  |  |  | was named MC-F0009-0309-MB-E-00002 |
| 1133 | MC-F0008-0309-MB-E-00003 |  |  |  |  |  | was named MC-F0009-0309-MB-E-00003 |
| 1134 | MC-F0008-0309-MB-S-00001 |  |  |  |  |  | was named MC-F0009-0309-MB-S-00001 |
| 1135 | PL-F0008-0309-MB-S-00001 |  |  |  |  |  | was named PL-F0009-0309-MB-S-00001 |
| 1136 | PQ-F0008-0309-MB-J-00001 |  | 2026-04-23 A → 2026-10-19 (+179d) | 1d? → 127.88d? | 100% → 1% | none → 9d | was named PQ-F0009-0309-MB-J-00001; constraint none → finish no earlier than 2026-10-19 |
